# Johnson Dev. Hawiian Park Self Storage

Schedule from MS Project, 2025-09-08 to 2026-12-04, A marks actual dates.

## Calendars

- Standard: Mon-Fri 08:00-12:00, 13:00-17:00; Sat-Sun off. Exceptions (off unless hours are given): 2025-11-27 to 2025-11-28, 2025-12-25 to 2025-12-26, 2026-01-01, 2026-02-16, 2026-05-25, 2026-07-03 to 2026-07-06, 2026-09-07, 2026-11-26 to 2026-11-27.

## Schedule

| ID | WBS | Task | Type | Duration | Start | Finish | Predecessors | Complete | Remaining | Total slack | Free slack | Constraint |
| --- | --- | --- | --- | --- | --- | --- | --- | --- | --- | --- | --- | --- |
| 1 | 1 | **Grading & Building Slab Construction** |  | 313d | 2025-09-08 A | 2026-12-04 |  | 7% | 291.21d | 0d |  |  |
| 2 | 1.1 | Commencement Date 9/8/2025 |  | 1d | 2025-09-08 A | 2025-09-08 A |  | 100% |  |  |  | start no earlier than 2025-09-08 |
| 3 | 1.2 | HBI Mobilization |  | 8d | 2025-09-09 A | 2025-09-18 A | 2 | 100% |  |  |  |  |
| 4 | 1.3 | Install Temp Fencing & BMP's |  | 3d | 2025-09-19 A | 2025-09-23 A | 3 | 100% |  |  |  |  |
| 5 | 1.4 | Move Existing Rolling Gate |  | 5d | 2025-09-22 A | 2025-09-26 A | 4FS-2d | 100% |  |  |  |  |
| 6 | 1.5 | Surface Demo Existing Phase II areas |  | 16d | 2025-09-29 A | 2025-10-20 A | 5 | 100% |  |  |  |  |
| 7 | 1.6 | AQMD Notification for Transite Fire Water |  | 10d | 2025-10-16 A | 2025-10-29 A |  | 100% |  |  |  | start no earlier than 2025-10-16 |
| 8 | 1.7 | Identify & Cap Existing Utilities to Limits |  | 3d | 2025-10-16 A | 2025-10-20 A | 6FS-3d | 100% |  |  |  |  |
| 9 | 1.8 | Abate Fire Water Lines per Change Order #2 |  | 5d | 2025-10-30 A | 2025-11-05 A | 7 | 100% |  |  |  |  |
| 10 | 1.9 | Grading Permit Needed | milestone | 0d | 2025-10-20 A | 2025-10-20 A | 6 | 100% |  |  |  |  |
| 11 | 1.10 | Grading Permit Delay - Actual |  | 17d | 2025-10-21 A | 2025-11-12 A | 10 | 100% |  |  |  |  |
| 12 | 1.11 | Pre-Grade Meeting w/ City |  | 1d | 2025-11-13 A | 2025-11-13 A | 10, 11 | 100% |  |  |  |  |
| 13 | 1.12 | Rain and Mud Delay - Taken from item 147 below |  | 6d | 2025-11-14 A | 2025-11-21 A | 12 | 100% |  |  |  |  |
| 14 | 1.13 | O/X & Grading for Bldg pad |  | 8d | 2025-11-24 A | 2025-12-05 A | 3, 6, 9, 12, 13 | 100% |  |  |  |  |
| 15 | 1.14 | Certify Pad / Pad Delivery Date |  | 2d | 2025-12-08 | 2025-12-09 | 14 |  |  | 0d |  |  |
| 16 | 1.15 | Building Permit required | milestone | 0d | 2025-12-09 | 2025-12-09 | 15 |  |  | 12d | 0d |  |
| 17 | 1.16 | Install Fire line Modifications |  | 7d | 2025-12-10 | 2025-12-18 | 8, 9, 16 |  |  | 12d |  |  |
| 18 | 1.17 | Underslab Electrical & Plumbing |  | 6d | 2025-12-10 | 2025-12-17 | 15 |  |  | 0d |  |  |
| 19 | 1.18 | Building Foundations & Pre-lim CMU/Forms |  | 10d | 2025-12-10 | 2025-12-23 | 18SS |  |  | 0d |  |  |
| 20 | 1.19 | Elevator Pit Form & Pour |  | 10d | 2025-12-10 | 2025-12-23 | 15 |  |  | 3d |  |  |
| 21 | 1.20 | Slab Base Material Import & Grading |  | 5d | 2025-12-24 | 2026-01-02 | 19, 20FS-3d |  |  | 0d |  |  |
| 22 | 1.21 | Slab Vapor Barrier & Reinforcing |  | 10d | 2025-12-31 | 2026-01-14 | 21FS-2d |  |  | 0d |  |  |
| 23 | 1.22 | Slab on Grade Pour North |  | 4d | 2026-01-09 | 2026-01-14 | 22FS-4d, 17 |  |  | 0d |  |  |
| 24 | 1.23 | Slab on Grade Pour South |  | 4d | 2026-01-15 | 2026-01-20 | 22, 23 |  |  | 11d |  |  |

| ID | WBS | Task | Type | Duration | Start | Finish | Predecessors | Total slack | Free slack |
| --- | --- | --- | --- | --- | --- | --- | --- | --- | --- |
| 25 | 1.24 | **Site Wet Utilities** |  | 21d | 2025-12-10 | 2026-01-12 |  | 185d |  |
| 26 | 1.24.1 | Storm Drain Piping & Catch Basins from Phase 1 Stubs |  | 6d | 2025-12-10 | 2025-12-17 | 15 | 181d | 0d |
| 27 | 1.24.2 | Extend Sewer Laterals to building |  | 5d | 2025-12-18 | 2025-12-24 | 26 | 181d | 0d |
| 28 | 1.24.3 | Extend Fire / Domestic Water Service to Building |  | 10d | 2025-12-29 | 2026-01-12 | 27 | 181d | 0d |
| 29 | 1.24.4 | Domestic & Fire Water Services Completion | milestone | 0d | 2026-01-12 | 2026-01-12 | 28 | 181d | 0d |
| 30 | 1.25 | **Site Dry Utilities** |  | 8d | 2025-12-18 | 2025-12-31 |  | 234d |  |
| 31 | 1.25.1 | Extend Power & Lov Voltage conduits to Bldg from Stubs |  | 5d | 2025-12-18 | 2025-12-24 | 26 | 230d | 0d |
| 32 | 1.25.2 | Install Generac & Site lighting Conduits |  | 3d | 2025-12-29 | 2025-12-31 | 31 | 230d |  |
| 33 | 1.26 | **Onsite improvements For Early Base Pave** |  | 22d | 2026-01-13 | 2026-02-11 |  | 185d |  |
| 34 | 1.26.1 | Grade for Curb & Gutter |  | 4d | 2026-01-13 | 2026-01-16 | 29 | 181d | 0d |
| 35 | 1.26.2 | Install Irrigation Sleeves |  | 1d | 2026-01-19 | 2026-01-19 | 34 | 181d | 0d |
| 36 | 1.26.3 | Place Curb & Gutter |  | 4d | 2026-01-20 | 2026-01-23 | 34, 35 | 181d | 0d |
| 37 | 1.26.4 | Grade & Pour Walks |  | 5d | 2026-01-22 | 2026-01-28 | 36FS-2d | 181d | 0d |
| 38 | 1.26.5 | Agg Base Import & AC Base Paving |  | 10d | 2026-01-29 | 2026-02-11 | 37 | 181d |  |
| 39 | 1.27 | **Vertical Building Construction** |  | 215d | 2026-01-15 | 2026-11-18 |  | 0d |  |
| 40 | 1.27.1 | CMU Walls to 14'-8" North |  | 15d | 2026-01-15 | 2026-02-04 | 23 | 0d |  |
| 41 | 1.27.2 | CMU Walls to 14'-8" South |  | 15d | 2026-02-05 | 2026-02-26 | 24, 40 | 0d |  |
| 42 | 1.27.3 | Structural Steel Framing & Metal Deck to 2nd floor N. |  | 7d | 2026-02-05 | 2026-02-13 | 40 | 1d | 0d |
| 43 | 1.27.4 | Structural Steel Framing & Metal Deck to 2nd floor S. |  | 7d | 2026-02-23 | 2026-03-03 | 42, 41FS-4d | 2d | 0d |
| 44 | 1.27.5 | Rebar, Hangars & Deck2 Pour North |  | 7d | 2026-02-17 | 2026-02-25 | 42 | 1d | 0d |
| 45 | 1.27.6 | Rebar, Hangars & Deck2 Pour South |  | 7d | 2026-03-04 | 2026-03-12 | 43 | 2d |  |
| 46 | 1.27.7 | CMU Walls to 25'-4" North |  | 12d | 2026-02-27 | 2026-03-16 | 44, 41 | 0d |  |
| 47 | 1.27.8 | CMU Walls to 25'-4" South |  | 12d | 2026-03-17 | 2026-04-01 | 46, 24, 45 | 0d |  |
| 48 | 1.27.9 | 2nd floor Shear walls North @ 15k/week |  | 12d | 2026-02-27 | 2026-03-16 | 46SS | 4d | 0d |
| 49 | 1.27.10 | 3rd Floor Decking North @ 5k/day |  | 7d | 2026-03-11 | 2026-03-19 | 48FS-4d | 4d | 0d |
| 50 | 1.27.11 | Rebar, Hangars & Deck Pour3 North |  | 5d | 2026-03-20 | 2026-03-26 | 49 | 4d |  |
| 51 | 1.27.12 | 2nd floor Shear walls South @ 15k/week |  | 12d | 2026-03-17 | 2026-04-01 | 47SS | 2d | 0d |
| 52 | 1.27.13 | 3rd Floor Decking South@ 5k/day |  | 7d | 2026-03-30 | 2026-04-07 | 51FS-3d | 2d | 0d |
| 53 | 1.27.14 | Rebar, Hangars & Deck3 Pour South |  | 5d | 2026-04-08 | 2026-04-14 | 52 | 2d | 0d |
| 54 | 1.27.15 | CMU Walls to 36' North |  | 10d | 2026-04-02 | 2026-04-15 | 50, 47 | 0d |  |
| 55 | 1.27.16 | CMU Walls to 36' South |  | 10d | 2026-04-16 | 2026-04-29 | 54, 53 | 1d | 0d |
| 56 | 1.27.17 | 3rd floor Shear walls North @ 15k/week |  | 12d | 2026-04-02 | 2026-04-17 | 54SS | 1d |  |
| 57 | 1.27.18 | 4th Floor Decking North @ 5k/day |  | 7d | 2026-04-16 | 2026-04-24 | 56FS-3d, 54 | 0d |  |
| 58 | 1.27.19 | Rebar, Hangars & Deck Pour4 North |  | 5d | 2026-04-27 | 2026-05-01 | 57 | 0d |  |
| 59 | 1.27.20 | 3rd floor Shear walls South @ 15k/week |  | 12d | 2026-04-16 | 2026-05-01 | 55SS | 1d | 0d |
| 60 | 1.27.21 | 4th Floor Decking South@ 5k/day |  | 7d | 2026-04-29 | 2026-05-07 | 59FS-3d | 1d | 0d |
| 61 | 1.27.22 | Rebar, Hangars & Deck4 Pour South |  | 5d | 2026-05-08 | 2026-05-14 | 60 | 1d |  |
| 62 | 1.27.23 | CMU Walls to 46'-8" North |  | 10d | 2026-05-04 | 2026-05-15 | 58, 55 | 0d |  |
| 63 | 1.27.24 | CMU Walls to 46'-8" South |  | 10d | 2026-05-18 | 2026-06-01 | 62, 61 | 0d |  |
| 64 | 1.27.25 | 4th floor Shear walls North @ 15k/week |  | 12d | 2026-05-04 | 2026-05-19 | 62SS | 0d |  |
| 65 | 1.27.26 | 5th Floor Decking North @ 5k/day |  | 7d | 2026-05-15 | 2026-05-26 | 64FS-3d | 0d |  |
| 66 | 1.27.27 | Rebar, Hangars & Deck Pour5 North |  | 5d | 2026-05-27 | 2026-06-02 | 65 | 0d |  |
| 67 | 1.27.28 | 4th floor Shear walls South @ 15k/week |  | 12d | 2026-05-18 | 2026-06-03 | 63SS | 0d |  |
| 68 | 1.27.29 | 5th Floor Decking South@ 5k/day |  | 7d | 2026-06-01 | 2026-06-09 | 67FS-3d | 0d |  |
| 69 | 1.27.30 | Rebar, Hangars & Deck5 Pour South |  | 7d | 2026-06-10 | 2026-06-18 | 68 | 0d |  |
| 70 | 1.27.31 | CMU Walls to 57'-4" North |  | 10d | 2026-06-03 | 2026-06-16 | 58, 66, 63 | 0d |  |
| 71 | 1.27.32 | CMU Walls to 57'-4" South |  | 10d | 2026-06-19 | 2026-07-02 | 70, 61, 69 | 0d |  |
| 72 | 1.27.33 | 5th floor Shear walls North @ 15k/week |  | 14d | 2026-06-03 | 2026-06-22 | 70SS | 0d |  |
| 73 | 1.27.34 | Roof Equipment Structural |  | 3d | 2026-06-18 | 2026-06-22 | 72FF | 0d |  |
| 74 | 1.27.35 | Roof Decking North @ 5k/day |  | 7d | 2026-06-23 | 2026-07-01 | 72FS-3d, 73 | 0d |  |
| 75 | 1.27.36 | Roof Drains, Screens & Curbs |  | 10d | 2026-07-02 | 2026-07-17 | 74 | 0d |  |
| 76 | 1.27.37 | 5th floor Shear walls South @ 15k/week |  | 12d | 2026-06-19 | 2026-07-08 | 71SS | 0d |  |
| 77 | 1.27.38 | Roof Equipment Structural |  | 3d | 2026-07-02 | 2026-07-08 | 76FF | 0d |  |
| 78 | 1.27.39 | Roof Decking South@ 5k/day |  | 7d | 2026-07-09 | 2026-07-17 | 76FS-3d, 77 | 0d |  |
| 79 | 1.27.40 | Roof insulation Crickets & TPO |  | 7d | 2026-07-20 | 2026-07-28 | 78, 75 | 0d |  |
| 80 | 1.27.41 | Building Temporarily Water Tight | milestone | 0d | 2026-07-28 | 2026-07-28 | 79 | 0d |  |
| 81 | 1.27.42 | Set rooftop Equipment & hook up |  | 3d | 2026-07-29 | 2026-07-31 | 79 | 34d | 15d |
| 82 | 1.27.43 | Elevator Construction Car #1 |  | 20d | 2026-07-29 | 2026-08-25 | 80 | 0d |  |
| 83 | 1.27.44 | CMU infill @ Elevator Openings |  | 10d | 2026-08-12 | 2026-08-25 | 82FS-10d | 58d | 40d |
| 84 | 1.27.45 | Elevator Construction Car #2 |  | 20d | 2026-08-26 | 2026-09-23 | 82 | 0d |  |
| 85 | 1.27.46 | CMU infill @ Elevator Openings |  | 10d | 2026-09-10 | 2026-09-23 | 84FS-10d | 38d | 20d |
| 86 | 1.27.47 | Elevator Construction Car #3 |  | 20d | 2026-09-24 | 2026-10-21 | 84 | 0d |  |
| 87 | 1.27.48 | CMU infill @ Elevator Openings |  | 10d | 2026-10-08 | 2026-10-21 | 86FS-10d | 0d |  |
| 88 | 1.27.49 | State Elevator inspection Lead Time & Approval |  | 20d | 2026-10-22 | 2026-11-18 | 87 | 0d |  |
| 89 | 1.27.50 | Remove Man Lift |  | 2d | 2026-10-22 | 2026-10-23 | 88SS | 4d | 0d |
| 90 | 1.27.51 | Infill Framing @ Manlift Landings |  | 7d | 2026-10-23 | 2026-11-02 | 89FS-1d | 4d | 0d |
| 91 | 1.27.52 | Sheathing Lift Leave Out Area |  | 5d | 2026-10-30 | 2026-11-05 | 90FS-2d | 4d | 0d |
| 92 | 1.27.53 | Finishes @ Infilled Landings |  | 5d | 2026-11-06 | 2026-11-12 | 91 | 4d |  |

| ID | WBS | Task | Type | Duration | Start | Finish | Predecessors | Total slack | Free slack |
| --- | --- | --- | --- | --- | --- | --- | --- | --- | --- |
| 93 | 1.28 | **Building Interior** |  | 186d | 2026-02-26 | 2026-11-18 |  | 10d |  |
| 94 | 1.28.1 | Layout & Install Overhead Hangars 1st fl |  | 2d | 2026-02-26 | 2026-02-27 | 44 | 20d | 0d |
| 95 | 1.28.2 | Spray Applied Fireproofing - 1st Floor |  | 10d | 2026-03-02 | 2026-03-13 | 94 | 20d | 0d |
| 96 | 1.28.3 | Overhead P, M, & E 1st fl |  | 15d | 2026-03-11 | 2026-03-31 | 94, 95FS-3d | 20d | 0d |
| 97 | 1.28.4 | Unit Partitions / Hallway System & Doors 1st floor |  | 25d | 2026-03-25 | 2026-04-28 | 95, 96FS-5d | 20d | 0d |
| 98 | 1.28.5 | Finish Electrical 1st Fl |  | 10d | 2026-04-29 | 2026-05-12 | 97, 96 | 60d | 0d |
| 99 | 1.28.6 | Instal Generator and Related Systems |  | 35d | 2026-05-13 | 2026-07-01 | 98 | 103d |  |
| 100 | 1.28.7 | Overhead M/E/P 2nd Fl |  | 15d | 2026-04-15 | 2026-05-05 | 96, 53 | 19d | 0d |
| 101 | 1.28.8 | Unit Partitions / Hallway System & Doors 2nd Floor |  | 20d | 2026-05-06 | 2026-06-03 | 97, 100 | 19d | 0d |
| 102 | 1.28.9 | Finish Electrical 2nd Fl |  | 10d | 2026-06-04 | 2026-06-17 | 101, 100, 98 | 49d | 10d |
| 103 | 1.28.10 | Overhead M/E/P 3rd Fl |  | 15d | 2026-05-06 | 2026-05-27 | 58, 100 | 34d | 4d |
| 104 | 1.28.11 | Unit partitions /Hallway System & Doors 3rd Floor |  | 20d | 2026-06-04 | 2026-07-01 | 101 | 19d | 0d |
| 105 | 1.28.12 | Finish Electrical 3rd Fl |  | 10d | 2026-07-02 | 2026-07-17 | 104, 103, 102 | 39d | 10d |
| 106 | 1.28.13 | Overhead M/E/P 4th Fl |  | 15d | 2026-06-03 | 2026-06-23 | 66, 103 | 30d | 6d |
| 107 | 1.28.14 | Unit Partitions /Hallway System & Doors 4th Floor |  | 20d | 2026-07-02 | 2026-07-31 | 104 | 19d | 0d |
| 108 | 1.28.15 | Finish Electrical 4th Fl |  | 5d | 2026-08-03 | 2026-08-07 | 107, 106, 105 | 29d | 10d |
| 109 | 1.28.16 | Overhead M/E/P 5th Fl |  | 15d | 2026-07-02 | 2026-07-24 | 74, 106 | 24d | 5d |
| 110 | 1.28.17 | Unit Partitions & Hallway System & Doors 5th Floor |  | 20d | 2026-08-03 | 2026-08-28 | 109, 107 | 19d | 0d |
| 111 | 1.28.18 | Hallway Systems after Scaffold Removal |  | 5d | 2026-08-31 | 2026-09-04 | 110 | 62d |  |
| 112 | 1.28.19 | Finish Electrical 5th Fl & Roof Equipment |  | 11d | 2026-08-24 | 2026-09-08 | 110FS-5d, 81, 109, 108 | 19d | 0d |
| 113 | 1.28.20 | Overhead Doors, Liner & Demising Panels Comp. | milestone | 0d | 2026-08-28 | 2026-08-28 | 110 | 67d |  |
| 114 | 1.28.21 | Elev. Lobby Framing |  | 5d | 2026-04-01 | 2026-04-07 | 96 | 103d | 0d |
| 115 | 1.28.22 | Elev. Lobby M/E/P Rough in |  | 5d | 2026-04-06 | 2026-04-10 | 114FS-2d | 103d | 0d |
| 116 | 1.28.23 | Elev. Lobby Drywall |  | 10d | 2026-04-13 | 2026-04-24 | 115 | 103d | 0d |
| 117 | 1.28.24 | Install HM Doors & Hardware |  | 5d | 2026-04-29 | 2026-05-05 | 116, 97 | 101d | 84d |
| 118 | 1.28.25 | Lobby Fixtures & Finishes |  | 10d | 2026-04-27 | 2026-05-08 | 116 | 138d |  |
| 119 | 1.28.26 | Finish Painting in Storage areas |  | 10d | 2026-09-09 | 2026-09-22 | 112, 117 | 19d | 0d |
| 120 | 1.28.27 | Building Signage per plan |  | 5d | 2026-09-23 | 2026-09-29 | 119 | 19d | 1d |
| 121 | 1.28.28 | Final Clean up & Seal floors |  | 20d | 2026-10-01 | 2026-10-28 | 119, 120, 87FS-15d, 85FS-15d, 83FS-15d | 18d | 10d |
| 122 | 1.28.29 | Owner Arch. Punch list & Completion |  | 10d | 2026-11-05 | 2026-11-18 | 121FS-5d, 141 | 8d |  |

| ID | WBS | Task | Type | Duration | Start | Finish | Predecessors | Total slack | Free slack | Constraint |
| --- | --- | --- | --- | --- | --- | --- | --- | --- | --- | --- |
| 123 | 1.29 | **Building Exterior** |  | 76d | 2026-07-07 | 2026-10-21 |  | 0d |  |  |
| 124 | 1.29.1 | Install Scaffolding at Building Perimeter |  | 3d | 2026-07-07 | 2026-07-09 | 71 | 0d |  |  |
| 125 | 1.29.2 | Exterior Metal Frame Sheathing & WRB @ Tower |  | 10d | 2026-07-10 | 2026-07-23 | 124 | 58d | 0d |  |
| 126 | 1.29.3 | Metal Panel Siding @ Tower |  | 5d | 2026-07-24 | 2026-07-30 | 125 | 58d | 0d |  |
| 127 | 1.29.4 | Storefront/Curtainwall |  | 5d | 2026-07-31 | 2026-08-06 | 126 | 58d | 0d |  |
| 128 | 1.29.5 | Glass Lead Time |  | 10d | 2026-08-07 | 2026-08-20 | 127 | 58d | 0d |  |
| 129 | 1.29.6 | Install Glass |  | 5d | 2026-08-21 | 2026-08-27 | 128 | 58d | 28d |  |
| 130 | 1.29.7 | Install Auto Sliders & Mapes Canopy |  | 10d | 2026-10-08 | 2026-10-21 | 127, 137, 129 | 30d |  |  |
| 131 | 1.29.8 | **EIFS WRB, Foam/Brown & Finish** |  | 50d | 2026-07-10 | 2026-09-18 | 124 | 0d |  |  |
| 132 | 1.29.8.1 | Waterproof Membrane |  | 10d | 2026-07-10 | 2026-07-23 | 124 | 0d |  |  |
| 133 | 1.29.8.2 | EIFS Foam |  | 15d | 2026-07-24 | 2026-08-13 | 132 | 0d |  |  |
| 134 | 1.29.8.3 | EIFS Mesh Coat |  | 15d | 2026-08-14 | 2026-09-03 | 133 | 0d |  |  |
| 135 | 1.29.8.4 | EIFS Top Coat |  | 10d | 2026-09-04 | 2026-09-18 | 134 | 0d |  |  |
| 136 | 1.29.9 | Exterior Sheet metal, Sealants, & Painting |  | 10d | 2026-09-21 | 2026-10-02 | 131, 135 | 0d |  |  |
| 137 | 1.29.10 | Remove Scaffolding |  | 3d | 2026-10-05 | 2026-10-07 | 136 | 0d |  |  |
| 138 | 1.30 | **Onsite improvements** |  | 26d | 2026-10-08 | 2026-11-12 |  | 0d |  |  |
| 139 | 1.30.1 | Grade & Pour Walks |  | 5d | 2026-10-08 | 2026-10-14 | 137 | 0d |  |  |
| 140 | 1.30.2 | Site Fencing & Gates |  | 5d | 2026-10-15 | 2026-10-21 | 139 | 0d |  |  |
| 141 | 1.30.3 | Landscape Irrigation and Planting |  | 10d | 2026-10-22 | 2026-11-04 | 139, 37, 38FF, 140 | 0d |  |  |
| 142 | 1.30.4 | Striping & Signage |  | 3d | 2026-11-03 | 2026-11-05 | 141FS-2d | 0d |  |  |
| 143 | 1.30.5 | Owner Civil Punch list & Completion |  | 5d | 2026-11-06 | 2026-11-12 | 142 | 0d |  |  |
| 144 | 1.31 | **Accumulative Inspections & C of O** |  | 19d | 2026-11-06 | 2026-12-04 |  | 0d |  |  |
| 145 | 1.31.1 | Final Grading Inspections |  | 2d | 2026-11-13 | 2026-11-16 | 143 | 0d |  |  |
| 146 | 1.31.2 | Final Public Works Inspections |  | 2d | 2026-11-17 | 2026-11-18 | 145 | 0d |  |  |
| 147 | 1.31.3 | Life Safety Inspection |  | 2d | 2026-11-19 | 2026-11-20 | 88 | 0d |  |  |
| 148 | 1.31.4 | MEP Final Inspections |  | 2d | 2026-11-19 | 2026-11-20 | 88 | 0d |  |  |
| 149 | 1.31.5 | Final Planning & Zoning Inspection |  | 2d | 2026-11-19 | 2026-11-20 | 92, 146 | 0d |  |  |
| 150 | 1.31.6 | Building Final Inspection |  | 2d | 2026-11-23 | 2026-11-24 | 147, 148, 145, 146, 149 | 0d |  |  |
| 151 | 1.31.7 | Rain Days Included |  | 4d | 2026-11-25 | 2026-12-02 | 150 | 0d |  |  |
| 152 | 1.31.8 | Certificate Of Occupancy |  | 2d | 2026-12-03 | 2026-12-04 | 142, 118, 84, 88, 150, 143, 86, 149, 122, 151 | 0d |  |  |
| 153 | 1.31.9 | Open Date | milestone | 0d | 2026-12-04 | 2026-12-04 | 152 | 0d |  | start no earlier than 2022-06-25 |
| 154 | 1.31.10 | Original Contracted Open Date | milestone, manual | 0d | 2026-11-06 | 2026-11-06 |  |  |  |  |
