# Public Storage Anna

Schedule from MS Project, 2025-12-16 to 2026-12-23, A marks actual dates.

## Calendars

- Standard: Mon-Fri 08:00-12:00, 13:00-17:00; Sat-Sun off. Exceptions (off unless hours are given): 2026-01-31 08:00-12:00, 13:00-17:00.

## Schedule

| ID | WBS | Task | Duration | Start | Finish | Predecessors | Complete | Remaining | Baseline start | Baseline finish | Baseline duration | Total slack | Free slack | Constraint |
| --- | --- | --- | --- | --- | --- | --- | --- | --- | --- | --- | --- | --- | --- | --- |
| 1 | 1 | **Public Storage Anna** | 268d | 2025-12-16 A | 2026-12-23 |  | 16% | 226.29d | 2024-07-01 | 2025-04-01 | 196d | 0d |  |  |
| 2 | 1.1 | **Permitting** | 97d | 2025-12-16 A | 2026-04-28 |  | 75% | 24.25d | 2024-07-01 | 2024-08-28 | 42d | 0d |  |  |
| 3 | 1.1.1 | Engineering Permit | 1d | 2025-12-16 A | 2025-12-16 A |  | 100% |  | 2024-07-01 | 2024-07-02 | 1d? |  |  | start no earlier than 2025-12-16 |
| 4 | 1.1.2 | Building Permit | 1d | 2026-01-08 A | 2026-01-08 A | 3FS+3.2w | 100% |  | 2024-07-01 | 2024-07-02 | 1d? |  |  |  |
| 5 | 1.1.3 | NTP Start Date | 1d | 2026-01-05 A | 2026-01-05 A |  | 100% |  | 2024-07-01 | 2024-07-01 | 0d |  |  | start no earlier than 2026-01-05 |
| 6 | 1.1.4 | Fire Department Approval to Go Vertical | 1d | 2026-04-28 | 2026-04-28 | 80, 83, 92 |  |  | 2024-08-27 | 2024-08-28 | 1d | 0d |  | start no earlier than 2024-09-18 |
| 7 | 1.2 | **Procurement** | 212.5d | 2025-12-17 A | 2026-10-08 |  | 28% | 154.06d | 2024-07-01 | 2025-01-27 | 150d | 54.5d |  |  |
| 8 | 1.2.1 | **Elevator / Schendler** | 101d | 2026-01-06 A | 2026-05-25 |  | 20% | 80.8d | 2024-07-01 | 2025-01-27 | 150d | 97d |  |  |
| 9 | 1.2.1.1 | Shop Drawing / Preparation - Review - Approval | 4w | 2026-01-06 A | 2026-02-02 A | 5 | 100% |  | 2024-07-01 | 2024-07-29 | 4w |  |  |  |
| 10 | 1.2.1.2 | Fabrication and Material Delivery | 16w | 2026-02-03 | 2026-05-25 | 9 |  |  | 2024-07-29 | 2025-01-27 | 26w | 80d | 55.5d |  |
| 11 | 1.2.2 | **Hallway System / Janus International** | 198.5d | 2026-01-06 A | 2026-10-08 |  | 30% | 138.95d | 2024-07-01 | 2024-12-23 | 125.5d | 54.5d |  |  |
| 12 | 1.2.2.1 | Shop Drawing / Preparation - Review - Approval | 2w | 2026-01-06 A | 2026-01-19 | 5 | 75% | 0.5w | 2024-07-01 | 2024-07-15 | 2w | 243d |  |  |
| 13 | 1.2.2.2 | Fabrication and Material Delivery | 3w | 2026-09-17 | 2026-10-08 | 173SS-3w, 239SS-3w, 281SS-3w, 323SS-3w |  |  | 2024-12-03 | 2024-12-23 | 3w | 54.5d |  |  |
| 14 | 1.2.3 | **Electrical Gear** | 80d | 2026-01-06 | 2026-04-24 |  |  |  | 2024-07-01 | 2024-09-23 | 60d | 156d |  |  |
| 15 | 1.2.3.1 | Submittals / Preparation - Review - Approval | 6w | 2026-01-06 | 2026-02-13 | 5 |  |  | 2024-07-01 | 2024-07-15 | 2w | 139d | 0d |  |
| 16 | 1.2.3.2 | Fabrication and Material Delivery | 50d | 2026-02-16 | 2026-04-24 | 15 |  |  | 2024-07-15 | 2024-09-23 | 50d | 139d |  |  |
| 17 | 1.2.4 | **Electrical Lighting** | 45d | 2026-01-06 | 2026-03-06 |  |  |  | 2024-07-01 | 2024-09-02 | 45d | 208d |  |  |
| 18 | 1.2.4.1 | Submittals / Preparation - Review - Approval | 2w | 2026-01-06 | 2026-01-19 | 5 |  |  | 2024-07-01 | 2024-07-15 | 2w | 191d | 0d |  |
| 19 | 1.2.4.2 | Fabrication and Material Delivery | 7w | 2026-01-20 | 2026-03-06 | 18 |  |  | 2024-07-15 | 2024-09-02 | 7w | 191d |  |  |
| 20 | 1.2.5 | **CMU Split Face Masonry** | 70d | 2025-12-17 A | 2026-03-23 A |  | 100% |  | 2024-07-01 | 2024-10-21 | 80d |  |  |  |
| 21 | 1.2.5.1 | Submittals / Preparation - Review - Approval | 8w | 2026-01-06 A | 2026-02-27 A | 5 | 100% |  | 2024-07-01 | 2024-07-15 | 2w |  |  |  |
| 22 | 1.2.5.2 | Fabrication and Material Delivery | 14w | 2025-12-17 A | 2026-03-23 A | 21FF | 100% |  | 2024-07-15 | 2024-10-21 | 14w |  |  |  |
| 23 | 1.2.6 | **Bi-Parts Sliding Doors / Stanley Door** | 100d | 2026-01-06 | 2026-05-22 |  |  |  | 2024-07-01 | 2024-10-07 | 70d | 153d |  |  |
| 24 | 1.2.6.1 | Shop Drawing / Preparation - Review - Approval | 8w | 2026-01-06 | 2026-02-27 | 5 |  |  | 2024-07-01 | 2024-07-15 | 2w | 136d | 0d |  |
| 25 | 1.2.6.2 | Fabrication and Material Delivery | 12w | 2026-03-02 | 2026-05-22 | 24 |  |  | 2024-07-15 | 2024-10-07 | 12w | 136d |  |  |

| ID | WBS | Task | Duration | Start | Finish | Predecessors | Complete | Remaining | Baseline start | Baseline finish | Baseline duration | Total slack | Free slack | Constraint |
| --- | --- | --- | --- | --- | --- | --- | --- | --- | --- | --- | --- | --- | --- | --- |
| 26 | 1.2.7 | **Glass** | 40d | 2026-01-06 | 2026-02-27 |  |  |  | 2024-07-01 | 2024-09-09 | 50d | 213d |  |  |
| 27 | 1.2.7.1 | Shop Drawing / Preparation - Review - Approval | 2w | 2026-01-06 | 2026-01-19 | 5 |  |  | 2024-07-01 | 2024-07-15 | 2w | 196d | 0d | start no earlier than 2024-09-02 |
| 28 | 1.2.7.2 | Fabrication and Material Delivery | 6w | 2026-01-20 | 2026-02-27 | 27 |  |  | 2024-07-15 | 2024-09-09 | 8w | 196d |  |  |
| 29 | 1.3 | **Site Work** | 214d | 2025-12-17 A | 2026-10-09 |  | 44% | 120.12d | 2024-07-01 | 2025-03-21 | 189d | 48d |  |  |
| 30 | 1.3.1 | **Survey - Staking and SWPPP** | 81d | 2025-12-17 A | 2026-04-07 |  | 80% | 16.2d | 2024-07-01 | 2024-08-08 | 28d | 181d |  |  |
| 31 | 1.3.1.1 | Property Corner and BM | 1d | 2025-12-17 A | 2025-12-17 A | 3 | 100% |  | 2024-07-01 | 2024-07-02 | 1d |  |  |  |
| 32 | 1.3.1.2 | Building Pad Staking | 1d | 2026-01-16 A | 2026-01-19 A | 40 | 100% |  | 2024-07-02 | 2024-07-03 | 1d |  |  |  |
| 33 | 1.3.1.3 | UG Utility Staking | 1d | 2026-01-30 A | 2026-01-31 A | 68SS, 41 | 100% |  | 2024-07-19 | 2024-07-22 | 1d |  |  |  |
| 34 | 1.3.1.4 | Paving Staking | 1d | 2026-04-07 | 2026-04-07 | 82SS-2d |  |  | 2024-08-07 | 2024-08-08 | 1d | 181d |  |  |
| 35 | 1.3.1.5 | Silt Fence, Construction Entrance | 1d | 2025-12-18 A | 2025-12-18 A | 31 | 100% |  |  |  |  |  |  |  |
| 36 | 1.3.2 | **Dirt Work / Inside the Property** | 169.5d | 2026-01-06 A | 2026-08-28 |  | 91% | 15.13d | 2024-07-09 | 2025-02-20 | 162d | 61d |  |  |
| 37 | 1.3.2.1 | **Site Dirtwork** | 169.5d | 2026-01-06 A | 2026-08-28 |  | 87% | 21.87d | 2024-07-09 | 2025-02-20 | 162d | 61d |  |  |
| 38 | 1.3.2.1.1 | Dirt Contractor Mobilization | 2d | 2026-01-06 A | 2026-01-07 A | 5 | 100% |  | 2024-07-09 | 2024-07-11 | 2d |  |  |  |
| 39 | 1.3.2.1.2 | Demo the Additional Trees along Buddy Hayes Street | 0.5w | 2026-01-08 A | 2026-01-12 A | 38 | 100% |  |  |  |  |  |  |  |
| 40 | 1.3.2.1.3 | Strip and Stockpile Topsoil | 4d | 2026-01-12 A | 2026-01-16 A | 39 | 100% |  | 2024-07-11 | 2024-07-15 | 2d |  |  |  |
| 41 | 1.3.2.1.4 | Site Excavation Cut to Fill | 1w | 2026-01-16 A | 2026-01-23 A | 40 | 100% |  | 2024-07-15 | 2024-07-19 | 4d |  |  |  |
| 42 | 1.3.2.1.5 | Fine Grade Landscape area +/- .10 | 2d | 2026-08-26 | 2026-08-28 | 99SS-1w |  |  | 2025-02-18 | 2025-02-20 | 2d | 61d | 13d |  |
| 43 | 1.3.2.2 | **Building Pad Subgrade Preparation** | 20d | 2026-01-23 A | 2026-02-19 A |  | 100% |  | 2024-07-23 | 2024-08-09 | 13d |  |  |  |
| 44 | 1.3.2.2.1 | **Building A** | 14.5d | 2026-01-23 A | 2026-02-11 A |  | 100% |  |  |  |  |  |  |  |
| 45 | 1.3.2.2.1.1 | Excavate Building Pad 7FT Deep and 5 FT over ex | 5d | 2026-01-23 A | 2026-01-30 A | 41 | 100% |  | 2024-07-23 | 2024-07-26 | 3d |  |  |  |
| 46 | 1.3.2.2.1.2 | 1FT Moisture Condition Building Pad | 0.5w | 2026-01-30 A | 2026-02-03 A | 45 | 100% |  | 2024-07-26 | 2024-08-05 | 1.2w |  |  |  |
| 47 | 1.3.2.2.1.3 | Import and Place 6FT of Select Fill | 1w | 2026-02-04 A | 2026-02-10 A | 46 | 100% |  | 2024-08-05 | 2024-08-08 | 3d |  |  |  |
| 48 | 1.3.2.2.1.4 | Fine Grade Building Pad | 1d | 2026-02-11 A | 2026-02-11 A | 47 | 100% |  | 2024-08-08 | 2024-08-09 | 1d |  |  |  |
| 49 | 1.3.2.2.2 | **Building B** | 9d | 2026-01-30 A | 2026-02-11 A |  | 100% |  |  |  |  |  |  |  |
| 50 | 1.3.2.2.2.1 | Excavate Building Pad 7FT Deep and 5 FT over ex | 3d | 2026-01-30 A | 2026-02-04 A | 45 | 100% |  | 2024-07-23 | 2024-07-26 | 3d |  |  |  |
| 51 | 1.3.2.2.2.2 | 1FT Moisture Condition Building Pad | 2d | 2026-02-04 A | 2026-02-06 A | 50 | 100% |  | 2024-07-26 | 2024-08-05 | 1.2w |  |  |  |
| 52 | 1.3.2.2.2.3 | Import and Place 6FT of Select Fill | 2d | 2026-02-06 A | 2026-02-10 A | 51 | 100% |  | 2024-08-05 | 2024-08-08 | 3d |  |  |  |
| 53 | 1.3.2.2.2.4 | Fine Grade Building Pad | 1d | 2026-02-10 A | 2026-02-11 A | 52 | 100% |  | 2024-08-08 | 2024-08-09 | 1d |  |  |  |

| ID | WBS | Task | Duration | Start | Finish | Predecessors | Complete | Remaining | Baseline start | Baseline finish | Baseline duration | Total slack | Free slack | Constraint |
| --- | --- | --- | --- | --- | --- | --- | --- | --- | --- | --- | --- | --- | --- | --- |
| 54 | 1.3.2.2.3 | **Building C** | 8d | 2026-02-04 A | 2026-02-16 A |  | 100% |  |  |  |  |  |  |  |
| 55 | 1.3.2.2.3.1 | Excavate Building Pad 7FT Deep and 5 FT over ex | 3d | 2026-02-04 A | 2026-02-09 A | 50 | 100% |  | 2024-07-23 | 2024-07-26 | 3d |  |  |  |
| 56 | 1.3.2.2.3.2 | 1FT Moisture Condition Building Pad | 2d | 2026-02-09 A | 2026-02-11 A | 55 | 100% |  | 2024-07-26 | 2024-08-05 | 1.2w |  |  |  |
| 57 | 1.3.2.2.3.3 | Import and Place 6FT of Select Fill | 2d | 2026-02-11 A | 2026-02-13 A | 56 | 100% |  | 2024-08-05 | 2024-08-08 | 3d |  |  |  |
| 58 | 1.3.2.2.3.4 | Fine Grade Building Pad | 1d | 2026-02-13 A | 2026-02-16 A | 57 | 100% |  | 2024-08-08 | 2024-08-09 | 1d |  |  |  |
| 59 | 1.3.2.2.4 | **Building D** | 8d | 2026-02-09 A | 2026-02-19 A |  | 100% |  |  |  |  |  |  |  |
| 60 | 1.3.2.2.4.1 | Excavate Building Pad 7FT Deep and 5 FT over ex | 3d | 2026-02-09 A | 2026-02-12 A | 55 | 100% |  | 2024-07-23 | 2024-07-26 | 3d |  |  |  |
| 61 | 1.3.2.2.4.2 | 1FT Moisture Condition Building Pad | 2d | 2026-02-12 A | 2026-02-16 A | 60 | 100% |  | 2024-07-26 | 2024-08-05 | 1.2w |  |  |  |
| 62 | 1.3.2.2.4.3 | Import and Place 6FT of Select Fill | 2d | 2026-02-16 A | 2026-02-18 A | 61 | 100% |  | 2024-08-05 | 2024-08-08 | 3d |  |  |  |
| 63 | 1.3.2.2.4.4 | Fine Grade Building Pad | 1d | 2026-02-18 A | 2026-02-19 A | 62 | 100% |  | 2024-08-08 | 2024-08-09 | 1d |  |  |  |
| 64 | 1.3.2.3 | **Pavement Subgrade Prep** | 3d | 2026-04-06 | 2026-04-08 |  |  |  | 2024-08-09 | 2024-08-15 | 4d | 9d |  |  |
| 65 | 1.3.2.3.1 | Scarify and Recompact Pavement Subgrade | 2d | 2026-04-06 | 2026-04-07 | 78, 79 |  |  | 2024-08-12 | 2024-08-14 | 2d | 9d | 0d |  |
| 66 | 1.3.2.3.2 | Fine Grade Pavement Subgrade | 1d | 2026-04-08 | 2026-04-08 | 65 |  |  | 2024-08-14 | 2024-08-15 | 1d | 9d | 0d |  |
| 67 | 1.3.3 | **Utility / Inside the Property** | 47.5d | 2026-01-30 A | 2026-04-06 |  | 56% | 20.68d | 2024-07-15 | 2024-08-22 | 28d | 11d |  |  |
| 68 | 1.3.3.1 | Utility Contractor Mobilization | 2d | 2026-01-30 A | 2026-02-02 A | 41FS+1w | 100% |  | 2024-07-15 | 2024-07-17 | 2d |  |  |  |
| 69 | 1.3.3.2 | Public and Private Water | 2w | 2026-02-20 A | 2026-03-05 A | 73 | 100% |  | 2024-07-22 | 2024-07-29 | 1w |  |  |  |
| 70 | 1.3.3.3 | Public Water Line Tie-ins / Dispute with Kroger | 6w | 2026-02-17 | 2026-03-30 |  |  |  |  |  |  | 0d |  | start no earlier than 2026-02-17 |
| 71 | 1.3.3.4 | 12" Cut and Tees on North Side Buddy Hayes | 2d | 2026-03-31 | 2026-04-01 | 70 |  |  |  |  |  | 0d |  |  |
| 72 | 1.3.3.5 | Fire Water and connections | 2w | 2026-03-06 A | 2026-03-19 A | 69 | 100% |  | 2024-07-29 | 2024-08-01 | 3d |  |  |  |
| 73 | 1.3.3.6 | Public Sanitary Sewer | 3d | 2026-02-17 A | 2026-02-19 A | 74 | 100% |  | 2024-07-31 | 2024-08-02 | 2d |  |  |  |
| 74 | 1.3.3.7 | Sewer Easement Delay | 1.5w | 2026-02-05 A | 2026-02-16 A | 75 | 100% |  |  |  |  |  |  |  |
| 75 | 1.3.3.8 | Private Sanitary Sewer | 3d | 2026-02-02 A | 2026-02-05 A | 68 | 100% |  | 2024-07-29 | 2024-08-02 | 4d |  |  |  |
| 76 | 1.3.3.9 | Public Storm Drain | 1.5w | 2026-02-27 A | 2026-03-10 A | 69SS+1w | 100% |  | 2024-08-02 | 2024-08-07 | 3d |  |  |  |
| 77 | 1.3.3.10 | Private Storm Drain | 1w | 2026-03-10 A | 2026-03-17 A | 76 | 100% |  | 2024-08-07 | 2024-08-09 | 2d |  |  |  |
| 78 | 1.3.3.11 | Pressure Testing / Partial | 2d | 2026-03-23 | 2026-03-24 | 72FS+1d |  |  | 2024-08-15 | 2024-08-19 | 2d | 17d | 8d |  |
| 79 | 1.3.3.12 | Pressure Testing / Partial | 2d | 2026-04-02 | 2026-04-03 | 71 |  |  | 2024-08-15 | 2024-08-19 | 2d | 9d | 0d |  |
| 80 | 1.3.3.13 | Get Approval from Fire Department and Public Works | 1d | 2026-04-06 | 2026-04-06 | 78, 79 |  |  | 2024-08-19 | 2024-08-22 | 3d | 11d | 2d |  |

| ID | WBS | Task | Duration | Start | Finish | Predecessors | Complete | Remaining | Baseline start | Baseline finish | Baseline duration | Total slack | Free slack |
| --- | --- | --- | --- | --- | --- | --- | --- | --- | --- | --- | --- | --- | --- |
| 81 | 1.3.4 | **Site Paving** | 11d | 2026-04-09 | 2026-04-23 |  |  |  | 2024-08-06 | 2024-08-29 | 17d | 9d |  |
| 82 | 1.3.4.1 | Paving Contractor Mobilization | 1d | 2026-04-09 | 2026-04-09 | 80, 66 |  |  |  |  |  | 9d | 0d |
| 83 | 1.3.4.2 | Concrete Fire Lane Paving | 3d | 2026-04-10 | 2026-04-14 | 82 |  |  | 2024-08-22 | 2024-08-27 | 3d | 9d | 0d |
| 84 | 1.3.4.3 | Concrete Parking Paving | 2d | 2026-04-22 | 2026-04-23 | 83FS+1w |  |  | 2024-08-27 | 2024-08-29 | 2d | 169d |  |
| 85 | 1.3.5 | **Public Street Work / Buddy Hayes Street** | 35d | 2026-03-24 A | 2026-05-11 |  | 8% | 32.27d | 2024-07-15 | 2024-08-22 | 28d | 157d |  |
| 86 | 1.3.5.1 | Saw Cut and Demo | 2d | 2026-03-24 | 2026-03-25 | 87SS-2d |  |  | 2024-07-15 | 2024-07-17 | 2d | 190d |  |
| 87 | 1.3.5.2 | 12" Water line crossings and Connect with Kroger | 1w | 2026-03-26 A | 2026-04-01 | 71FF | 50% | 0.5w |  |  |  | 0d |  |
| 88 | 1.3.5.3 | Site Excavation Cut to Fill | 3d | 2026-04-02 | 2026-04-06 | 87 |  |  | 2024-07-22 | 2024-07-29 | 1w | 0d |  |
| 89 | 1.3.5.4 | 8" Lime Stabilization | 2w | 2026-04-07 | 2026-04-20 | 88 |  |  | 2024-07-29 | 2024-08-01 | 3d | 0d |  |
| 90 | 1.3.5.5 | Scarify and Recompact Pavement Subgrade | 4d | 2026-04-15 | 2026-04-20 | 89FF |  |  | 2024-07-31 | 2024-08-02 | 2d | 0d |  |
| 91 | 1.3.5.6 | Blue Top and Proof Roll | 2d | 2026-04-21 | 2026-04-22 | 90 |  |  | 2024-07-29 | 2024-08-02 | 4d | 0d |  |
| 92 | 1.3.5.7 | Concrete Paving / Buddy Hayes | 2d | 2026-04-24 | 2026-04-27 | 91FS+1d |  |  | 2024-08-02 | 2024-08-07 | 3d | 0d |  |
| 93 | 1.3.5.8 | Asphalt Paving / Buddy Hayes | 2d | 2026-05-01 | 2026-05-04 | 92FS+3d |  |  |  |  |  | 157d | 0d |
| 94 | 1.3.5.9 | Pavement Markings | 2d | 2026-05-08 | 2026-05-11 | 93FS+3d |  |  |  |  |  | 157d |  |
| 95 | 1.3.6 | **Site Electrical** | 7d | 2026-03-06 | 2026-03-16 |  |  |  | 2024-07-01 | 2024-08-15 | 33d | 197d |  |
| 96 | 1.3.6.1 | Electrical Primary by GCEC | 4d | 2026-03-06 | 2026-03-11 | 69 |  |  | 2024-08-07 | 2024-08-12 | 3d | 197d | 0d |
| 97 | 1.3.6.2 | Electrical Secondry | 3d | 2026-03-12 | 2026-03-16 | 96 |  |  | 2024-08-12 | 2024-08-15 | 3d | 197d |  |
| 98 | 1.3.7 | **Landscape and Irrigation** | 17.5d | 2026-09-02 | 2026-09-25 |  |  |  | 2025-02-25 | 2025-03-10 | 9d | 48d |  |
| 99 | 1.3.7.1 | Irrigation | 2w | 2026-09-02 | 2026-09-16 | 146FS-3w, 226FS-3w, 268FS-3w, 310FS-3w |  |  | 2025-02-25 | 2025-03-04 | 1w | 48d | 0d |
| 100 | 1.3.7.2 | Landscape | 1.5w | 2026-09-16 | 2026-09-25 | 99, 42 |  |  | 2025-03-04 | 2025-03-10 | 4d | 48d | 0d |
| 101 | 1.3.8 | **Site Amenities** | 145d | 2026-03-23 | 2026-10-09 |  |  |  | 2025-03-10 | 2025-03-21 | 9d | 48d |  |
| 102 | 1.3.8.1 | Retaining Wall / Permit and Installation | 1w | 2026-03-23 | 2026-03-27 | 41FS+2w, 72FS+1d |  |  | 2025-03-10 | 2025-03-12 | 2d | 158d | 0d |
| 103 | 1.3.8.2 | 7 FT Tall Screening Wall | 2w | 2026-04-27 | 2026-05-08 | 102FS+4w |  |  |  |  |  | 158d |  |
| 104 | 1.3.8.3 | Light Bollard, Keypad Bollard | 3d | 2026-09-28 | 2026-09-30 | 105SS |  |  | 2025-03-10 | 2025-03-13 | 3d | 55d |  |
| 105 | 1.3.8.4 | Wrought Iron Fence | 1w | 2026-09-28 | 2026-10-02 | 100 |  |  | 2025-03-10 | 2025-03-17 | 1w | 48d | 0d |
| 106 | 1.3.8.5 | Sliding Gate | 1w | 2026-10-05 | 2026-10-09 | 105 |  |  |  |  |  | 48d |  |
| 107 | 1.3.8.6 | Swing Arm Gate | 4d | 2026-10-05 | 2026-10-08 | 105 |  |  | 2025-03-17 | 2025-03-21 | 4d | 49d |  |

| ID | WBS | Task | Duration | Start | Finish | Predecessors | Complete | Remaining | Baseline start | Baseline finish | Baseline duration | Total slack | Free slack |
| --- | --- | --- | --- | --- | --- | --- | --- | --- | --- | --- | --- | --- | --- |
| 108 | 1.4 | **Building Work** | 231d | 2026-02-02 A | 2026-12-21 |  | 3% | 224.22d | 2024-08-09 | 2025-03-19 | 158d | 2d |  |
| 109 | 1.4.1 | **Building A** | 231d | 2026-02-02 A | 2026-12-21 |  | 3% | 224.99d |  |  |  | 2d |  |
| 110 | 1.4.1.1 | **Concrete / Building A** | 106.5d | 2026-02-02 A | 2026-06-30 |  | 71% | 30.72d | 2024-08-09 | 2024-10-16 | 48.5d | 0d |  |
| 111 | 1.4.1.1.1 | **Slab on Grade / Building A** | 9d | 2026-02-02 A | 2026-02-12 A |  | 100% |  | 2024-08-09 | 2024-09-13 | 25.5d |  |  |
| 112 | 1.4.1.1.1.1 | Form Board installation | 2d | 2026-02-05 A | 2026-02-06 A | 48FS-1w, 4 | 100% |  | 2024-08-09 | 2024-08-13 | 2d |  |  |
| 113 | 1.4.1.1.1.2 | UG Plumbing Rough-in | 3d | 2026-02-04 A | 2026-02-06 A | 112FS-3d | 100% |  | 2024-08-13 | 2024-08-20 | 1w |  |  |
| 114 | 1.4.1.1.1.3 | Excavation for the Footing | 3d | 2026-02-09 A | 2026-02-11 A | 113 | 100% |  | 2024-08-20 | 2024-08-29 | 1.5w |  |  |
| 115 | 1.4.1.1.1.4 | Excavation for the Elevator Pit | 3d | 2026-02-02 A | 2026-02-04 A | 112FS-1w | 100% |  | 2024-08-13 | 2024-08-16 | 3d |  |  |
| 116 | 1.4.1.1.1.5 | Pour Concrete wall for the Elevator Pit | 1d | 2026-02-09 A | 2026-02-09 A | 115FS+2d | 100% |  | 2024-08-20 | 2024-08-21 | 1d |  |  |
| 117 | 1.4.1.1.1.6 | Elevator Pit Waterproofing | 1d | 2026-02-10 A | 2026-02-10 A | 116 | 100% |  | 2024-08-23 | 2024-08-26 | 1d |  |  |
| 118 | 1.4.1.1.1.7 | Poly, Termite Control | 2d | 2026-02-10 A | 2026-02-11 A | 114FF | 100% |  | 2024-08-30 | 2024-09-02 | 2d |  |  |
| 119 | 1.4.1.1.1.8 | Reinforcement Steel Placement | 2d | 2026-02-10 A | 2026-02-11 A | 118FF | 100% |  | 2024-09-03 | 2024-09-09 | 1w |  |  |
| 120 | 1.4.1.1.1.9 | Pour Concrete Slab on Grade | 1d | 2026-02-12 A | 2026-02-12 A | 119 | 100% |  | 2024-09-10 | 2024-09-12 | 3d |  |  |
| 121 | 1.4.1.1.1.10 | Saw Cut for Control Joint | 0.5d | 2026-02-12 A | 2026-02-12 A | 120FF | 100% |  | 2024-09-13 | 2024-09-13 | 1d |  |  |
| 122 | 1.4.1.1.2 | **Second Floor Slab on Deck / Building A** | 3d | 2026-05-26 | 2026-05-28 |  |  |  | 2024-10-11 | 2024-10-16 | 4d | 0d |  |
| 123 | 1.4.1.1.2.1 | Place Wire Mesh | 2d | 2026-05-26 | 2026-05-27 | 132 |  |  | 2024-10-11 | 2024-10-14 | 2d | 0d |  |
| 124 | 1.4.1.1.2.2 | Pour Concrete Slab on Deck | 1d | 2026-05-28 | 2026-05-28 | 123 |  |  | 2024-10-15 | 2024-10-15 | 1d | 0d |  |
| 125 | 1.4.1.1.2.3 | Saw Cut for Control Joint | 0.5d | 2026-05-28 | 2026-05-28 | 124FF |  |  | 2024-10-16 | 2024-10-16 | 1d | 0d |  |
| 126 | 1.4.1.1.3 | **Third Floor Slab on Deck / Building A** | 3d | 2026-06-25 | 2026-06-30 |  |  |  | 2024-10-11 | 2024-10-16 | 4d | 0d |  |
| 127 | 1.4.1.1.3.1 | Place Wire Mesh | 2d | 2026-06-25 | 2026-06-29 | 134 |  |  | 2024-10-11 | 2024-10-14 | 2d | 0d |  |
| 128 | 1.4.1.1.3.2 | Pour Concrete Slab on Deck | 1d | 2026-06-29 | 2026-06-30 | 127 |  |  | 2024-10-15 | 2024-10-15 | 1d | 0d |  |
| 129 | 1.4.1.1.3.3 | Saw Cut for Control Joint | 1d | 2026-06-29 | 2026-06-30 | 128FF |  |  | 2024-10-16 | 2024-10-16 | 1d | 0d |  |
| 130 | 1.4.1.2 | **Structural Steel Framing / Building A** | 115.5d | 2026-04-29 | 2026-10-07 |  |  |  | 2024-09-16 | 2024-12-19 | 68.5d | 0d |  |
| 131 | 1.4.1.2.1 | First Floor Structural Framing | 3w | 2026-04-29 | 2026-05-19 | 6, 121FS+3d |  |  | 2024-09-16 | 2024-10-04 | 3w | 0d |  |
| 132 | 1.4.1.2.2 | Second Floor Deck | 4d | 2026-05-20 | 2026-05-25 | 131 |  |  | 2024-10-07 | 2024-10-10 | 4d | 0d |  |
| 133 | 1.4.1.2.3 | Second Floor Structural Framing | 2.5w | 2026-06-03 | 2026-06-19 | 125FS+3d |  |  | 2024-10-22 | 2024-11-07 | 2.5w | 0d |  |
| 134 | 1.4.1.2.4 | Third Floor Deck | 4d | 2026-06-19 | 2026-06-25 | 133 |  |  | 2024-10-07 | 2024-10-10 | 4d | 0d |  |
| 135 | 1.4.1.2.5 | Third Floor Structural Framing | 2.5w | 2026-07-03 | 2026-07-21 | 129FS+3d |  |  | 2024-10-22 | 2024-11-07 | 2.5w | 0d |  |
| 136 | 1.4.1.2.6 | Roof Framing and Roof Deck | 1.5w | 2026-07-22 | 2026-07-31 | 135 |  |  | 2024-11-07 | 2024-11-18 | 1.5w | 0d |  |
| 137 | 1.4.1.2.7 | Awning | 2w | 2026-09-23 | 2026-10-07 | 140 |  |  | 2024-12-05 | 2024-12-19 | 2w | 55.5d |  |
| 138 | 1.4.1.2.8 | Stair 1 | 6w | 2026-05-29 | 2026-07-09 | 152FF |  |  | 2024-11-07 | 2024-11-21 | 2w | 109d | 0d |
| 139 | 1.4.1.2.9 | Stair 2 | 6w | 2026-06-12 | 2026-07-23 | 152FF, 138SS+2w |  |  | 2024-11-21 | 2024-12-05 | 2w | 109d |  |

| ID | WBS | Task | Duration | Start | Finish | Predecessors | Baseline start | Baseline finish | Baseline duration | Total slack | Free slack |
| --- | --- | --- | --- | --- | --- | --- | --- | --- | --- | --- | --- |
| 140 | 1.4.1.3 | **Exterior Wall Assembly / Building A** | 53d | 2026-07-10 | 2026-09-23 |  | 2024-11-07 | 2024-12-10 | 23.5d | 37.5d | 0d |
| 141 | 1.4.1.3.1 | Exterior Sheathing | 3w | 2026-07-10 | 2026-07-31 | 135SS+1w | 2024-11-07 | 2024-11-21 | 2w | 37.5d | 0d |
| 142 | 1.4.1.3.2 | Air Moisture Barrier | 1w | 2026-07-31 | 2026-08-07 | 141 | 2024-11-21 | 2024-11-26 | 3d | 45.5d | 0d |
| 143 | 1.4.1.3.3 | Rigid Insulation | 2.5w | 2026-08-07 | 2026-08-25 | 142 | 2024-11-26 | 2024-12-05 | 1.5w | 46d | 0.5d |
| 144 | 1.4.1.3.4 | EIFS | 4w | 2026-08-21 | 2026-09-18 | 142FS+2w | 2024-11-26 | 2024-12-05 | 1.5w | 45.5d | 0d |
| 145 | 1.4.1.3.5 | Parapet Wall Assembly | 4d | 2026-07-29 | 2026-08-04 | 136FF+2d | 2024-12-06 | 2024-12-10 | 3d | 91.5d |  |
| 146 | 1.4.1.3.6 | 4" Split Face CMU Masonry | 3w | 2026-09-02 | 2026-09-23 | 143FS+1w, 144FF+3d | 2024-12-03 | 2025-02-25 | 12w | 45.5d | 0d |
| 147 | 1.4.1.4 | **Roof / Building A** | 17d | 2026-08-11 | 2026-09-03 |  | 2024-11-19 | 2024-12-09 | 15d | 0d |  |
| 148 | 1.4.1.4.1 | Roofing Insulation | 1.4w | 2026-08-11 | 2026-08-20 | 136FS+7d | 2024-11-19 | 2024-11-25 | 1w | 0d |  |
| 149 | 1.4.1.4.2 | TPO Roofing system | 2w | 2026-08-20 | 2026-09-03 | 148 | 2024-11-26 | 2024-12-09 | 2w | 0d |  |
| 150 | 1.4.1.5 | **Interior Wall Assembly / Building A** | 100.5d | 2026-04-29 | 2026-09-16 |  | 2024-11-14 | 2024-12-20 | 27d | 60.5d |  |
| 151 | 1.4.1.5.1 | Elevator CMU Wall Assembly | 10w | 2026-04-29 | 2026-07-07 | 131SS | 2024-11-14 | 2024-12-04 | 3w | 71d | 0d |
| 152 | 1.4.1.5.2 | Stair CMU Wall Assembly | 10w | 2026-05-01 | 2026-07-09 | 151SS+2d |  |  |  | 109d | 0d |
| 153 | 1.4.1.5.3 | Lite-Gauge Framing / Office Area | 1w | 2026-08-14 | 2026-08-21 | 141FS+2w | 2024-11-21 | 2024-11-28 | 1w | 37.5d | 9d |
| 154 | 1.4.1.5.4 | Plumbing and Electrical Wall Rough-in / Office Area | 1w | 2026-09-03 | 2026-09-10 | 153, 149 | 2024-12-10 | 2024-12-16 | 1w | 28.5d | 0d |
| 155 | 1.4.1.5.5 | Sheathing / Office Area | 4d | 2026-09-10 | 2026-09-16 | 154 | 2024-12-17 | 2024-12-20 | 4d | 28.5d | 0d |
| 156 | 1.4.1.6 | **Elevator / Building A** | 40d | 2026-09-10 | 2026-11-05 |  | 2025-02-03 | 2025-03-19 | 32d | 24.5d | 0d |
| 157 | 1.4.1.6.1 | Elevator 1 | 4w | 2026-09-10 | 2026-10-08 | 151, 149FS+1w, 10FS+1w | 2025-02-03 | 2025-02-24 | 3w | 24.5d | 0d |
| 158 | 1.4.1.6.2 | Elevator 2 | 4w | 2026-10-08 | 2026-11-05 | 157 | 2025-02-24 | 2025-03-17 | 3w | 24.5d | 0d |
| 159 | 1.4.1.6.3 | Sump Pump for Elevator | 2d | 2026-11-03 | 2026-11-05 | 158FF | 2025-03-17 | 2025-03-19 | 2d | 24.5d | 0d |
| 160 | 1.4.1.6.4 | Fire Alarm and Electrical for Elevator | 2d | 2026-11-03 | 2026-11-05 | 159FF | 2025-03-17 | 2025-03-19 | 2d | 24.5d |  |
| 161 | 1.4.1.7 | **Fire Supression / Building A** | 61.5d | 2026-06-09 | 2026-09-02 |  | 2024-12-03 | 2025-01-02 | 23d | 72.5d |  |
| 162 | 1.4.1.7.1 | Fire Sprinkler / First Floor | 3w | 2026-06-09 | 2026-06-29 | 132FS+2w | 2024-12-03 | 2024-12-16 | 2w | 86d | 7.5d |
| 163 | 1.4.1.7.2 | Fire Sprinkler / Second Floor | 3w | 2026-07-09 | 2026-07-30 | 162, 134FS+2w | 2024-12-17 | 2024-12-30 | 2w | 78.5d | 6d |
| 164 | 1.4.1.7.3 | Fire Sprinkler / Third Floor | 3w | 2026-08-07 | 2026-08-28 | 136FS+1w, 163 | 2024-12-17 | 2024-12-30 | 2w | 72.5d | 0d |
| 165 | 1.4.1.7.4 | UG Utility Flush Test for the Riser | 2d | 2026-06-29 | 2026-06-30 | 78FS+12w, 79FS+12w |  |  |  | 115d | 42.5d |
| 166 | 1.4.1.7.5 | Riser Room Assembly | 3d | 2026-08-28 | 2026-09-02 | 163, 165, 164 | 2024-12-31 | 2025-01-02 | 3d | 72.5d | 31d |

| ID | WBS | Task | Duration | Start | Finish | Predecessors | Baseline start | Baseline finish | Baseline duration | Total slack | Free slack |
| --- | --- | --- | --- | --- | --- | --- | --- | --- | --- | --- | --- |
| 167 | 1.4.1.8 | **Fire Alarm / Building A** | 33d | 2026-09-03 | 2026-10-20 |  | 2024-12-10 | 2025-01-07 | 21d | 41.5d |  |
| 168 | 1.4.1.8.1 | Fire Alarm rough-in First Floor | 2w | 2026-09-03 | 2026-09-17 | 149 | 2024-12-10 | 2024-12-10 | 0.2w | 41.5d | 0d |
| 169 | 1.4.1.8.2 | Fire Alarm rough-in Second Floor | 2w | 2026-09-17 | 2026-10-01 | 168 | 2024-12-11 | 2024-12-11 | 0.2w | 41.5d | 0d |
| 170 | 1.4.1.8.3 | Fire Alarm rough-in Third Floor | 2w | 2026-10-01 | 2026-10-15 | 169 | 2024-12-11 | 2024-12-11 | 0.2w | 41.5d | 0d |
| 171 | 1.4.1.8.4 | Fire Alarm Panels | 3d | 2026-10-15 | 2026-10-20 | 169, 166, 170 | 2025-01-03 | 2025-01-07 | 3d | 41.5d |  |
| 172 | 1.4.1.9 | **Hallway System / Owner Furnished** | 57.5d | 2026-10-01 | 2026-12-21 |  | 2024-12-24 | 2025-02-03 | 30d | 2d |  |
| 173 | 1.4.1.9.1 | Hallway System / First Floor | 2w | 2026-10-08 | 2026-10-22 | 149FS+2w, 176 | 2024-12-24 | 2025-01-13 | 3w | 24.5d | 0d |
| 174 | 1.4.1.9.2 | Hallway System / Second Floor | 2w | 2026-11-05 | 2026-11-19 | 173, 177 | 2025-01-14 | 2025-02-03 | 3w | 14.5d | 12.5d |
| 175 | 1.4.1.9.3 | Hallway System / Third Floor | 2w | 2026-12-08 | 2026-12-21 | 174, 178 | 2025-01-14 | 2025-02-03 | 3w | 2d |  |
| 176 | 1.4.1.9.4 | Welded Wire Mesh / First Floor | 1w | 2026-10-01 | 2026-10-08 | 187, 180 | 2025-01-07 | 2025-01-13 | 1w | 24.5d | 0d |
| 177 | 1.4.1.9.5 | Welded Wire Mesh / Second Floor | 1w | 2026-10-29 | 2026-11-05 | 176, 181, 189 | 2025-01-14 | 2025-01-20 | 1w | 14.5d | 0d |
| 178 | 1.4.1.9.6 | Welded Wire Mesh / Third Floor | 1w | 2026-12-01 | 2026-12-07 | 177, 182, 191 | 2025-01-14 | 2025-01-20 | 1w | 2d | 0d |
| 179 | 1.4.1.10 | **HVAC / Building A** | 47d | 2026-09-03 | 2026-11-09 |  | 2024-12-03 | 2024-12-19 | 13d | 12.5d |  |
| 180 | 1.4.1.10.1 | First Floor Rough-in | 3w | 2026-09-03 | 2026-09-24 | 149 | 2024-12-03 | 2024-12-09 | 1w | 12.5d | 0d |
| 181 | 1.4.1.10.2 | Second Floor Rough-in | 3w | 2026-09-24 | 2026-10-15 | 149, 180 | 2024-12-10 | 2024-12-16 | 1w | 12.5d | 0d |
| 182 | 1.4.1.10.3 | Third Floor Rough-in | 3w | 2026-10-15 | 2026-11-05 | 149, 181 | 2024-12-10 | 2024-12-16 | 1w | 12.5d | 0d |
| 183 | 1.4.1.10.4 | Set up the AHU on Three Floors | 1.5w | 2026-10-27 | 2026-11-05 | 182FF | 2024-12-17 | 2024-12-19 | 3d | 20.5d | 0d |
| 184 | 1.4.1.10.5 | Setup the Roof Top Condenser Unit | 2d | 2026-11-05 | 2026-11-09 | 149, 183 |  |  |  | 20.5d |  |
| 185 | 1.4.1.11 | **Electrical / Building A** | 67.5d | 2026-09-03 | 2026-12-07 |  | 2024-12-03 | 2025-02-27 | 62.5d | 0d |  |
| 186 | 1.4.1.11.1 | First Floor / Conduit, running Wire | 3w | 2026-09-03 | 2026-09-24 | 149 | 2024-12-03 | 2024-12-16 | 2w | 0d |  |
| 187 | 1.4.1.11.2 | First Floor Lighting | 1w | 2026-09-24 | 2026-10-01 | 186 | 2024-12-17 | 2024-12-23 | 1w | 0d |  |
| 188 | 1.4.1.11.3 | Second Floor / Conduit, running wire | 3w | 2026-10-01 | 2026-10-22 | 187 | 2024-12-24 | 2025-01-06 | 2w | 0d |  |
| 189 | 1.4.1.11.4 | Second Floor Lighting | 1w | 2026-10-22 | 2026-10-29 | 188 | 2025-01-07 | 2025-01-13 | 1w | 0d |  |
| 190 | 1.4.1.11.5 | Third Floor / Conduit, running wire | 3w | 2026-10-29 | 2026-11-19 | 189 | 2024-12-24 | 2025-01-06 | 2w | 0d |  |
| 191 | 1.4.1.11.6 | Third Floor Lighting | 1.5w | 2026-11-19 | 2026-11-30 | 190 | 2025-01-07 | 2025-01-13 | 1w | 0d |  |
| 192 | 1.4.1.11.7 | Gear Installation and Electrical Riser Assembly | 1w | 2026-12-01 | 2026-12-07 | 189, 16, 191 | 2025-01-14 | 2025-01-20 | 1w | 0d |  |
| 193 | 1.4.1.11.8 | Exterior Wall Packs | 2d | 2026-09-21 | 2026-09-23 | 146FF | 2025-02-25 | 2025-02-27 | 2d | 53.5d |  |

| ID | WBS | Task | Duration | Start | Finish | Predecessors | Baseline start | Baseline finish | Baseline duration | Total slack | Free slack | Constraint |
| --- | --- | --- | --- | --- | --- | --- | --- | --- | --- | --- | --- | --- |
| 194 | 1.4.1.12 | **Plumbing / Building A** | 81d | 2026-07-29 | 2026-11-19 |  | 2024-11-15 | 2025-02-12 | 64d | 12.5d |  |  |
| 195 | 1.4.1.12.1 | Second Floor Condenser line | 1w | 2026-11-05 | 2026-11-12 | 181, 182 | 2024-12-17 | 2024-12-23 | 1w | 12.5d | 0d |  |
| 196 | 1.4.1.12.2 | Third Floor Condenser line | 1w | 2026-11-12 | 2026-11-19 | 182, 195 | 2024-12-17 | 2024-12-23 | 1w | 12.5d |  |  |
| 197 | 1.4.1.12.3 | Roof Drain | 4d | 2026-07-29 | 2026-08-04 | 136FF+2d | 2024-11-15 | 2024-11-20 | 4d | 89.5d |  |  |
| 198 | 1.4.1.12.4 | Plumbing Bathroom Fixture | 2d | 2026-10-26 | 2026-10-28 | 205, 206 | 2025-02-11 | 2025-02-12 | 2d | 28.5d |  |  |
| 199 | 1.4.1.13 | **Opening / Building A** | 73d | 2026-07-10 | 2026-10-21 |  | 2024-11-07 | 2025-03-18 | 93d | 45.5d |  |  |
| 200 | 1.4.1.13.1 | HMD Frame | 3d | 2026-07-10 | 2026-07-15 | 141SS | 2024-11-07 | 2024-11-12 | 3d | 115.5d |  |  |
| 201 | 1.4.1.13.2 | HM Door and Hardware | 3d | 2026-10-14 | 2026-10-19 | 146SS+6w | 2025-01-14 | 2025-01-17 | 3d | 45.5d | 0d |  |
| 202 | 1.4.1.13.3 | Glass and Glazing | 1w | 2026-10-14 | 2026-10-21 | 201SS | 2025-02-25 | 2025-03-18 | 3w | 45.5d |  |  |
| 203 | 1.4.1.13.4 | Automatic Bi-Part Sliding Door | 4d | 2026-10-01 | 2026-10-07 | 149FS+4w | 2025-02-25 | 2025-02-28 | 3d | 55.5d |  |  |
| 204 | 1.4.1.14 | **Finishout / Building A** | 25d | 2026-09-23 | 2026-10-28 |  | 2025-01-20 | 2025-02-12 | 18d | 40.5d |  |  |
| 205 | 1.4.1.14.1 | Polish Concrete Floor / Restroom and corridor | 1.5w | 2026-09-23 | 2026-10-02 | 155FS+1w | 2025-02-03 | 2025-02-05 | 3d | 41d | 12.5d |  |
| 206 | 1.4.1.14.2 | White FRP for the Rest Room | 3d | 2026-10-21 | 2026-10-26 | 208, 205 | 2025-02-06 | 2025-02-10 | 3d | 28.5d | 0d |  |
| 207 | 1.4.1.14.3 | Bathroom accessories and Signage | 2d | 2026-10-26 | 2026-10-28 | 206 | 2025-02-11 | 2025-02-12 | 2d | 40.5d |  |  |
| 208 | 1.4.1.14.4 | Gypsum Board Ceiling and Paint / Bathroom | 1w | 2026-10-14 | 2026-10-21 | 155FS+4w | 2025-01-20 | 2025-01-24 | 1w | 28.5d | 0d |  |
| 209 | 1.4.1.14.5 | Tape, Bed and Paint the Stair Wall | 1w | 2026-10-14 | 2026-10-21 | 208FF | 2025-01-20 | 2025-01-24 | 1w | 45.5d | 0d |  |
| 210 | 1.4.1.14.6 | Paint HMD | 2d | 2026-10-19 | 2026-10-21 | 209FF | 2025-01-23 | 2025-01-24 | 2d | 45.5d |  |  |
| 211 | 1.4.1.15 | Punch List / Building A | 1w | 2026-12-08 | 2026-12-14 | 185, 194, 179 | 2025-02-27 | 2025-03-13 | 2w | 0d |  |  |
| 212 | 1.4.2 | **Building B** | 104.5d | 2026-03-10 | 2026-08-03 |  |  |  |  | 77.5d |  |  |
| 213 | 1.4.2.1 | **Concrete / Building B** | 11d | 2026-03-10 | 2026-03-24 |  | 2024-08-09 | 2024-10-16 | 48.5d | 77.5d |  |  |
| 214 | 1.4.2.1.1 | **Slab on Grade / Building B** | 11d | 2026-03-10 | 2026-03-24 |  | 2024-08-09 | 2024-09-13 | 25.5d | 77.5d |  |  |
| 215 | 1.4.2.1.1.1 | Form Board installation | 2d | 2026-03-10 | 2026-03-11 | 299FS+2w | 2024-08-09 | 2024-08-13 | 2d | 77.5d | 0d |  |
| 216 | 1.4.2.1.1.2 | UG Plumbing Rough-in | 2d | 2026-03-12 | 2026-03-13 | 215 | 2024-08-13 | 2024-08-20 | 1w | 77.5d | 0d |  |
| 217 | 1.4.2.1.1.3 | Excavation for the Footing | 3d | 2026-03-16 | 2026-03-18 | 216 | 2024-08-20 | 2024-08-29 | 1.5w | 77.5d | 0d |  |
| 218 | 1.4.2.1.1.4 | Poly, Termite Control | 1d | 2026-03-19 | 2026-03-19 | 217 | 2024-08-30 | 2024-09-02 | 2d | 77.5d | 0d |  |
| 219 | 1.4.2.1.1.5 | Reinforcement Steel Placement | 2d | 2026-03-20 | 2026-03-23 | 218 | 2024-09-03 | 2024-09-09 | 1w | 77.5d | 0d |  |
| 220 | 1.4.2.1.1.6 | Pour Concrete Slab on Grade | 1d | 2026-03-24 | 2026-03-24 | 219 | 2024-09-10 | 2024-09-12 | 3d | 77.5d | 0d |  |
| 221 | 1.4.2.1.1.7 | Saw Cut for Control Joint | 0.5d | 2026-03-24 | 2026-03-24 | 220FF | 2024-09-13 | 2024-09-13 | 1d | 77.5d | 0d | start no earlier than 2026-03-17 |

| ID | WBS | Task | Duration | Start | Finish | Predecessors | Baseline start | Baseline finish | Baseline duration | Total slack | Free slack |
| --- | --- | --- | --- | --- | --- | --- | --- | --- | --- | --- | --- |
| 222 | 1.4.2.2 | **Structural Steel Framing / Building B** | 12.5d | 2026-04-29 | 2026-05-15 |  | 2024-09-16 | 2024-12-19 | 68.5d | 102.5d |  |
| 223 | 1.4.2.2.1 | First Floor Structural Framing | 1w | 2026-04-29 | 2026-05-05 | 221FS+3d, 6, 226 | 2024-09-16 | 2024-10-04 | 3w | 102.5d | 0d |
| 224 | 1.4.2.2.2 | Roof Framing and Roof Deck | 1.5w | 2026-05-06 | 2026-05-15 | 223 | 2024-11-07 | 2024-11-18 | 1.5w | 102.5d | 0d |
| 225 | 1.4.2.3 | **Exterior Wall Assembly / Building B** | 15d | 2026-04-01 | 2026-04-21 |  | 2024-11-07 | 2024-12-10 | 23.5d | 77.5d |  |
| 226 | 1.4.2.3.1 | 8" CMU Masonry | 3w | 2026-04-01 | 2026-04-21 | 221FS+1w | 2024-12-03 | 2025-02-25 | 12w | 77.5d | 0d |
| 227 | 1.4.2.4 | **Roof / Building B** | 17d | 2026-05-26 | 2026-06-18 |  | 2024-11-19 | 2024-12-09 | 15d | 102.5d |  |
| 228 | 1.4.2.4.1 | Roofing Insulation | 1.4w | 2026-05-26 | 2026-06-04 | 224FS+7d | 2024-11-19 | 2024-11-25 | 1w | 102.5d | 0d |
| 229 | 1.4.2.4.2 | Standing Seam Metal Roof | 2w | 2026-06-04 | 2026-06-18 | 228 | 2024-11-26 | 2024-12-09 | 2w | 102.5d | 0d |
| 230 | 1.4.2.5 | **Interior Wall Assembly / Building B** | 10d | 2026-06-18 | 2026-07-02 |  | 2024-11-14 | 2024-12-20 | 27d | 102.5d |  |
| 231 | 1.4.2.5.1 | Fire Riser Room Assembly | 2w | 2026-06-18 | 2026-07-02 | 229 | 2024-11-14 | 2024-12-04 | 3w | 102.5d | 0d |
| 232 | 1.4.2.6 | **Fire Supression / Building B** | 10.5d | 2026-06-18 | 2026-07-02 |  | 2024-12-03 | 2025-01-02 | 23d | 116d |  |
| 233 | 1.4.2.6.1 | Fire Sprinkler / Dry System | 1.5w | 2026-06-18 | 2026-06-29 | 229 | 2024-12-03 | 2024-12-16 | 2w | 116d | 0d |
| 234 | 1.4.2.6.2 | Riser Room Assembly | 3d | 2026-06-30 | 2026-07-02 | 233 | 2024-12-31 | 2025-01-02 | 3d | 116d | 0d |
| 235 | 1.4.2.7 | **Fire Alarm / Building B** | 13.5d | 2026-06-18 | 2026-07-07 |  | 2024-12-10 | 2025-01-07 | 21d | 116d |  |
| 236 | 1.4.2.7.1 | Fire Alarm rough-in First Floor | 2w | 2026-06-18 | 2026-07-02 | 229 | 2024-12-10 | 2024-12-10 | 0.2w | 119.5d |  |
| 237 | 1.4.2.7.2 | Fire Alarm Panels | 3d | 2026-07-03 | 2026-07-07 | 234 | 2025-01-03 | 2025-01-07 | 3d | 116d |  |
| 238 | 1.4.2.8 | **Hallway System / Owner Furnished** | 15d | 2026-07-13 | 2026-08-03 |  | 2024-12-24 | 2025-02-03 | 30d | 102.5d |  |
| 239 | 1.4.2.8.1 | Hallway System / First Floor | 2w | 2026-07-20 | 2026-08-03 | 229FS+2w, 240 | 2024-12-24 | 2025-01-13 | 3w | 102.5d | 58d |
| 240 | 1.4.2.8.2 | Welded Wire Mesh / First Floor | 1w | 2026-07-13 | 2026-07-20 | 245, 242 | 2025-01-07 | 2025-01-13 | 1w | 102.5d | 0d |
| 241 | 1.4.2.9 | **HVAC / Building B** | 2d | 2026-07-09 | 2026-07-13 |  | 2024-12-03 | 2024-12-19 | 13d | 102.5d | 1d |
| 242 | 1.4.2.9.1 | Riser Room Heater | 2d | 2026-07-09 | 2026-07-13 | 231FS+1w | 2024-12-03 | 2024-12-09 | 1w | 102.5d | 0d |
| 243 | 1.4.2.10 | **Electrical / Building B** | 15d | 2026-06-23 | 2026-07-14 |  | 2024-12-03 | 2025-02-27 | 62.5d | 104.5d | 0d |
| 244 | 1.4.2.10.1 | First Floor / Conduit, running Wire | 1w | 2026-06-23 | 2026-06-30 | 229FS+3d | 2024-12-03 | 2024-12-16 | 2w | 104.5d | 0d |
| 245 | 1.4.2.10.2 | First Floor Lighting | 1w | 2026-06-30 | 2026-07-07 | 244 | 2024-12-17 | 2024-12-23 | 1w | 104.5d | 0d |
| 246 | 1.4.2.10.3 | Gear Installation and Electrical Riser Assembly | 1w | 2026-07-07 | 2026-07-14 | 245 | 2025-01-14 | 2025-01-20 | 1w | 104.5d |  |
| 247 | 1.4.2.10.4 | Exterior Wall Packs | 2d | 2026-06-30 | 2026-07-02 | 226FS+2d, 244 | 2025-02-25 | 2025-02-27 | 2d | 112.5d |  |

| ID | WBS | Task | Duration | Start | Finish | Predecessors | Complete | Remaining | Baseline start | Baseline finish | Baseline duration | Total slack | Free slack | Constraint |
| --- | --- | --- | --- | --- | --- | --- | --- | --- | --- | --- | --- | --- | --- | --- |
| 248 | 1.4.2.11 | **Plumbing / Building B** | 1d | 2026-05-18 | 2026-05-19 |  |  |  | 2024-11-15 | 2025-02-12 | 64d | 144.5d | 40d |  |
| 249 | 1.4.2.11.1 | Roof Drain | 1d | 2026-05-18 | 2026-05-19 | 224FF+2d |  |  | 2024-11-15 | 2024-11-20 | 4d | 144.5d |  |  |
| 250 | 1.4.2.12 | **Opening / Building B** | 57.5d | 2026-04-03 | 2026-06-23 |  |  |  | 2024-11-07 | 2025-03-18 | 93d | 131.5d |  |  |
| 251 | 1.4.2.12.1 | HMD Frame | 3d | 2026-04-03 | 2026-04-07 | 226SS+2d |  |  | 2024-11-07 | 2024-11-12 | 3d | 183d | 51.5d |  |
| 252 | 1.4.2.12.2 | HM Door and Hardware | 3d | 2026-06-18 | 2026-06-23 | 229, 251 |  |  | 2025-01-14 | 2025-01-17 | 3d | 131.5d |  |  |
| 253 | 1.4.2.13 | Punch List / Building B | 1w | 2026-07-14 | 2026-07-21 | 241, 243, 248 |  |  | 2025-02-27 | 2025-03-13 | 2w | 104.5d |  |  |
| 254 | 1.4.3 | **Building C** | 126.5d | 2026-02-20 A | 2026-08-17 |  | 6% | 119.29d |  |  |  | 92.5d |  |  |
| 255 | 1.4.3.1 | **Concrete / Building C** | 6d | 2026-02-20 A | 2026-02-27 A |  | 100% |  | 2024-08-09 | 2024-10-16 | 48.5d |  |  |  |
| 256 | 1.4.3.1.1 | **Slab on Grade / Building C** | 6d | 2026-02-20 A | 2026-02-27 A |  | 100% |  | 2024-08-09 | 2024-09-13 | 25.5d |  |  |  |
| 257 | 1.4.3.1.1.1 | Form Board installation | 1d | 2026-02-20 A | 2026-02-20 A | 120FS+1w | 100% |  | 2024-08-09 | 2024-08-13 | 2d |  |  |  |
| 258 | 1.4.3.1.1.2 | UG Plumbing Rough-in | 1d | 2026-02-23 A | 2026-02-23 A | 257 | 100% |  | 2024-08-13 | 2024-08-20 | 1w |  |  |  |
| 259 | 1.4.3.1.1.3 | Excavation for the Footing | 2d | 2026-02-24 A | 2026-02-25 A | 258 | 100% |  | 2024-08-20 | 2024-08-29 | 1.5w |  |  |  |
| 260 | 1.4.3.1.1.4 | Poly, Termite Control | 1d | 2026-02-26 A | 2026-02-26 A | 259 | 100% |  | 2024-08-30 | 2024-09-02 | 2d |  |  |  |
| 261 | 1.4.3.1.1.5 | Reinforcement Steel Placement | 1d | 2026-02-26 A | 2026-02-26 A | 260SS | 100% |  | 2024-09-03 | 2024-09-09 | 1w |  |  |  |
| 262 | 1.4.3.1.1.6 | Pour Concrete Slab on Grade | 1d | 2026-02-27 A | 2026-02-27 A | 261 | 100% |  | 2024-09-10 | 2024-09-12 | 3d |  |  |  |
| 263 | 1.4.3.1.1.7 | Saw Cut for Control Joint | 0.5d | 2026-02-27 A | 2026-02-27 A | 262SS | 100% |  | 2024-09-13 | 2024-09-13 | 1d |  |  | start no earlier than 2026-03-17 |
| 264 | 1.4.3.2 | **Structural Steel Framing / Building C** | 12.5d | 2026-05-13 | 2026-05-29 |  |  |  | 2024-09-16 | 2024-12-19 | 68.5d | 92.5d |  |  |
| 265 | 1.4.3.2.1 | First Floor Structural Framing | 1w | 2026-05-13 | 2026-05-19 | 263FS+3d, 6, 268 |  |  | 2024-09-16 | 2024-10-04 | 3w | 92.5d | 0d |  |
| 266 | 1.4.3.2.2 | Roof Framing and Roof Deck | 1.5w | 2026-05-20 | 2026-05-29 | 265 |  |  | 2024-11-07 | 2024-11-18 | 1.5w | 92.5d | 0d |  |
| 267 | 1.4.3.3 | **Exterior Wall Assembly / Building C** | 15d | 2026-04-22 | 2026-05-12 |  |  |  | 2024-11-07 | 2024-12-10 | 23.5d | 77.5d |  |  |
| 268 | 1.4.3.3.1 | 8" CMU Masonry | 3w | 2026-04-22 | 2026-05-12 | 263FS+1w, 226 |  |  | 2024-12-03 | 2025-02-25 | 12w | 77.5d | 0d |  |
| 269 | 1.4.3.4 | **Roof / Building C** | 17d | 2026-06-09 | 2026-07-02 |  |  |  | 2024-11-19 | 2024-12-09 | 15d | 92.5d |  |  |
| 270 | 1.4.3.4.1 | Roofing Insulation | 1.4w | 2026-06-09 | 2026-06-18 | 266FS+7d |  |  | 2024-11-19 | 2024-11-25 | 1w | 92.5d | 0d |  |
| 271 | 1.4.3.4.2 | Standing Seam Metal Roof | 2w | 2026-06-18 | 2026-07-02 | 270 |  |  | 2024-11-26 | 2024-12-09 | 2w | 92.5d | 0d |  |

| ID | WBS | Task | Duration | Start | Finish | Predecessors | Baseline start | Baseline finish | Baseline duration | Total slack | Free slack |
| --- | --- | --- | --- | --- | --- | --- | --- | --- | --- | --- | --- |
| 272 | 1.4.3.5 | **Interior Wall Assembly / Building C** | 10d | 2026-07-02 | 2026-07-16 |  | 2024-11-14 | 2024-12-20 | 27d | 92.5d |  |
| 273 | 1.4.3.5.1 | Fire Riser Room Assembly | 2w | 2026-07-02 | 2026-07-16 | 271 | 2024-11-14 | 2024-12-04 | 3w | 92.5d | 0d |
| 274 | 1.4.3.6 | **Fire Supression / Building C** | 10.5d | 2026-07-02 | 2026-07-16 |  | 2024-12-03 | 2025-01-02 | 23d | 106d |  |
| 275 | 1.4.3.6.1 | Fire Sprinkler / Dry System | 1.5w | 2026-07-02 | 2026-07-13 | 271 | 2024-12-03 | 2024-12-16 | 2w | 106d | 0d |
| 276 | 1.4.3.6.2 | Riser Room Assembly | 3d | 2026-07-14 | 2026-07-16 | 275 | 2024-12-31 | 2025-01-02 | 3d | 106d | 0d |
| 277 | 1.4.3.7 | **Fire Alarm / Building C** | 13.5d | 2026-07-02 | 2026-07-21 |  | 2024-12-10 | 2025-01-07 | 21d | 106d |  |
| 278 | 1.4.3.7.1 | Fire Alarm rough-in First Floor | 2w | 2026-07-02 | 2026-07-16 | 271 | 2024-12-10 | 2024-12-10 | 0.2w | 109.5d |  |
| 279 | 1.4.3.7.2 | Fire Alarm Panels | 3d | 2026-07-17 | 2026-07-21 | 276 | 2025-01-03 | 2025-01-07 | 3d | 106d |  |
| 280 | 1.4.3.8 | **Hallway System / Owner Furnished** | 15d | 2026-07-27 | 2026-08-17 |  | 2024-12-24 | 2025-02-03 | 30d | 92.5d |  |
| 281 | 1.4.3.8.1 | Hallway System / First Floor | 2w | 2026-08-03 | 2026-08-17 | 271FS+2w, 282 | 2024-12-24 | 2025-01-13 | 3w | 92.5d | 48d |
| 282 | 1.4.3.8.2 | Welded Wire Mesh / First Floor | 1w | 2026-07-27 | 2026-08-03 | 287, 284 | 2025-01-07 | 2025-01-13 | 1w | 92.5d | 0d |
| 283 | 1.4.3.9 | **HVAC / Building C** | 2d | 2026-07-23 | 2026-07-27 |  | 2024-12-03 | 2024-12-19 | 13d | 92.5d | 1d |
| 284 | 1.4.3.9.1 | Riser Room Heater | 2d | 2026-07-23 | 2026-07-27 | 273FS+1w | 2024-12-03 | 2024-12-09 | 1w | 92.5d | 0d |
| 285 | 1.4.3.10 | **Electrical / Building C** | 15d | 2026-07-07 | 2026-07-28 |  | 2024-12-03 | 2025-02-27 | 62.5d | 94.5d | 0d |
| 286 | 1.4.3.10.1 | First Floor / Conduit, running Wire | 1w | 2026-07-07 | 2026-07-14 | 271FS+3d | 2024-12-03 | 2024-12-16 | 2w | 94.5d | 0d |
| 287 | 1.4.3.10.2 | First Floor Lighting | 1w | 2026-07-14 | 2026-07-21 | 286 | 2024-12-17 | 2024-12-23 | 1w | 94.5d | 0d |
| 288 | 1.4.3.10.3 | Gear Installation and Electrical Riser Assembly | 1w | 2026-07-21 | 2026-07-28 | 287 | 2025-01-14 | 2025-01-20 | 1w | 94.5d |  |
| 289 | 1.4.3.10.4 | Exterior Wall Packs | 2d | 2026-07-14 | 2026-07-16 | 268FS+2d, 286 | 2025-02-25 | 2025-02-27 | 2d | 102.5d |  |
| 290 | 1.4.3.11 | **Plumbing / Building C** | 1d | 2026-06-01 | 2026-06-02 |  | 2024-11-15 | 2025-02-12 | 64d | 134.5d | 40d |
| 291 | 1.4.3.11.1 | Roof Drain | 1d | 2026-06-01 | 2026-06-02 | 266FF+2d | 2024-11-15 | 2024-11-20 | 4d | 134.5d |  |
| 292 | 1.4.3.12 | **Opening / Building C** | 52.5d | 2026-04-24 | 2026-07-07 |  | 2024-11-07 | 2025-03-18 | 93d | 121.5d |  |
| 293 | 1.4.3.12.1 | HMD Frame | 3d | 2026-04-24 | 2026-04-28 | 268SS+2d | 2024-11-07 | 2024-11-12 | 3d | 168d | 46.5d |
| 294 | 1.4.3.12.2 | HM Door and Hardware | 3d | 2026-07-02 | 2026-07-07 | 271, 293 | 2025-01-14 | 2025-01-17 | 3d | 121.5d |  |
| 295 | 1.4.3.13 | Punch List / Building C | 1w | 2026-07-28 | 2026-08-04 | 283, 285, 290 | 2025-02-27 | 2025-03-13 | 2w | 94.5d |  |

| ID | WBS | Task | Duration | Start | Finish | Predecessors | Complete | Remaining | Baseline start | Baseline finish | Baseline duration | Total slack | Free slack | Constraint |
| --- | --- | --- | --- | --- | --- | --- | --- | --- | --- | --- | --- | --- | --- | --- |
| 296 | 1.4.4 | **Building D** | 140.5d | 2026-02-23 A | 2026-09-07 |  | 5% | 133.5d |  |  |  | 77.5d |  |  |
| 297 | 1.4.4.1 | **Concrete / Building D** | 5d | 2026-02-23 A | 2026-02-27 A |  | 100% |  | 2024-08-09 | 2024-10-16 | 48.5d |  |  |  |
| 298 | 1.4.4.1.1 | **Slab on Grade / Building D** | 5d | 2026-02-23 A | 2026-02-27 A |  | 100% |  | 2024-08-09 | 2024-09-13 | 25.5d |  |  |  |
| 299 | 1.4.4.1.1.1 | Form Board installation | 1d | 2026-02-23 A | 2026-02-23 A | 257 | 100% |  | 2024-08-09 | 2024-08-13 | 2d |  |  |  |
| 300 | 1.4.4.1.1.2 | UG Plumbing Rough-in | 1d | 2026-02-24 A | 2026-02-24 A | 299 | 100% |  | 2024-08-13 | 2024-08-20 | 1w |  |  |  |
| 301 | 1.4.4.1.1.3 | Excavation for the Footing | 1d | 2026-02-26 A | 2026-02-26 A | 300, 259 | 100% |  | 2024-08-20 | 2024-08-29 | 1.5w |  |  |  |
| 302 | 1.4.4.1.1.4 | Poly, Termite Control | 1d | 2026-02-26 A | 2026-02-26 A | 301SS | 100% |  | 2024-08-30 | 2024-09-02 | 2d |  |  |  |
| 303 | 1.4.4.1.1.5 | Reinforcement Steel Placement | 1d | 2026-02-26 A | 2026-02-26 A | 302SS | 100% |  | 2024-09-03 | 2024-09-09 | 1w |  |  |  |
| 304 | 1.4.4.1.1.6 | Pour Concrete Slab on Grade | 1d | 2026-02-27 A | 2026-02-27 A | 303 | 100% |  | 2024-09-10 | 2024-09-12 | 3d |  |  |  |
| 305 | 1.4.4.1.1.7 | Saw Cut for Control Joint | 0.5d | 2026-02-27 A | 2026-02-27 A | 304FF | 100% |  | 2024-09-13 | 2024-09-13 | 1d |  |  | start no earlier than 2026-02-27 |
| 306 | 1.4.4.2 | **Structural Steel Framing / Building D** | 12.5d | 2026-06-03 | 2026-06-19 |  |  |  | 2024-09-16 | 2024-12-19 | 68.5d | 77.5d |  |  |
| 307 | 1.4.4.2.1 | First Floor Structural Framing | 1w | 2026-06-03 | 2026-06-09 | 305FS+3d, 6, 310 |  |  | 2024-09-16 | 2024-10-04 | 3w | 77.5d | 0d |  |
| 308 | 1.4.4.2.2 | Roof Framing and Roof Deck | 1.5w | 2026-06-10 | 2026-06-19 | 307 |  |  | 2024-11-07 | 2024-11-18 | 1.5w | 77.5d | 0d |  |
| 309 | 1.4.4.3 | **Exterior Wall Assembly / Building D** | 15d | 2026-05-13 | 2026-06-02 |  |  |  | 2024-11-07 | 2024-12-10 | 23.5d | 77.5d |  |  |
| 310 | 1.4.4.3.1 | 8" CMU Masonry | 3w | 2026-05-13 | 2026-06-02 | 305FS+1w, 268 |  |  | 2024-12-03 | 2025-02-25 | 12w | 77.5d | 0d |  |
| 311 | 1.4.4.4 | **Roof / Building D** | 17d | 2026-06-30 | 2026-07-23 |  |  |  | 2024-11-19 | 2024-12-09 | 15d | 77.5d |  |  |
| 312 | 1.4.4.4.1 | Roofing Insulation | 1.4w | 2026-06-30 | 2026-07-09 | 308FS+7d |  |  | 2024-11-19 | 2024-11-25 | 1w | 77.5d | 0d |  |
| 313 | 1.4.4.4.2 | Standing Seam Metal Roof | 2w | 2026-07-09 | 2026-07-23 | 312 |  |  | 2024-11-26 | 2024-12-09 | 2w | 77.5d | 0d |  |
| 314 | 1.4.4.5 | **Interior Wall Assembly / Building D** | 10d | 2026-07-23 | 2026-08-06 |  |  |  | 2024-11-14 | 2024-12-20 | 27d | 77.5d |  |  |
| 315 | 1.4.4.5.1 | Fire Riser Room Assembly | 2w | 2026-07-23 | 2026-08-06 | 313 |  |  | 2024-11-14 | 2024-12-04 | 3w | 77.5d | 0d |  |
| 316 | 1.4.4.6 | **Fire Supression / Building D** | 10.5d | 2026-07-23 | 2026-08-06 |  |  |  | 2024-12-03 | 2025-01-02 | 23d | 91d |  |  |
| 317 | 1.4.4.6.1 | Fire Sprinkler / Dry System | 1.5w | 2026-07-23 | 2026-08-03 | 313 |  |  | 2024-12-03 | 2024-12-16 | 2w | 91d | 0d |  |
| 318 | 1.4.4.6.2 | Riser Room Assembly | 3d | 2026-08-04 | 2026-08-06 | 317 |  |  | 2024-12-31 | 2025-01-02 | 3d | 91d | 0d |  |
| 319 | 1.4.4.7 | **Fire Alarm / Building D** | 13.5d | 2026-07-23 | 2026-08-11 |  |  |  | 2024-12-10 | 2025-01-07 | 21d | 91d |  |  |
| 320 | 1.4.4.7.1 | Fire Alarm rough-in First Floor | 2w | 2026-07-23 | 2026-08-06 | 313 |  |  | 2024-12-10 | 2024-12-10 | 0.2w | 94.5d |  |  |
| 321 | 1.4.4.7.2 | Fire Alarm Panels | 3d | 2026-08-07 | 2026-08-11 | 318 |  |  | 2025-01-03 | 2025-01-07 | 3d | 91d |  |  |

| ID | WBS | Task | Type | Duration | Start | Finish | Predecessors | Baseline start | Baseline finish | Baseline duration | Total slack | Free slack |
| --- | --- | --- | --- | --- | --- | --- | --- | --- | --- | --- | --- | --- |
| 322 | 1.4.4.8 | **Hallway System / Owner Furnished** |  | 15d | 2026-08-17 | 2026-09-07 |  | 2024-12-24 | 2025-02-03 | 30d | 77.5d |  |
| 323 | 1.4.4.8.1 | Hallway System / First Floor |  | 2w | 2026-08-24 | 2026-09-07 | 313FS+2w, 324 | 2024-12-24 | 2025-01-13 | 3w | 77.5d | 33d |
| 324 | 1.4.4.8.2 | Welded Wire Mesh / First Floor |  | 1w | 2026-08-17 | 2026-08-24 | 329, 326 | 2025-01-07 | 2025-01-13 | 1w | 77.5d | 0d |
| 325 | 1.4.4.9 | **HVAC / Building D** |  | 2d | 2026-08-13 | 2026-08-17 |  | 2024-12-03 | 2024-12-19 | 13d | 77.5d | 1d |
| 326 | 1.4.4.9.1 | Riser Room Heater |  | 2d | 2026-08-13 | 2026-08-17 | 315FS+1w | 2024-12-03 | 2024-12-09 | 1w | 77.5d | 0d |
| 327 | 1.4.4.10 | **Electrical / Building D** |  | 15d | 2026-07-28 | 2026-08-18 |  | 2024-12-03 | 2025-02-27 | 62.5d | 79.5d | 0d |
| 328 | 1.4.4.10.1 | First Floor / Conduit, running Wire |  | 1w | 2026-07-28 | 2026-08-04 | 313FS+3d | 2024-12-03 | 2024-12-16 | 2w | 79.5d | 0d |
| 329 | 1.4.4.10.2 | First Floor Lighting |  | 1w | 2026-08-04 | 2026-08-11 | 328 | 2024-12-17 | 2024-12-23 | 1w | 79.5d | 0d |
| 330 | 1.4.4.10.3 | Gear Installation and Electrical Riser Assembly |  | 1w | 2026-08-11 | 2026-08-18 | 329 | 2025-01-14 | 2025-01-20 | 1w | 79.5d |  |
| 331 | 1.4.4.10.4 | Exterior Wall Packs |  | 2d | 2026-08-04 | 2026-08-06 | 310FS+2d, 328 | 2025-02-25 | 2025-02-27 | 2d | 87.5d |  |
| 332 | 1.4.4.11 | **Plumbing / Building D** |  | 1d | 2026-06-22 | 2026-06-23 |  | 2024-11-15 | 2025-02-12 | 64d | 119.5d | 40d |
| 333 | 1.4.4.11.1 | Roof Drain |  | 1d | 2026-06-22 | 2026-06-23 | 308FF+2d | 2024-11-15 | 2024-11-20 | 4d | 119.5d |  |
| 334 | 1.4.4.12 | **Opening / Building D** |  | 52.5d | 2026-05-15 | 2026-07-28 |  | 2024-11-07 | 2025-03-18 | 93d | 106.5d |  |
| 335 | 1.4.4.12.1 | HMD Frame |  | 3d | 2026-05-15 | 2026-05-19 | 310SS+2d | 2024-11-07 | 2024-11-12 | 3d | 153d | 46.5d |
| 336 | 1.4.4.12.2 | HM Door and Hardware |  | 3d | 2026-07-23 | 2026-07-28 | 313, 335 | 2025-01-14 | 2025-01-17 | 3d | 106.5d |  |
| 337 | 1.4.4.13 | Punch List / Building D |  | 1w | 2026-08-18 | 2026-08-25 | 325, 327, 332 | 2025-02-27 | 2025-03-13 | 2w | 79.5d |  |
| 338 | 1.5 | Elevator State Inspection |  | 2d | 2026-11-10 | 2026-11-12 | 156FS+3d | 2025-03-19 | 2025-03-21 | 2d | 24.5d |  |
| 339 | 1.6 | MEP Final Inspection |  | 2d | 2026-12-15 | 2026-12-16 | 211, 253, 295, 337 | 2025-03-13 | 2025-03-17 | 2d | 0d |  |
| 340 | 1.7 | Fire Final Inspection |  | 2d | 2026-12-17 | 2026-12-18 | 161, 167, 29, 232, 235, 274, 277, 316, 319, 338, 339 | 2025-03-21 | 2025-03-25 | 2d | 0d |  |
| 341 | 1.8 | Engineering Final Inspection |  | 2d | 2026-12-21 | 2026-12-22 | 29, 211, 340, 253, 295, 337 | 2025-03-25 | 2025-03-28 | 3d | 0d |  |
| 342 | 1.9 | Building Final Inspection |  | 1d | 2026-12-23 | 2026-12-23 | 340, 341, 338 | 2025-03-28 | 2025-04-01 | 2d | 0d |  |
| 343 | 1.10 | TCO/CO | milestone | 0d | 2026-12-23 | 2026-12-23 | 342 | 2025-04-01 | 2025-04-01 | 0d | 0d |  |
| 345 | 1.11 | Weather Day Log | manual | 1d? | 2025-12-16 | 2025-12-16 |  | 2024-07-01 | 2024-07-02 | 1d? |  |  |
| 346 | 1.12 | Contractor has included 20 Weatherdays in this schedule from 01.05.2026 - 11.30.2026 | manual | 20d | 2025-12-16 | 2026-01-12 |  | 2024-07-01 | 2024-08-05 | 25d |  |  |

| ID | WBS | Task | Duration | Start | Finish | Predecessors | Complete | Baseline start | Baseline finish | Baseline duration | Constraint |
| --- | --- | --- | --- | --- | --- | --- | --- | --- | --- | --- | --- |
| 347 | 1.13 | **Januray 2026 - 7 Days** | 7d | 2026-01-23 A | 2026-01-31 A |  | 100% |  |  |  |  |
| 348 | 1.13.1 | 01.23.2026 - Freezing Rain | 1d | 2026-01-23 A | 2026-01-23 A |  | 100% |  |  |  | start no earlier than 2026-01-23 |
| 349 | 1.13.2 | 01.26.2026 - Snow | 1d | 2026-01-26 A | 2026-01-26 A | 348 | 100% |  |  |  |  |
| 350 | 1.13.3 | 01.27.2026 - Snow | 1d | 2026-01-27 A | 2026-01-27 A | 349 | 100% |  |  |  |  |
| 351 | 1.13.4 | 01.28.2026 - Ice | 1d | 2026-01-28 A | 2026-01-28 A | 350 | 100% |  |  |  |  |
| 352 | 1.13.5 | 01.29.2026 - Ice | 1d | 2026-01-29 A | 2026-01-29 A | 351 | 100% |  |  |  |  |
| 353 | 1.13.6 | 01.30.2026 - Ice | 1d | 2026-01-30 A | 2026-01-30 A | 352 | 100% |  |  |  |  |
| 354 | 1.13.7 | 01.31.2026 - Freezing | 1d | 2026-01-31 A | 2026-01-31 A | 353 | 100% |  |  |  | start no earlier than 2026-01-31 |
| 355 | 1.14 | **February 2026 - 2 Days** | 10d | 2026-02-03 A | 2026-02-16 A |  | 100% |  |  |  |  |
| 356 | 1.14.1 | 02.03.2026 - Muddy | 1d | 2026-02-03 A | 2026-02-03 A |  | 100% |  |  |  | start no earlier than 2026-02-03 |
| 357 | 1.14.2 | 02.16.2026 - Water Ponding and Muddy | 1d | 2026-02-16 A | 2026-02-16 A |  | 100% |  |  |  | start no earlier than 2026-02-16 |
| 358 | 1.15 | **March 2026** | 6d | 2026-03-05 A | 2026-03-12 A |  | 100% |  |  |  |  |
| 359 | 1.15.1 | 03.05.2026 - Muddy | 1d | 2026-03-05 A | 2026-03-05 A |  | 100% |  |  |  | start no earlier than 2026-02-03 |
| 360 | 1.15.2 | 03.09.2026 - Muddy | 1d | 2026-03-09 A | 2026-03-09 A |  | 100% |  |  |  | start no earlier than 2026-02-16 |
| 361 | 1.15.3 | 03.11.2026 - Rain | 1d | 2026-03-11 A | 2026-03-11 A |  | 100% |  |  |  | start no earlier than 2026-03-11 |
| 362 | 1.15.4 | 03.12.2026 - Muddy | 1d | 2026-03-12 A | 2026-03-12 A | 361 | 100% |  |  |  |  |
| 363 | 1.16 | **Delay Log** | 4d | 2026-01-06 A | 2026-01-09 A |  | 100% | 2024-07-01 | 2024-07-02 | 1d? |  |
| 364 | 1.16.1 | Material Testing Lab | 4d | 2026-01-06 A | 2026-01-09 A |  | 100% |  |  |  | start no earlier than 2026-01-06 |
