# CCP 38 BTS Concept Schedule 01.26.2023 Final

Schedule from MS Project, 2024-10-30 to 2026-07-10, A marks actual dates.

## Calendars

- Standard: Mon-Fri 08:00-12:00, 13:00-17:00; Sat-Sun off.

## Schedule

| ID | WBS | Task | Type | Duration | Start | Finish | Predecessors | Complete | Remaining | Baseline start | Baseline finish | Baseline duration | Total slack | Free slack | Constraint | Contract Start | Contract Finish |
| --- | --- | --- | --- | --- | --- | --- | --- | --- | --- | --- | --- | --- | --- | --- | --- | --- | --- |
| 1 | 1 | **Overall Project Duration Public Storage - Aventura** |  | 443d | 2024-10-30 A | 2026-07-10 |  | 79% | 94.39d | 2024-10-30 | 2026-04-13 | 158d | 0d |  |  | Wed 10/30/24 | 6/17/2026 |
| 2 | 1.1 | DEMO PERMIT ISSUED | milestone | 0d | 2025-03-11 A | 2025-03-11 A |  | 100% |  |  |  |  |  |  | start no earlier than 2024-11-29 | Tue 3/11/25 | Tue 3/11/25 |
| 3 | 1.2 | BUILDING MASTER PERMIT (ESTIMATED) |  | 1d | 2025-04-15 A | 2025-04-15 A | 2FS+4w | 100% |  | 2024-11-29 | 2024-11-29 | 0d |  |  |  | Mon 4/7/25 | Mon 4/7/25 |
| 4 | 1.3 | Executed Contract |  | 29d | 2024-10-30 A | 2024-12-09 A |  | 100% |  | 2024-10-30 | 2024-12-03 | 0d |  |  | start no earlier than 2024-10-30 | Wed 10/30/24 | Mon 12/9/24 |
| 5 | 1.4 | Release of Subcontractors |  | 10d | 2024-12-10 A | 2025-03-06 A | 4FS+60d | 100% |  | 2025-12-04 | 2024-12-17 | 0d |  |  |  | Tue 12/10/24 | Mon 12/23/24 |
| 6 | 1.5 | **SUBMITTALS** |  | 342d | 2024-12-10 A | 2026-04-01 |  | 99% | 1.11d | 2024-12-04 | 2025-09-02 | 116d | 47d |  |  | Tue 12/10/24 | Mon 9/8/25 |
| 7 | 1.5.1 | **Fire Sprinkler Shop Drawings** |  | 68d | 2025-05-13 A | 2025-08-14 A |  | 100% |  | 2024-12-18 | 2025-04-07 | 69d |  |  |  | Tue 12/24/24 | Fri 4/11/25 |
| 8 | 1.5.1.1 | Request& Receive CAD Files |  | 7d | 2025-05-13 A | 2025-05-21 A | 5 | 100% |  | 2024-12-18 | 2024-12-18 | 1d |  |  |  | Tue 12/24/24 | Tue 12/24/24 |
| 9 | 1.5.1.2 | Shop Drawing Submittal |  | 29d | 2025-05-22 A | 2025-07-01 A | 8 | 100% |  | 2024-12-19 | 2025-01-08 | 25d |  |  | finish no earlier than 2020-09-14 | Wed 12/25/24 | Tue 1/14/25 |
| 10 | 1.5.1.3 | Approval / AOR |  | 9d | 2025-07-02 A | 2025-07-14 A | 9 | 100% |  | 2025-01-09 | 2025-01-22 | 15d |  |  | finish no earlier than 2020-09-30 | Wed 1/15/25 | Tue 1/28/25 |
| 11 | 1.5.1.4 | City Submission& Approval Estimated |  | 2.2w | 2025-07-30 A | 2025-08-13 A | 2FF+15d, 10 | 100% |  | 2025-01-23 | 2025-04-02 | 25d |  |  | finish no earlier than 2020-11-20 | Wed 1/29/25 | Tue 4/8/25 |
| 12 | 1.5.1.5 | Fire Sprinkler Permit | milestone | 0d | 2025-08-14 A | 2025-08-14 A | 11FS+2d | 100% |  | 2025-04-07 | 2025-04-07 | 1d |  |  | start no earlier than 2020-12-07 | Fri 4/11/25 | Fri 4/11/25 |
| 13 | 1.5.2 | **Structural Steel Shop Drawings** |  | 125d | 2024-12-10 A | 2025-06-02 A |  | 100% |  |  | 2025-04-22 |  |  |  |  | Tue 12/10/24 | Thu 6/12/25 |
| 14 | 1.5.2.1 | Structural Steel Shop Drawings Submittal |  | 63d | 2024-12-10 A | 2025-03-06 A | 5SS | 100% |  | 2024-12-04 | 2025-01-14 | 0d |  |  |  | Tue 12/10/24 | Thu 3/6/25 |
| 15 | 1.5.2.2 | Approval / AOR |  | 13d | 2025-03-14 A | 2025-04-01 A | 14FS+5d | 100% |  | 2025-01-22 | 2025-02-11 | 10d |  |  |  | Fri 3/14/25 | Thu 4/3/25 |
| 16 | 1.5.2.3 | Fabricate and Deliver Steel |  | 8.4w | 2025-04-04 A | 2025-06-02 A | 15 | 100% |  | 2025-02-12 | 2025-04-22 | 69d |  |  | finish no earlier than 2020-11-18 | Fri 4/4/25 | Thu 6/12/25 |
| 17 | 1.5.3 | **Concrete Submittals / Shop Drawings** |  | 73d | 2024-12-24 A | 2025-04-03 A |  | 100% |  | 2024-12-18 |  | 37d |  |  |  | Tue 12/24/24 | Wed 3/19/25 |
| 18 | 1.5.3.1 | Footing Rebar Submittal |  | 51d | 2024-12-24 A | 2025-03-04 A | 5 | 100% |  | 2024-12-18 | 2025-01-07 | 5d |  |  |  | Tue 12/24/24 | Tue 3/4/25 |
| 19 | 1.5.3.2 | Approval AOR |  | 20d | 2025-03-05 A | 2025-04-01 A | 18 | 100% |  | 2025-01-08 | 2025-01-21 | 4d |  |  | finish no earlier than 2020-08-19 | Wed 3/5/25 | Wed 3/5/25 |
| 20 | 1.5.3.3 | Concrete mix Submittals |  | 50d | 2024-12-24 A | 2025-03-03 A | 5 | 100% |  | 2024-12-18 | 2025-01-07 | 5d |  |  | finish no earlier than 2020-08-19 | Tue 12/24/24 | Mon 3/3/25 |
| 21 | 1.5.3.4 | Approval AOR |  | 13d | 2025-03-04 A | 2025-03-20 A | 20 | 100% |  | 2025-01-08 | 2025-01-14 | 5d |  |  |  | Tue 3/4/25 | Mon 3/10/25 |
| 22 | 1.5.3.5 | Release Rebar |  | 2d | 2025-03-21 A | 2025-04-03 A | 19 | 100% |  | 2025-01-22 | 2025-02-04 | 10d |  |  |  | Thu 3/6/25 | Wed 3/19/25 |
| 23 | 1.5.4 | **Storefront & Window Shop drawings** |  | 305d | 2025-01-30 A | 2026-04-01 |  | 98% | 6.3d | 2024-12-18 | 2025-04-08 | 116d | 47d |  |  | Tue 12/24/24 | Mon 4/14/25 |
| 24 | 1.5.4.1 | Storefront& Window Submittal |  | 38d | 2025-05-21 A | 2025-07-11 A | 5 | 100% |  | 2024-12-18 | 2025-01-07 | 51d |  |  | finish no earlier than 2020-10-09 | Tue 12/24/24 | Mon 1/13/25 |
| 25 | 1.5.4.2 | Approval / AOR |  | 38d | 2025-07-16 A | 2025-09-05 A | 24 | 100% |  | 2025-01-08 | 2025-01-21 | 10d |  |  |  | Tue 1/14/25 | Mon 1/27/25 |
| 26 | 1.5.4.3 | Storefront & Window Submittal (Rev 1) per revised detail Rev 4&5 - Cost Rejected by Owner | manual | 21d | 2025-09-08 A | 2025-10-06 A | 25 | 100% |  |  |  |  |  |  |  | N/A | N/A |
| 27 | 1.5.4.4 | Approval / AOR | milestone | 0d | 2025-11-11 A | 2025-11-11 A | 26 | 100% |  | 2025-01-08 | 2025-01-21 | 10d |  |  |  | N/A | N/A |
| 28 | 1.5.4.5 | Storefront & Window Submittal - Per Latest Veneer Window Attachement Detail | manual | 16d | 2025-11-12 A | 2025-12-03 A | 27 | 100% |  |  |  |  |  |  |  |  |  |
| 29 | 1.5.4.6 | Approval / AOR | manual | 38d | 2025-12-04 A | 2026-01-26 A | 28 | 100% |  |  |  |  |  |  |  |  |  |
| 30 | 1.5.4.7 | City Submission& Approval |  | 22d | 2026-02-10 A | 2026-03-11 A | 29FS+10d | 100% |  | 2025-01-22 | 2025-02-18 | 20d |  |  | start no earlier than 2020-11-02 | Tue 1/28/25 | Mon 2/24/25 |
| 31 | 1.5.4.8 | Fabricate and Deliver |  | 45d | 2025-01-30 A | 2026-04-01 | 30SS-8d | 90% | 4.5d | 2025-02-19 | 2025-04-08 | 35d | 47d | 0d |  | Tue 2/25/25 | Mon 4/14/25 |

| ID | WBS | Task | Type | Duration | Start | Finish | Predecessors | Complete | Baseline start | Baseline finish | Baseline duration | Constraint | Contract Start | Contract Finish |
| --- | --- | --- | --- | --- | --- | --- | --- | --- | --- | --- | --- | --- | --- | --- |
| 32 | 1.5.5 | **Roofing** |  | 258d | 2024-12-24 A | 2025-12-18 A |  | 100% | 2024-12-18 | 2025-06-24 | 15d |  | Tue 12/24/24 | Mon 6/30/25 |
| 33 | 1.5.5.1 | Roofing Submittal |  | 114d | 2024-12-24 A | 2025-05-30 A | 5 | 100% | 2024-12-18 | 2025-01-07 | 10d | start no earlier than 2021-01-18 | Tue 12/24/24 | Mon 1/13/25 |
| 34 | 1.5.5.2 | Approval / AOR |  | 13d | 2025-08-08 A | 2025-08-26 A | 33FS+5d | 100% | 2025-01-15 | 2025-01-28 | 5d |  | Tue 1/21/25 | Mon 2/3/25 |
| 35 | 1.5.5.3 | Roofing Material Deliver |  | 16.4w | 2025-08-27 A | 2025-12-18 A | 34 | 100% | 2025-02-05 | 2025-06-24 | 0d |  | Tue 2/11/25 | Mon 6/30/25 |
| 36 | 1.5.6 | **DIP Water Piping** |  | 90d | 2025-05-29 A | 2025-10-01 A |  | 100% | 2024-12-18 | 2025-05-20 | 0d |  | Tue 12/24/24 | Mon 5/26/25 |
| 37 | 1.5.6.1 | DIP Submittals |  | 6d | 2025-05-29 A | 2025-06-05 A | 5 | 100% | 2024-12-18 | 2024-12-31 | 5d |  | Tue 12/24/24 | Mon 1/6/25 |
| 38 | 1.5.6.2 | Review & Approval (EOR/AOR) |  | 10d | 2025-06-06 A | 2025-06-19 A | 37 | 100% | 2025-01-01 | 2025-01-14 | 5d |  | Tue 1/7/25 | Mon 1/20/25 |
| 39 | 1.5.6.3 | Fabricate and Deliver |  | 15w | 2025-06-19 A | 2025-10-01 A | 37 | 100% | 2025-01-01 | 2025-05-20 | 10d |  | Tue 1/7/25 | Mon 5/26/25 |
| 40 | 1.5.7 | **Storm Drainage** |  | 135d | 2025-05-29 A | 2025-12-03 A |  | 100% | 2024-12-18 | 2025-03-04 | 0d |  | Tue 12/24/24 | Mon 3/10/25 |
| 41 | 1.5.7.1 | Storm Drainage& Sewer System Submittals |  | 6d | 2025-05-29 A | 2025-06-05 A | 5 | 100% | 2024-12-18 | 2025-01-07 | 5d |  | Tue 12/24/24 | Mon 1/13/25 |
| 42 | 1.5.7.2 | Review & Approval (EOR/AOR) |  | 10d | 2025-06-06 A | 2025-06-19 A | 41 | 100% | 2025-01-08 | 2025-01-21 | 5d |  | Tue 1/14/25 | Mon 1/27/25 |
| 43 | 1.5.7.3 | Fabricate and Deliver Structures |  | 23.8w | 2025-06-20 A | 2025-12-03 A | 42 | 100% | 2025-01-22 | 2025-03-04 | 10d |  | Tue 1/28/25 | Mon 3/10/25 |
| 44 | 1.5.8 | **HVAC Equipment** |  | 113d | 2025-05-08 A | 2025-10-13 A |  | 100% | 2024-12-18 | 2025-09-02 | 135d |  | Tue 12/24/24 | Mon 9/8/25 |
| 45 | 1.5.8.1 | Submittals |  | 1d | 2025-05-08 A | 2025-05-08 A | 5 | 100% | 2024-12-18 | 2024-12-01 | 15d |  | Tue 12/24/24 | Mon 1/13/25 |
| 46 | 1.5.8.2 | Review & Approval (EOR/AOR) |  | 10d | 2025-08-26 A | 2025-09-08 A | 45FS+3w | 100% | 2025-01-08 | 2025-01-21 | 10d |  | Tue 1/14/25 | Mon 1/27/25 |
| 47 | 1.5.8.3 | (ESTIMATED) Fabricate & Deliver |  | 5w | 2025-09-09 A | 2025-10-13 A | 46 | 100% | 2025-01-22 | 2025-09-02 | 22w |  | Tue 1/28/25 | Mon 9/8/25 |
| 48 | 1.5.9 | **Switchgear Equipment** |  | 226d | 2024-12-24 A | 2025-11-04 A |  | 100% | 2024-12-18 | 2025-07-15 | 285d |  | Tue 12/24/24 | Mon 7/21/25 |
| 49 | 1.5.9.1 | Submittals |  | 91d | 2024-12-24 A | 2025-04-29 A | 5 | 100% | 2024-12-18 | 2025-01-07 | 15d | finish no earlier than 2022-04-21 | Tue 12/24/24 | Mon 1/13/25 |
| 50 | 1.5.9.2 | Review & Approval (EOR/AOR) |  | 10d | 2025-04-30 A | 2025-05-13 A | 49 | 100% | 2025-01-08 | 2025-01-21 | 10d |  | Tue 1/14/25 | Mon 1/27/25 |
| 51 | 1.5.9.3 | (Estimated) Fabricate & Deliver Switchgear |  | 25w | 2025-05-14 A | 2025-11-04 A | 50 | 100% | 2025-01-22 | 2025-07-15 | 48w |  | Tue 1/28/25 | Mon 7/21/25 |
| 52 | 1.5.10 | **Elevator Equipment** |  | 215d | 2024-12-24 A | 2025-10-20 A |  | 100% | 2024-12-18 | 2025-08-05 | 285d |  | Tue 12/24/24 | Tue 9/2/25 |
| 53 | 1.5.10.1 | Submittals |  | 2.8w | 2024-12-24 A | 2025-01-10 A | 5FS+6w | 100% | 2024-12-18 | 2025-01-14 | 15d | finish no earlier than 2022-04-21 | Tue 12/24/24 | Tue 2/11/25 |
| 54 | 1.5.10.2 | Review & Approval (EOR/AOR) |  | 23d | 2025-02-19 A | 2025-03-21 A | 53 | 100% | 2025-01-15 | 2025-02-04 | 10d |  | Wed 2/12/25 | Tue 3/4/25 |
| 55 | 1.5.10.3 | Revised Submittal | manual | 1d | 2025-05-16 A | 2025-05-16 A |  | 100% |  |  |  |  | N/A | N/A |
| 56 | 1.5.10.4 | Review & Approval (EOR/AOR) | manual | 120d | 2024-12-24 A | 2025-06-08 A |  | 100% |  |  |  |  | N/A | N/A |
| 57 | 1.5.10.5 | Released for Fabrication & Deliver Elevator Equipment | milestone | 0d | 2025-02-11 A | 2025-10-20 A | 54 | 100% | 2025-02-05 | 2025-08-05 | 48w |  | Wed 3/5/25 | Tue 9/2/25 |

| ID | WBS | Task | Duration | Start | Finish | Predecessors | Complete | Remaining | Baseline start | Baseline finish | Baseline duration | Total slack | Free slack | Constraint | Contract Start | Contract Finish |
| --- | --- | --- | --- | --- | --- | --- | --- | --- | --- | --- | --- | --- | --- | --- | --- | --- |
| 59 | 1.6 | **Construction** | 394d | 2025-01-07 A | 2026-07-10 |  | 63% | 146.43d | 2025-01-13 | 2025-04-13 | 156d | 0d |  |  | Mon 3/17/25 | Fri 6/12/26 |
| 60 | 1.6.1 | Mobilization | 5d | 2025-03-17 A | 2025-03-21 A | 4FS+28d, 2 | 100% |  | 2025-01-13 | 2025-01-17 | 5d |  |  | start no earlier than 2025-03-17 | Mon 3/17/25 | Fri 3/21/25 |
| 61 | 1.6.2 | **Overall Site Work Construction** | 367d | 2025-01-07 A | 2026-06-03 |  | 63% | 136.02d | 2025-01-14 | 2026-02-02 | 152d | 27d |  |  | Mon 3/17/25 | Fri 4/3/26 |
| 62 | 1.6.2.1 | **Site Construction** | 40d | 2025-03-17 A | 2025-05-09 A |  | 100% |  | 2025-01-14 | 2025-03-31 | 52d |  |  |  | Mon 3/17/25 | Fri 5/30/25 |
| 63 | 1.6.2.1.1 | Secure / Fence Site | 5d | 2025-03-17 A | 2025-03-21 A | 60SS | 100% |  | 2025-01-14 | 2025-01-20 | 3d |  |  | start no earlier than 2025-03-17 | Mon 3/17/25 | Fri 3/21/25 |
| 64 | 1.6.2.1.2 | Locate existing utilities for new tie-in | 5d | 2025-03-31 A | 2025-04-04 A | 63FS+5d | 100% |  | 2025-01-21 | 2025-01-27 | 1d |  |  |  | Mon 3/31/25 | Fri 4/4/25 |
| 65 | 1.6.2.1.3 | Building Site Demolition | 30d | 2025-03-19 A | 2025-05-09 A | 64 | 100% |  | 2025-01-28 | 2025-03-10 | 0d |  |  |  | Wed 3/19/25 | Fri 5/9/25 |
| 66 | 1.6.2.1.4 | Install protection and erosion control | 12d | 2025-04-04 A | 2025-04-21 A | 63, 64FS-1d | 100% |  | 2025-01-27 | 2025-01-31 | 2d |  |  |  | Fri 4/4/25 | Thu 4/10/25 |
| 67 | 1.6.2.1.5 | Site Survey& Layout | 5d | 2025-03-31 A | 2025-04-04 A | 65 | 100% |  | 2025-03-11 | 2025-03-17 | 0d |  |  |  | Mon 5/12/25 | Fri 5/16/25 |
| 68 | 1.6.2.1.6 | Construct Building Pad | 15d | 2025-03-31 A | 2025-04-18 A | 65 | 100% |  | 2025-03-11 | 2025-03-31 | 2d |  |  |  | Mon 5/12/25 | Fri 5/30/25 |
| 69 | 1.6.2.2 | **Strom Drainage** | 316d | 2025-01-07 A | 2026-03-24 |  | 92% | 25.01d | 2025-05-21 | 2025-08-26 | 25d | 78d |  |  | Tue 5/27/25 | Mon 9/1/25 |
| 70 | 1.6.2.2.1 | Install Storm Structures & Well Boxes | 22d | 2025-12-08 A | 2026-01-06 A | 145FS-10d | 100% |  | 2025-05-21 | 2025-06-17 | 3w |  |  |  | Tue 5/27/25 | Mon 6/23/25 |
| 71 | 1.6.2.2.2 | Delay - Conflict with Existing Drainage Structures - RFI#064 (On Going) - ESTIMATED | 8d | 2026-01-08 A | 2026-01-28 A |  | 100% |  |  |  |  |  |  |  | N/A | N/A |
| 72 | 1.6.2.2.3 | Cost for additional work per RFI#064 response - Submitted to PS | 9d | 2026-01-19 A | 2026-01-29 A | 71 | 100% |  |  |  |  |  |  |  | N/A | N/A |
| 73 | 1.6.2.2.4 | Cost Approval Additional Drainage work per RFI #064 - ESTIMATED | 4d | 2026-01-29 A | 2026-02-04 A | 72 | 100% |  |  |  |  |  |  |  | N/A | N/A |
| 74 | 1.6.2.2.5 | Fabrication of New Structrures EX-20 & Ex-70 | 4w | 2026-02-05 A | 2026-03-04 A | 73 | 100% |  |  |  |  |  |  |  | N/A | N/A |
| 75 | 1.6.2.2.6 | Remove Old Structures & Install new ones | 6d | 2026-03-05 A | 2026-03-12 A | 74 | 100% |  |  |  |  |  |  |  | N/A | N/A |
| 76 | 1.6.2.2.7 | Complete Install of Storm Pipping | 20d | 2025-01-07 A | 2026-03-24 | 70, 71FF, 75 | 95% | 1d | 2025-07-02 | 2025-08-26 | 5d | 0.25d |  |  | Tue 7/8/25 | Mon 9/1/25 |
| 77 | 1.6.2.2.8 | Install Drainage Wells | 50d | 2025-01-09 A | 2026-03-24 | 70FS+5d | 80% | 10d | 2025-06-18 | 2025-07-01 | 0d | 78d |  |  | Tue 6/24/25 | Mon 7/7/25 |
| 78 | 1.6.2.3 | **Domestic Water Service** | 304d | 2025-01-29 A | 2026-03-30 |  | 82% | 55.61d | 2025-10-07 | 2025-12-01 | 25d | 33d |  |  | Mon 12/8/25 | Fri 1/30/26 |
| 79 | 1.6.2.3.1 | Potential Delay - Temp Access Permit to be Re-Issued | 34d | 2025-12-09 A | 2026-01-23 A |  | 100% |  |  |  |  |  |  |  | N/A | N/A |
| 80 | 1.6.2.3.2 | Precon Meeting Scheduled (Estimated) | 4d | 2025-01-29 A | 2026-01-29 A | 79 | 100% |  |  |  |  |  |  |  | N/A | N/A |
| 81 | 1.6.2.3.3 | LCIS approval from FDOT | 3d | 2026-01-30 A | 2026-02-03 A | 80 | 100% |  |  |  |  |  |  |  | N/A | N/A |
| 82 | 1.6.2.3.4 | Notify Active Building of upcoming work | 5d | 2026-02-04 A | 2026-02-10 A | 81 | 100% |  |  |  |  |  |  |  | N/A | N/A |
| 83 | 1.6.2.3.5 | Temp Access For Active Building | 3d | 2026-02-11 A | 2026-02-13 A | 82 | 100% |  |  |  |  |  |  |  | N/A | N/A |
| 84 | 1.6.2.3.6 | Existing 8" Valve Deffective - Potential Delay | 1d | 2026-02-18 A | 2026-02-18 A |  | 100% |  |  |  |  |  |  |  | N/A | N/A |
| 85 | 1.6.2.3.7 | New Valve Released | 8d | 2026-02-20 A | 2026-03-03 A | 84FS+1d | 100% |  |  |  |  |  |  |  | N/A | N/A |
| 86 | 1.6.2.3.8 | WASD Invoice for Additional Services - Waiting to be posted in Portal | 5d | 2026-03-04 A | 2026-03-10 A | 85 | 100% |  |  |  |  |  |  |  | N/A | N/A |
| 87 | 1.6.2.3.9 | WASD Inspector on Site for Installation - PER WASD Availability | 1d | 2026-03-16 A | 2026-03-16 A | 86FS+3d | 100% |  |  |  |  |  |  |  | N/A | N/A |
| 88 | 1.6.2.3.10 | Water Main installation | 10d | 2026-02-16 A | 2026-03-20 | 83, 87FF+4d | 30% | 7d | 2025-10-07 | 2025-11-03 | 3w | 0d |  |  | Mon 12/8/25 | Fri 1/2/26 |
| 89 | 1.6.2.3.11 | Building Water Services | 2d | 2026-03-23 | 2026-03-24 | 88 |  |  | 2025-11-04 | 2025-11-10 | 5d | 0d |  |  | Mon 1/5/26 | Fri 1/9/26 |
| 90 | 1.6.2.3.12 | Fire Line Underground w/ DDCV& FDC | 3d | 2026-03-25 | 2026-03-27 | 88FF+5d |  |  | 2025-11-11 | 2025-11-24 | 3d | 33d | 0d |  | Mon 1/12/26 | Fri 1/23/26 |
| 91 | 1.6.2.3.13 | Tie-in to Existing Water Main | 3d | 2026-03-26 | 2026-03-30 | 90FS-2d |  |  | 2025-11-25 | 2025-12-01 | 2d | 33d | 17d |  | Mon 1/26/26 | Fri 1/30/26 |

| ID | WBS | Task | Type | Duration | Start | Finish | Predecessors | Complete | Remaining | Baseline start | Baseline finish | Baseline duration | Total slack | Free slack | Contract Start | Contract Finish |
| --- | --- | --- | --- | --- | --- | --- | --- | --- | --- | --- | --- | --- | --- | --- | --- | --- |
| 92 | 1.6.2.4 | **Sewer System** |  | 10d | 2025-10-30 A | 2025-11-12 A |  | 100% |  | 2025-11-11 | 2025-12-01 | 23d |  |  | Mon 1/12/26 | Fri 1/30/26 |
| 93 | 1.6.2.4.1 | Tie into Existing Stub as required |  | 5d | 2025-10-30 A | 2025-11-05 A | 70SS-10d | 100% |  | 2025-11-25 | 2025-12-01 | 5d |  |  | Mon 1/26/26 | Fri 1/30/26 |
| 94 | 1.6.2.4.2 | Install Sanitary Piping |  | 5d | 2025-11-06 A | 2025-11-12 A | 93 | 100% |  | 2025-11-11 | 2025-11-17 | 10d |  |  | Mon 1/12/26 | Fri 1/16/26 |
| 95 | 1.6.2.5 | **Hardscape& Misc. Site Work** |  | 193d | 2025-08-27 A | 2026-05-22 |  | 12% | 170.02d | 2025-09-23 | 2026-02-02 | 53d | 35d |  | Mon 11/24/25 | Fri 4/3/26 |
| 96 | 1.6.2.5.1 | Primary Electrical Conduit |  | 5d | 2025-08-27 A | 2025-09-02 A | 138SS-5d | 100% |  | 2025-09-23 | 2025-09-29 | 5d |  |  | Mon 11/24/25 | Fri 11/28/25 |
| 97 | 1.6.2.5.2 | Site Lighting conduit, brooks boxes,& Fixture Installation |  | 5d | 2025-09-03 A | 2025-09-09 A | 96SS+5d | 100% |  | 2025-09-30 | 2025-10-06 | 5d |  |  | Mon 12/1/25 | Fri 12/5/25 |
| 98 | 1.6.2.5.3 | Fill Balance of Site & excavate Retention Areas |  | 5d | 2026-03-24 | 2026-03-30 | 88FF+6d |  |  | 2025-09-23 | 2025-10-13 | 10d | 0d |  | Mon 11/24/25 | Fri 12/12/25 |
| 99 | 1.6.2.5.4 | Irrigation and ancillary conduit sleeves |  | 4d | 2026-03-25 | 2026-03-30 | 98FF |  |  | 2025-10-07 | 2025-10-20 | 5d | 0d |  | Mon 12/8/25 | Fri 12/19/25 |
| 100 | 1.6.2.5.5 | Sub-base |  | 4d | 2026-03-25 | 2026-03-30 | 96, 97, 99FF, 89, 76 |  |  | 2025-11-18 | 2025-11-25 | 8d | 0d |  | Mon 1/19/26 | Fri 1/23/26 |
| 101 | 1.6.2.5.6 | Base |  | 5d | 2026-03-30 | 2026-04-03 | 100FF+4d |  |  | 2025-11-25 | 2025-12-08 | 10d | 0d |  | Mon 1/26/26 | Fri 2/6/26 |
| 102 | 1.6.2.5.7 | Concrete Curbs |  | 5d | 2026-04-02 | 2026-04-08 | 101FF+3d |  |  | 2025-12-02 | 2025-12-11 | 10d | 5d | 0d | Mon 2/2/26 | Wed 2/11/26 |
| 103 | 1.6.2.5.8 | Asphalt (first lift) |  | 3d | 2026-04-10 | 2026-04-14 | 102FF+4d |  |  | 2025-12-09 | 2025-12-18 | 10d | 5d | 0d | Mon 2/9/26 | Wed 2/18/26 |
| 104 | 1.6.2.5.9 | Sidewalks |  | 5d | 2026-04-15 | 2026-04-21 | 103, 102 |  |  | 2025-12-19 | 2025-12-25 | 8d | 5d | 0d | Thu 2/19/26 | Wed 2/25/26 |
| 105 | 1.6.2.5.10 | Landscape& Irrigation Installation |  | 15d | 2026-04-15 | 2026-05-05 | 104SS |  |  | 2025-12-19 | 2026-01-08 | 12d | 5d | 0d | Thu 2/19/26 | Wed 3/11/26 |
| 106 | 1.6.2.5.11 | Permanent Fence Install |  | 15d | 2026-04-23 | 2026-05-13 | 104FS+1d |  |  |  |  |  | 42d |  | N/A | N/A |
| 107 | 1.6.2.5.12 | Final Lift Asphalt & Restoration |  | 5d | 2026-05-12 | 2026-05-18 | 105FS+4d |  |  | 2026-01-09 | 2026-01-22 | 7d | 5d | 0d | Thu 3/12/26 | Wed 3/25/26 |
| 108 | 1.6.2.5.13 | Pavement Marking & Striping |  | 5d | 2026-05-14 | 2026-05-20 | 107FF+2d |  |  | 2026-01-19 | 2026-01-28 | 5d | 5d | 0d | Fri 3/20/26 | Tue 3/31/26 |
| 109 | 1.6.2.5.14 | Jet Vac |  | 3d | 2026-05-20 | 2026-05-22 | 108FS-1d |  |  | 2026-01-29 | 2026-02-02 | 0d | 5d |  | Wed 4/1/26 | Fri 4/3/26 |
| 110 | 1.6.2.6 | **CONVEYANCE PROCESS** |  | 43d | 2026-04-03 | 2026-06-03 |  |  |  | 2025-11-10 | 2026-01-22 | 111d | 0d |  | Fri 1/9/26 | Wed 3/25/26 |
| 111 | 1.6.2.6.1 | Water (Flush & Pressure Testing) |  | 5d | 2026-04-06 | 2026-04-10 | 89, 76, 101 |  |  | 2025-11-11 | 2025-11-17 | 0d | 0d |  | Mon 1/12/26 | Fri 1/16/26 |
| 112 | 1.6.2.6.2 | Water Asbuilts (Partial HRS) | milestone | 0d | 2026-04-03 | 2026-04-03 | 89, 76, 101 |  |  | 2025-11-10 | 2025-11-10 | 0d | 14d | 0d | Fri 1/9/26 | Fri 1/9/26 |
| 113 | 1.6.2.6.3 | Sewer (Leakage & Lamping) |  | 5d | 2026-04-15 | 2026-04-21 | 94, 103 |  |  | 2025-12-19 | 2025-12-25 | 0d | 38d | 0d | Thu 2/19/26 | Wed 2/25/26 |
| 114 | 1.6.2.6.4 | Sewer As-Builts | milestone | 0d | 2026-04-03 | 2026-04-03 | 112 |  |  | 2025-11-17 | 2025-11-17 | 0d | 50d | 12d | Fri 1/16/26 | Fri 1/16/26 |
| 115 | 1.6.2.6.5 | Testing (Bacti Samples / Desity Tests) |  | 10d | 2026-04-13 | 2026-04-24 | 111 |  |  | 2025-11-18 | 2025-12-01 | 0d | 0d |  | Mon 1/19/26 | Fri 1/30/26 |
| 116 | 1.6.2.6.6 | Release of Lien |  | 1d | 2026-04-13 | 2026-04-13 | 112, 115SS |  |  | 2025-11-18 | 2025-11-18 | 0d | 9d | 6d | Mon 1/19/26 | Mon 1/19/26 |
| 117 | 1.6.2.6.7 | HRS Certification (Submission) |  | 4w | 2026-04-27 | 2026-05-22 | 111, 112, 115, 116 |  |  | 2025-12-02 | 2025-12-29 | 0d | 0d |  | Mon 2/2/26 | Fri 2/27/26 |
| 118 | 1.6.2.6.8 | DERM Certification (Submittion) |  | 4w | 2026-04-22 | 2026-05-19 | 113, 114, 116 |  |  | 2025-12-26 | 2026-01-22 | 0d | 38d |  | Thu 2/26/26 | Wed 3/25/26 |
| 119 | 1.6.2.6.9 | Water Meter Installation /Owner |  | 3d | 2026-05-25 | 2026-05-27 | 117 |  |  | 2025-12-30 | 2026-01-01 | 0d | 0d |  | Mon 3/2/26 | Wed 3/4/26 |
| 120 | 1.6.2.6.10 | Final Asbuilts (For Close-outs) |  | 5d | 2026-05-28 | 2026-06-03 | 119 |  |  | 2026-01-02 | 2026-01-08 | 0d | 27d |  | Thu 3/5/26 | Wed 3/11/26 |

| ID | WBS | Task | Type | Duration | Start | Finish | Predecessors | Complete | Remaining | Baseline start | Baseline finish | Baseline duration | Total slack | Free slack | Constraint | Contract Start | Contract Finish |
| --- | --- | --- | --- | --- | --- | --- | --- | --- | --- | --- | --- | --- | --- | --- | --- | --- | --- |
| 121 | 1.6.3 | **Shell Construction** |  | 320d | 2025-04-21 A | 2026-07-10 |  | 63% | 119.45d | 2025-04-01 | 2026-03-02 | 150d | 0d |  |  | Mon 6/2/25 | Fri 6/12/26 |
| 122 | 1.6.3.1 | Mobilize |  | 3d | 2025-04-21 A | 2025-04-24 A | 68 | 100% |  | 2025-04-01 | 2025-04-03 | 3d |  |  |  | Mon 6/2/25 | Wed 6/4/25 |
| 123 | 1.6.3.2 | **CONCRETE SCOPE** |  | 34d | 2025-04-24 A | 2025-06-10 A |  | 100% |  | 2025-04-04 | 2025-05-15 | 0d |  |  |  | Thu 6/5/25 | Wed 7/16/25 |
| 124 | 1.6.3.2.1 | Install Footings & Elevator Pits |  | 10d | 2025-04-24 A | 2025-05-08 A | 122 | 100% |  | 2025-04-04 | 2025-04-24 | 15d |  |  |  | Thu 6/5/25 | Wed 6/25/25 |
| 125 | 1.6.3.2.2 | Plumbing UG |  | 21d | 2025-04-24 A | 2025-05-22 A |  | 100% |  |  |  |  |  |  |  | N/A | N/A |
| 126 | 1.6.3.2.3 | Electrical UG |  | 10d | 2025-04-30 A | 2025-05-13 A |  | 100% |  |  |  |  |  |  |  | N/A | N/A |
| 127 | 1.6.3.2.4 | Elevator Pit Waterproofing |  | 6d | 2025-05-09 A | 2025-05-16 A |  | 100% |  |  |  |  |  |  |  | N/A | N/A |
| 128 | 1.6.3.2.5 | **Prep and Pour Building Slab With Private Party Inspector** |  | 17d | 2025-05-19 A | 2025-06-10 A |  | 100% |  | 2025-04-25 | 2025-05-15 | 36d |  |  |  | Thu 6/26/25 | Wed 7/16/25 |
| 129 | 1.6.3.2.5.1 | WEATHER DELAY |  | 2d | 2025-06-03 A | 2025-06-04 A |  | 100% |  |  |  |  |  |  |  |  |  |
| 130 | 1.6.3.2.5.2 | PREP & POUR 1 |  | 12d | 2025-05-19 A | 2025-06-06 A | 129 | 100% |  | 2025-04-25 | 2025-05-01 | 5d |  |  |  | Thu 6/26/25 | Wed 7/2/25 |
| 131 | 1.6.3.2.5.3 | PREP & POUR 2 |  | 3.8d | 2025-05-30 A | 2025-06-10 A | 130 | 100% |  | 2025-05-09 | 2025-05-15 | 5d |  |  |  | Thu 7/10/25 | Wed 7/16/25 |
| 132 | 1.6.3.3 | STEEL DELIVERY - Columns | milestone | 0d | 2025-06-11 A | 2025-06-11 A | 16 | 100% |  | 2025-04-22 | 2025-04-22 | 0d |  |  | start no earlier than 2025-06-11 | Thu 6/12/25 | Thu 6/12/25 |
| 133 | 1.6.3.4 | STEEL DELIVERY - Decking |  | 2d | 2025-06-24 A | 2025-06-25 A |  | 100% |  | 2025-04-22 | 2025-04-22 | 0d |  |  | start no earlier than 2025-06-24 | N/A | N/A |
| 134 | 1.6.3.5 | Steel Core Erection (Roof, 5th, 4th floor, 3rd floor, 2nd Floor) |  | 22.6w | 2025-06-11 A | 2025-11-14 A | 132, 131 | 100% |  | 2025-05-26 | 2025-10-02 | 0d |  |  |  | Thu 7/17/25 | Wed 12/3/25 |
| 135 | 1.6.3.6 | CMU Cores |  | 94d | 2025-06-26 A | 2025-11-05 A | 131SS+10d | 100% |  | 2025-05-14 | 2025-09-09 | 0d |  |  |  |  | Mon 11/10/25 |
| 136 | 1.6.3.7 | Pour 2nd , 3rd Floor slabs |  | 19d | 2025-07-21 A | 2025-08-14 A | 134SS | 100% |  | 2025-09-05 | 2025-10-06 | 0d |  |  | start no earlier than 2025-08-31 | Tue 7/15/25 | Fri 12/5/25 |
| 137 | 1.6.3.8 | X Bracing and Misc Connections |  | 6d | 2025-07-17 A | 2025-11-26 A | 134 | 100% |  | 2025-10-03 | 2025-10-23 | 10d |  |  | start no earlier than 2023-11-22 | Thu 12/4/25 | Wed 12/24/25 |
| 138 | 1.6.3.9 | Pour 4th, 5th floor slab and roof deck |  | 30d | 2025-09-03 A | 2025-10-14 A | 136FS+13d | 100% |  | 2025-10-07 | 2025-11-11 | 0d |  |  |  | Mon 12/8/25 | Mon 1/12/26 |
| 139 | 1.6.3.10 | Exterior Framing / Sheathing |  | 80d | 2025-08-08 A | 2026-03-12 A | 136 | 100% |  | 2025-10-07 | 2025-12-15 | 20d |  |  | finish no earlier than 2026-02-06 | Mon 12/8/25 | Fri 2/13/26 |
| 140 | 1.6.3.11 | WEATHER DELAY |  | 1d | 2025-09-10 A | 2025-09-10 A |  | 100% |  |  |  |  |  |  |  | N/A | N/A |
| 141 | 1.6.3.12 | Fireproofing Steel Members Floors 1 - 4 |  | 95d | 2025-09-17 A | 2026-01-27 A | 138SS+10d | 100% |  |  |  |  |  |  |  | N/A | N/A |
| 142 | 1.6.3.13 | WEATHER DELAY |  | 1d | 2025-09-18 A | 2025-09-18 A |  | 100% |  |  |  |  |  |  |  | N/A | N/A |
| 143 | 1.6.3.14 | Interior LGF Framing |  | 16w | 2025-07-24 A | 2026-03-10 A | 134 | 100% |  | 2015-10-03 | 2026-01-22 | 15d |  |  | start no earlier than 2024-02-23 | Thu 12/4/25 | Wed 3/25/26 |
| 144 | 1.6.3.15 | WEATHER DELAY |  | 2d | 2026-01-12 A | 2026-01-13 A |  | 100% |  |  |  |  |  |  |  | N/A | N/A |
| 145 | 1.6.3.16 | Install Roofing |  | 37d | 2025-12-18 A | 2026-02-06 A | 150FS+5d | 100% |  | 2025-11-12 | 2025-12-09 | 0d |  |  |  | Tue 1/13/26 | Mon 2/9/26 |
| 146 | 1.6.3.17 | Fireproofing - 5th Floor Deck & Steel Members |  | 18d | 2026-02-25 A | 2026-03-20 | 145FS+10d | 80% | 3.6d |  |  |  | 65d | 0d |  | N/A | N/A |
| 147 | 1.6.3.18 | Exterior Finishes |  | 50d | 2026-03-09 A | 2026-05-15 | 139FS-4d |  | 50d | 2025-12-02 | 2025-02-09 | 15d | 15d | 0d |  | Mon 2/2/26 | Fri 4/10/26 |
| 148 | 1.6.3.19 | Hallway System Material Delivery - 2nd & 3rd Floor |  | 2d | 2026-01-14 A | 2026-01-15 A |  | 100% |  |  |  |  |  |  |  | N/A | N/A |
| 149 | 1.6.3.20 | Hallway System (By Owner) |  | 18w | 2026-01-19 A | 2026-05-22 | 134FS+45d | 35% | 11.7w | 2025-09-05 | 2026-02-26 | 0d | 35d |  |  | Thu 11/6/25 | Wed 4/29/26 |
| 150 | 1.6.3.21 | Fire Sprinkler Overhead |  | 16d | 2025-08-04 A | 2025-12-12 A | 136 | 100% |  | 2025-10-07 | 2025-11-17 | 20d |  |  |  | Mon 12/8/25 | Fri 1/16/26 |
| 151 | 1.6.3.22 | HVAC Ductwork |  | 16w | 2025-11-27 A | 2026-04-10 | 146FF+15d | 80% | 3.2w |  |  |  | 65d |  |  | N/A | N/A |
| 152 | 1.6.3.23 | Schindler Mobilization Delay - Communicated on 02/20 |  | 5d | 2026-02-23 A | 2026-02-27 A |  | 100% |  |  |  |  |  |  |  | N/A | N/A |
| 153 | 1.6.3.24 | Install Elevators |  | 10w | 2026-03-02 A | 2026-05-08 | 145FS+10d, 152 | 40% | 6w | 2025-12-15 | 2026-02-20 | 0d | 9d | 0d |  | Fri 2/13/26 | Thu 4/23/26 |
| 154 | 1.6.3.25 | Install electrical OH fixtures |  | 30d | 2026-03-11 A | 2026-04-21 | 143 | 60% | 12d | 2026-01-02 | 2026-02-26 | 15d | 58d | 0d |  | Thu 3/5/26 | Wed 4/29/26 |
| 155 | 1.6.3.26 | Install Rooftop Units |  | 10d | 2026-03-30 | 2026-04-10 | 145FS+8d, 146FS+5d |  |  | 2025-12-10 | 2025-12-23 | 3d | 65d |  |  | Tue 2/10/26 | Mon 2/23/26 |
| 156 | 1.6.3.27 | Install FA System |  | 35d | 2026-03-18 | 2026-05-05 | 154SS+5d |  |  | 2026-01-09 | 2026-01-29 | 0d | 48d |  |  | Thu 3/12/26 | Wed 4/29/26 |
| 157 | 1.6.3.28 | Exterior Storefront& Windows, & Louvers |  | 25d | 2026-04-02 | 2026-05-06 | 31 |  |  | 2025-12-16 | 2026-01-19 | 15d | 47d | 32d |  | Mon 2/16/26 | Fri 3/20/26 |
| 158 | 1.6.3.29 | Misc. Exterior Items |  | 25d | 2026-05-18 | 2026-06-19 | 147 |  |  | 2026-01-27 | 2026-03-02 | 15d | 15d | 0d |  | Mon 3/30/26 | Fri 5/1/26 |
| 159 | 1.6.3.30 | Delay - FPL Tranformer (On Going) |  | 125d | 2025-10-01 A | 2026-03-24 |  |  | 125d |  |  |  | 16d | 0d |  | N/A | N/A |
| 160 | 1.6.3.31 | Install Transformer (Owner) |  | 5d | 2026-03-25 | 2026-03-31 | 96, 159, 71 |  |  | 2025-09-30 | 2025-10-06 | 2d | 16d | 0d |  | Mon 12/1/25 | Fri 12/5/25 |
| 161 | 1.6.3.32 | Temp For Test |  | 5d | 2026-04-08 | 2026-04-14 | 154SS, 160FS+5d |  |  | 2026-01-02 | 2026-01-08 | 5d | 16d | 0d |  | Thu 3/5/26 | Wed 3/11/26 |
| 162 | 1.6.3.33 | Install Electric Meter |  | 1d | 2026-04-22 | 2026-04-22 | 161FS+5d |  |  | 2026-01-16 | 2026-01-16 | 1d | 16d | 0d |  | Thu 3/19/26 | Thu 3/19/26 |
| 163 | 1.6.3.34 | Shell Completion | milestone | 0d | 2026-06-19 | 2026-06-19 | 157, 158, 162, 153 |  |  | 2026-03-02 | 2026-03-02 | 1d | 15d |  |  | Fri 5/1/26 | Fri 5/1/26 |

Notes:
- 130: Based on Original Pour Schedule
- 131: Based on Original Pour Schedule

| ID | WBS | Task | Type | Duration | Start | Finish | Predecessors | Complete | Remaining | Baseline start | Baseline finish | Baseline duration | Total slack | Free slack | Constraint | Contract Start | Contract Finish |
| --- | --- | --- | --- | --- | --- | --- | --- | --- | --- | --- | --- | --- | --- | --- | --- | --- | --- |
| 164 | 1.6.3.35 | **Offices** |  | 202d | 2025-07-30 A | 2026-05-07 |  | 53% | 94.65d | 2025-09-02 | 2026-01-08 | 118d | 46d |  |  | Mon 9/8/25 | Wed 3/11/26 |
| 165 | 1.6.3.35.1 | Install of HVAC & Fans |  | 1d | 2026-02-09 A | 2026-02-09 A | 145FS+1d | 100% |  | 2025-09-02 | 2025-09-02 | 0d |  |  | start no earlier than 2020-12-14 | Mon 9/8/25 | Mon 9/8/25 |
| 166 | 1.6.3.35.2 | MEP HookUp HVAC Units |  | 10d | 2026-02-10 A | 2026-02-23 A | 165 | 100% |  | 2025-09-03 | 2025-09-16 | 0d? |  |  | finish no earlier than 2021-01-05 | Tue 9/9/25 | Mon 9/22/25 |
| 167 | 1.6.3.35.3 | Start-Up RTUs | milestone | 0d | 2026-04-14 | 2026-04-14 | 161, 166FS+2w |  |  | 2026-01-08 | 2026-01-08 | 0d? | 55d | 0d |  | Wed 3/11/26 | Wed 3/11/26 |
| 168 | 1.6.3.35.4 | T&B |  | 3d | 2026-04-16 | 2026-04-20 | 167FS+1d |  |  |  |  |  | 55d | 0d |  | N/A | N/A |
| 169 | 1.6.3.35.5 | Layout Walls | milestone | 0d | 2025-07-30 A | 2025-08-01 A | 134 | 100% |  | 2025-10-03 | 2025-10-06 | 1d |  |  | start no earlier than 2020-11-25 | Thu 12/4/25 | Fri 12/5/25 |
| 170 | 1.6.3.35.6 | Trench Slab |  | 3d | 2025-08-04 A | 2025-08-06 A | 169 | 100% |  | 2025-10-07 | 2025-10-09 | 0d |  |  |  | Mon 12/8/25 | Wed 12/10/25 |
| 171 | 1.6.3.35.7 | Plumbing & Electrical UG |  | 5d | 2025-08-07 A | 2025-08-13 A | 170 | 100% |  | 2025-10-10 | 2025-10-16 | 0d |  |  |  | Thu 12/11/25 | Wed 12/17/25 |
| 172 | 1.6.3.35.8 | Trench Pourback |  | 3d | 2025-08-14 A | 2025-08-18 A | 171 | 100% |  | 2025-10-17 | 2025-10-21 | 0d |  |  |  | Thu 12/18/25 | Mon 12/22/25 |
| 173 | 1.6.3.35.9 | Framing |  | 10d | 2025-08-19 A | 2025-09-01 A | 172, 176SS+1d | 100% |  | 2025-10-22 | 2025-11-04 | 10d |  |  | finish no earlier than 2020-12-10 | Tue 12/23/25 | Mon 1/5/26 |
| 174 | 1.6.3.35.10 | Electrical Rough |  | 5d | 2025-08-26 A | 2025-09-01 A | 173SS+5d | 100% |  | 2025-10-29 | 2025-11-04 | 0d |  |  |  | Tue 12/30/25 | Mon 1/5/26 |
| 175 | 1.6.3.35.11 | Rough Plumbing |  | 5d | 2025-08-26 A | 2025-09-01 A | 173SS+5d | 100% |  | 2025-10-29 | 2025-11-04 | 0d |  |  |  | Tue 12/30/25 | Mon 1/5/26 |
| 176 | 1.6.3.35.12 | Overhead MEP Rough |  | 45d | 2025-08-04 A | 2025-10-24 A | 171SS | 100% |  | 2025-10-07 | 2025-10-20 | 10d |  |  | finish no earlier than 2020-12-21 | Mon 12/8/25 | Fri 12/19/25 |
| 177 | 1.6.3.35.13 | MEP In-wall Rough |  | 5d | 2025-08-04 A | 2025-12-19 A | 173SS+5d | 100% |  | 2025-10-29 | 2025-11-04 | 8d |  |  | finish no earlier than 2020-12-17 | Tue 12/30/25 | Mon 1/5/26 |
| 178 | 1.6.3.35.14 | Inwall Inspection |  | 1d | 2026-01-23 A | 2026-01-23 A | 177FS+25d | 100% |  | 2025-11-04 | 2025-11-04 | 0d |  |  | finish no earlier than 2020-12-14 | Mon 1/5/26 | Mon 1/5/26 |
| 179 | 1.6.3.35.15 | Double Side walls |  | 15d | 2026-03-23 | 2026-04-10 | 178SS+30d, 146 |  |  | 2025-11-05 | 2025-11-18 | 10d | 65d | 0d | finish no earlier than 2020-12-28 | Tue 1/6/26 | Mon 1/19/26 |
| 180 | 1.6.3.35.16 | Tape / Finish Walls |  | 15d | 2026-03-30 | 2026-04-17 | 179SS+5d |  |  | 2025-11-12 | 2025-11-25 | 8d | 21d | 0d |  | Tue 1/13/26 | Mon 1/26/26 |
| 181 | 1.6.3.35.17 | Install Door Frames |  | 5d | 2026-04-13 | 2026-04-17 | 180FF |  |  | 2025-11-19 | 2025-11-25 | 5d | 53d | 0d | finish no earlier than 2021-01-05 | Tue 1/20/26 | Mon 1/26/26 |
| 182 | 1.6.3.35.18 | Paint walls (Prime) |  | 3d | 2026-04-13 | 2026-04-15 | 180SS+10d |  |  | 2025-11-17 | 2025-11-19 | 5d | 21d | 0d | finish no earlier than 2021-01-08 | Fri 1/16/26 | Tue 1/20/26 |
| 183 | 1.6.3.35.19 | Ceiling Grid |  | 3d | 2026-04-16 | 2026-04-20 | 182 |  |  | 2025-11-20 | 2025-11-24 | 5d | 21d | 0d | finish no earlier than 2021-01-12 | Wed 1/21/26 | Fri 1/23/26 |
| 184 | 1.6.3.35.20 | Final Paint |  | 3d | 2026-04-21 | 2026-04-23 | 183 |  |  | 2025-11-25 | 2025-11-27 | 0d? | 56d |  | finish no earlier than 2021-02-04 | Mon 1/26/26 | Wed 1/28/26 |
| 185 | 1.6.3.35.21 | Fire Sprinkler Drops |  | 5d | 2026-04-21 | 2026-04-27 | 183SS+3d |  |  | 2025-11-25 | 2025-12-01 | 8d | 54d |  | finish no earlier than 2021-01-18 | Mon 1/26/26 | Fri 1/30/26 |
| 186 | 1.6.3.35.22 | Install Lights |  | 5d | 2026-04-21 | 2026-04-27 | 183SS+3d |  |  | 2025-11-25 | 2025-12-01 | 5d | 52d | 0d | finish no earlier than 2021-01-19 | Mon 1/26/26 | Fri 1/30/26 |
| 187 | 1.6.3.35.23 | Flooring |  | 7d | 2026-04-20 | 2026-04-28 | 181 |  |  | 2025-11-26 | 2025-12-04 | 10d | 53d | 0d | finish no earlier than 2021-01-26 | Tue 1/27/26 | Wed 2/4/26 |
| 188 | 1.6.3.35.24 | Install Millwork |  | 3d | 2026-04-22 | 2026-04-24 | 187SS+2d |  |  | 2025-11-28 | 2025-12-02 | 5d | 46d | 0d |  | Thu 1/29/26 | Mon 2/2/26 |
| 189 | 1.6.3.35.25 | MEP Trim Out |  | 3d | 2026-04-20 | 2026-04-22 | 183FF+2d |  |  | 2025-11-24 | 2025-11-26 | 7d | 21d | 5d | finish no earlier than 2021-02-04 | Fri 1/23/26 | Tue 1/27/26 |
| 190 | 1.6.3.35.26 | Install Plumbing Fixtures |  | 3d | 2026-04-23 | 2026-04-27 | 188SS+1d |  |  | 2025-12-01 | 2025-12-03 | 5d | 46d | 0d | finish no earlier than 2021-01-29 | Fri 1/30/26 | Tue 2/3/26 |
| 191 | 1.6.3.35.27 | Install Doors & Hardware |  | 3d | 2026-04-23 | 2026-04-27 | 186SS, 187SS+3d |  |  | 2025-12-01 | 2025-12-03 | 7d | 54d |  | finish no earlier than 2021-02-04 | Fri 1/30/26 | Tue 2/3/26 |
| 192 | 1.6.3.35.28 | Drop Ceiling tile |  | 3d | 2026-04-27 | 2026-04-29 | 186FF+2d |  |  | 2025-12-01 | 2025-12-03 | 4d | 52d |  | finish no earlier than 2021-01-21 | Fri 1/30/26 | Tue 2/3/26 |
| 193 | 1.6.3.35.29 | Install Toilet Partitions |  | 3d | 2026-05-05 | 2026-05-07 | 190FS+5d |  |  | 2025-12-02 | 2025-12-04 | 3d | 46d |  | finish no earlier than 2021-02-01 | Mon 2/2/26 | Wed 2/4/26 |

| ID | WBS | Task | Duration | Start | Finish | Predecessors | Baseline start | Baseline finish | Baseline duration | Total slack | Free slack | Contract Start | Contract Finish |
| --- | --- | --- | --- | --- | --- | --- | --- | --- | --- | --- | --- | --- | --- |
| 195 | 1.6.3.36 | **Final Inspections** | 63d | 2026-04-15 | 2026-07-10 |  | 2025-11-27 | 2026-04-13 | 13d | 0d |  | Wed 1/28/26 | Fri 6/19/26 |
| 197 | 1.6.3.36.1 | Final Mechanical | 1d | 2026-04-24 | 2026-04-24 | 168FS+3d | 2025-11-27 | 2025-11-27 | 0d | 55d |  | Wed 1/28/26 | Wed 1/28/26 |
| 198 | 1.6.3.36.2 | Photometric Inspection / Certification | 3d | 2026-04-15 | 2026-04-17 | 103 | 2026-01-29 | 2026-02-02 | 0d | 26d | 17d | Mon 5/4/26 | Wed 5/6/26 |
| 199 | 1.6.3.36.3 | Fire Pump Certification | 5d | 2026-04-23 | 2026-04-29 | 91, 162 | 2026-01-19 | 2026-01-23 | 0d | 16d | 0d | Thu 3/12/26 | Wed 3/18/26 |
| 200 | 1.6.3.36.4 | Final Sprinkler | 1d | 2026-04-30 | 2026-04-30 | 189, 199 | 2026-01-26 | 2026-01-26 | 0d | 16d | 7d | Thu 3/19/26 | Thu 3/19/26 |
| 201 | 1.6.3.36.5 | Final Fire Alarm | 1d | 2026-05-11 | 2026-05-11 | 189, 153 |  |  |  | 9d | 0d | N/A | N/A |
| 202 | 1.6.3.36.6 | Final Fire | 1d | 2026-05-12 | 2026-05-12 | 200, 201 | 2026-02-26 | 2026-02-26 | 0d | 9d | 0d | Tue 5/12/26 | Tue 5/12/26 |
| 203 | 1.6.3.36.7 | Final Electrical - (Fire Life Safety Approval Requiered) | 3d | 2026-05-13 | 2026-05-15 | 189, 198, 153, 131, 202 | 2026-02-23 | 2026-02-25 | 0d | 9d |  | Thu 5/7/26 | Mon 5/11/26 |
| 204 | 1.6.3.36.8 | Final Plumbing | 1d | 2026-05-28 | 2026-05-28 | 189, 119 | 2026-01-02 | 2026-01-02 | 0d | 0d |  | Tue 4/7/26 | Tue 4/7/26 |
| 205 | 1.6.3.36.9 | Final Building | 1d | 2026-05-29 | 2026-05-29 | 203, 204 | 2026-02-27 | 2026-02-27 | 0d | 0d |  | Wed 5/13/26 | Wed 5/13/26 |
| 206 | 1.6.3.36.10 | Final Zoning | 1d | 2026-06-01 | 2026-06-01 | 205, 108 | 2026-03-02 | 2026-03-02 | 0d | 0d |  | Thu 5/14/26 | Thu 5/14/26 |
| 207 | 1.6.3.36.11 | Public Works Release (DERM) | 1d | 2026-06-01 | 2026-06-01 | 205, 109 | 2026-03-02 | 2026-03-02 | 0d | 0d |  | Thu 5/14/26 | Thu 5/14/26 |
| 208 | 1.6.3.36.12 | Obtain Certificate of Completion | 10d | 2026-06-02 | 2026-06-15 | 206, 207 | 2026-03-03 | 2026-03-16 | 0d | 0d |  | Fri 5/15/26 | Thu 5/28/26 |
| 209 | 1.6.3.36.13 | PCCO #009 - Veneer Window Attachment Changes | 5d | 2026-06-16 | 2026-06-22 | 208 |  |  |  | 14d |  | 05/29/2026 | 06/05/2026 |
| 210 | 1.6.3.36.14 | Weather Delay Allowance | 14d | 2026-06-23 | 2026-07-10 | 208FS+5d, 129 | 2026-03-17 | 2026-04-13 | 0d | 0d |  | 06/08/2026 | 06/24/2026 |
