# Public Storage at Marksheffel and Barnes 3/7/25

Schedule from Primavera P6, 2024-07-18 to 2026-01-05, data date 2025-03-07, A marks actual dates.

## Calendars

- WEO 5-Day Work Week with Holidays: Mon-Fri 08:00-12:00, 13:00-17:00; Sat-Sun off. Exceptions (off unless hours are given): 2024-09-02, 2024-11-28 to 2024-11-29, 2024-12-25, 2025-01-01, 2025-05-26, 2025-07-04, 2025-09-01, 2025-11-27 to 2025-11-28, 2025-12-25, 2026-01-01.

## Schedule

| ID | WBS | Activity | Type | Duration | Start | Finish | Predecessors | Complete | Planned start | Planned finish | Total float | Constraint | Responsibilities |
| --- | --- | --- | --- | --- | --- | --- | --- | --- | --- | --- | --- | --- | --- |
|  | 691056193 | **Project Summary** |  |  | 2024-07-18 | 2026-01-05 |  |  |  |  |  |  |  |
|  | 691056493 | **Contract Milestones** |  |  | 2024-07-18 | 2026-01-05 |  |  |  |  |  |  |  |
| 33172 |  | Proposals/Bids Due | milestone | 0d | 2024-07-18 A | 2024-07-18 A |  | 100% |  |  |  | start on 2024-07-18 |  |
| 33182 |  | Interviews | milestone | 0d | 2024-07-22 A | 2024-07-22 A |  | 100% |  |  |  | start on 2024-07-22 |  |
| 33192 |  | Award Contract | milestone | 0d | 2024-07-26 A | 2024-07-26 A |  | 100% |  |  |  | start on 2024-07-26 |  |
| NTP |  | Initial Notice to Proceed - Site Not in Compliance Per Contract | milestone | 0d | 2025-01-14 A | 2025-01-14 A | 34992 | 100% |  |  |  | start on 2025-01-14 | Owner |
| SC |  | Project SC - Before Weather Impacts | milestone | 0d | 2025-12-03 | 2025-12-03 | 1113 |  |  |  | 0d |  | WEO |
| PSC |  | Project Substantially Complete - After Weather Impacts | milestone | 0d | 2025-12-16 | 2025-12-16 | SC, 1027 |  |  |  | 0d |  | WEO |
| PSC0001 |  | Operational Setup |  | 12d | 2025-12-17 | 2026-01-05 | PSC |  |  |  | 0d |  | Owner |
| PSC0002 |  | Project Open | milestone | 0d | 2026-01-05 | 2026-01-05 | PSC0001 |  |  |  | 0d |  | Owner |
|  | 691056293 | **Construction Milestones** |  |  | 2025-01-21 | 2025-11-04 |  |  |  |  |  |  |  |
| 1004 |  | Permit Approved | milestone | 0d | 2025-01-21 A | 2025-01-21 A | NTP FS+2d | 100% | 2025-01-22 | 2025-01-22 |  | start on 2025-01-21 | Architect |
| 1005 |  | Start Construction | milestone | 0d | 2025-01-22 A | 2025-01-22 A | NTP, 32932 SS | 100% |  |  |  |  | WEO |
| 1007 |  | Start of Foundations | milestone | 0d | 2025-03-17 | 2025-03-17 | 32932 SS, 35012 SS |  |  |  | 204d |  | WEO |
| 1012 |  | Stair Cores Complete to Roof | milestone | 0d | 2025-05-05 | 2025-05-05 | 35153 |  |  |  | 168d |  | WEO |
| 1008 |  | Start of Elevated Structure | milestone | 0d | 2025-05-09 | 2025-05-09 | 33283 SS |  |  |  | 165d |  | WEO |
| 1010 |  | Structure Complete | milestone | 0d | 2025-07-25 | 2025-07-25 | 1066 |  |  |  | 111d |  | WEO |
| 1016 |  | Building Dry In | milestone | 0d | 2025-08-22 | 2025-08-22 | 1075, 33372, 33412, 33452 |  |  |  | 91d |  | WEO |
| 1015 |  | Exterior Work Complete | milestone | 0d | 2025-11-04 | 2025-11-04 | 1189, 1131 |  |  |  | 40d |  | WEO |
|  | 691103693 | **Schedule Impacts** |  |  | 2025-01-14 | 2025-12-16 |  |  |  |  |  |  |  |
|  | 691103793 | **Weather Delays** |  |  | 2025-12-03 | 2025-12-16 |  |  |  |  |  |  |  |
| 1027 |  | Contract Weather Days - 10 Days |  | 10d | 2025-12-03 | 2025-12-16 | SC |  |  |  | 0d |  |  |
|  | 691104193 | **Project Impacts** |  |  | 2025-01-14 | 2025-04-17 |  |  |  |  |  |  |  |
|  | 691105393 | **Owner Scope Impacts** |  |  | 2025-01-14 | 2025-04-17 |  |  |  |  |  |  |  |
|  | 691105693 | **Pond Construction By Owner** |  |  | 2025-01-20 | 2025-04-17 |  |  |  |  |  |  |  |
| 35668 |  | Pond Construction Per Owner |  | 40d | 2025-01-20 A | 2025-03-05 A | 35726 | 100% | 2025-01-09 | 2025-03-05 |  |  |  |
| 35686 |  | Pond Contractor Permit Pulled |  | 1d | 2025-03-06 A | 2025-03-06 A | 35668 | 100% |  |  |  | start on or after 2025-03-06 |  |
| 35676 |  | Pond Construction by Owner |  | 30d | 2025-03-07 | 2025-04-17 | 35686 |  |  |  | 180d |  |  |

| ID | WBS | Activity | Type | Duration | Start | Finish | Predecessors | Complete | Remaining | Planned start | Planned finish | Total float | Free float | Constraint | Responsibilities |
| --- | --- | --- | --- | --- | --- | --- | --- | --- | --- | --- | --- | --- | --- | --- | --- |
|  | 691105793 | **BMP Installation and Certification By Owner** |  |  | 2025-01-20 | 2025-02-12 |  |  |  |  |  |  |  |  |  |
| 35706 |  | Repair and Install BMPS By Owner (not completed by owner) |  | 25d | 2025-01-20 A | 2025-02-12 A | 35726, 35846 SF | 100% |  | 2025-01-09 | 2025-02-12 |  |  |  |  |
|  | 691108893 | **Impacts Correspondence** |  |  | 2025-01-14 | 2025-01-30 |  |  |  |  |  |  |  |  |  |
| 35926 |  | W.E.O. Notification of Delayed Mobilization Due to Weather |  | 1d | 2025-01-14 A | 2025-01-14 A |  | 100% |  |  |  |  |  | start on or after 2025-01-14 |  |
| 35946 |  | Initial NTP From Owner |  | 1d | 2025-01-14 A | 2025-01-14 A |  | 100% |  |  |  |  |  | start on or after 2025-01-14 |  |
| 35956 |  | W.E.O. Notification of Site Condition Impacting start of work |  | 1d | 2025-01-22 A | 2025-01-22 A |  | 100% |  |  |  |  |  | start on or after 2025-01-22 |  |
| 35966 |  | W.E.O. Notification of Continued Site Impacts |  | 1d | 2025-01-28 A | 2025-01-28 A |  | 100% |  |  |  |  |  | start on or after 2025-01-28 |  |
| 35976 |  | W.E.O. Notification of Erosion Control and Pond Work Impacts |  | 1d | 2025-01-30 A | 2025-01-30 A |  | 100% |  |  |  |  |  |  |  |
|  | 691106093 | **Owner Over-Ex and Pad Certification By Owner** |  |  | 2025-01-16 | 2025-01-16 |  |  |  |  |  |  |  |  |  |
| 35726 |  | Owner Over-Ex Complete and Pad Ceritification Emaiol |  | 1d | 2025-01-16 A | 2025-01-16 A |  | 100% |  | 2025-01-08 | 2025-01-08 |  |  | start on or after 2025-01-08 |  |
|  | 691060893 | **Pre-Construciton** |  |  | 2024-07-26 | 2025-04-11 |  |  |  |  |  |  |  |  |  |
|  | 691060793 | **Procurement** |  |  | 2024-07-26 | 2025-04-11 |  |  |  |  |  |  |  |  |  |
| 34952 |  | Contracting of Early Trades |  | 128d | 2024-07-26 A | 2025-01-28 A | 33192 | 100% |  |  |  |  |  |  | WEO |
| 32912 |  | Elevator (By Owner) |  | 166d | 2024-08-16 A | 2025-04-11 | 34952 | 84% | 26d |  |  | 117d | 103d |  | Elevator |
| 32922 |  | Electric Room MDP |  | 165d | 2024-08-16 A | 2025-04-10 | 34952 | 85% | 25d |  |  | 68d | 63d |  | Electrician |
| 34992 |  | Owner's Enabling Contract Work |  | 96d | 2024-08-26 A | 2025-01-13 A |  | 100% |  |  |  |  |  | start on 2024-08-26 | Owner |
|  | 691108693 | **Additional Scope Per Owner - Required For Project Start** |  |  | 2025-02-03 | 2025-03-14 |  |  |  |  |  |  |  |  |  |
|  | 691107793 | **W.E. O'Neil BMP Install and Permitting - Owner Approved** |  |  | 2025-02-13 | 2025-03-14 |  |  |  |  |  |  |  |  |  |
| 35846 |  | Owner Approval/Direction To Install Stormwater BMP's (OAC Meeting) |  | 1d | 2025-02-13 A | 2025-02-13 A | 35976 | 100% |  |  |  |  |  | start on 2025-02-13 |  |
| 35856 |  | W.E. O'neil Subcontractor Agreements |  | 7d | 2025-02-14 A | 2025-02-24 A | 35846 | 100% |  |  |  |  |  |  |  |
| 35876 |  | BMP Install |  | 3d | 2025-02-25 A | 2025-02-27 A | 35856, 35896 | 100% |  |  |  |  |  |  |  |
| 35886 |  | CSU Stormwater Permitting |  | 15d | 2025-02-25 A | 2025-03-14 | 35856 | 60% | 6d | 2025-02-25 | 2025-03-17 | 0d |  |  |  |
| 35866 |  | CSU Stormwater Inspection | milestone | 0d | 2025-03-14 | 2025-03-14 | 35876, 35886, 36016 |  |  |  |  | 0d |  |  |  |
|  | 691107893 | **W.E. O'Neil Site Prep - Owner Approved** |  |  | 2025-02-03 | 2025-02-20 |  |  |  |  |  |  |  |  |  |
| 35906 |  | Owner Approval/Direction to Grade Site Per GEC (Email - 2/3) |  | 1d | 2025-02-03 A | 2025-02-03 A | 35976 | 100% |  |  |  |  |  | start on or after 2025-02-03 |  |
| 35896 |  | Grading per GEC Plan |  | 12d | 2025-02-05 A | 2025-02-10 A | 35906 | 100% |  | 2025-02-05 | 2025-02-20 |  |  | start on or after 2025-02-05 |  |
| 35986 |  | Cold Weather Delay (High below freezing) |  | 4d | 2025-02-11 A | 2025-02-14 A | 35896 | 100% |  |  |  |  |  |  |  |
| 35996 |  | Grading Per GEC Plan Continued |  | 1d | 2025-02-17 A | 2025-02-17 A | 35986 | 100% |  |  |  |  |  |  |  |
| 36006 |  | Cold Weather Delay (High Below Freezing |  | 2d | 2025-02-18 A | 2025-02-19 A | 35996 | 100% |  |  |  |  |  |  |  |
| 36016 |  | Grading Per GEC Plan Continued |  | 1d | 2025-02-20 A | 2025-02-20 A | 36006 | 100% |  |  |  |  |  |  |  |

| ID | WBS | Activity | Duration | Start | Finish | Predecessors | Complete | Remaining | Planned start | Planned finish | Total float | Free float | Constraint | Responsibilities |
| --- | --- | --- | --- | --- | --- | --- | --- | --- | --- | --- | --- | --- | --- | --- |
|  | 691065093 | **Construction** |  | 2025-01-22 | 2025-12-05 |  |  |  |  |  |  |  |  |  |
|  | 691080993 | **Mobilization** |  | 2025-01-22 | 2025-01-28 |  |  |  |  |  |  |  |  |  |
| 32932 |  | Mobilization and Survey | 5d | 2025-01-22 A | 2025-01-28 A | NTP, 34992, 1004 | 100% |  |  |  |  |  |  | WEO |
|  | 691061993 | **Site Development** |  | 2025-02-17 | 2025-09-08 |  |  |  |  |  |  |  |  |  |
|  | 691098893 | **Site Infrastructure** |  | 2025-03-17 | 2025-04-15 |  |  |  |  |  |  |  |  |  |
| 35273 |  | Install Sewer | 4d | 2025-03-17 | 2025-03-20 | 32932, 35866 |  |  |  |  | 182d | 0d |  | Site Utilities - Wet |
| 33092 |  | Install Domestic Water and Fire | 5d | 2025-03-21 | 2025-03-27 | 35273 |  |  |  |  | 182d | 0d |  |  |
| 33102 |  | Install Storm Main (Pond to STA: 2+42.32) | 8d | 2025-03-28 | 2025-04-08 | 33092 |  |  |  |  | 182d | 0d |  |  |
| 1050 |  | Install Storm Secondary | 5d | 2025-04-09 | 2025-04-15 | 33102 |  |  |  |  | 182d |  |  |  |
|  | 691098993 | **Site Civil** |  | 2025-02-17 | 2025-09-08 |  |  |  |  |  |  |  |  |  |
| 1053 |  | Electrical Main Conduit and Transformer Prep (PRECONSTRUCTION) | 1d | 2025-02-17 A | 2025-02-17 A | 32932 | 100% |  |  |  |  |  | start on or after 2025-02-17 |  |
| 1055 |  | CSU Electrical Inspection | 1d | 2025-02-18 A | 2025-02-18 A | 1053 | 100% |  |  |  |  |  |  |  |
| 35433 |  | Electrical Trench Backfill and Recompaction | 2d | 2025-02-19 A | 2025-02-20 A | 1055 | 100% |  |  |  |  |  |  |  |
| 1054 |  | Transformer Installation (By CSU - Lead Time Scheduling Included) | 12d | 2025-02-21 A | 2025-03-17 | 35433 | 42% | 7d | 2025-02-21 | 2025-03-10 | 131d | 117d |  |  |
| 35283 |  | Electrical Main to Building | 5d | 2025-09-02 | 2025-09-08 | 1054, 33422 |  |  |  |  | 14d | 0d |  |  |
|  | 691099993 | **Paving** |  | 2025-04-28 | 2025-06-10 |  |  |  |  |  |  |  |  |  |
| 35313 |  | Survey - Trash Enclosure | 1d | 2025-04-28 | 2025-04-28 | 35143 |  |  |  |  | 132d | 0d |  |  |
| 35323 |  | Excavate - Trash Enclosure | 1d | 2025-04-29 | 2025-04-29 | 35313 |  |  |  |  | 132d | 0d |  |  |
| 35333 |  | FRPS Footer - Trash Enclosure | 3d | 2025-04-30 | 2025-05-02 | 35323 |  |  |  |  | 132d | 0d |  |  |
| 35343 |  | FRPS Stem Wall - Trash Enclosure | 3d | 2025-05-05 | 2025-05-07 | 35333 |  |  |  |  | 132d | 0d |  |  |
| 35353 |  | Backfill and compact - Trash Enclosure | 1d | 2025-05-08 | 2025-05-08 | 35343 |  |  |  |  | 132d | 0d |  |  |
| 35363 |  | Survey - Grid Line K, South | 1d | 2025-05-09 | 2025-05-09 | 35353 |  |  |  |  | 132d | 0d |  |  |
| 35373 |  | Finish Grade - Grid Line K, South | 3d | 2025-05-12 | 2025-05-14 | 35363 |  |  |  |  | 132d | 0d |  |  |
| 35383 |  | FRPS Curb and gutter - Grid Line K, South | 4d | 2025-05-15 | 2025-05-20 | 35373 |  |  |  |  | 132d | 0d |  |  |
| 35384 |  | FRPS Sidewalk and Ballards - Grid Line K, South | 3d | 2025-05-21 | 2025-05-23 | 35383 |  |  |  |  | 154d |  |  |  |
| 35393 |  | Survey - Grid Line K, North | 1d | 2025-05-21 | 2025-05-21 | 35383 |  |  |  |  | 137d | 0d |  |  |
| 35403 |  | Finish Grade - Grid Line K, North | 2d | 2025-05-22 | 2025-05-23 | 35393 |  |  |  |  | 137d | 0d |  |  |
| 35413 |  | FRPS Curb, Gutter and Trash Enclosure Slab - Grid Line K, North | 4d | 2025-05-27 | 2025-05-30 | 35403 |  |  |  |  | 137d | 0d |  |  |
| 35414 |  | FRPS Sidewalk and Ballards - Grid Line K, North | 3d | 2025-06-02 | 2025-06-04 | 35413 |  |  |  |  | 137d | 0d |  |  |
| 35423 |  | Asphalt Bottom Mat | 2d | 2025-06-05 | 2025-06-06 | 35413, 35414 |  |  |  |  | 137d | 0d |  |  |
| 36026 |  | Asphalt Patch and Top Mat | 2d | 2025-06-09 | 2025-06-10 | 35423 |  |  |  |  | 137d | 0d |  |  |

| ID | WBS | Activity | Duration | Start | Finish | Predecessors | Total float | Free float | Responsibilities |
| --- | --- | --- | --- | --- | --- | --- | --- | --- | --- |
|  | 691064793 | **Foundation** |  | 2025-03-17 | 2025-05-15 |  |  |  |  |
| 35012 |  | Excavate Footers | 5d | 2025-03-17 | 2025-03-21 | 32932 SS, 35866 SS | 0d |  | Dirtwork / Earthwork |
| 35003 |  | FRPS All Grade Beams and Footers | 5d | 2025-03-20 | 2025-03-26 | 35012 SS+3d | 0d |  | Concrete Crew |
| 35004 |  | FRPS Stem Walls | 10d | 2025-03-25 | 2025-04-07 | 35003 SS+3d | 0d |  | Concrete Crew |
| 35263 |  | Underground Plumbing Excavate, Install and Inspect | 5d | 2025-03-27 | 2025-04-02 | 35003 | 5d | 0d |  |
| 35493 |  | Fire Sprinkler Riser Excavate, Install and Inspect | 2d | 2025-03-27 | 2025-03-28 | 35003 | 8d |  |  |
| 35483 |  | Underground Plumbing Backfill and Recompact | 2d | 2025-04-03 | 2025-04-04 | 35263 | 5d |  |  |
| 35023 |  | Foundation Dampproof and Insulation - SOG Area 1 and 2 | 4d | 2025-04-04 | 2025-04-09 | 35004 FS-2d | 0d |  | Damproofing-Waterproofing |
| 1067 |  | Foundation Dampproof and Insulation - SOG Area 3 | 3d | 2025-04-10 | 2025-04-14 | 35023 | 10d |  | Damproofing-Waterproofing |
| 35134 |  | Backfill and Ground Prep - SOG Area 1 and 2 | 5d | 2025-04-10 | 2025-04-16 | 35023, 35493, 35483 SS | 0d |  |  |
| 35183 |  | SOG FRPS - Area 1 | 8d | 2025-04-17 | 2025-04-28 | 35134, 35004 | 0d |  |  |
| 35243 |  | Ground Prep for SOG - Area 3 | 5d | 2025-04-29 | 2025-05-05 | 35153 FF, 35012 | 0d |  |  |
| 35253 |  | SOG FRPS - Area 2.SOG FRPS - Area 1 | 8d | 2025-04-29 | 2025-05-08 | 1067, 35183 | 0d |  |  |
| 35233 |  | SOG FRPS - Area 3.SOG FRPS - Area 1 | 8d | 2025-05-06 | 2025-05-15 | 35243, 35153, 35253 FS-4d | 0d |  |  |
|  | 691074393 | **Superstructure** |  | 2025-04-10 | 2025-07-25 |  |  |  |  |
|  | 691074993 | **SOMD** |  | 2025-05-09 | 2025-07-25 |  |  |  |  |
|  | 691084693 | **Level 2 Deck** |  | 2025-05-09 | 2025-06-10 |  |  |  |  |
|  | 691087493 | **L2 A2** |  | 2025-05-16 | 2025-06-10 |  |  |  |  |
| 33492 |  | Layout Walls and Hold Downs | 2d | 2025-05-16 | 2025-05-19 | 33283, 35233 | 0d |  | Interior Framing Crew |
| 33502 |  | Erect Bearing Walls and HSS Columns | 5d | 2025-05-21 | 2025-05-28 | 33492 SS+3d, 33292 | 0d |  | Interior Framing Crew |
| 33512 |  | Decking | 5d | 2025-05-29 | 2025-06-04 | 33502 SS+5d | 0d |  | Interior Framing Crew |
| 33522 |  | Prep Deck for pour | 3d | 2025-06-05 | 2025-06-09 | 33512 SS+5d | 0d |  | Rebar |
| 33532 |  | Pour Level 2 Deck | 1d | 2025-06-10 | 2025-06-10 | 33522 | 0d |  | Pour Crew |
|  | 691087393 | **L2 A1** |  | 2025-05-09 | 2025-06-03 |  |  |  |  |
| 33283 |  | Layout Walls and Hold Downs | 2d | 2025-05-09 | 2025-05-12 | 35253 | 0d |  | Interior Framing Crew |
| 33292 |  | Erect Bearing Walls and HSS Columns | 5d | 2025-05-14 | 2025-05-20 | 1073 SS+8d, 33283 SS+3d | 0d |  | Interior Framing Crew |
| 33302 |  | Decking | 5d | 2025-05-21 | 2025-05-28 | 33292 SS+5d | 5d | 0d | Interior Framing Crew |
| 33312 |  | Prep Deck for pour | 3d | 2025-05-29 | 2025-06-02 | 33302 SS+5d | 5d | 0d | Rebar |
| 33322 |  | Pour Level 2 Deck | 1d | 2025-06-03 | 2025-06-03 | 33312 | 5d |  | Pour Crew |

| ID | WBS | Activity | Duration | Start | Finish | Predecessors | Total float | Free float | Responsibilities |
| --- | --- | --- | --- | --- | --- | --- | --- | --- | --- |
|  | 691084193 | **Level 3 Deck** |  | 2025-06-11 | 2025-07-10 |  |  |  |  |
|  | 691088193 | **L3 A2** |  | 2025-06-13 | 2025-07-10 |  |  |  |  |
| 33562 |  | Layout Walls and Hold Downs | 2d | 2025-06-13 | 2025-06-16 | 33233 | 12d | 3d | Interior Framing Crew |
| 33572 |  | Erect Bearing Walls and HSS Columns | 5d | 2025-06-20 | 2025-06-26 | 33562 SS+2d, 33242 | 9d | 0d | Interior Framing Crew |
| 33582 |  | Decking | 5d | 2025-06-27 | 2025-07-03 | 33572 SS+5d | 9d | 0d | Interior Framing Crew |
| 33592 |  | Prep Deck for pour | 3d | 2025-07-07 | 2025-07-09 | 33582 SS+5d | 25d | 0d | Rebar |
| 33602 |  | Pour Level 3 Deck | 1d | 2025-07-10 | 2025-07-10 | 33592 | 25d | 1d | Pour Crew |
|  | 691088093 | **L3 A1** |  | 2025-06-11 | 2025-07-02 |  |  |  |  |
| 33233 |  | Layout Walls and Hold Downs | 2d | 2025-06-11 | 2025-06-12 | 33322, 33532 | 0d |  | Interior Framing Crew |
| 33242 |  | Erect Bearing Walls and HSS Columns | 5d | 2025-06-13 | 2025-06-19 | 33322, 33233 SS+2d, 33502, 33512 | 0d |  | Interior Framing Crew |
| 33252 |  | Decking | 5d | 2025-06-20 | 2025-06-26 | 33242 SS+5d | 0d |  | Interior Framing Crew |
| 33262 |  | Prep Deck for pour | 3d | 2025-06-27 | 2025-07-01 | 33252 SS+5d | 0d |  | Rebar |
| 33272 |  | Pour Level 3 Deck | 1d | 2025-07-02 | 2025-07-02 | 33262, 33532 | 0d |  | Pour Crew |
|  | 691084093 | **Roof Deck** |  | 2025-07-07 | 2025-07-25 |  |  |  |  |
| 33212 |  | Erect Bearing Walls and HSS Columns | 10d | 2025-07-07 | 2025-07-18 | 33272, 33582 | 9d | 0d | Interior Framing Crew |
| 1066 |  | Decking | 10d | 2025-07-14 | 2025-07-25 | 33212 SS+5d, 33602 | 24d | 0d | Interior Framing Crew |
|  | 691075793 | **CMU Cores** |  | 2025-04-10 | 2025-05-19 |  |  |  |  |
| 1073 |  | CMU Elevator Core | 6d | 2025-04-10 | 2025-04-17 | 35023, 35004 | 0d |  | Mason / Bricklayer - INTERIOR |
| 35143 |  | CMU Stair B | 6d | 2025-04-18 | 2025-04-25 | 1073 | 0d |  |  |
| 35163 |  | Elevator Shaft Hoist beams and Spreader Tubes | 3d | 2025-04-18 | 2025-04-22 | 1073 | 177d |  |  |
| 35144 |  | Steel Stair Install - Stair B | 8d | 2025-04-28 | 2025-05-07 | 35143 | 158d | 0d |  |
| 35153 |  | CMU Stair A | 6d | 2025-04-28 | 2025-05-05 | 35143 | 0d |  |  |
| 35173 |  | Steel Stair Install - Stair A | 8d | 2025-05-08 | 2025-05-19 | 35144, 35153 | 158d |  |  |
|  | 691074793 | **Exterior Skin** |  | 2025-05-14 | 2025-10-27 |  |  |  |  |
|  | 691099793 | **Roofing** |  | 2025-07-28 | 2025-08-22 |  |  |  |  |
| 1075 |  | Roof Install | 20d | 2025-07-28 | 2025-08-22 | 1066 | 24d | 0d | Roofing |
| 1076 |  | Roof Penetrations, All Trades | 3d | 2025-07-28 | 2025-07-30 | 1066 | 108d |  |  |

| ID | WBS | Activity | Duration | Start | Finish | Predecessors | Total float | Free float | Responsibilities |
| --- | --- | --- | --- | --- | --- | --- | --- | --- | --- |
|  | 691086493 | **Level 1** |  | 2025-05-14 | 2025-06-11 |  |  |  |  |
| 33442 |  | CFMF A1 | 5d | 2025-05-14 | 2025-05-20 | 33292 SS | 25d | 0d | Exterior Shell Crew |
| 34972 |  | CFMF A2 | 5d | 2025-05-21 | 2025-05-28 | 33442, 33502 SS | 25d | 0d | Exterior Shell Crew |
| 33443 |  | Electrical Rough-in | 5d | 2025-05-29 | 2025-06-04 | 34972 | 147d |  | Electrician |
| 33452 |  | Sheathing | 10d | 2025-05-29 | 2025-06-11 | 34972 | 35d | 6d | Overhead Doors |
|  | 691086093 | **Level 3** |  | 2025-07-07 | 2025-08-08 |  |  |  |  |
| 33402 |  | CFMF A1 | 10d | 2025-07-07 | 2025-07-18 | 33242 SS, 33363, 33212 SS | 9d | 0d | Exterior Shell Crew |
| 33403 |  | Electrical Rough-In | 5d | 2025-07-21 | 2025-07-25 | 33402 | 14d | 0d | Electrician |
| 34982 |  | CFMF A2 | 5d | 2025-07-21 | 2025-07-25 | 33402, 33572 SS, 33212 SS+6d | 111d |  | Exterior Shell Crew |
| 33412 |  | Sheathing | 10d | 2025-07-28 | 2025-08-08 | 33402, 33403, 33372 | 14d | 0d | Overhead Doors |
|  | 691085693 | **Level 2** |  | 2025-06-13 | 2025-07-03 |  |  |  |  |
| 33362 |  | CFMF A1 | 5d | 2025-06-13 | 2025-06-19 | 34972, 33242 SS | 14d | 0d | Exterior Shell Crew |
| 33363 |  | CFMF A2 | 5d | 2025-06-20 | 2025-06-26 | 33362, 33572 SS | 14d | 5d | Exterior Shell Crew |
| 33372 |  | Sheathing | 10d | 2025-06-20 | 2025-07-03 | 33362, 33452 | 29d | 0d | Overhead Doors |
| 33404 |  | In-Wall Blocking | 5d | 2025-06-20 | 2025-06-26 | 33372 SS | 131d |  | WEO |
|  | 691091593 | **North Elevation** |  | 2025-08-11 | 2025-08-29 |  |  |  |  |
| 33422 |  | Veneer - North | 15d | 2025-08-11 | 2025-08-29 | 33412 | 14d | 0d | Stucco |
|  | 691091693 | **South Elevation** |  | 2025-09-09 | 2025-09-29 |  |  |  |  |
| 33462 |  | Veneer - South | 15d | 2025-09-09 | 2025-09-29 | 33332 SS+10d | 31d | 0d | Stucco |
|  | 691091793 | **East Elevation** |  | 2025-09-23 | 2025-10-27 |  |  |  |  |
| 33382 |  | Veneer - East | 15d | 2025-09-23 | 2025-10-13 | 33462 SS+10d | 31d | 0d | Stucco |
| 1078 |  | Storefront | 10d | 2025-10-14 | 2025-10-27 | 33382 | 46d |  | Aluminum Storefront |
|  | 691085593 | **West Elevation** |  | 2025-08-25 | 2025-09-29 |  |  |  |  |
| 33332 |  | Veneer - West | 15d | 2025-08-25 | 2025-09-15 | 33422 SS+10d | 31d | 0d | Stucco |
| 34802 |  | Storefront | 10d | 2025-09-16 | 2025-09-29 | 33332 | 66d |  | Aluminum Storefront |

| ID | WBS | Activity | Duration | Start | Finish | Predecessors | Total float | Free float | Responsibilities |
| --- | --- | --- | --- | --- | --- | --- | --- | --- | --- |
|  | 691091593 | **Rough-In** |  | 2025-07-03 | 2025-09-12 |  |  |  |  |
|  | 691088793 | **Level 1 - Rough-In Work** |  | 2025-07-03 | 2025-08-14 |  |  |  |  |
| 33632 |  | Interior Wall Framing - Level 1 | 5d | 2025-07-03 | 2025-07-10 | 33272 | 0d |  | Interior Framing Crew |
| 33642 |  | Mechanical Rough-In - Level 1 | 7d | 2025-07-11 | 2025-07-21 | 33632, 33272 | 8d | 0d | Mechanical |
| 33652 |  | Electrical Rough-In - Level 1 | 15d | 2025-07-11 | 2025-07-31 | 33632, 32922, 33272 | 5d | 0d | Electrician |
| 33692 |  | Fire Suppression - Level 1 | 15d | 2025-07-11 | 2025-07-31 | 33632, 33272 | 0d |  | Fire Sprinkler |
| 33672 |  | Plumbing Rough-In - Level 1 | 5d | 2025-07-22 | 2025-07-28 | 33642, 33642 FF+4d | 23d | 2d | Plumbing |
| 33702 |  | Fire Alarm Rough - Level 1 | 10d | 2025-08-01 | 2025-08-14 | 33642, 33692, 33652 SS, 33652 SS+5d | 6d | 5d | Fire Alarm |
|  | 691088893 | **Level 2 - Rough-In Work** |  | 2025-07-22 | 2025-09-02 |  |  |  |  |
| 33712 |  | Mechanical Rough-In - Level 2 | 7d | 2025-07-22 | 2025-07-30 | 33402, 33642 | 8d | 0d | Mechanical |
| 33732 |  | Plumbing Rough-In - Level 2 | 5d | 2025-07-31 | 2025-08-06 | 33712, 33672 | 21d | 2d | Plumbing |
| 33722 |  | Electrical Rough-In - Level 2 | 15d | 2025-08-01 | 2025-08-21 | 33652 | 5d | 0d | Electrician |
| 33742 |  | Fire Suppression - Level 2 | 15d | 2025-08-01 | 2025-08-21 | 33712 SS, 33692 | 0d |  | Fire Sprinkler |
| 33752 |  | Fire Alarm Rough - Level 2 | 7d | 2025-08-22 | 2025-09-02 | 33712, 33742, 33702 | 1d | 0d | Fire Alarm |
|  | 691088993 | **Level 3 - Rough-In Work** |  | 2025-07-31 | 2025-09-12 |  |  |  |  |
| 33802 |  | Mechanical Rough-In - Level 3 | 7d | 2025-07-31 | 2025-08-08 | 33362, 33712 | 16d | 0d | Mechanical |
| 33792 |  | Plumbing Rough-In - Level 3 | 5d | 2025-08-11 | 2025-08-15 | 33802, 33732 | 19d |  | Plumbing |
| 33782 |  | Electrical Rough-In - Level 3 | 15d | 2025-08-22 | 2025-09-12 | 33722 | 5d |  | Electrician |
| 33812 |  | Fire Suppression - Level 3 | 15d | 2025-08-22 | 2025-09-12 | 33802 SS, 33742 | 0d |  | Fire Sprinkler |
| 33822 |  | Fire Alarm Rough - Level 3 | 7d | 2025-09-03 | 2025-09-11 | 33802, 33752, 33782 SS | 1d |  | Fire Alarm |
|  | 691091993 | **Janus Scope** |  | 2025-07-25 | 2025-10-03 |  |  |  |  |
| 33842 |  | Level 1 - JS | 15d | 2025-07-25 | 2025-08-14 | 33652 FS-5d | 5d | 0d | Owner |
| 33852 |  | Level 2 - JS | 15d | 2025-08-15 | 2025-09-05 | 33842, 33722 SS+10d | 5d | 0d | Owner |
| 33862 |  | Level 3 - JS | 15d | 2025-09-15 | 2025-10-03 | 33852, 33812, 33822, 33792, 33782 SS+10d | 0d |  | Owner |

| ID | WBS | Activity | Duration | Start | Finish | Predecessors | Total float | Free float | Responsibilities |
| --- | --- | --- | --- | --- | --- | --- | --- | --- | --- |
|  | 691094293 | **Elevators** |  | 2025-09-09 | 2025-10-20 |  |  |  |  |
| 33882 |  | Elevator Installation | 30d | 2025-09-09 | 2025-10-20 | 1075, 32912, 35283 | 14d |  | Elevator |
|  | 691075093 | **Interiors** |  | 2025-08-15 | 2025-11-07 |  |  |  |  |
|  | 691074993 | **Storage Areas** |  | 2025-08-15 | 2025-11-07 |  |  |  |  |
|  | 691093393 | **Level 1 - Interiors** |  | 2025-08-15 | 2025-09-19 |  |  |  |  |
| 34922 |  | Paint Structure | 10d | 2025-08-15 | 2025-08-28 | 33842 | 15d | 0d | Painter |
| 34882 |  | Flooring Trim | 10d | 2025-08-29 | 2025-09-12 | 34922 SS+10d | 25d | 0d | Flooring |
| 34892 |  | Lighting Trim | 10d | 2025-08-29 | 2025-09-12 | 34922 SS+10d | 15d | 0d | Electrician |
| 34902 |  | Mechanical Trim | 5d | 2025-09-15 | 2025-09-19 | 34882, 34892 | 25d | 10d | Mechanical |
| 34912 |  | Plumbing Trim | 5d | 2025-09-15 | 2025-09-19 | 34882 | 72d |  | Plumbing |
|  | 691092793 | **Level 2 -Interiors** |  | 2025-09-08 | 2025-10-10 |  |  |  |  |
| 34862 |  | Paint Structure | 10d | 2025-09-08 | 2025-09-19 | 34922, 33852 | 10d | 0d | Painter |
| 34822 |  | Flooring Trim | 10d | 2025-09-22 | 2025-10-03 | 34862 SS+10d | 15d | 0d | Flooring |
| 34832 |  | Lighting Trim | 10d | 2025-09-22 | 2025-10-03 | 34862 SS+10d, 34892 | 10d | 0d | Electrician |
| 34842 |  | Mechanical Trim | 5d | 2025-10-06 | 2025-10-10 | 34832 SS+10d | 15d |  | Mechanical |
| 34852 |  | Plumbing Trim | 5d | 2025-10-06 | 2025-10-10 | 34822, 34902 | 15d |  | Plumbing |
|  | 691075193 | **Level 3 - Interiors** |  | 2025-10-06 | 2025-11-07 |  |  |  |  |
| 1082 |  | Paint Structure | 10d | 2025-10-06 | 2025-10-17 | 34862, 33862 | 0d |  | Painter |
| 1083 |  | Flooring Trim | 10d | 2025-10-20 | 2025-10-31 | 1082 SS+10d | 0d |  | Flooring |
| 1084 |  | Lighting Trim | 10d | 2025-10-20 | 2025-10-31 | 1082 SS+10d, 34892, 34832 | 0d |  | Electrician |
| 1085 |  | Mechanical Trim | 5d | 2025-11-03 | 2025-11-07 | 1084 SS+10d, 34842 | 0d |  | Mechanical |
| 1087 |  | Plumbing Trim | 5d | 2025-11-03 | 2025-11-07 | 1083, 34852 | 0d |  | Plumbing |
|  | 691075293 | **Level 1 Office and Restrooms** |  | 2025-08-15 | 2025-10-27 |  |  |  |  |
| 34932 |  | Drywall - Office | 7d | 2025-08-15 | 2025-08-25 | 33842 | 46d | 0d | Drywall |
| 1106 |  | Doors & Hardware - Office | 5d | 2025-08-26 | 2025-09-02 | 34932 | 46d | 0d | Doors, Frames, Hardware |
| 1095 |  | Millwork - Office | 5d | 2025-09-03 | 2025-09-09 | 34932, 1106 | 46d | 0d | Millwork / Casework |
| 1096 |  | Flooring - Office | 5d | 2025-09-10 | 2025-09-16 | 1095 | 46d | 0d | Flooring |
| 1097 |  | Prime & Paint 1st Coat - Office | 5d | 2025-09-17 | 2025-09-23 | 1096 | 46d | 0d | Painter |
| 1100 |  | Light Fixtures - Office | 5d | 2025-09-24 | 2025-09-30 | 1097 | 65d |  | Electrician |
| 1103 |  | Mechanical Trim Out - Office | 5d | 2025-09-24 | 2025-09-30 | 1097 | 65d |  | Mechanical |
| 1104 |  | Electrical Trim Out - Office | 5d | 2025-09-24 | 2025-09-30 | 1097 | 46d | 0d | Electrician |
| 1105 |  | Plumbing Trim Out - Office | 5d | 2025-10-01 | 2025-10-07 | 1104 | 46d | 0d | Plumbing |
| 1107 |  | Final Coat Paint - Office | 5d | 2025-10-08 | 2025-10-14 | 1105 | 46d | 0d | Painter |
| 1099 |  | Install Appliances - Office | 2d | 2025-10-15 | 2025-10-16 | 1107 | 53d |  | Appliances |
| 1108 |  | Final Clean - Office | 5d | 2025-10-15 | 2025-10-21 | 1107 | 46d | 0d | Final Cleaning |
| 1109 |  | Punch List Work - Office | 5d | 2025-10-21 | 2025-10-27 | 1108 FF+4d | 46d |  | WEO |

| ID | WBS | Activity | Duration | Start | Finish | Predecessors | Total float | Free float | Responsibilities |
| --- | --- | --- | --- | --- | --- | --- | --- | --- | --- |
|  | 691082593 | **Final Sitework** |  | 2025-05-09 | 2025-11-04 |  |  |  |  |
|  | 691082693 | **Hardscapes** |  | 2025-06-11 | 2025-11-04 |  |  |  |  |
| 1130 |  | Trash Enclosure Gates | 5d | 2025-06-11 | 2025-06-17 | 36026 | 137d | 97d |  |
| 1140 |  | Detention Pond Fencing | 5d | 2025-09-30 | 2025-10-06 | 33462 | 41d | 10d |  |
| 1129 |  | Sidewalks | 5d | 2025-10-14 | 2025-10-20 | 35383, 33332, 33382, 33422, 33462 | 31d | 0d | Site Hardscapes |
| 1131 |  | Striping and Signage | 1d | 2025-11-04 | 2025-11-04 | 1189, 1130 | 40d | 0d |  |
|  | 691082793 | **Landscapes** |  | 2025-05-09 | 2025-11-03 |  |  |  |  |
| 1180 |  | Irrigation sleeving | 5d | 2025-05-09 | 2025-05-15 | 35353 | 160d |  |  |
| 1179 |  | Irrigation Systems | 5d | 2025-10-21 | 2025-10-27 | 33382, 1140, 1129 | 31d | 0d | Site Landscaping |
| 1189 |  | Plantings | 5d | 2025-10-28 | 2025-11-03 | 1179 | 31d | 0d | Site Landscaping |
|  | 691075893 | **Closeout** |  | 2025-11-10 | 2025-12-05 |  |  |  |  |
| 1111 |  | Commissioning | 8d | 2025-11-10 | 2025-11-19 | 1085, 1087, 1084, 33882 | 0d |  | Mechanical |
| 1112 |  | Fire Alarm Programing/Testing | 5d | 2025-11-13 | 2025-11-19 | 1111 FS-5d | 0d |  | Electrician |
| 1113 |  | Final Inspections | 7d | 2025-11-20 | 2025-12-02 | 1112, 33172, 33182 | 0d |  | Inspections |
| 1114 |  | WEO Overall / Final Punch List Work | 5d | 2025-11-20 | 2025-11-26 | 1112, 1189 | 19d | 0d | WEO |
| 1115 |  | Develop Owner Punch Lists | 5d | 2025-12-01 | 2025-12-05 | 1114 | 19d |  | Owner |
