# Public Storage at Marksheffel and Barnes - WEEKLY UPDATE DD 01AUG25

Schedule from Primavera P6, 2024-07-18 to 2026-04-07, data date 2025-08-01, A marks actual dates.

## Calendars

- WEO 5-Day Work Week with Holidays: Mon-Fri 08:00-12:00, 13:00-17:00; Sat-Sun off. Exceptions (off unless hours are given): 2024-09-02, 2024-11-28 to 2024-11-29, 2024-12-25, 2025-01-01, 2025-05-26, 2025-07-04, 2025-09-01, 2025-11-27 to 2025-11-28, 2025-12-25, 2026-01-01.

## Schedule

| ID | WBS | Activity | Type | Duration | Start | Finish | Predecessors | Complete | Planned start | Planned finish | Total float | Free float | Responsibilities |
| --- | --- | --- | --- | --- | --- | --- | --- | --- | --- | --- | --- | --- | --- |
|  | 691056193 | **Project Summary** |  |  | 2024-07-18 | 2026-04-07 |  |  |  |  |  |  |  |
|  | 691056493 | **Contract Milestones** |  |  | 2024-07-18 | 2026-04-07 |  |  |  |  |  |  |  |
| 33172 |  | Proposals/Bids Due | milestone | 0d | 2024-07-18 A | 2024-07-18 A |  | 100% |  |  |  |  |  |
| 33182 |  | Interviews | milestone | 0d | 2024-07-22 A | 2024-07-22 A |  | 100% |  |  |  |  |  |
| 33192 |  | Award Contract | milestone | 0d | 2024-07-26 A | 2024-07-26 A |  | 100% |  |  |  |  |  |
| NTP |  | Initial Notice to Proceed - Site Not in Compliance Per Contract | milestone | 0d | 2025-01-14 A | 2025-01-14 A | 34992 | 100% |  |  |  |  | Owner |
| SC |  | Project SC - Before Weather Impacts | milestone | 0d | 2026-03-11 | 2026-03-11 | 1113 |  |  |  | 0d |  | WEO |
| PSC |  | Project Substantially Complete - After Weather Impacts | milestone | 0d | 2026-03-20 | 2026-03-20 | SC, 1027, 1016 FF, 36686 FF |  |  |  | 0d |  | WEO |
| PSC0001 |  | Operational Setup |  | 12d | 2026-03-23 | 2026-04-07 | PSC |  |  |  | 0d |  | Owner |
| PSC0002 |  | Project Open | milestone | 0d | 2026-04-07 | 2026-04-07 | PSC0001, 1115 FF |  |  |  | 0d |  | Owner |
|  | 691056293 | **Construction Milestones** |  |  | 2025-01-21 | 2025-11-26 |  |  |  |  |  |  |  |
| 1004 |  | Permit Approved | milestone | 0d | 2025-01-21 A | 2025-01-21 A | NTP FS+2d | 100% | 2025-01-22 | 2025-01-22 |  |  | Architect |
| 1005 |  | Start Construction | milestone | 0d | 2025-01-22 A | 2025-01-22 A | NTP, 32932 SS | 100% |  |  |  |  | WEO |
| 1007 |  | Start of Foundations | milestone | 0d | 2025-03-17 A | 2025-03-17 A | 32932 SS, 35012 SS | 100% |  |  |  |  | WEO |
| 1008 |  | Start of Elevated Structure | milestone | 0d | 2025-05-07 A | 2025-05-07 A | 33283 SS | 100% |  |  |  |  | WEO |
| 1012 |  | Stair Cores Complete to Roof | milestone | 0d | 2025-05-30 A | 2025-05-30 A | 1073, 35143, 35153, 1008 FF | 100% | 2025-05-07 | 2025-05-07 |  |  | WEO |
| 1010 |  | Structure Complete | milestone | 0d | 2025-08-27 | 2025-08-27 | 36456, 1012 FF |  |  |  | 144d | 64d | WEO |
| 1016 |  | Building Dry In | milestone | 0d | 2025-09-25 | 2025-09-25 | 1075, 1076 FF |  |  |  | 122d | 44d | WEO |
| 1015 |  | Exterior Work Complete | milestone | 0d | 2025-11-26 | 2025-11-26 | 1189, 1131, 1010 FF, 1016 FF |  |  |  | 80d | 60d | WEO |
|  | 691103693 | **Schedule Impacts** |  |  | 2025-01-14 | 2026-03-20 |  |  |  |  |  |  |  |
|  | 691103793 | **Weather Delays** |  |  | 2025-03-19 | 2026-03-20 |  |  |  |  |  |  |  |
| 36286 |  | Weather Delay 3/19/2025 |  | 1d | 2025-03-19 A | 2025-03-19 A |  | 100% |  |  |  |  |  |
| cmu |  | Weather Delay 5/6/2025 |  | 1d | 2025-05-06 A | 2025-05-06 A |  | 100% |  |  |  |  |  |
| 1027 |  | Contract Weather Days - 10 Days |  | 8d | 2026-03-11 | 2026-03-20 | SC |  |  |  | 0d |  |  |

| ID | WBS | Activity | Duration | Start | Finish | Predecessors | Complete | Planned start | Planned finish |
| --- | --- | --- | --- | --- | --- | --- | --- | --- | --- |
|  | 691104193 | **Project Impacts** |  | 2025-01-14 | 2025-06-11 |  |  |  |  |
|  | 691105393 | **Owner Added Scope Impacts** |  | 2025-01-14 | 2025-06-11 |  |  |  |  |
|  | 691105693 | **Pond Construction By Owner** |  | 2025-01-20 | 2025-06-11 |  |  |  |  |
| 35668 |  | Pond Construction Per Owner | 40d | 2025-01-20 A | 2025-03-05 A | 35726 | 100% | 2025-01-09 | 2025-03-05 |
| 35686 |  | Pond Contractor Permit Pulled | 1d | 2025-03-06 A | 2025-03-06 A | 35668 | 100% |  |  |
| 35676 |  | North Pond Retaining Wall Completed by Owner | 30d | 2025-03-07 A | 2025-06-11 A |  | 100% | 2025-03-07 | 2025-04-17 |
|  | 691105793 | **BMP Installation and Certification By Owner** |  | 2025-01-20 | 2025-02-12 |  |  |  |  |
| 35706 |  | Repair and Install BMPS By Owner (not completed by owner) | 25d | 2025-01-20 A | 2025-02-12 A | 35726, 35846 SF | 100% | 2025-01-09 | 2025-02-12 |
|  | 691119193 | **CSU Scheduling Impact** |  | 2025-04-07 | 2025-05-02 |  |  |  |  |
| 35708 |  | CSU Domestic Tap Installation | 20d | 2025-04-07 A | 2025-05-02 A |  | 100% |  |  |
|  | 691108893 | **Impacts Correspondence** |  | 2025-01-14 | 2025-01-30 |  |  |  |  |
| 35926 |  | W.E.O. Notification of Delayed Mobilization Due to Weather | 1d | 2025-01-14 A | 2025-01-14 A |  | 100% |  |  |
| 35946 |  | Initial NTP From Owner | 1d | 2025-01-14 A | 2025-01-14 A |  | 100% |  |  |
| 35956 |  | W.E.O. Notification of Site Condition Impacting start of work | 1d | 2025-01-22 A | 2025-01-22 A |  | 100% |  |  |
| 35966 |  | W.E.O. Notification of Continued Site Impacts | 1d | 2025-01-28 A | 2025-01-28 A |  | 100% |  |  |
| 35976 |  | W.E.O. Notification of Erosion Control and Pond Work Impacts | 1d | 2025-01-30 A | 2025-01-30 A |  | 100% |  |  |
|  | 691106093 | **Owner Over-Ex and Pad Certification By Owner** |  | 2025-01-16 | 2025-01-16 |  |  |  |  |
| 35726 |  | Owner Over-Ex Complete and Pad Certification Email | 1d | 2025-01-16 A | 2025-01-16 A |  | 100% | 2025-01-08 | 2025-01-08 |
|  | 691110493 | **Design Impacts** |  | 2025-03-13 | 2025-04-24 |  |  |  |  |
|  | 691110693 | **Bulletin #3** |  | 2025-03-13 | 2025-04-24 |  |  |  |  |
| 36047 |  | Delivery of Bulletin #3 with South Footer Structural | 1d | 2025-03-13 A | 2025-03-13 A |  | 100% |  |  |
|  | 691110793 | **Structural Design Changes** |  | 2025-03-14 | 2025-04-24 |  |  |  |  |
| 36056 |  | Revised Rebar Shop Submittal (Added and Revised Footers) | 27d | 2025-03-14 A | 2025-03-27 A |  | 100% | 2025-03-07 | 2025-04-14 |
| 36076 |  | Revised Structural Steel Submittal (Columns and Canopy Connection) | 28d | 2025-03-14 A | 2025-04-10 A |  | 100% | 2025-03-07 | 2025-04-15 |
| 36057 |  | Design Review Rebar Shop Revision | 1d | 2025-04-01 A | 2025-04-08 A | 36056 | 100% | 2025-03-25 | 2025-03-25 |
| 36058 |  | Structural Steel Embed Procurement | 5d | 2025-04-11 A | 2025-04-17 A |  | 100% |  |  |
| 36067 |  | Design Review Steel Submittal | 10d | 2025-04-11 A | 2025-04-24 A | 36076 | 100% |  |  |

| ID | WBS | Activity | Type | Duration | Start | Finish | Predecessors | Complete | Remaining | Planned start | Planned finish | Total float | Free float | Expected finish | Responsibilities |
| --- | --- | --- | --- | --- | --- | --- | --- | --- | --- | --- | --- | --- | --- | --- | --- |
|  | 691060893 | **Pre-Construciton** |  |  | 2024-07-26 | 2025-12-04 |  |  |  |  |  |  |  |  |  |
|  | 691060793 | **Procurement** |  |  | 2024-07-26 | 2025-12-04 |  |  |  |  |  |  |  |  |  |
| 34952 |  | Contracting of Early Trades |  | 128d | 2024-07-26 A | 2025-01-28 A | 33192 | 100% |  |  |  |  |  |  | WEO |
| 32922 |  | Electric Room MDP |  | 165d | 2024-08-16 A | 2025-09-03 | 34952 | 86% | 23d | 2024-08-16 | 2025-04-10 | 110d | 0d | 2025-09-03 | Electrician |
| 34992 |  | Owner's Enabling Contract Work |  | 96d | 2024-08-26 A | 2025-01-13 A |  | 100% |  |  |  |  |  |  | Owner |
| 32912 |  | Elevator (By Owner) |  | 166d | 2024-08-29 A | 2025-12-04 | 34952 | 48% | 87d | 2024-08-16 | 2025-04-11 | 0d |  |  | Elevator |
|  | 691108693 | **Additional Scope Per Owner - Required For Project Start** |  |  | 2025-02-03 | 2025-03-17 |  |  |  |  |  |  |  |  |  |
|  | 691107793 | **W.E. O'Neil BMP Install and Permitting - Owner Approved** |  |  | 2025-02-13 | 2025-03-17 |  |  |  |  |  |  |  |  |  |
| 35846 |  | Owner Approval/Direction To Install Stormwater BMP's (OAC Meeting) |  | 1d | 2025-02-13 A | 2025-02-13 A | 35976 | 100% |  |  |  |  |  |  |  |
| 35856 |  | W.E. O'neil Subcontractor Agreements |  | 7d | 2025-02-14 A | 2025-02-24 A | 35846 | 100% |  |  |  |  |  |  |  |
| 35876 |  | BMP Install |  | 3d | 2025-02-25 A | 2025-02-27 A | 35856, 35896 | 100% |  |  |  |  |  |  |  |
| 35886 |  | CSU Stormwater Permitting |  | 15d | 2025-02-25 A | 2025-03-14 A | 35856 | 100% |  | 2025-02-25 | 2025-03-17 |  |  |  |  |
| 35866 |  | CSU Stormwater Inspection | milestone | 0d | 2025-03-17 A | 2025-03-17 A | 35876, 35886, 36016 | 100% |  |  |  |  |  |  |  |
|  | 691107893 | **W.E. O'Neil Site Prep - Owner Approved** |  |  | 2025-02-03 | 2025-02-20 |  |  |  |  |  |  |  |  |  |
| 35906 |  | Owner Approval/Direction to Grade Site Per GEC (Email - 2/3) |  | 1d | 2025-02-03 A | 2025-02-03 A | 35976 | 100% |  |  |  |  |  |  |  |
| 35896 |  | Grading per GEC Plan |  | 12d | 2025-02-05 A | 2025-02-10 A | 35906 | 100% |  | 2025-02-05 | 2025-02-20 |  |  |  |  |
| 35986 |  | Cold Weather Delay (High below freezing) |  | 4d | 2025-02-11 A | 2025-02-14 A | 35896 | 100% |  |  |  |  |  |  |  |
| 35996 |  | Grading Per GEC Plan Continued |  | 1d | 2025-02-17 A | 2025-02-17 A | 35986 | 100% |  |  |  |  |  |  |  |
| 36006 |  | Cold Weather Delay (High Below Freezing |  | 2d | 2025-02-18 A | 2025-02-19 A | 35996 | 100% |  |  |  |  |  |  |  |
| 36016 |  | Grading Per GEC Plan Continued |  | 1d | 2025-02-20 A | 2025-02-20 A | 36006 | 100% |  |  |  |  |  |  |  |
|  | 691065093 | **Construction** |  |  | 2025-01-22 | 2026-03-10 |  |  |  |  |  |  |  |  |  |
|  | 691080993 | **Mobilization** |  |  | 2025-01-22 | 2025-01-28 |  |  |  |  |  |  |  |  |  |
| 32932 |  | Mobilization and Survey |  | 5d | 2025-01-22 A | 2025-01-28 A | NTP, 34992, 1004 | 100% |  |  |  |  |  |  | WEO |
|  | 691061993 | **Site Development** |  |  | 2025-02-17 | 2025-10-21 |  |  |  |  |  |  |  |  |  |
|  | 691098893 | **Site Infrastructure** |  |  | 2025-03-25 | 2025-08-15 |  |  |  |  |  |  |  |  |  |
| 35273 |  | Install Sewer |  | 4d | 2025-03-25 A | 2025-04-04 A | 32932, 35866 | 100% |  | 2025-03-25 | 2025-03-28 |  |  |  | Site Utilities - Wet |
| 33103 |  | Install Fire Connection |  | 5d | 2025-04-07 A | 2025-04-11 A | 35273 | 100% |  |  |  |  |  |  |  |
| 33113 |  | Install Fire Connection |  | 2.5d | 2025-04-21 A | 2025-04-23 A | 35134 SS+1d, 33103 | 100% |  |  |  |  |  |  |  |
| 33093 |  | Sewer Camera and Final Connection |  | 3d | 2025-04-25 A | 2025-04-29 A | 33103 SS+2d, 33113 SS | 100% |  |  |  |  |  |  |  |
| 36736 |  | Discovered unmarked gas, city tap rescheduled |  | 10d | 2025-05-05 A | 2025-06-06 A | 33092 | 100% |  | 2025-05-06 | 2025-05-19 |  |  |  |  |
| 36746 |  | Install Domestic Water (City Install Domestic Tap - 5/2) |  | 2d | 2025-06-06 A | 2025-07-08 A | 36736, 33092 | 100% |  | 2025-06-10 | 2025-06-11 |  |  |  |  |
| 33092 |  | Install Domestic Water (City Install Domestic Tap - 5/2) |  | 1d | 2025-06-06 A | 2025-06-06 A | 35273, 35708 FF+0.5d | 100% |  |  |  |  |  |  |  |
| 33102 |  | Install Storm Main (Pond to STA: 2+42.32) |  | 6d | 2025-08-01 | 2025-08-08 | 36746 FS+18d |  |  |  |  | 84d | 0d |  |  |
| 1050 |  | Install Storm Secondary |  | 5d | 2025-08-11 | 2025-08-15 | 33102 |  |  |  |  | 147d | 27d |  |  |

Notes:
- 36746: General Notes: Gas line interference discovered / Only City Tap Completed: 06.06.25 / Pending drawing revision approval from CSU. Copper line from Main Tap to / building will begin.

| ID | WBS | Activity | Duration | Start | Finish | Predecessors | Complete | Planned start | Planned finish | Total float | Free float |
| --- | --- | --- | --- | --- | --- | --- | --- | --- | --- | --- | --- |
|  | 691098993 | **Site Civil** |  | 2025-02-17 | 2025-10-21 |  |  |  |  |  |  |
| 1053 |  | Electrical Main Conduit and Transformer Prep (PRECONSTRUCTION) | 1d | 2025-02-17 A | 2025-02-17 A | 32932 | 100% |  |  |  |  |
| 1055 |  | CSU Electrical Inspection | 1d | 2025-02-18 A | 2025-02-18 A | 1053 | 100% |  |  |  |  |
| 35433 |  | Electrical Trench Backfill and Recompaction | 2d | 2025-02-19 A | 2025-02-20 A | 1055 | 100% |  |  |  |  |
| 1054 |  | Transformer Installation (By CSU - Lead Time Scheduling Included) | 12d | 2025-02-21 A | 2025-03-11 A | 35433 | 100% | 2025-02-21 | 2025-03-10 |  |  |
| 36666 |  | CSU Meter Install (start of temp power) | 5d | 2025-03-12 A | 2025-03-28 A | 1054 FF+4d | 100% | 2025-03-12 | 2025-03-18 |  |  |
| 35283 |  | Electrical Main to Building | 5d | 2025-10-15 | 2025-10-21 | 1054, 36506 SS |  |  |  | 30d |  |
|  | 691099993 | **Paving** |  | 2025-08-11 | 2025-09-30 |  |  |  |  |  |  |
| 35313 |  | Survey - Trash Enclosure | 1d | 2025-08-11 | 2025-08-11 | 33102 |  |  |  | 84d | 0d |
| 35323 |  | Excavate - Trash Enclosure | 1d | 2025-08-12 | 2025-08-12 | 35313 |  |  |  | 84d | 0d |
| 35333 |  | FRPS Footer - Trash Enclosure | 3d | 2025-08-13 | 2025-08-15 | 35323 |  |  |  | 84d | 0d |
| 35343 |  | FRPS Stem Wall - Trash Enclosure | 3d | 2025-08-18 | 2025-08-20 | 35333 |  |  |  | 84d | 0d |
| 35344 |  | Trash Enclosure Masonry | 5d | 2025-08-21 | 2025-08-27 | 35343 |  |  |  | 84d | 0d |
| 1130 |  | Trash Enclosure Gates | 5d | 2025-08-28 | 2025-09-04 | 35344 |  |  |  | 84d | 50d |
| 35353 |  | Backfill and compact - Trash Enclosure | 1d | 2025-08-28 | 2025-08-28 | 35344 |  |  |  | 120d | 0d |
| 1180 |  | Irrigation sleeving | 3d | 2025-08-29 | 2025-09-03 | 35353 |  |  |  | 121d | 1d |
| 35363 |  | Survey - Grid Line K, South | 1d | 2025-08-29 | 2025-08-29 | 35353 |  |  |  | 120d | 0d |
| 35373 |  | Finish Grade - Grid Line K, South | 3d | 2025-09-02 | 2025-09-04 | 35363 |  |  |  | 120d | 0d |
| 35383 |  | FRPS Curb and gutter - Grid Line K, South | 4d | 2025-09-05 | 2025-09-10 | 35373, 1180 |  |  |  | 120d | 0d |
| 35384 |  | FRPS Sidewalk and Ballards - Grid Line K, South | 3d | 2025-09-11 | 2025-09-15 | 35383 |  |  |  | 120d | 0d |
| 35393 |  | Survey - Grid Line K, North | 1d | 2025-09-11 | 2025-09-11 | 35383 |  |  |  | 120d | 0d |
| 35403 |  | Finish Grade - Grid Line K, North | 2d | 2025-09-12 | 2025-09-15 | 35393 |  |  |  | 120d | 0d |
| 35413 |  | FRPS Curb, Gutter and Trash Enclosure Slab - Grid Line K, North | 4d | 2025-09-16 | 2025-09-19 | 35403, 35384 |  |  |  | 120d | 0d |
| 35414 |  | FRPS Sidewalk and Ballards - Grid Line K, North | 3d | 2025-09-22 | 2025-09-24 | 35413 |  |  |  | 120d | 0d |
| 35423 |  | Asphalt Bottom Mat | 2d | 2025-09-25 | 2025-09-26 | 35413, 35414, 1050 |  |  |  | 120d | 0d |
| 36026 |  | Asphalt Patch and Top Mat | 2d | 2025-09-29 | 2025-09-30 | 35423 |  |  |  | 120d | 0d |

| ID | WBS | Activity | Duration | Start | Finish | Predecessors | Complete | Planned start | Planned finish | Responsibilities |
| --- | --- | --- | --- | --- | --- | --- | --- | --- | --- | --- |
|  | 691064793 | **Foundation** |  | 2025-03-17 | 2025-07-07 |  |  |  |  |  |
| 35012 |  | Excavate Footers | 2.5d | 2025-03-17 A | 2025-03-19 A | 32932 SS, 35866 SS | 100% |  |  | Dirtwork / Earthwork |
| 35022 |  | Excavate Footers | 2.5d | 2025-03-20 A | 2025-03-24 A | 36286, 35012 | 100% |  |  | Dirtwork / Earthwork |
| 35003 |  | FRPS All Grade Beams and Footers | 6d | 2025-03-24 A | 2025-03-28 A | 35022 FS-1d | 100% | 2025-03-24 | 2025-03-31 | Concrete Crew |
| 35004 |  | FRPS Stem Walls | 10d | 2025-03-27 A | 2025-04-11 A | 35003 SS+3d | 100% | 2025-03-27 | 2025-04-09 | Concrete Crew |
| 35263 |  | Underground Plumbing Excavate, Install and Inspect | 5d | 2025-03-31 A | 2025-04-04 A | 35003 | 100% |  |  |  |
| 35493 |  | Fire Sprinkler Riser Excavate, Install and Inspect (delayed start due to accessibility) | 2d | 2025-04-04 A | 2025-04-07 A | 35004 SS+1d | 100% |  |  |  |
| 35023 |  | Foundation Dampproof and Insulation - East, North and West | 4d | 2025-04-07 A | 2025-04-10 A | 35004 | 100% |  |  | Damproofing-Waterproofing |
| 35483 |  | Underground Plumbing Backfill and Recompact | 2d | 2025-04-07 A | 2025-04-08 A | 35263 | 100% |  |  |  |
| 35013 |  | FRPS All Grade Beams and Footers | 1d | 2025-04-09 A | 2025-04-09 A | 36057, 35003 | 100% |  |  | Concrete Crew |
| 35005 |  | FRPS Stem Walls | 3d | 2025-04-10 A | 2025-04-15 A | 35013, 35004 | 100% | 2025-04-10 | 2025-04-14 | Concrete Crew |
| 1067 |  | Foundation Dampproof and Insulation - South Wall | 3d | 2025-04-16 A | 2025-04-18 A | 35005 | 100% |  |  | Damproofing-Waterproofing |
| 35134 |  | Backfill and Ground Prep - SOG Area 1 | 5d | 2025-04-16 A | 2025-04-18 A | 35005 | 100% | 2025-04-16 | 2025-04-22 |  |
| 35183 |  | SOG FRPS - Area 1 | 8d | 2025-04-21 A | 2025-04-29 A | 35134, 35005 | 100% | 2025-04-21 | 2025-04-30 |  |
| 36706 |  | Backfill and Ground Prep - SOG Area 2 | 3d | 2025-04-24 A | 2025-04-28 A | 1073 | 100% |  |  |  |
| 35253 |  | SOG FRPS - Area 2 .SOG FRPS - Area 1 | 8d | 2025-04-30 A | 2025-05-09 A | 1067, 35183 | 100% |  |  |  |
| 35135 |  | Backfill and Ground Prep - SOG Area 3 | 5d | 2025-06-12 A | 2025-06-16 A | 1073, 35676 | 100% | 2025-06-12 | 2025-06-18 |  |
| 35243 |  | Backfill and Ground Prep - SOG Area 4 | 2d | 2025-06-13 A | 2025-06-17 A | 35153 FF, 35022, 35263, 35483, 35676 | 100% | 2025-06-13 | 2025-06-16 |  |
| 36716 |  | SOG FRPS - Area 3 | 7d | 2025-06-16 A | 2025-06-23 A | 35135 | 100% | 2025-06-20 | 2025-06-30 |  |
| 35233 |  | SOG FRPS - Area 4 | 7d | 2025-06-30 A | 2025-07-07 A | 35243, 36716 | 100% | 2025-06-30 | 2025-07-09 |  |
|  | 691074393 | **Superstructure** |  | 2025-04-07 | 2025-09-03 |  |  |  |  |  |
|  | 691074993 | **Structural Metal Framing and Deck** |  | 2025-05-13 | 2025-09-03 |  |  |  |  |  |
|  | 691084693 | **Level 2 Deck (level 1 Walls)** |  | 2025-05-13 | 2025-07-21 |  |  |  |  |  |
|  | 691087393 | **L2 A1** |  | 2025-05-13 | 2025-05-23 |  |  |  |  |  |
| 33283 |  | Erect Frame and Decking - L2 A1 (moblize 2 days prior with material) | 7d | 2025-05-13 A | 2025-05-23 A | 35183 | 100% | 2025-05-13 | 2025-05-21 | Interior Framing Crew |
| A1000 |  | Erect Frame and Decking - L2 A1 | 5d | 2025-05-15 A | 2025-05-23 A |  | 100% | 2025-05-15 | 2025-05-21 |  |

| ID | WBS | Activity | Duration | Start | Finish | Predecessors | Complete | Planned start | Planned finish | Responsibilities |
| --- | --- | --- | --- | --- | --- | --- | --- | --- | --- | --- |
|  | 691087493 | **L2 A2** |  | 2025-05-13 | 2025-06-26 |  |  |  |  |  |
| 33492 |  | Erect Frame and Decking - L2 A2 | 7d | 2025-05-13 A | 2025-06-05 A | 33283 | 100% | 2025-05-16 | 2025-05-27 | Interior Framing Crew |
| A1010 |  | Erect Frame and Decking - L2 A2 | 5d | 2025-05-27 A | 2025-06-04 A |  | 100% | 2025-06-30 | 2025-07-07 |  |
| 36796 |  | Stop Work - Steel Submit Review and Fabrication | 7d | 2025-06-05 A | 2025-06-26 A | 33492 | 100% | 2025-05-16 | 2025-05-27 | Interior Framing Crew |
| 36166 |  | Resume - Erect Frame and Decking - L2 A2 | 1d | 2025-06-26 A | 2025-06-26 A | 36796 | 100% | 2025-06-27 | 2025-06-27 |  |
|  | 691111193 | **L2 A3** |  | 2025-06-26 | 2025-07-07 |  |  |  |  |  |
| 36096 |  | Erect Frame and Decking - L2 A3 | 4d | 2025-06-26 A | 2025-07-07 A | 36166, 36716 FS+1d | 100% | 2025-06-30 | 2025-07-03 |  |
|  | 1 | **L2 A4** |  | 2025-07-08 | 2025-07-21 |  |  |  |  |  |
| 36756 |  | Erect Frame and Decking - L2 A4 | 4d | 2025-07-08 A | 2025-07-21 A | 36096, 35233 | 100% | 2025-07-09 | 2025-07-14 |  |
|  | 1 | **Level 2 Concrete** |  | 2025-07-11 | 2025-07-23 |  |  |  |  |  |
|  | 1 | **Pour 1 (Gridline A-J)** |  | 2025-07-11 | 2025-07-15 |  |  |  |  |  |
| A1020 |  | WWF and Pour Prep | 2d | 2025-07-11 A | 2025-07-11 A | 36756 FS-1d | 100% | 2025-07-11 | 2025-07-14 |  |
| A1040 |  | Form, Pour, Strip | 2d | 2025-07-14 A | 2025-07-15 A | A1020 | 100% | 2025-07-15 | 2025-07-16 |  |
|  | 2 | **Pour 2 (Gridline J-Q)** |  | 2025-07-14 | 2025-07-21 |  |  |  |  |  |
| A1050 |  | WWF and Pour Prep | 2d | 2025-07-14 A | 2025-07-15 A | A1040 | 100% | 2025-07-17 | 2025-07-18 |  |
| A1070 |  | Form, Pour, Strip | 2d | 2025-07-18 A | 2025-07-21 A | A1050 | 100% |  |  |  |
|  | 3 | **Pour 3 (Gridline Q-U)** |  | 2025-07-21 | 2025-07-23 |  |  |  |  |  |
| A1080 |  | WWF and Pour Prep | 2d | 2025-07-21 A | 2025-07-21 A | A1070 | 100% | 2025-07-22 | 2025-07-23 |  |
| A1100 |  | Form, Pour, Strip | 2d | 2025-07-22 A | 2025-07-23 A | A1080 | 100% | 2025-07-24 | 2025-07-25 |  |
|  | 691084193 | **Level 3 Deck (Level 2 Walls)** |  | 2025-07-15 | 2025-08-07 |  |  |  |  |  |
|  | 691088093 | **L3 A1** |  | 2025-07-15 | 2025-07-24 |  |  |  |  |  |
| 33233 |  | Erect Frame and Decking - L3 A1 | 7d | 2025-07-15 A | 2025-07-24 A | A1040 | 100% | 2025-07-11 | 2025-07-21 | Interior Framing Crew |
|  | 691088193 | **L3 A2** |  | 2025-07-21 | 2025-07-25 |  |  |  |  |  |
| 33562 |  | Erect Frame and Decking - L3 A2 | 7d | 2025-07-21 A | 2025-07-25 A | 33233, A1070 | 100% | 2025-07-29 | 2025-08-06 | Interior Framing Crew |

Notes:
- 33492: Delay Impacts: Delay due to Loose Lintel Shop Drawing Approval - Final Shop approval / received 5.30.25. Procurement 6.2.25, expected on site mid-week of 6.09.25. / Work will resume after lintel installation
- 36796: Delay Impacts: Delay due to Loose Lintel Shop Drawing Approval - Final Shop approval / received 5.30.25. Procurement 6.2.25, expected on site mid-week of 6.09.25. / Work will resume after lintel installation

| ID | WBS | Activity | Duration | Start | Finish | Predecessors | Complete | Remaining | Planned start | Planned finish | Total float | Free float | Responsibilities |
| --- | --- | --- | --- | --- | --- | --- | --- | --- | --- | --- | --- | --- | --- |
|  | 691112293 | **L3 A3** |  | 2025-07-25 | 2025-08-07 |  |  |  |  |  |  |  |  |
| 36176 |  | Erect Frame and Decking - L3 A3 | 5d | 2025-07-25 A | 2025-08-07 | A1100 |  | 5d | 2025-07-25 | 2025-07-31 | 35d | 0d |  |
|  | 2 | **Level 3 Concrete** |  | 2025-07-31 | 2025-08-14 |  |  |  |  |  |  |  |  |
|  | 1 | **Pour 1 (Gridline A-J)** |  | 2025-07-31 | 2025-08-04 |  |  |  |  |  |  |  |  |
| A1110 |  | Rebar and Pour Prep | 2d | 2025-07-31 A | 2025-08-01 A | 33562 FS+5d | 100% |  |  |  |  |  |  |
| A1130 |  | Form, Pour, Strip | 2d | 2025-08-01 | 2025-08-04 | A1110 |  |  |  |  | 30d | 0d |  |
|  | 2 | **Pour 2 (Gridline J-Q)** |  | 2025-08-05 | 2025-08-08 |  |  |  |  |  |  |  |  |
| A1140 |  | Rebar and Pour Prep | 2d | 2025-08-05 | 2025-08-06 | A1130 |  |  |  |  | 30d | 0d |  |
| A1160 |  | Form, Pour, Strip | 2d | 2025-08-07 | 2025-08-08 | A1140 |  |  |  |  | 30d | 0d |  |
|  | 3 | **Pour 3 (Gridline Q-U)** |  | 2025-08-11 | 2025-08-14 |  |  |  |  |  |  |  |  |
| A1170 |  | Rebar and Pour Prep | 2d | 2025-08-11 | 2025-08-12 | A1160 |  |  |  |  | 30d | 0d |  |
| A1190 |  | Form, Pour, Strip | 2d | 2025-08-13 | 2025-08-14 | A1170 |  |  |  |  | 30d | 0d |  |
|  | 691084093 | **Roof Deck (Level 3 Walls)** |  | 2025-08-08 | 2025-09-03 |  |  |  |  |  |  |  |  |
|  | 691113193 | **Roof Area 1** |  | 2025-08-08 | 2025-08-20 |  |  |  |  |  |  |  |  |
| 36376 |  | Erect Frame and Decking - RA1 | 5d | 2025-08-08 | 2025-08-14 | 36176, A1130 |  |  |  |  | 90d | 0d | Interior Framing Crew |
| 36396 |  | Install Curbs and Roof Supports - RA1 | 2d | 2025-08-15 | 2025-08-18 | 36376 |  |  |  |  | 150d | 0d |  |
| 36406 |  | Decking Closure - RA1 | 2d | 2025-08-19 | 2025-08-20 | 36396 |  |  |  |  | 150d | 0d |  |
|  | 691112693 | **Roof Area 2** |  | 2025-08-21 | 2025-09-03 |  |  |  |  |  |  |  |  |
| 36326 |  | Erect Frame and Decking - RA2 | 5d | 2025-08-21 | 2025-08-27 | A1160, 36406 |  |  |  |  | 150d | 0d | Interior Framing Crew |
| 36346 |  | Install Curbs and Roof Supports - RA2 | 2d | 2025-08-28 | 2025-08-29 | 36326 |  |  |  |  | 150d | 0d |  |
| 36356 |  | Decking Closure - RA2 | 2d | 2025-09-02 | 2025-09-03 | 36346 |  |  |  |  | 150d |  |  |
|  | 691113693 | **Roof Area 3** |  | 2025-08-15 | 2025-08-27 |  |  |  |  |  |  |  |  |
| 36426 |  | Erect Frame and Decking - RA3 | 5d | 2025-08-15 | 2025-08-21 | A1190 |  |  |  |  | 30d | 0d | Interior Framing Crew |
| 36446 |  | Install Curbs and Roof Supports - RA3 | 2d | 2025-08-22 | 2025-08-25 | 36426 |  |  |  |  | 34d | 0d |  |
| 36456 |  | Decking Closure - RA3 | 2d | 2025-08-26 | 2025-08-27 | 36446 |  |  |  |  | 34d | 0d |  |

| ID | WBS | Activity | Duration | Start | Finish | Predecessors | Complete | Planned start | Planned finish | Total float | Free float | Responsibilities |
| --- | --- | --- | --- | --- | --- | --- | --- | --- | --- | --- | --- | --- |
|  | 691075793 | **CMU Cores** |  | 2025-04-07 | 2025-08-05 |  |  |  |  |  |  |  |
| 1072 |  | CMU Mobilization | 5d | 2025-04-07 A | 2025-04-11 A |  | 100% |  |  |  |  |  |
| 1073 |  | CMU Elevator Core | 8d | 2025-04-14 A | 2025-04-23 A | 35004, 1072, 35023 | 100% |  |  |  |  | Mason / Bricklayer - INTERIOR |
| 35143 |  | CMU Stair B (additional grouting - 5 days per Bulletin #3.CMU Stair B (Additional days due to SOG resequencing) | 13d | 2025-04-24 A | 2025-05-23 A | 1073 | 100% | 2025-04-24 | 2025-05-12 |  |  |  |
| 35153 |  | CMU Stair A | 17d | 2025-05-07 A | 2025-05-30 A | 35143, cmu | 100% |  |  |  |  |  |
| 35144 |  | Steel Stair Install - Stair B | 8d | 2025-06-19 A | 2025-07-11 A | 35143 | 100% | 2025-05-07 | 2025-05-16 |  |  |  |
| 35173 |  | Steel Stair Install - Stair A | 8d | 2025-07-14 A | 2025-07-17 A |  | 100% | 2025-07-10 | 2025-07-21 |  |  |  |
| 35163 |  | Elevator Shaft Hoist beams and Spreader Tubes | 3d | 2025-08-01 | 2025-08-05 | 35144 FS+14d |  |  |  | 84d |  |  |
|  | 691074793 | **Exterior Skin** |  | 2025-08-08 | 2025-12-16 |  |  |  |  |  |  |  |
|  | 691099793 | **Roofing** |  | 2025-08-28 | 2025-09-25 |  |  |  |  |  |  |  |
| 1075 |  | Roof Install | 20d | 2025-08-28 | 2025-09-25 | 36456 |  |  |  | 48d | 0d | Roofing |
| 1076 |  | Backing and Blocking (parapet cap, nailers and signage supports) | 3d | 2025-08-28 | 2025-09-02 | 36456 |  |  |  | 139d | 17d |  |
|  | 691091593 | **North Elevation** |  | 2025-08-08 | 2025-10-21 |  |  |  |  |  |  |  |
| 34783 |  | Veneer Stud Framing | 5d | 2025-08-08 | 2025-08-14 | 36176 |  |  |  | 35d | 5d |  |
| 36476 |  | Sheathing | 5d | 2025-08-22 | 2025-08-28 | 36426, 34783 |  |  |  | 30d | 0d |  |
| 36486 |  | Air/Weather Barrier | 2d | 2025-08-29 | 2025-09-02 | 36476 |  |  |  | 30d | 0d |  |
| 36496 |  | Masonry Veneer | 15d | 2025-09-03 | 2025-09-23 | 36486 |  |  |  | 30d | 0d | Stucco |
| 36516 |  | EIFS | 15d | 2025-09-24 | 2025-10-14 | 36496 |  |  |  | 30d | 0d | Aluminum Storefront |
| 36506 |  | Exterior Metal Panel | 5d | 2025-10-15 | 2025-10-21 | 36516 |  |  |  | 30d | 0d |  |
|  | 691091693 | **South Elevation** |  | 2025-08-29 | 2025-11-26 |  |  |  |  |  |  |  |
| 33433 |  | Veneer Stud Framing | 5d | 2025-08-29 | 2025-09-05 | 36476 |  |  |  | 43d | 0d |  |
| 36526 |  | Sheathing | 5d | 2025-09-08 | 2025-09-12 | 33433 |  |  |  | 43d | 0d |  |
| 36536 |  | Air/Weather Barrier | 2d | 2025-09-15 | 2025-09-16 | 36526 |  |  |  | 65d | 5d |  |
| 36546 |  | Masonry Veneer | 15d | 2025-09-24 | 2025-10-14 | 36536, 36496 |  |  |  | 60d | 0d | Stucco |
| 36566 |  | EIFS | 15d | 2025-10-15 | 2025-11-04 | 36546 |  |  |  | 60d | 0d | Aluminum Storefront |
| 36556 |  | Exterior Metal Panel | 5d | 2025-11-05 | 2025-11-11 | 36566 |  |  |  | 60d | 0d |  |
| 33424 |  | Backing, Blocking and Flashing | 5d | 2025-11-12 | 2025-11-18 | 36556 |  |  |  | 60d | 0d |  |
| 33425 |  | Storefront Install | 3d | 2025-11-19 | 2025-11-21 | 33424 |  |  |  | 60d | 0d |  |
| 33426 |  | Canopy Install | 3d | 2025-11-24 | 2025-11-26 | 33425 |  |  |  | 60d |  |  |

| ID | WBS | Activity | Duration | Start | Finish | Predecessors | Remaining | Planned start | Planned finish | Total float | Free float | Responsibilities |
| --- | --- | --- | --- | --- | --- | --- | --- | --- | --- | --- | --- | --- |
|  | 691115793 | **East Elevation** |  | 2025-09-15 | 2025-12-16 |  |  |  |  |  |  |  |
| 36586 |  | Veneer Stud Framing | 5d | 2025-09-15 | 2025-09-19 | 36526 |  |  |  | 43d | 0d |  |
| 36596 |  | Sheathing | 5d | 2025-09-22 | 2025-09-26 | 36586 |  |  |  | 43d | 0d |  |
| 36606 |  | Air/Weather Barrier | 2d | 2025-09-29 | 2025-09-30 | 36596 |  |  |  | 76d | 10d |  |
| 36616 |  | Masonry Veneer | 15d | 2025-10-15 | 2025-11-04 | 36606, 36546 |  |  |  | 66d | 0d | Stucco |
| 36636 |  | EIFS | 15d | 2025-11-05 | 2025-11-25 | 36616 |  |  |  | 66d | 0d | Aluminum Storefront |
| 36626 |  | Exterior Metal Panel | 5d | 2025-11-26 | 2025-12-04 | 36636 |  |  |  | 66d | 0d |  |
| 36646 |  | Backing, Blocking and Flashing | 2d | 2025-12-05 | 2025-12-08 | 36626 |  |  |  | 66d | 0d |  |
| 36676 |  | Storefront Install | 3d | 2025-12-09 | 2025-12-11 | 36646 |  |  |  | 66d | 0d |  |
| 36686 |  | Canopy Install | 3d | 2025-12-12 | 2025-12-16 | 36676 |  |  |  | 66d |  |  |
|  | 691085593 | **West Elevation** |  | 2025-09-29 | 2025-12-05 |  |  |  |  |  |  |  |
| A1200 |  | Veneer Stud Framing | 5d | 2025-09-29 | 2025-10-03 | 36596 |  |  |  | 43d | 0d |  |
| 36296 |  | Sheathing | 5d | 2025-10-06 | 2025-10-10 | A1200, 36376 |  |  |  | 55d | 0d |  |
| 36306 |  | Air/Weather Barrier and Insulation | 3d | 2025-10-13 | 2025-10-15 | 36296 |  |  |  | 55d | 0d |  |
| 33332 |  | Masonry Veneer | 15d | 2025-10-16 | 2025-11-05 | 36306 |  |  |  | 55d | 0d | Stucco |
| 34802 |  | EIFS | 15d | 2025-11-06 | 2025-11-26 | 33332 |  |  |  | 55d | 0d | Aluminum Storefront |
| 36466 |  | Exterior Metal Panel | 5d | 2025-12-01 | 2025-12-05 | 34802 |  |  |  | 55d |  |  |
|  | 691091593 | **Rough-In** |  | 2025-07-21 | 2025-10-30 |  |  |  |  |  |  |  |
|  | 691088793 | **Level 1 - Rough-In Work** |  | 2025-07-21 | 2025-09-18 |  |  |  |  |  |  |  |
| 33642 |  | Mechanical Rough-In - Level 1 | 7d | 2025-07-21 A | 2025-09-02 | 33632 | 7d | 2025-09-02 | 2025-09-10 | 34d | 0d | Mechanical |
| 33692 |  | Fire Suppression - Level 1 | 15d | 2025-07-23 A | 2025-08-21 | A1100 | 15d | 2025-07-28 | 2025-08-15 | 48d | 7d | Fire Sprinkler |
| 33632 |  | Interior Wall Framing - Level 1 | 5d | 2025-08-15 | 2025-08-21 | A1190 |  |  |  | 34d | 0d | Interior Framing Crew |
| 33652 |  | Electrical and Fire Alarm Rough-In - Level 1 | 15d | 2025-08-28 | 2025-09-18 | 36456 |  |  |  | 34d | 0d | Electrician |
| 33672 |  | Plumbing Rough-In - Level 1 | 5d | 2025-09-03 | 2025-09-09 | 33632, 33642 |  |  |  | 56d | 2d | Plumbing |

| ID | WBS | Activity | Duration | Start | Finish | Predecessors | Remaining | Planned start | Planned finish | Total float | Free float | Responsibilities |
| --- | --- | --- | --- | --- | --- | --- | --- | --- | --- | --- | --- | --- |
|  | 691088893 | **Level 2 - Rough-In Work** |  | 2025-08-01 | 2025-10-09 |  |  |  |  |  |  |  |
| 33742 |  | Fire Suppression - Level 2 | 15d | 2025-08-01 A | 2025-09-23 | 33712 SS, 33692 | 15d | 2025-09-03 | 2025-09-23 | 41d | 0d | Fire Sprinkler |
| 33712 |  | Mechanical Rough-In - Level 2 | 7d | 2025-09-03 | 2025-09-11 | 33642 |  |  |  | 34d | 0d | Mechanical |
| 33732 |  | Plumbing Rough-In - Level 2 | 5d | 2025-09-12 | 2025-09-18 | 33712, 33672 |  |  |  | 54d | 2d | Plumbing |
| 33722 |  | Electrical and Fire Alarm Rough-In - Level 2 | 15d | 2025-09-19 | 2025-10-09 | 33652 |  |  |  | 34d | 0d | Electrician |
|  | 691088993 | **Level 3 - Rough-In Work** |  | 2025-09-12 | 2025-10-30 |  |  |  |  |  |  |  |
| 33802 |  | Mechanical Rough-In - Level 3 | 7d | 2025-09-12 | 2025-09-22 | 33712 |  |  |  | 49d | 0d | Mechanical |
| 33792 |  | Plumbing Rough-In - Level 3 | 5d | 2025-09-23 | 2025-09-29 | 33802, 33732 |  |  |  | 52d | 18d | Plumbing |
| 33812 |  | Fire Suppression - Level 3 | 15d | 2025-09-24 | 2025-10-14 | 33802 SS, 33742 |  |  |  | 41d | 7d | Fire Sprinkler |
| 33782 |  | Electrical and Fire Alarm Rough-In - Level 3 | 15d | 2025-10-10 | 2025-10-30 | 33722 |  |  |  | 34d | 0d | Electrician |
|  | 691091993 | **Janus Scope** |  | 2025-09-12 | 2025-11-13 |  |  |  |  |  |  |  |
| 33842 |  | Level 1 - JS | 15d | 2025-09-12 | 2025-10-02 | 36456, 33712 |  |  |  | 34d | 0d | Owner |
| 33852 |  | Level 2 - JS | 15d | 2025-10-03 | 2025-10-23 | 33842, 33722 SS+10d |  |  |  | 34d | 0d | Owner |
| 33862 |  | Level 3 - JS | 15d | 2025-10-24 | 2025-11-13 | 33852, 33812, 33792, 33782 SS+10d |  |  |  | 34d | 0d | Owner |
|  | 691094293 | **Elevators** |  | 2025-12-05 | 2026-02-10 |  |  |  |  |  |  |  |
| 33882 |  | Elevator Installation | 30d | 2025-12-05 | 2026-01-19 | 1075, 32912, 35283, 35163 |  |  |  | 0d |  | Elevator |
| 33892 |  | Elevator Infill and Lobby Finishes (all Levels) | 16d | 2026-01-20 | 2026-02-10 | 33882 |  |  |  | 0d |  |  |
|  | 691075093 | **Interiors** |  | 2025-09-26 | 2025-12-22 |  |  |  |  |  |  |  |
|  | 691074993 | **Storage Areas** |  | 2025-09-26 | 2025-12-22 |  |  |  |  |  |  |  |
|  | 691093393 | **Level 1 - Interiors** |  | 2025-10-06 | 2025-11-07 |  |  |  |  |  |  |  |
| 34922 |  | Paint Structure | 10d | 2025-10-06 | 2025-10-17 | A1200 |  |  |  | 43d | 0d | Painter |
| 34882 |  | Flooring Trim | 10d | 2025-10-20 | 2025-10-31 | 34922 SS+10d |  |  |  | 53d | 0d | Flooring |
| 34892 |  | Lighting Trim | 10d | 2025-10-20 | 2025-10-31 | 34922 SS+10d |  |  |  | 43d | 0d | Electrician |
| 34902 |  | Mechanical Trim | 5d | 2025-11-03 | 2025-11-07 | 34882, 34892 |  |  |  | 53d | 5d | Mechanical |
| 34912 |  | Plumbing Trim | 5d | 2025-11-03 | 2025-11-07 | 34882 |  |  |  | 63d |  | Plumbing |

| ID | WBS | Activity | Duration | Start | Finish | Predecessors | Total float | Free float | Responsibilities |
| --- | --- | --- | --- | --- | --- | --- | --- | --- | --- |
|  | 691092793 | **Level 2 -Interiors** |  | 2025-10-20 | 2025-11-21 |  |  |  |  |
| 34862 |  | Paint Structure | 10d | 2025-10-20 | 2025-10-31 | 34922 | 43d | 0d | Painter |
| 34822 |  | Flooring Trim | 10d | 2025-11-03 | 2025-11-14 | 34862 SS+10d | 48d | 0d | Flooring |
| 34832 |  | Lighting Trim | 10d | 2025-11-03 | 2025-11-14 | 34862 SS+10d, 34892 | 43d | 0d | Electrician |
| 34842 |  | Mechanical Trim | 5d | 2025-11-17 | 2025-11-21 | 34832 SS+10d | 48d | 14d | Mechanical |
| 34852 |  | Plumbing Trim | 5d | 2025-11-17 | 2025-11-21 | 34822, 34902 | 48d | 14d | Plumbing |
|  | 691075193 | **Level 3 - Interiors** |  | 2025-11-14 | 2025-12-22 |  |  |  |  |
| 1082 |  | Paint Structure | 10d | 2025-11-14 | 2025-12-01 | 34862, 33862, 1130, 35173 | 34d | 0d | Painter |
| 1083 |  | Flooring Trim | 10d | 2025-12-02 | 2025-12-15 | 1082 SS+10d | 34d | 0d | Flooring |
| 1084 |  | Lighting Trim | 10d | 2025-12-02 | 2025-12-15 | 1082 SS+10d, 34892, 34832 | 34d | 0d | Electrician |
| 1085 |  | Mechanical Trim | 5d | 2025-12-16 | 2025-12-22 | 1084 SS+10d, 34842 | 34d |  | Mechanical |
| 1087 |  | Plumbing Trim | 5d | 2025-12-16 | 2025-12-22 | 1083, 34852 | 34d |  | Plumbing |
|  | 691075293 | **Level 1 Office and Restrooms** |  | 2025-09-26 | 2025-12-09 |  |  |  |  |
| 34932 |  | Drywall - Office | 7d | 2025-09-26 | 2025-10-06 | 1075 | 53d | 0d | Drywall |
| 1106 |  | Doors & Hardware - Office | 5d | 2025-10-07 | 2025-10-13 | 34932 | 53d | 0d | Doors, Frames, Hardware |
| 1095 |  | Millwork - Office | 5d | 2025-10-14 | 2025-10-20 | 34932, 1106 | 53d | 0d | Millwork / Casework |
| 1096 |  | Flooring - Office | 5d | 2025-10-21 | 2025-10-27 | 1095 | 53d | 0d | Flooring |
| 1097 |  | Prime & Paint 1st Coat - Office | 5d | 2025-10-28 | 2025-11-03 | 1096 | 53d | 0d | Painter |
| 1100 |  | Light Fixtures - Office | 5d | 2025-11-04 | 2025-11-10 | 1097 | 72d |  | Electrician |
| 1103 |  | Mechanical Trim Out - Office | 5d | 2025-11-04 | 2025-11-10 | 1097 | 72d |  | Mechanical |
| 1104 |  | Electrical Trim Out - Office | 5d | 2025-11-04 | 2025-11-10 | 1097 | 53d | 0d | Electrician |
| 1105 |  | Plumbing Trim Out - Office | 5d | 2025-11-11 | 2025-11-17 | 1104 | 53d | 0d | Plumbing |
| 1107 |  | Final Coat Paint - Office | 5d | 2025-11-18 | 2025-11-24 | 1105 | 53d | 0d | Painter |
| 1099 |  | Install Appliances - Office | 2d | 2025-11-25 | 2025-11-26 | 1107 | 60d |  | Appliances |
| 1108 |  | Final Clean - Office | 5d | 2025-11-25 | 2025-12-03 | 1107 | 53d | 0d | Final Cleaning |
| 1109 |  | Punch List Work - Office | 5d | 2025-12-03 | 2025-12-09 | 1108 FF+4d | 53d |  | WEO |

| ID | WBS | Activity | Duration | Start | Finish | Predecessors | Total float | Free float | Responsibilities |
| --- | --- | --- | --- | --- | --- | --- | --- | --- | --- |
|  | 691082593 | **Final Sitework** |  | 2025-08-01 | 2025-11-26 |  |  |  |  |
|  | 691082693 | **Hardscapes** |  | 2025-08-01 | 2025-11-12 |  |  |  |  |
| 1140 |  | Detention Pond Fencing | 3d | 2025-08-01 | 2025-08-05 | 35676 | 170d |  |  |
| 1131 |  | Striping and Signage | 1d | 2025-10-01 | 2025-10-01 | 36026 | 120d | 40d |  |
| 1129 |  | Sidewalks | 5d | 2025-11-06 | 2025-11-12 | 35383, 33332 | 80d | 0d | Site Hardscapes |
|  | 691082793 | **Landscapes** |  | 2025-11-13 | 2025-11-26 |  |  |  |  |
| 1179 |  | Irrigation Systems | 5d | 2025-11-13 | 2025-11-19 | 1129 | 80d | 0d | Site Landscaping |
| 1189 |  | Plantings | 5d | 2025-11-20 | 2025-11-26 | 1179 | 80d | 0d | Site Landscaping |
|  | 691075893 | **Closeout** |  | 2026-02-11 | 2026-03-10 |  |  |  |  |
| 1111 |  | Commissioning | 10d | 2026-02-11 | 2026-02-24 | 1085, 1087, 1084, 33882, 33892, 32922, 34912 | 0d |  | Mechanical |
| 1112 |  | Fire Alarm Programing/Testing | 5d | 2026-02-18 | 2026-02-24 | 1111 FS-5d | 0d |  | Electrician |
| 1113 |  | Final Inspections | 10d | 2026-02-25 | 2026-03-10 | 1112, 33172, 33182, 36466, 1100, 1103, 1099, 1109, 33426 | 0d |  | Inspections |
| 1114 |  | WEO Overall / Final Punch List Work | 5d | 2026-02-25 | 2026-03-03 | 1112, 1189, 1015 | 20d | 0d | WEO |
| 1115 |  | Develop Owner Punch Lists | 5d | 2026-03-04 | 2026-03-10 | 1114 | 20d |  | Owner |
