# Overall Construction Schedule

Schedule from MS Project, 2025-07-09 to 2026-10-30, status date 2026-03-02, A marks actual dates.
Toshiba

## Calendars

- Standard: Mon-Fri 08:00-12:00, 13:00-17:00; Sat-Sun off.

## Schedule

| ID | WBS | Task | Type | Duration | Start | Finish | Predecessors | Complete | Remaining | Total slack | Free slack | Constraint |
| --- | --- | --- | --- | --- | --- | --- | --- | --- | --- | --- | --- | --- |
| 1 | 1 | **Contract Administration** |  | 40d | 2025-07-09 A | 2025-09-02 A |  | 100% |  |  |  |  |
| 2 | 1.1 | Notice to Proceed |  | 34d | 2025-07-09 A | 2025-08-25 A |  | 100% |  |  |  |  |
| 3 | 1.2 | Mobilization |  | 1d | 2025-08-26 A | 2025-09-02 A | 2 | 100% |  |  |  |  |
| 4 | 2 | **Procurement** |  | 291d | 2025-08-07 A | 2026-09-17 |  | 18% | 239.1d | 31d |  |  |
| 5 | 2.1 | 033000 - CIP - Product Data/Material Certificates, Submittal |  | 1d | 2025-08-11 A | 2025-08-13 A | 2 | 100% |  |  |  |  |
| 6 | 2.2 | 033000 - CIP - Design Mixtures for Concrete, Submittal | milestone | 0d | 2025-08-07 A | 2025-08-08 A | 2 | 100% |  |  |  |  |
| 7 | 2.3 | 033000 - CIP - Rebar Shop Drawings, Submittal | milestone | 0d | 2025-08-07 A | 2025-08-08 A | 2 | 100% |  |  |  | finish no earlier than 2025-08-08 |
| 8 | 2.4 | 033000 - CIP - Construction Joint Layout, Submittal |  | 10d | 2026-03-03 | 2026-03-16 | 2 |  |  | 149d | 0d | start no earlier than 2026-03-02 |
| 9 | 2.5 | 033000 - CIP - Slab on Grade Control Joint Layout, Submittal |  | 10d | 2026-03-03 | 2026-03-16 | 2 |  |  | 149d | 0d | start no earlier than 2026-03-02 |
| 10 | 2.6 | 033000 - CIP - Product Data/Material Certificates, Review/Approval |  | 15d | 2026-03-03 | 2026-03-23 | 5 |  |  | 159d |  | start no earlier than 2026-03-02 |
| 11 | 2.7 | 033000 - CIP - Design Mixtures for Concrete, Review/Approval |  | 2d | 2025-08-08 A | 2025-08-25 A | 6 | 100% |  |  |  |  |
| 12 | 2.8 | 033000 - CIP - Rebar Shop Drawings, Review/Approval |  | 31d | 2025-08-08 A | 2025-09-22 A | 7 | 100% |  |  |  | start no earlier than 2025-10-20 |
| 13 | 2.9 | 033000 - CIP - Construction Joint Layout, Review/Approval |  | 15d | 2026-03-17 | 2026-04-06 | 8 |  |  | 149d |  | start no earlier than 2026-03-02 |
| 14 | 2.10 | 033000 - CIP - Slab on Grade Control Joint Layout, Review/Approval |  | 15d | 2026-03-17 | 2026-04-06 | 9 |  |  | 149d |  | start no earlier than 2026-03-02 |
| 15 | 2.11 | 033300 - Concrete Sealing, Product Data, F-01 Finish, Submittals |  | 2d | 2026-01-27 A | 2026-01-28 A | 2 | 100% |  |  |  | start no earlier than 2026-01-26 |
| 16 | 2.12 | 033300 - Concrete Polishing, Product Data FF-02, Submittals |  | 2d | 2026-01-27 A | 2026-01-28 A | 2 | 100% |  |  |  | start no earlier than 2026-01-26 |
| 17 | 2.13 | 033300 - Concrete Sealing, Product Data, F-01 Finish, Review/Approval |  | 15d | 2026-03-03 | 2026-03-23 | 15 |  |  | 122d | 1d | start no earlier than 2026-03-02 |
| 18 | 2.14 | 033300 - Concrete Polishing, Product Data FF-02, Review/Approval |  | 15d | 2026-03-03 | 2026-03-23 | 16 |  |  | 122d | 1d | start no earlier than 2026-03-02 |
| 19 | 2.15 | 042000 - Unit Masonry, Product Data, Masonry Accessories, Submittal | milestone | 0d | 2025-08-07 A | 2025-08-08 A | 2 | 100% |  |  |  |  |
| 20 | 2.16 | 042000 - Unit Masonry, Product Data, Masonry Accessories, Review/Approval | milestone | 0d | 2025-08-14 A | 2025-09-10 A | 19 | 100% |  |  |  |  |
| 21 | 2.17 | 042000 Unit Masonry, Grout Mix, Submittal | milestone | 0d | 2025-08-07 A | 2025-08-08 A | 2 | 100% |  |  |  |  |
| 22 | 2.18 | 042000 Unit Masonry, Grout Mix, Review/Approval | milestone | 0d | 2025-10-07 A | 2025-10-10 A | 21 | 100% |  |  |  |  |
| 23 | 2.19 | 051200 - Structural Steel Framing, Shop Drawings, Submittal |  | 1d | 2025-09-26 A | 2025-09-26 A | 2 | 100% |  |  |  | start no earlier than 2025-10-20 |
| 24 | 2.20 | 051200 - Structural Steel Framing, Shop Drawings, Review/Approval |  | 15d | 2025-09-29 A | 2025-10-17 A | 23 | 100% |  |  |  | start no earlier than 2025-10-20 |
| 25 | 2.21 | 054000 - Cold Formed Metal Framing, Product Data, Submittal |  | 2d | 2025-09-23 A | 2025-09-24 A | 2 | 100% |  |  |  | start no earlier than 2026-01-26 |
| 26 | 2.22 | 054000 - Cold Formed Metal Framing, Product Data, Review/Approval | milestone | 0d | 2025-09-25 A | 2025-09-26 A | 25 | 100% |  |  |  | start no earlier than 2025-11-10 |
| 27 | 2.23 | 054000 - Cold Formed Metal Framing, Shop Drawings, Submittal |  | 2d | 2025-09-25 A | 2025-09-26 A | 2 | 100% |  |  |  | start no earlier than 2026-01-26 |
| 28 | 2.24 | 054000 - Cold Formed Metal Framing, Shop Drawings, Review/Approval | milestone | 0d | 2025-09-29 A | 2025-10-17 A | 27 | 100% |  |  |  | start no earlier than 2025-10-20 |
| 29 | 2.25 | 055000 - Metal Fabricators, Shop Drawings, Submittal |  | 20d | 2025-09-01 A | 2025-09-28 A | 2 | 100% |  |  |  |  |
| 30 | 2.26 | 055000 - Metal Fabricators, Shop Drawings, Review/Approval |  | 14d | 2025-09-29 A | 2025-10-16 A | 29 | 100% |  |  |  |  |
| 31 | 2.27 | 055000 - Metal Fabricators, Fabrication/Delivery |  | 57d | 2025-10-17 A | 2026-01-05 A | 30 | 100% |  |  |  |  |
| 32 | 2.28 | 055100/055116 - Metal Stair, Shop Drawings, Submittal |  | 2d | 2025-10-30 A | 2025-10-31 A | 2 | 100% |  |  |  | start no earlier than 2025-11-21 |
| 33 | 2.29 | 055100/055116 - Metal Stair, Shop Drawings, Review/Approval | milestone | 0d | 2025-11-03 A | 2025-12-11 A | 32 | 100% |  |  |  |  |
| 34 | 2.30 | 055100/055116 - Metal Stair, Shop Drawings, Fabrication/Delivery |  | 25d | 2025-12-15 A | 2026-04-06 | 33 |  | 25d | 1d | 0d | start no earlier than 2026-03-02 |
| 35 | 2.31 | 055110 - Aluminum Diamond Plate Wainscot, Product Data/Shop Drawings, Submittal |  | 25d | 2026-03-03 | 2026-04-06 | 2 |  |  | 61d | 0d | start no earlier than 2026-03-02 |
| 36 | 2.32 | 055110 - Aluminum Diamond Plate Wainscot, Product Data/Shop Drawings, Review/Approval |  | 15d | 2026-04-07 | 2026-04-27 | 35 |  |  | 61d | 52d | start no earlier than 2026-01-26 |
| 37 | 2.33 | 055213 - Pipe and Tube Railings, Shop Drawings, Submittal |  | 2d | 2025-10-30 A | 2025-10-31 A | 2 | 100% |  |  |  | start no earlier than 2025-11-21 |
| 38 | 2.34 | 055213 - Pipe and Tube Railings, Shop Drawings, Review/Approval | milestone | 0d | 2025-11-03 A | 2025-12-11 A | 37 | 100% |  |  |  | start no earlier than 2025-10-20 |
| 39 | 2.35 | 055213 - Pipe and Tube Railings, Shop Drawings, Fabrication/Delivery |  | 25d | 2026-03-03 | 2026-04-06 | 38 |  |  | 1d | 0d | start no earlier than 2026-03-02 |
| 40 | 2.36 | 061000 - Rough Carpentry, Product Data Submittals |  | 10d | 2026-03-03 | 2026-03-16 | 2 |  |  | 8d | 0d | start no earlier than 2026-03-02 |
| 41 | 2.37 | 061000 - Rough Carpentry, Product Data Approval |  | 15d | 2026-03-17 | 2026-04-06 | 40 |  |  | 8d | 7d | start no earlier than 2026-03-02 |
| 42 | 2.38 | 061600 - Sheathing, Product Data Submittals |  | 2d | 2026-02-02 A | 2026-02-03 A | 2 | 100% |  |  |  | start no earlier than 2026-01-26 |
| 43 | 2.39 | 061600 - Sheathing, Product Data Review/Approval |  | 15d | 2026-02-04 A | 2026-03-23 | 42 |  | 15d | 18d | 17d | start no earlier than 2026-01-26 |
| 44 | 2.40 | 064116 - Plastic Laminate Casework, Product Data, Submittals |  | 20d | 2026-03-03 | 2026-03-30 | 2 |  |  | 27d | 0d | start no earlier than 2026-03-02 |
| 45 | 2.41 | 064116 - Plastic Laminate Casework, Shop Drawings, Submittal |  | 20d | 2026-03-03 | 2026-03-30 | 2 |  |  | 27d | 0d | start no earlier than 2026-03-02 |
| 46 | 2.42 | 064116 - Plastic Laminate Casework, Color Samples |  | 20d | 2026-03-03 | 2026-03-30 | 2 |  |  | 27d | 0d | start no earlier than 2026-03-02 |
| 47 | 2.43 | 064116 - Plastic Laminate Casework, Product Data, Review/Approval |  | 15d | 2026-03-31 | 2026-04-20 | 44 |  |  | 27d | 0d | start no earlier than 2026-03-02 |
| 48 | 2.44 | 064116 - Plastic Laminate Casework, Shop Drawings, Review/Approval |  | 15d | 2026-03-31 | 2026-04-20 | 45 |  |  | 27d | 0d | start no earlier than 2026-03-02 |
| 49 | 2.45 | 064116 - Plastic Laminate Casework, Color Samples, Review/Approval |  | 15d | 2026-03-31 | 2026-04-20 | 46 |  |  | 27d | 0d | start no earlier than 2026-03-02 |
| 50 | 2.46 | 064116 - Plastic Laminate Casework, Fabrication/Delivery |  | 25d | 2026-04-21 | 2026-05-25 | 47, 48, 49 |  |  | 27d | 16d |  |
| 51 | 2.47 | 066400 - FRP Submittals |  | 25d | 2026-03-03 | 2026-04-06 | 2 |  |  | 47d | 0d | start no earlier than 2026-03-02 |
| 52 | 2.48 | 066400 - FRP - Review/Approval |  | 15d | 2026-04-07 | 2026-04-27 | 51 |  |  | 47d | 36d | start no earlier than 2026-01-26 |
| 53 | 2.49 | 071113 - Bituminous Waterproofing, Product Data Submittals |  | 10d | 2026-03-03 | 2026-03-16 | 2 |  |  | 149d | 0d | start no earlier than 2026-03-02 |
| 54 | 2.50 | 071113 - Bituminous Waterproofing, Review/Approval |  | 15d | 2026-03-17 | 2026-04-06 | 53 |  |  | 149d |  | start no earlier than 2026-03-02 |
| 55 | 2.51 | 071326 - Self-Adhering Sheet Waterproofing, Product Data Submittal |  | 1d | 2025-09-17 A | 2025-09-17 A | 2 | 100% |  |  |  | start no earlier than 2025-10-20 |
| 56 | 2.52 | 071326 - Self-Adhering Sheet Waterproofing, Product Data Review/Approval |  | 6d | 2025-09-24 A | 2025-10-01 A | 55 | 100% |  |  |  | start no earlier than 2025-10-20 |
| 57 | 2.53 | 071326 - Self-Adhering Sheet Waterproofing, Shop Drawings, Submittal |  | 10d | 2026-03-03 | 2026-03-16 | 2 |  |  | 149d | 0d | start no earlier than 2026-03-02 |
| 58 | 2.54 | 071326 - Self-Adhering Sheet Waterproofing, Shop Drawings, Review/Approval |  | 15d | 2026-03-17 | 2026-04-06 | 57 |  |  | 149d |  | start no earlier than 2026-03-02 |
| 59 | 2.55 | 071326 - Self-Adhering Sheet Waterproofing, Samples, Submittal |  | 10d | 2026-03-03 | 2026-03-16 | 2 |  |  | 149d | 0d | start no earlier than 2026-03-02 |
| 60 | 2.56 | 071326 - Self-Adhering Sheet Waterproofing, Samples, Review/Approval |  | 15d | 2026-03-17 | 2026-04-06 | 59 |  |  | 149d |  | start no earlier than 2026-03-02 |
| 61 | 2.57 | 071416 - Cold Fluid Applied Waterproofing, Product Data Submittals |  | 10d | 2026-03-03 | 2026-03-16 | 2 |  |  | 34d | 0d | start no earlier than 2026-03-02 |
| 62 | 2.58 | 071416 - Cold Fluid Applied Waterproofing, Shop Drawings, Submittal |  | 20d | 2026-03-03 | 2026-03-30 | 2 |  |  | 24d | 0d | start no earlier than 2026-03-02 |
| 63 | 2.59 | 071416 - Cold Fluid Applied Waterproofing, Product Data, Review/Approval |  | 15d | 2026-03-17 | 2026-04-06 | 61 |  |  | 34d | 10d | start no earlier than 2026-03-02 |
| 64 | 2.60 | 071416 - Cold Fluid Applied Waterproofing, Shop Drawings, Review/Approval |  | 15d | 2026-03-31 | 2026-04-20 | 62 |  |  | 24d | 0d | start no earlier than 2026-03-02 |
| 65 | 2.61 | 072100 - Thermal Insulation, Product Data Submittals |  | 2d | 2026-02-02 A | 2026-02-03 A | 2 | 100% |  |  |  | start no earlier than 2026-01-26 |
| 66 | 2.62 | 072100 - Thermal Insulation, Product Data, Review/Approval |  | 15d | 2026-03-03 | 2026-03-23 | 65 |  |  | 9d | 0d | start no earlier than 2026-03-02 |
| 67 | 2.63 | 072410 - Stucco System, Product Data, Submittals |  | 6d | 2025-11-17 A | 2025-11-24 A | 2 | 100% |  |  |  | start no earlier than 2025-11-21 |
| 68 | 2.64 | 072410 - Stucco System, Manufacturers Standard Warranty, Submittal |  | 6d | 2025-11-17 A | 2025-11-24 A | 2 | 100% |  |  |  | start no earlier than 2025-11-21 |
| 69 | 2.65 | 072410 - Stucco System, Color Samples for Architect Approval |  | 15d | 2026-03-03 | 2026-03-23 | 2 |  |  | 29d | 0d | start no earlier than 2026-03-02 |
| 70 | 2.66 | 072410 - Stucco System, Shop Drawings for Approval |  | 15d | 2026-03-03 | 2026-03-23 | 2 |  |  | 29d | 0d | start no earlier than 2026-03-02 |

| ID | WBS | Task | Type | Duration | Start | Finish | Predecessors | Complete | Remaining | Total slack | Free slack | Constraint |
| --- | --- | --- | --- | --- | --- | --- | --- | --- | --- | --- | --- | --- |
| 71 | 2.67 | 072410 - Stucco System, Product Data, Review/Approval |  | 15d | 2026-03-03 | 2026-03-23 | 67 |  |  | 44d | 26d | start no earlier than 2026-03-02 |
| 72 | 2.68 | 072410 - Stucco System, Manufacturers Standard Warranty, Review/Approval |  | 15d | 2026-03-03 | 2026-03-23 | 68 |  |  | 44d | 26d | start no earlier than 2026-03-02 |
| 73 | 2.69 | 072410 - Stucco System, Color Samples, Review/Approval |  | 15d | 2026-03-24 | 2026-04-13 | 69 |  |  | 29d | 11d | start no earlier than 2026-03-02 |
| 74 | 2.70 | 072410 - Stucco System, Shop Drawings, Review/Approval |  | 15d | 2026-03-24 | 2026-04-13 | 70 |  |  | 29d | 11d | start no earlier than 2026-03-02 |
| 75 | 2.71 | 072500 - Weather Barriers, Product Data, Submittal |  | 10d | 2026-03-03 | 2026-03-16 | 2 |  |  | 149d | 0d | start no earlier than 2026-03-02 |
| 76 | 2.72 | 072500 - Weather Barriers, Product Data, Review/Approval |  | 15d | 2026-03-17 | 2026-04-06 | 75 |  |  | 149d |  | start no earlier than 2026-03-02 |
| 77 | 2.73 | 072500 - Weather Barriers, Shop Drawings, Submittal |  | 10d | 2026-03-03 | 2026-03-16 | 2 |  |  | 149d | 0d | start no earlier than 2026-03-02 |
| 78 | 2.74 | 072500 - Weather Barriers, Shop Drawing, Review/Approval |  | 15d | 2026-03-17 | 2026-04-06 | 77 |  |  | 149d |  | start no earlier than 2026-03-02 |
| 79 | 2.75 | 072713 - Modified Bituminous Sheet Air Barriers, Product Data, Submittals |  | 10d | 2026-03-03 | 2026-03-16 | 2 |  |  | 149d | 0d | start no earlier than 2026-03-02 |
| 80 | 2.76 | 072713 - Modified Bituminous Sheet Air Barriers, Shop Drawing, Submittals |  | 20d | 2026-03-03 | 2026-03-30 | 2 |  |  | 139d | 0d | start no earlier than 2026-03-02 |
| 81 | 2.77 | 072713 - Modified Bituminous Sheet Air Barriers, Product Data, Review/Approval |  | 15d | 2026-03-17 | 2026-04-06 | 79 |  |  | 149d |  | start no earlier than 2026-03-02 |
| 82 | 2.78 | 072713 - Modified Bituminous Sheet Air Barriers, Shop Drawing, Review/Approval |  | 15d | 2026-03-31 | 2026-04-20 | 80 |  |  | 139d |  | start no earlier than 2026-03-02 |
| 83 | 2.79 | 075423 - TPO Roofing, Product Data, Submittals |  | 3d | 2025-11-12 A | 2025-11-14 A | 2 | 100% |  |  |  | start no earlier than 2025-11-21 |
| 84 | 2.80 | 075423 - TPO Roofing, Shop Drawing, Submittals |  | 20d | 2026-03-03 | 2026-03-30 | 2 |  |  | 22d | 0d | start no earlier than 2026-03-02 |
| 85 | 2.81 | 075423 - TPO Roofing, Product Data, Review/Approval |  | 1d | 2025-11-17 A | 2026-01-27 A | 83 | 100% |  |  |  | start no earlier than 2025-11-10 |
| 86 | 2.82 | 075423 - TPO Roofing, Shop Drawing, Review/Approval |  | 15d | 2026-03-31 | 2026-04-20 | 84 |  |  | 22d | 5d | start no earlier than 2026-03-02 |
| 87 | 2.83 | 075423 - TPO Roofing, Sample Warranty, Submittal |  | 10d | 2026-03-03 | 2026-03-16 | 2 |  |  | 32d | 0d | start no earlier than 2026-03-02 |
| 88 | 2.84 | 075423- TPO Roofing, Sample Warranty, Review/Approval |  | 15d | 2026-03-17 | 2026-04-06 | 87 |  |  | 32d | 15d | start no earlier than 2026-03-02 |
| 89 | 2.85 | 075423 - TPO Roofing, Closeout Submittal, Maintenance Data |  | 20d | 2026-06-01 | 2026-06-26 | 375 |  |  | 89d | 69d |  |
| 90 | 2.86 | 075423 - TPO Roofing, Closeout Submittal, Roof Warranty |  | 20d | 2026-06-01 | 2026-06-26 | 375 |  |  | 89d | 69d |  |
| 91 | 2.87 | 075423 - TPO Roofing, Closeout Submittal, Record Drawings |  | 20d | 2026-06-01 | 2026-06-26 | 375 |  |  | 89d | 69d |  |
| 92 | 2.88 | 076200 - Sheet Metal Flashing and Trim, Product Data, Submittals |  | 10d | 2026-03-03 | 2026-03-16 | 2 |  |  | 37d | 0d | start no earlier than 2026-03-02 |
| 93 | 2.89 | 076200 - Sheet Metal Flashing and Trim, Shop Drawings, Submittals |  | 20d | 2026-03-03 | 2026-03-30 | 2 |  |  | 17d | 0d | start no earlier than 2026-03-02 |
| 94 | 2.90 | 076200 - Sheet Metal Flashing and Trim, Samples, Submittals |  | 20d | 2026-03-03 | 2026-03-30 | 2 |  |  | 17d | 0d | start no earlier than 2026-03-02 |
| 95 | 2.91 | 076200 - Sheet Metal Flashing and Trim, Product Data, Review/Approval |  | 10d | 2026-03-17 | 2026-03-30 | 2, 92 |  |  | 37d | 20d | start no earlier than 2026-03-02 |
| 96 | 2.92 | 076200 - Sheet Metal Flashing and Trim, Shop Drawings, Review/Approval |  | 20d | 2026-03-31 | 2026-04-27 | 2, 93 |  |  | 17d | 0d | start no earlier than 2026-03-02 |
| 97 | 2.93 | 076200 - Sheet Metal Flashing and Trim, Samples, Review/Approval |  | 20d | 2026-03-31 | 2026-04-27 | 2, 94 |  |  | 17d | 0d | start no earlier than 2026-03-02 |
| 98 | 2.94 | 077100 - Roof Specialties, Product Data, Submittals |  | 20d | 2026-03-03 | 2026-03-30 | 2 |  |  | 22d | 0d | start no earlier than 2026-03-02 |
| 99 | 2.95 | 077100 - Roof Specialties, Shop Drawing, Submittals |  | 20d | 2026-03-03 | 2026-03-30 | 2 |  |  | 22d | 0d | start no earlier than 2026-03-02 |
| 100 | 2.96 | 077100 - Roof Specialties, Product Data, Review/Approval |  | 15d | 2026-03-31 | 2026-04-20 | 98 |  |  | 22d | 5d | start no earlier than 2026-03-02 |
| 101 | 2.97 | 077100 - Roof Specialties, Shop Drawing, Review/Approval |  | 15d | 2026-03-31 | 2026-04-20 | 99 |  |  | 22d | 5d | start no earlier than 2026-03-02 |
| 102 | 2.98 | 077200 - Roof Accessories, Product Data, Submittals |  | 15d | 2026-03-03 | 2026-03-23 | 2 |  |  | 3d | 0d | start no earlier than 2026-03-02 |
| 103 | 2.99 | 077200 - Roof Accessories, Shop Drawings, Submittal |  | 15d | 2026-03-03 | 2026-03-23 | 2 |  |  | 3d | 0d | start no earlier than 2026-03-02 |
| 104 | 2.100 | 077200 - Roof Accessories, Design Certifications, Submittal |  | 15d | 2026-03-03 | 2026-03-23 | 2 |  |  | 3d | 0d | start no earlier than 2026-03-02 |
| 105 | 2.101 | 077200 - Roof Accessories, Product Data, Review/Approval |  | 15d | 2026-03-24 | 2026-04-13 | 102 |  |  | 3d | 2d | start no earlier than 2026-03-02 |
| 106 | 2.102 | 077200 - Roof Accessories, Shop Drawings, Review/Approval |  | 15d | 2026-03-24 | 2026-04-13 | 103 |  |  | 3d | 2d | start no earlier than 2026-03-02 |
| 107 | 2.103 | 077200 - Roof Accessories, Design Certifications, Review/Approval |  | 15d | 2026-03-24 | 2026-04-13 | 104 |  |  | 3d | 2d | start no earlier than 2026-03-02 |
| 108 | 2.104 | 078413 - Penetration Firestopping, Product Data, Submittals |  | 2d | 2025-10-20 A | 2025-10-21 A | 2 | 100% |  |  |  | start no earlier than 2026-01-26 |
| 109 | 2.105 | 078413 - Penetration Firestopping, Product Data, Review/Approval |  | 11d | 2025-10-22 A | 2025-11-05 A | 2, 108 | 100% |  |  |  | start no earlier than 2026-01-26 |
| 110 | 2.106 | 079200 - Joint Sealants, Product Data, Submittal |  | 2d | 2025-10-21 A | 2025-10-22 A | 2 | 100% |  |  |  | start no earlier than 2025-11-21 |
| 111 | 2.107 | 079200 - Joint Sealants, Initial Samples for Selection |  | 10d | 2026-03-03 | 2026-03-16 | 2 |  |  | 44d | 0d | start no earlier than 2026-03-02 |
| 112 | 2.108 | 079200 - Joint Sealants, Samples for Verificiation |  | 20d | 2026-03-31 | 2026-04-27 | 114 |  |  | 44d | 0d | start no earlier than 2026-03-02 |
| 113 | 2.109 | 079200 - Joint Sealants, Product Data, Review/Approval |  | 15d | 2025-10-23 A | 2025-11-12 A | 110 | 100% |  |  |  | start no earlier than 2025-11-10 |
| 114 | 2.110 | 079200 - Joint Sealants, Initial Samples for Selection, Review/Approval |  | 10d | 2026-03-17 | 2026-03-30 | 111 |  |  | 44d | 0d | start no earlier than 2026-03-02 |
| 115 | 2.111 | 079200 - Joint Sealants, Samples for Verificiation, Review/Approval |  | 20d | 2026-04-28 | 2026-05-25 | 114, 112 |  |  | 44d | 42d |  |
| 116 | 2.112 | 081113 - Hollow Metal Doors and Frames, Product Data Submittal |  | 6d | 2025-08-25 A | 2025-09-02 A | 2 | 100% |  |  |  | start no earlier than 2025-10-20 |
| 117 | 2.113 | 081113 - Hollow Metal Doors and Frames, Shop Drawings, Submittal |  | 6d | 2025-08-25 A | 2025-09-02 A | 2 | 100% |  |  |  | start no earlier than 2025-10-20 |
| 118 | 2.114 | 081113 - Hollow Metal Doors and Frames, Product Data, Review/Approval | milestone | 0d | 2025-09-03 A | 2025-10-09 A | 116 | 100% |  |  |  | start no earlier than 2025-10-20 |
| 119 | 2.115 | 081113 - Hollow Metal Doors and Frames, Shop Drawings, Review/Approval |  | 15d | 2026-03-03 | 2026-03-23 | 117 |  |  | 158d | 0d | start no earlier than 2026-03-02 |
| 120 | 2.116 | 083113 - Access Doors and Frames, Product Data, Submittal |  | 10d | 2026-03-03 | 2026-03-16 | 2 |  |  | 62d | 0d | start no earlier than 2026-03-02 |
| 121 | 2.117 | 083113 - Access Doors and Frames, Product Data, Review/Approval |  | 15d | 2026-03-17 | 2026-04-06 | 120 |  |  | 62d | 51d | start no earlier than 2026-03-02 |
| 122 | 2.118 | 084113 - Aluminum Framed Entrances and Storefronts, Product Data, Submittal |  | 84d | 2025-09-15 A | 2026-01-08 A | 2 | 100% |  |  |  | start no earlier than 2025-12-19 |
| 123 | 2.119 | 084113 - Aluminum Framed Entrances/Storefronts, Shop Drawings, Submittal |  | 84d | 2025-09-15 A | 2026-01-08 A | 2 | 100% |  |  |  | start no earlier than 2025-10-20 |
| 124 | 2.120 | 084113 - Aluminum Framing Samples, for review |  | 20d | 2026-03-03 | 2026-03-30 | 2 |  |  | 0d |  | start no earlier than 2026-03-02 |
| 125 | 2.121 | 084113 - Aluminum Framed Entrances and Storefronts, Product Data, Review/Approval |  | 3d | 2026-01-08 A | 2026-03-04 | 2, 122 | 50% | 1.5d | 23.5d |  | start no earlier than 2025-10-20 |
| 126 | 2.122 | 084113 - Aluminum Framed Entrances/Storefronts, Shop Drawings, Review/Approval | milestone | 0d | 2026-01-08 A | 2026-01-29 A | 2, 123 | 100% |  |  |  | start no earlier than 2025-10-20 |
| 127 | 2.123 | 084113 - Aluminum Framing Samples, Review/Approval |  | 5d | 2026-03-31 | 2026-04-06 | 2, 124 |  |  | 0d |  | start no earlier than 2026-03-02 |
| 128 | 2.124 | 084113 - Aluminum Entrances/Storefront Fabrication/Delivery |  | 40d | 2026-04-08 | 2026-06-02 | 319 |  |  | 0d |  |  |
| 129 | 2.125 | 084329 - Sliding Automatic Storm Entrances, Shop Drawing, Submittals | milestone | 0d | 2026-01-06 A | 2026-01-07 A | 2 | 100% |  |  |  |  |
| 130 | 2.126 | 084329 - Sliding Automatic Storm Entrance, Color Sample, for Approval |  | 10d | 2026-03-03 | 2026-03-16 | 2 |  |  | 40d | 0d | start no earlier than 2026-03-02 |
| 131 | 2.127 | 084329 - Sliding Automatic Storm Entrances, Shop Drawing, Review/Approval |  | 16d | 2026-01-08 A | 2026-03-12 | 129 | 50% | 8d | 57d | 56d |  |
| 132 | 2.128 | 084329 - Sliding Automatic Storm Entrance, Color Sample, Review/Approval |  | 15d | 2026-03-17 | 2026-04-06 | 130 |  |  | 40d | 39d | start no earlier than 2026-03-02 |
| 133 | 2.129 | 087111 - Door Hardware, Product Data, Submittal |  | 6d | 2025-08-25 A | 2025-09-02 A | 2 | 100% |  |  |  | start no earlier than 2025-08-25 |
| 134 | 2.130 | 087111 - Door Hardware Schedule for Approval |  | 9.5d | 2025-09-03 A | 2026-03-04 | 2 | 79% | 2d | 137d | 0d | start no earlier than 2025-10-20 |
| 135 | 2.131 | 087111 - Door Hardware, Maintenance Data for Closeout |  | 10d | 2026-03-03 | 2026-03-16 | 353 |  |  | 163d | 143d | start no earlier than 2026-03-02 |
| 136 | 2.132 | 087111 - Door Hardware, Warranties |  | 10d | 2026-03-03 | 2026-03-16 | 353 |  |  | 163d | 143d | start no earlier than 2026-03-02 |
| 137 | 2.133 | 087111 - Door Hardware, Product Data, Review/Approval |  | 38d | 2025-09-03 A | 2026-03-04 | 2, 133 | 95% | 1.9d | 152.1d | 15.1d | start no earlier than 2025-10-20 |
| 138 | 2.134 | 087111 - Door Hardware Schedule, Review/Approval |  | 15d | 2026-03-05 | 2026-03-25 | 2, 134 |  |  | 137d | 0d | start no earlier than 2026-03-02 |
| 139 | 2.135 | 087111 - Door Hardware, Qualification Data, Review/Approval |  | 15d | 2026-03-03 | 2026-03-23 | 2 |  |  | 159d |  | start no earlier than 2026-03-02 |
| 140 | 2.136 | 087111 - Door Hardware, Fabrication/Delivery |  | 20d | 2026-03-26 | 2026-04-22 | 137, 138 |  |  | 137d |  | start no earlier than 2026-03-02 |

| ID | WBS | Task | Duration | Start | Finish | Predecessors | Complete | Remaining | Total slack | Free slack | Constraint |
| --- | --- | --- | --- | --- | --- | --- | --- | --- | --- | --- | --- |
| 141 | 2.137 | 088000 - Glazing, Product Data and Glazing Schedule, Submittal | 2d | 2026-01-07 A | 2026-01-08 A | 2 | 100% |  |  |  | start no earlier than 2026-01-26 |
| 142 | 2.138 | 088000 - Glazing, Product Data and Glazing Schedule, Review/Approval | 15d | 2026-01-09 A | 2026-03-12 | 141 | 50% | 7.5d | 18.5d |  | start no earlier than 2026-01-26 |
| 143 | 2.139 | 088000 - Glazing Fabrication/Delivery | 60d | 2026-04-08 | 2026-06-30 | 142, 319 |  |  | 0d |  |  |
| 144 | 2.140 | 089516 - Wall Vents, Product Data, Submittal | 20d | 2026-03-03 | 2026-03-30 | 2 |  |  | 61d | 0d | start no earlier than 2026-03-02 |
| 145 | 2.141 | 089516 - Wall Vents, Metal Samples of Vents, for Approval | 20d | 2026-03-03 | 2026-03-30 | 2 |  |  | 61d | 0d | start no earlier than 2026-03-02 |
| 146 | 2.142 | 089516 - Wall Vents, Product Data, Review/Approval | 15d | 2026-03-31 | 2026-04-20 | 144 |  |  | 61d |  | start no earlier than 2026-03-02 |
| 147 | 2.143 | 089516 - Wall Vents, Metal Samples of Vents, Review/Approval | 15d | 2026-03-31 | 2026-04-20 | 145 |  |  | 61d |  | start no earlier than 2026-03-02 |
| 148 | 2.144 | 092216 - Non-Structural Metal Framing, Product Data, Submittals | 10d | 2026-03-03 | 2026-03-16 | 2 |  |  | 62d | 0d | start no earlier than 2026-03-02 |
| 149 | 2.145 | 092216 - Non-Structural Metal Framing, Product Data, Review/Approval | 15d | 2026-03-17 | 2026-04-06 | 148 |  |  | 62d | 51d | start no earlier than 2026-03-02 |
| 150 | 2.146 | 092900 - Gypsum Board, Product Data, Submittals | 1d | 2026-02-01 A | 2026-02-02 A | 2 | 100% |  |  |  | start no earlier than 2026-01-26 |
| 151 | 2.147 | 092900 - Gypsum Board, Product Data, Review/Approval | 15d | 2026-02-03 A | 2026-03-23 | 150 |  | 15d | 72d | 61d | start no earlier than 2026-01-26 |
| 152 | 2.148 | 095113 - Acoustical Panel Ceilings, Product Data, Submittals | 1d | 2026-02-01 A | 2026-02-02 A | 2 | 100% |  |  |  | start no earlier than 2026-01-26 |
| 153 | 2.149 | 095113 - Acoustical Panel Ceilings, Product Data, Review/Approval | 15d | 2026-02-03 A | 2026-03-23 | 152 |  | 15d | 72d | 61d | start no earlier than 2026-01-26 |
| 154 | 2.150 | 096513 - Resilient Base and Accessories, Product Data, Submittals | 2d | 2026-01-26 A | 2026-01-27 A | 2 | 100% |  |  |  | start no earlier than 2026-01-26 |
| 155 | 2.151 | 096513 - Resilient Base and Accessories, Product Data, Review/Approval | 15d | 2026-01-28 A | 2026-03-23 | 154 |  | 15d | -23d | 0d | start no earlier than 2026-01-26 |
| 156 | 2.152 | 099100 - Painting, Product Data, Submittals | 10d | 2026-03-03 | 2026-03-16 | 2 |  |  | -33d | 0d | start no earlier than 2026-03-02 |
| 157 | 2.153 | 099100 - Painting, Product Data, Review/Approval | 15d | 2026-03-17 | 2026-04-06 | 156 |  |  | -33d | 0d | start no earlier than 2026-03-02 |
| 158 | 2.154 | 099100 - Painting, Samples for Initial Selection | 10d | 2026-03-03 | 2026-03-16 | 2 |  |  | 77d | 0d | start no earlier than 2026-03-02 |
| 159 | 2.155 | 099100- Painting, Initial Paint Selection, Approval | 15d | 2026-03-17 | 2026-04-06 | 158 |  |  | 77d | 0d | start no earlier than 2026-03-02 |
| 160 | 2.156 | 099100 - Painting, Samples for Verificiation, submittal to Architect | 10d | 2026-04-07 | 2026-04-20 | 159 |  |  | 77d | 0d | start no earlier than 2026-01-26 |
| 161 | 2.157 | 099100 - Painting, Samples for Verificaiton, Review/Approval | 15d | 2026-04-21 | 2026-05-11 | 160 |  |  | 77d | 72d |  |
| 162 | 2.158 | 101423 - Interior Signage, Product Data/Shop Drawings, Submittal | 20d | 2026-03-03 | 2026-03-30 | 2 |  |  | 85d | 0d | start no earlier than 2026-03-02 |
| 163 | 2.159 | 101423 - Interior Signage, Samples for approval | 20d | 2026-03-03 | 2026-03-30 | 2 |  |  | 85d | 0d | start no earlier than 2026-03-02 |
| 164 | 2.160 | 101423 - Interior Signage, Product Data/Shop Drawings, Review/Approval | 15d | 2026-03-31 | 2026-04-20 | 162 |  |  | 85d | 0d | start no earlier than 2026-03-02 |
| 165 | 2.161 | 101423 - Interior Signage, Samples, Review/Approval | 15d | 2026-03-31 | 2026-04-20 | 163 |  |  | 85d | 0d | start no earlier than 2026-03-02 |
| 166 | 2.162 | 101423 - Interior Signage, Fabrication/Delivery | 15d | 2026-04-21 | 2026-05-11 | 165, 164 |  |  | 85d | 77d |  |
| 167 | 2.163 | 102800 - Toilet Accessories, Product Data/Equipment Schedule, Submittal | 2d | 2026-01-26 A | 2026-01-27 A | 2 | 100% |  |  |  | start no earlier than 2026-01-26 |
| 168 | 2.164 | 102800 - Toilet Accessories, Product Data, Review/Approval | 15d | 2026-01-28 A | 2026-03-23 | 167 |  | 15d | 72d | 61d | start no earlier than 2026-01-26 |
| 169 | 2.165 | 104413 - Fire Extinquishers/Cabinets, Product Data/Shop Drawings, Submittal | 25d | 2026-03-03 | 2026-04-06 | 2 |  |  | 87d | 0d | start no earlier than 2026-03-02 |
| 170 | 2.166 | 104413 - Fire Extinquishers/Cabinets, Product Data/Shop Drawings, Review/Approval | 15d | 2026-04-07 | 2026-04-27 | 169 |  |  | 87d | 78d | start no earlier than 2026-01-26 |
| 171 | 2.167 | 107316 - Metal Canopies, Product Data, Submittal | 2d | 2026-01-19 A | 2026-01-20 A | 2 | 100% |  |  |  | start no earlier than 2026-01-26 |
| 172 | 2.168 | 107316 - Metal Canopies, Shop Drawings, for Approval | 2d | 2026-01-19 A | 2026-01-20 A | 2 | 100% |  |  |  | start no earlier than 2025-10-20 |
| 173 | 2.169 | 107316 - Metal Canopies, Color Samples | 5d | 2026-03-03 | 2026-03-09 | 2 |  |  | 17d | 0d | start no earlier than 2026-03-02 |
| 174 | 2.170 | 107316 - Metal Canopies, Product Data, Review/Approval | 12d | 2026-01-21 A | 2026-02-05 A | 171 | 100% |  |  |  | start no earlier than 2026-01-26 |
| 175 | 2.171 | 107316 - Metal Canopies, Shop Drawings, Review/Approval | 12d | 2026-01-21 A | 2026-03-18 | 172 |  | 12d | 26d | 9d |  |
| 176 | 2.172 | 107316 - Metal Canopies, Color Samples, Review/Approval | 15d | 2026-03-10 | 2026-03-30 | 173 |  |  | 17d | 0d | start no earlier than 2026-03-02 |
| 177 | 2.173 | 107316 - Metal Canopies, Fabrication/Delivery | 50d | 2026-04-01 | 2026-06-09 | 176, 174, 175, 320 |  |  | 17d | 6d |  |
| 178 | 2.174 | 113100 - Office Appliances, Product Data, Submittal | 30d | 2026-03-03 | 2026-04-13 | 2 |  |  | 91d | 0d | start no earlier than 2026-03-02 |
| 179 | 2.175 | 113100 - Office Appliances, Product Data, Review/Approval | 15d | 2026-04-14 | 2026-05-04 | 2, 178 |  |  | 91d | 85d | start no earlier than 2025-10-20 |
| 180 | 2.176 | 142123 - Hydraulic Passenger Elevators, Product Data, Submittal | 3d | 2025-08-18 A | 2025-08-20 A | 2 | 100% |  |  |  |  |
| 181 | 2.177 | 142123 - Hydraulic Elevator, Shop Drawings, Submittal | 3d | 2025-08-18 A | 2025-08-20 A | 2 | 100% |  |  |  |  |
| 182 | 2.178 | 142123 - Hydraulic Elevator, Color Chart/Samples, for approval | 3d | 2025-08-18 A | 2025-08-20 A | 2 | 100% |  |  |  |  |
| 183 | 2.179 | 142123 - Hydraulic Passenger Elevators, Product Data, Review/Approval | 4d | 2025-08-21 A | 2025-08-26 A | 180 | 100% |  |  |  |  |
| 184 | 2.180 | 142123 - Hydraulic Elevator, Shop Drawings, Review/Approval | 4d | 2025-08-21 A | 2025-08-26 A | 181 | 100% |  |  |  |  |
| 185 | 2.181 | 142123 - Hydraulic Elevator, Color Chart/Samples, Review/Approval | 4d | 2025-08-21 A | 2025-08-26 A | 182 | 100% |  |  |  |  |
| 186 | 2.182 | 142123 - Hydraulic Elevators, Fabrication/Delivery | 80d | 2025-08-27 A | 2026-06-22 | 185 |  | 80d | 13d | 0d |  |
| 187 | 2.183 | 211000 - Wet Pipe Fire Protection System, Product Data, Submittals | 2d | 2025-10-30 A | 2025-10-31 A | 2 | 100% |  |  |  | start no earlier than 2025-11-21 |
| 188 | 2.184 | 211000 - Wet Pipe Fire Protection, Sprinkler Shop Drawings, for Approval | 2d | 2025-10-30 A | 2025-10-31 A | 2 | 100% |  |  |  | start no earlier than 2025-11-21 |
| 189 | 2.185 | 211000 - Wet Pipe Fire Protection System, Product Data, Review/Approval | 12d | 2025-11-03 A | 2025-11-18 A | 187 | 100% |  |  |  | start no earlier than 2025-10-20 |
| 190 | 2.186 | 211000 - Wet Pipe Fire Protection, Sprinkler Shop Drawings, Review/Approval | 12d | 2025-11-03 A | 2025-11-18 A | 188 | 100% |  |  |  | start no earlier than 2025-10-20 |
| 191 | 2.187 | 220000 - Plumbing Submittals, Product Data, Submittals | 2d | 2025-09-19 A | 2025-09-22 A | 2 | 100% |  |  |  | start no earlier than 2025-11-21 |
| 192 | 2.188 | 220000 - Plumbing Submittals, Product Data, Review/Approval | 37d | 2025-09-23 A | 2025-11-12 A | 191 | 100% |  |  |  | start no earlier than 2025-10-20 |
| 193 | 2.189 | 221429 - Sump Pumps, Product Data, Submittals | 1d | 2025-09-19 A | 2025-09-19 A | 2 | 100% |  |  |  | start no earlier than 2025-10-20 |
| 194 | 2.190 | 221429 - Sump Pumps, Product Data, Review/Approval | 13d | 2025-09-22 A | 2025-10-08 A | 193 | 100% |  |  |  | start no earlier than 2025-10-20 |
| 195 | 2.191 | 223300 - Electric Domestic Water Heaters, Product Data/Shop Drawing, Submittal | 1d | 2025-09-19 A | 2025-09-19 A | 2 | 100% |  |  |  | start no earlier than 2025-10-20 |
| 196 | 2.192 | 223300 - Electric Domestic Water Heaters, Product Data/Shop Drawing, Review/Approval | 13d | 2025-09-22 A | 2025-10-08 A | 195 | 100% |  |  |  | start no earlier than 2025-10-20 |
| 197 | 2.193 | 224000 - Public Plumbing Fixtures, Product Data, Submittal | 1d | 2025-09-19 A | 2025-09-19 A | 2 | 100% |  |  |  | start no earlier than 2025-10-20 |
| 198 | 2.194 | 224000 - Public Plumbing Fixtures, Product Data, Review/Approval | 12.5d | 2025-09-22 A | 2025-11-12 A | 197 | 100% |  |  |  | start no earlier than 2025-10-20 |
| 199 | 2.195 | 224700 - Drinking Fountain and Water Coolers, Product Data, Submittal | 2d | 2025-09-19 A | 2025-09-22 A | 2 | 100% |  |  |  | start no earlier than 2025-11-21 |
| 200 | 2.196 | 224700 - Drinking Fountain and Water Coolers, Product Data, Review/Approval | 37d | 2025-09-23 A | 2025-11-12 A | 199 | 100% |  |  |  | start no earlier than 2025-10-20 |
| 201 | 2.197 | 230553 - ID for HVAC Piping & Equipment, Product Data, Submittals | 20d | 2026-03-03 | 2026-03-30 | 2 |  |  | 103d | 0d | start no earlier than 2026-03-02 |
| 202 | 2.198 | 230553 - ID for HVAC Piping & Equipment, Product Data, Review/Approve | 15d | 2026-03-31 | 2026-04-20 | 201 |  |  | 103d | 98d | start no earlier than 2026-03-02 |
| 203 | 2.199 | 230593 - Testing and Balancing, Qualifications Data for TAB Firm | 20d | 2026-03-03 | 2026-03-30 | 2 |  |  | 134d | 0d | start no earlier than 2026-03-02 |
| 204 | 2.200 | 230593 - Testing and Balancing, TAB agenda | 20d | 2026-03-03 | 2026-03-30 | 2 |  |  | 134d | 0d | start no earlier than 2026-03-02 |
| 205 | 2.201 | 230593 - Testing and Balancing, Qualifications Data, Review/Approval | 20d | 2026-03-31 | 2026-04-27 | 2, 203 |  |  | 134d |  | start no earlier than 2026-03-02 |
| 206 | 2.202 | 230593 - Testing and Balancing, TAB agenda, Review/Approval | 20d | 2026-03-31 | 2026-04-27 | 2, 204 |  |  | 134d |  | start no earlier than 2026-03-02 |
| 207 | 2.203 | 230593 - Testing and Balancing, Final TAB Report | 10d | 2026-09-04 | 2026-09-17 | 428 |  |  | 30d | 10d |  |
| 208 | 2.204 | 230713 - Duct Insulation, Product Data, Submittals | 15d | 2026-03-03 | 2026-03-23 | 2 |  |  | 0d |  | start no earlier than 2026-03-02 |
| 209 | 2.205 | 230713 - Duct Insulation, Product Data, Review/Approval | 15d | 2026-03-24 | 2026-04-13 | 208 |  |  | 0d |  | start no earlier than 2026-03-02 |
| 210 | 2.206 | 230719 - HVAC Piping Insulation, Product Data, Submittals | 15d | 2026-03-03 | 2026-03-23 | 2 |  |  | 0d |  | start no earlier than 2026-03-02 |

| ID | WBS | Task | Type | Duration | Start | Finish | Predecessors | Complete | Remaining | Total slack | Free slack | Constraint |
| --- | --- | --- | --- | --- | --- | --- | --- | --- | --- | --- | --- | --- |
| 211 | 2.207 | 230719 - HVAC Piping Insulation, Product Data, Review/Approval |  | 15d | 2026-03-24 | 2026-04-13 | 210 |  |  | 0d |  | start no earlier than 2026-03-02 |
| 212 | 2.208 | 232300 - Refrigerant Piping, Product Data, Submittals |  | 15d | 2026-03-03 | 2026-03-23 | 2 |  |  | 0d |  | start no earlier than 2026-03-02 |
| 213 | 2.209 | 232300 - Refrigerant Piping, Shop Drawings, Submittals |  | 15d | 2026-03-03 | 2026-03-23 | 2 |  |  | 0d |  | start no earlier than 2026-03-02 |
| 214 | 2.210 | 232300 - Refrigerant Piping, Product Data, Review/Approvals |  | 15d | 2026-03-24 | 2026-04-13 | 212 |  |  | 0d |  | start no earlier than 2026-03-02 |
| 215 | 2.211 | 232300 - Refrigerant Piping, Shop Drawings, Review/Approvals |  | 15d | 2026-03-24 | 2026-04-13 | 213 |  |  | 0d |  | start no earlier than 2026-03-02 |
| 216 | 2.212 | 233113 - Metal Ducts, Shop Drawings, Submittal |  | 15d | 2026-03-03 | 2026-03-23 | 2 |  |  | 0d |  | start no earlier than 2026-03-02 |
| 217 | 2.213 | 233113 - Metal Ducts, Shop Drawings, Review/Approval |  | 15d | 2026-03-24 | 2026-04-13 | 216 |  |  | 0d |  | start no earlier than 2026-03-02 |
| 218 | 2.214 | 233300 - Air Duct Accessories, Product Data, Submittals |  | 2d | 2025-10-20 A | 2025-10-21 A | 2 | 100% |  |  |  | start no earlier than 2026-01-26 |
| 219 | 2.215 | 233300 - Air Duct Accessories, Shop Drawings, Submittal |  | 15d | 2026-03-03 | 2026-03-23 | 2 |  |  | 0d |  | start no earlier than 2026-03-02 |
| 220 | 2.216 | 233300 - Air Duct Accessories, Product Data, Review/Approval |  | 13d | 2025-10-22 A | 2025-11-07 A | 218 | 100% |  |  |  | start no earlier than 2026-01-26 |
| 221 | 2.217 | 233300 - Air Duct Accessories, Shop Drawings, Review/Approval |  | 15d | 2026-03-24 | 2026-04-13 | 219 |  |  | 0d |  | start no earlier than 2026-03-02 |
| 222 | 2.218 | 233713 - Diffusers, Registers and Grilles, Product Data, Submittals |  | 2d | 2026-02-20 A | 2026-02-23 A | 2 | 100% |  |  |  | start no earlier than 2026-01-26 |
| 223 | 2.219 | 233713 - Diffusers, Registers and Grilles, Product Data, Review/Approval |  | 15d | 2026-02-24 A | 2026-03-23 | 222 |  | 15d | 15d | 0d | start no earlier than 2026-01-26 |
| 224 | 2.220 | 238126 - Split System Air-Conditioners, Product Data, Submittals |  | 2d | 2025-12-11 A | 2025-12-12 A | 2 | 100% |  |  |  | start no earlier than 2026-01-26 |
| 225 | 2.221 | 238126 - Split System Air-Conditioners, Shop Drawings, Submittal |  | 15d | 2026-03-03 | 2026-03-23 | 2 |  |  | 0d |  | start no earlier than 2026-03-02 |
| 226 | 2.222 | 238126 - Split System Air-Conditioners, Product Data, Review/Approval |  | 32d | 2025-12-15 A | 2026-01-27 A | 224 | 100% |  |  |  | start no earlier than 2026-01-26 |
| 227 | 2.223 | 238126 - Split System Air-Conditioners, Shop Drawings, Review/Approval |  | 15d | 2026-03-24 | 2026-04-13 | 225 |  |  | 0d |  | start no earlier than 2026-03-02 |
| 228 | 2.224 | 238136 - VRF System, Product Data, Submittals |  | 2d | 2026-03-03 | 2026-03-04 | 2 |  |  | 13d | 0d | start no earlier than 2026-03-02 |
| 229 | 2.225 | 238136 - VRF System, Shop Drawing, Review/Approval |  | 15d | 2026-03-05 | 2026-03-25 | 228 |  |  | 13d | 0d | start no earlier than 2026-03-02 |
| 230 | 2.226 | 238239 - Decentralized HVAC Equipment, Product Data, Submittal |  | 15d | 2026-03-03 | 2026-03-23 | 2 |  |  | 0d |  | start no earlier than 2026-03-02 |
| 231 | 2.227 | 238239 - Decentralized HVAC Equipment, Product Data, Review/Approval |  | 15d | 2026-03-24 | 2026-04-13 | 230 |  |  | 0d |  | start no earlier than 2026-03-02 |
| 232 | 2.228 | 260519 - Low-Voltage Power Conductors & Cables, Product Data, Submittals |  | 10d | 2026-03-03 | 2026-03-16 | 2 |  |  | 149d | 0d | start no earlier than 2026-03-02 |
| 233 | 2.229 | 260519 - Low-Voltage Power Conductors & Cables, Product Data, Review/Approvals |  | 15d | 2026-03-17 | 2026-04-06 | 232 |  |  | 149d |  | start no earlier than 2026-03-02 |
| 234 | 2.230 | 260526 - Grounding and Bonding for Electrical, Product Data, Submittal |  | 10d | 2026-03-03 | 2026-03-16 | 2 |  |  | 149d | 0d | start no earlier than 2026-03-02 |
| 235 | 2.231 | 260526 - Grounding and Bonding for Electrical, Product Data, Review/Approval |  | 15d | 2026-03-17 | 2026-04-06 | 234 |  |  | 149d |  | start no earlier than 2026-03-02 |
| 236 | 2.232 | 260553 - ID for Electrical Systems, Product Data/ID Schedule, Submittal |  | 20d | 2026-03-03 | 2026-03-30 | 2 |  |  | 103d | 0d | start no earlier than 2026-03-02 |
| 237 | 2.233 | 260553 - ID for Electrical Systems, Product Data/ID Schedule, Review/Approval |  | 15d | 2026-03-31 | 2026-04-20 | 236 |  |  | 103d | 98d | start no earlier than 2026-03-02 |
| 238 | 2.234 | 260923 - Lighting Control Devices, Product Data, Submital |  | 1d | 2025-09-19 A | 2025-09-19 A | 2 | 100% |  |  |  | start no earlier than 2025-10-20 |
| 239 | 2.235 | 260923 - Lighting Control Devices, Product Data, Review/Approval |  | 15d | 2025-09-22 A | 2025-10-10 A | 238 | 100% |  |  |  | start no earlier than 2025-10-20 |
| 240 | 2.236 | 260923 - Lighting Control Devices, Shop Drawings, Submital |  | 10d | 2026-03-03 | 2026-03-16 | 2 |  |  | 20d | 0d | start no earlier than 2026-03-02 |
| 241 | 2.237 | 260923 - Lighting Control Devices, Shop Drawings, Review/Approval |  | 15d | 2026-03-17 | 2026-04-06 | 240 |  |  | 20d | 0d | start no earlier than 2026-03-02 |
| 242 | 2.238 | 262200 - Low Voltage Transformers, Product Data, Submital |  | 10d | 2026-03-03 | 2026-03-16 | 2 |  |  | 20d | 0d | start no earlier than 2026-03-02 |
| 243 | 2.239 | 262200 - Low Voltage Transformers, Product Data, Review/Approval |  | 15d | 2026-03-17 | 2026-04-06 | 242 |  |  | 20d | 0d | start no earlier than 2026-03-02 |
| 244 | 2.240 | 262200 - Low Voltage Transformers, Shop Drawings, Submital |  | 10d | 2026-03-03 | 2026-03-16 | 2 |  |  | 20d | 0d | start no earlier than 2026-03-02 |
| 245 | 2.241 | 262200 - Low Voltage Transformers, Shop Drawings, Review/Approval |  | 15d | 2026-03-17 | 2026-04-06 | 244 |  |  | 20d | 0d | start no earlier than 2026-03-02 |
| 246 | 2.242 | 262416 - Panelboards, Product Data, Submittal |  | 1d | 2025-09-19 A | 2025-09-19 A | 2 | 100% |  |  |  | start no earlier than 2025-10-20 |
| 247 | 2.243 | 262416 - Panelboard, Product Data, Review/Approval |  | 14d | 2025-09-22 A | 2025-10-09 A | 246 | 100% |  |  |  | start no earlier than 2025-10-20 |
| 248 | 2.244 | 262416 - Panelboard, Shop Drawings/Schedules, Submittal |  | 2d | 2025-10-24 A | 2025-10-27 A | 2 | 100% |  |  |  | start no earlier than 2025-11-21 |
| 249 | 2.245 | 262416 - Panelboard, Shop Drawings/Schedules, Review/Approal |  | 17d | 2025-10-28 A | 2025-11-19 A | 248 | 100% |  |  |  | start no earlier than 2025-11-10 |
| 250 | 2.246 | 262416 - Panelboard, Release for Fabrication |  | 3d | 2025-11-20 A | 2026-03-05 | 247, 249 |  | 3d | 171d |  | start no earlier than 2026-01-26 |
| 251 | 2.247 | 262726 - Wiring Devices, Product Data, Submittal |  | 10d | 2026-03-03 | 2026-03-16 | 2 |  |  | 20d | 0d | start no earlier than 2026-03-02 |
| 252 | 2.248 | 262726 - Wiring Devices, Product Data, Review/Approval |  | 15d | 2026-03-17 | 2026-04-06 | 251 |  |  | 20d | 0d | start no earlier than 2026-03-02 |
| 253 | 2.249 | 262813 - Fuses, Product Data, Submittal |  | 2d | 2025-10-24 A | 2025-10-27 A | 2 | 100% |  |  |  | start no earlier than 2026-01-26 |
| 254 | 2.250 | 262813 -Fuses, Product Data, Review/Approval |  | 17d | 2025-10-28 A | 2025-11-19 A | 253 | 100% |  |  |  | start no earlier than 2026-01-26 |
| 255 | 2.251 | 262816 - Enclosed Switches & Circuit Breakers, Product Data, Submittal |  | 2d | 2025-10-24 A | 2025-10-27 A | 2 | 100% |  |  |  | start no earlier than 2026-01-26 |
| 256 | 2.252 | 262816 - Enclosed Switches & Circuit Breakers, Product Data, Review/Approval |  | 17d | 2025-10-28 A | 2025-11-19 A | 255 | 100% |  |  |  | start no earlier than 2026-01-26 |
| 257 | 2.253 | 262913 - Enclosed Controllers, Product Data/Shop Drawing, Submittal |  | 10d | 2026-03-03 | 2026-03-16 | 2 |  |  | 20d | 0d | start no earlier than 2026-03-02 |
| 258 | 2.254 | 262913 - Enclosed Controllers, Product Data/Shop Drawing, Review/Approval |  | 15d | 2026-03-17 | 2026-04-06 | 257 |  |  | 20d | 0d | start no earlier than 2026-03-02 |
| 259 | 2.255 | 265100 - LED Interior Lighting, Product Data, Submittal |  | 1d | 2025-09-19 A | 2025-09-19 A | 2 | 100% |  |  |  | start no earlier than 2025-10-20 |
| 260 | 2.256 | 265100 - LED Interior Lighting, Product Data, Review/Approval | milestone | 0d | 2025-09-22 A | 2025-11-07 A | 259 | 100% |  |  |  | start no earlier than 2025-10-20 |
| 261 | 2.257 | 265100 - LED Interior Lighting, Fabrication/Delivery |  | 80d | 2026-03-03 | 2026-06-22 | 260 |  |  | 33d | 15d | start no earlier than 2026-03-02 |
| 262 | 2.258 | 265600 - Exterior Lighting, Product Data, Submittal |  | 1d | 2025-09-19 A | 2025-09-19 A | 2 | 100% |  |  |  | start no earlier than 2025-10-20 |
| 263 | 2.259 | 265600 - Exterior Lighting, Product Data, Review/Approval | milestone | 0d | 2025-09-22 A | 2025-11-07 A | 262 | 100% |  |  |  | start no earlier than 2025-10-20 |
| 264 | 2.260 | 265600 - Exterior Lighting, Fabrication/Delivery |  | 80d | 2026-03-03 | 2026-06-22 | 263 |  |  | 17d | 14d | start no earlier than 2026-03-02 |
| 265 | 2.261 | 275123 - Intercommunications & PA Systems, Shop Drawings/Product Data, Submittal |  | 20d | 2026-03-03 | 2026-03-30 | 2 |  |  | 10d | 0d | start no earlier than 2026-03-02 |
| 266 | 2.262 | 275123 - Intercommunications & PA Systems, Shop Drawings/Product Data, Review/Approval |  | 15d | 2026-03-31 | 2026-04-20 | 265 |  |  | 10d | 0d | start no earlier than 2026-03-02 |
| 267 | 2.263 | 281300 - Access Control System, Shop Drawings, Submittal |  | 20d | 2026-03-03 | 2026-03-30 | 2 |  |  | 10d | 0d | start no earlier than 2026-03-02 |
| 268 | 2.264 | 281300 - Access Control System, Shop Drawings, Review/Approval |  | 15d | 2026-03-31 | 2026-04-20 | 267 |  |  | 10d | 0d | start no earlier than 2026-03-02 |
| 269 | 2.265 | 282300 - Video Surveillance, Product Data, Submittal |  | 20d | 2026-03-03 | 2026-03-30 | 2 |  |  | 10d | 0d | start no earlier than 2026-03-02 |
| 270 | 2.266 | 282300 - Video Surveillance, Product Data, Review/Approval |  | 15d | 2026-03-31 | 2026-04-20 | 269 |  |  | 10d | 0d | start no earlier than 2026-03-02 |
| 271 | 2.267 | 282300 - Video Surveillance, Shop Drawings, Submittal |  | 20d | 2026-03-03 | 2026-03-30 | 2 |  |  | 10d | 0d | start no earlier than 2026-03-02 |
| 272 | 2.268 | 282300 - Video Surveillance, Shop Drawings, Review/Approval |  | 15d | 2026-03-31 | 2026-04-20 | 271 |  |  | 10d | 0d | start no earlier than 2026-03-02 |
| 273 | 2.269 | 283111 - Digital, Addressable Fire Alarm System, Product Data, to EOR | milestone | 0d | 2026-01-05 A | 2026-02-11 A | 276, 278 | 100% |  |  |  |  |
| 274 | 2.270 | 283111 - Digital, Addressable Fire Alarm System, Shop Drawings, to EOR Review/Approval |  | 4d | 2026-02-11 A | 2026-03-06 |  |  | 4d | 41d | 0d |  |
| 275 | 2.271 | 283111 - Digital, Addressable Fire Alarm System, Product Data, Submittal to AHJ |  | 20d | 2026-03-03 | 2026-03-30 | 2 |  |  | 94d | 0d | start no earlier than 2026-03-02 |
| 276 | 2.272 | 283111 - Digital, Addressable Fire Alarm System, Product Data, Review/Approval by AHJ |  | 60d | 2026-03-31 | 2026-06-22 | 275 |  |  | 94d |  | start no earlier than 2026-03-02 |
| 277 | 2.273 | 283111 - Digital, Addressable Fire Alarm System, Shop Drawings, Submittal to AHJ |  | 20d | 2026-03-03 | 2026-03-30 | 2 |  |  | 94d | 0d | start no earlier than 2026-03-02 |
| 278 | 2.274 | 283111 - Digital, Addressable Fire Alarm System, Shop Drawings, AHJ Review/Approval |  | 60d | 2026-03-31 | 2026-06-22 | 277 |  |  | 94d |  | start no earlier than 2026-03-02 |
| 279 | 2.275 | 321216 - Asphalt Paving, Design Mix, Submittal |  | 2d | 2026-02-17 A | 2026-02-18 A | 2 | 100% |  |  |  | start no earlier than 2026-01-26 |
| 280 | 2.276 | 321216 - Asphalt Paving, Design Mix, Review/Approval |  | 1d | 2026-02-19 A | 2026-02-19 A | 279 | 100% |  |  |  | start no earlier than 2026-01-26 |

| ID | WBS | Task | Duration | Start | Finish | Predecessors | Complete | Remaining | Total slack | Free slack | Constraint |
| --- | --- | --- | --- | --- | --- | --- | --- | --- | --- | --- | --- |
| 281 | 2.277 | 321313 - Concrete Paving, Design Mixes, Submittal | 15d | 2026-03-03 | 2026-03-23 | 2 |  |  | 94d | 0d | start no earlier than 2026-03-02 |
| 282 | 2.278 | 321313 - Concrete Paving, Design Mixes, Review/Approval | 15d | 2026-03-24 | 2026-04-13 | 281 |  |  | 94d |  | start no earlier than 2026-03-02 |
| 283 | 2.279 | 321313 - Concrete Paving, Product Data, Submittals | 15d | 2026-03-03 | 2026-03-23 | 2 |  |  | 94d | 0d | start no earlier than 2026-03-02 |
| 284 | 2.280 | 321313 - Concrete Paving, Product Data, Review/Approval | 15d | 2026-03-24 | 2026-04-13 | 283 |  |  | 94d |  | start no earlier than 2026-03-02 |
| 285 | 2.281 | 321713 - Parking Bumpers and Bollards, Product Data, Submittal | 25d | 2026-03-03 | 2026-04-06 | 2FS+10d |  |  | 84d | 0d | start no earlier than 2026-03-02 |
| 286 | 2.282 | 321713 - Parking Bumpers and Bollards, Product Data, Review/Approval | 15d | 2026-04-07 | 2026-04-27 | 285 |  |  | 84d |  | start no earlier than 2026-01-26 |
| 287 | 2.283 | 321723 - Pavement Markings, Product Data, Submittal | 25d | 2026-03-03 | 2026-04-06 | 2FS+10d |  |  | 84d | 0d | start no earlier than 2026-03-02 |
| 288 | 2.284 | 321723 - Pavement Markings, Product Data, Review/Approval | 15d | 2026-04-07 | 2026-04-27 | 287 |  |  | 84d |  | start no earlier than 2026-01-26 |
| 289 | 2.285 | 321726 - Tactile Warning Surfacing, Product Data, Submittal | 25d | 2026-03-03 | 2026-04-06 | 2FS+10d |  |  | 57d | 0d | start no earlier than 2026-03-02 |
| 290 | 2.286 | 321726 - Tactile Warning Surfacing, Product Data, Review/Approval | 15d | 2026-04-07 | 2026-04-27 | 289 |  |  | 57d | 54d | start no earlier than 2026-01-26 |
| 291 | 2.287 | 321726 - Tactile Warning Surfacing, Color Sample Chart, Submittal | 25d | 2026-03-03 | 2026-04-06 | 2FS+10d |  |  | 57d | 0d | start no earlier than 2026-03-02 |
| 292 | 2.288 | 321726 - Tactile Warning Surfacing, Color Sample Chart, Review/Approval | 15d | 2026-04-07 | 2026-04-27 | 291 |  |  | 57d | 54d | start no earlier than 2026-01-26 |
| 293 | 2.289 | 323113 - Chain Link Fence, Product Data, Submittal | 25d | 2026-03-03 | 2026-04-06 | 2FS+15d |  |  | 87d | 0d | start no earlier than 2026-03-02 |
| 294 | 2.290 | 323113 - Chain Link Fence, Product Data, Review/Approval | 15d | 2026-04-07 | 2026-04-27 | 293 |  |  | 87d | 0d | start no earlier than 2026-01-26 |
| 295 | 2.291 | 323113 - Chain Link Fence, Shop Drawings, Submittal | 25d | 2026-03-03 | 2026-04-06 | 2FS+15d |  |  | 87d | 0d | start no earlier than 2026-03-02 |
| 296 | 2.292 | 323113 - Chain Link Fence, Shop Drawings, Review/Approval | 15d | 2026-04-07 | 2026-04-27 | 295 |  |  | 87d | 0d | start no earlier than 2026-01-26 |
| 297 | 2.293 | 323113 - Chain Link Fence, Samples, Submittal | 25d | 2026-03-03 | 2026-04-06 | 2FS+15d |  |  | 87d | 0d | start no earlier than 2026-03-02 |
| 298 | 2.294 | 323113 - Chain Link Fence, Samples, Review/Approval | 15d | 2026-04-07 | 2026-04-27 | 297 |  |  | 87d | 0d | start no earlier than 2026-01-26 |
| 299 | 2.295 | 323114 - Security Wire Mesh Fences/Gates, Product Data, Submittals | 25d | 2026-03-03 | 2026-04-06 | 2 |  |  | 87d | 0d | start no earlier than 2026-03-02 |
| 300 | 2.296 | 323114 - Security Wire Mesh Fences/Gates, Product Data, Review/Approval | 15d | 2026-04-07 | 2026-04-27 | 299 |  |  | 87d | 0d | start no earlier than 2026-01-26 |
| 301 | 2.297 | 323114 - Security Wire Mesh Fences/Gates, Shop Drawings, Submittals | 25d | 2026-03-03 | 2026-04-06 | 2 |  |  | 87d | 0d | start no earlier than 2026-03-02 |
| 302 | 2.298 | 323114 - Security Wire Mesh Fences/Gates, Shop Drawings, Review/Approval | 15d | 2026-04-07 | 2026-04-27 | 301 |  |  | 87d | 0d | start no earlier than 2026-01-26 |
| 303 | 2.299 | 323119 - Decorative Metal Fences & Gates, Product Data, Submittal | 3d | 2025-10-13 A | 2025-10-15 A | 2 | 100% |  |  |  | start no earlier than 2025-11-21 |
| 304 | 2.300 | 323119 - Decorative Metal Fences & Gates, Product Data, Review/Approval | 15d | 2025-10-15 A | 2026-03-23 | 303 |  | 15d | 112d | 0d | start no earlier than 2025-10-20 |
| 305 | 2.301 | 323119 - Decorative Metal Fences & Gates, Shop Drawings, Submittal | 1d | 2025-10-13 A | 2025-10-13 A | 2 | 100% |  |  |  | start no earlier than 2025-10-20 |
| 306 | 2.302 | 323119 - Decorative Metal Fences & Gates, Shop Drawings, Review/Approval | 15d | 2025-10-15 A | 2026-03-23 | 305 |  | 15d | 112d | 0d | start no earlier than 2025-10-20 |
| 307 | 2.303 | 328400 - Planting Irrigation, Product Data/Shop Drawings, Submittal | 25d | 2026-03-03 | 2026-04-06 | 2 |  |  | 64d | 0d | start no earlier than 2026-03-02 |
| 308 | 2.304 | 328400 - Planting Irrigation, Product Data/Shop Drawings, Review/Approval | 15d | 2026-04-07 | 2026-04-27 | 307 |  |  | 64d |  | start no earlier than 2026-01-26 |
| 309 | 2.305 | 329200 - Turf and Grasses, Product Data, Submittal | 25d | 2026-03-03 | 2026-04-06 | 2 |  |  | 64d | 0d | start no earlier than 2026-03-02 |
| 310 | 2.306 | 329200 - Turf and Grasses, Product Data, Review/Approval | 15d | 2026-04-07 | 2026-04-27 | 309 |  |  | 64d |  | start no earlier than 2026-01-26 |
| 311 | 2.307 | 329300 - Plants, Product Data, Submittal | 25d | 2026-03-03 | 2026-04-06 | 2 |  |  | 64d | 0d | start no earlier than 2026-03-02 |
| 312 | 2.308 | 329300 - Plants, Product Data, Review/Approval | 15d | 2026-04-07 | 2026-04-27 | 311 |  |  | 64d |  | start no earlier than 2026-01-26 |

| ID | WBS | Task | Type | Duration | Start | Finish | Predecessors | Complete | Remaining | Total slack | Free slack | Constraint |
| --- | --- | --- | --- | --- | --- | --- | --- | --- | --- | --- | --- | --- |
| 313 | 3 | **Pre-Installation Meetings** |  | 157d | 2025-09-23 A | 2026-04-29 |  | 8% | 143.92d | 132d |  |  |
| 314 | 3.1 | Preinstallation Meeting for CIP Concrete | milestone | 0d | 2025-09-23 A | 2025-10-23 A | 10, 6, 14, 13, 12, 11 | 100% |  |  |  | start no earlier than 2025-10-20 |
| 315 | 3.2 | Preinstallation Meeting, Cold Formed Metal Framing |  | 1d | 2025-12-16 A | 2025-12-16 A | 26, 28 | 100% |  |  |  | start no earlier than 2025-11-21 |
| 316 | 3.3 | Preinstallation Meeting, Bituminous and Self-Adhering Waterproofing | milestone | 0d | 2025-09-23 A | 2025-09-23 A | 54, 60, 58, 56, 81, 82 | 100% |  |  |  |  |
| 317 | 3.4 | Preinstallation Meeting, Cold Fluid Applied Waterproofing |  | 1d | 2026-04-21 | 2026-04-21 | 63, 64 |  |  | 24d |  |  |
| 318 | 3.5 | Preinstallation Meeting, Hollow Metal Doors and Frames |  | 1d | 2026-03-24 | 2026-03-24 | 118, 119, 134 |  |  | 183d |  |  |
| 319 | 3.6 | Preinstallation Meeting, Aluminum Frames and Storefronts |  | 1d | 2026-04-07 | 2026-04-07 | 125, 126, 127 |  |  | 0d |  |  |
| 320 | 3.7 | Preinstallation Meeting, Metal Canopies |  | 1d | 2026-03-31 | 2026-03-31 | 176 |  |  | 17d | 0d |  |
| 321 | 3.8 | Preinstallation Meeting, Hydraulic Passenger Elevator |  | 1d | 2026-03-03 | 2026-03-03 | 183, 184, 185 |  |  | 23d | 14d | start no earlier than 2026-03-02 |
| 322 | 3.9 | Preinstallation Meeting, Fencing |  | 1d | 2026-04-28 | 2026-04-28 | 294, 296, 298 |  |  | 87d |  |  |
| 323 | 3.10 | Preinstallation Meeting, Security Wire Mesh Fence and Gates |  | 1d | 2026-04-28 | 2026-04-28 | 302, 300 |  |  | 87d |  |  |
| 324 | 3.11 | Preinstallation Meeting, Decorative Metal Fences and Gates |  | 1d | 2026-03-24 | 2026-03-24 | 306, 304 |  |  | 112d | 0d | start no earlier than 2026-03-02 |
| 325 | 3.12 | Preinstallation Meeting, TPO Roofing/Sheet Metal Flashing & Trim |  | 1d | 2026-04-28 | 2026-04-28 | 85, 86, 88, 95, 96, 97, 100, 101 |  |  | 17d | 0d |  |
| 326 | 3.13 | Preinstallation Meeting, Stucco System |  | 1d | 2026-04-29 | 2026-04-29 | 71, 72, 73, 74, 325 |  |  | 18d |  |  |
| 327 | 3.14 | Preinstallation Meeting, Architectural Concrete Sealing & Polishing |  | 1d | 2026-03-25 | 2026-03-25 | 17, 18, 324 |  |  | 121d | 116d | start no earlier than 2026-03-02 |
| 328 | 4 | **Sitework** |  | 164d | 2025-07-24 A | 2026-03-10 |  | 70% | 49.2d | 89d |  |  |
| 329 | 4.1 | Complete Erosion Control Install |  | 4d | 2025-07-24 A | 2025-09-08 A | 1, 2 | 100% |  |  |  | start no earlier than 2025-10-20 |
| 330 | 4.2 | Silt Fence Inspection |  | 1d | 2025-09-09 A | 2025-09-09 A | 329 | 100% |  |  |  | start no earlier than 2025-10-20 |
| 331 | 4.3 | Clear and Grub | milestone | 0d | 2025-09-03 A | 2025-09-18 A | 330 | 100% |  |  |  | finish no earlier than 2025-09-22 |
| 332 | 4.4 | Install Temporary Fencing |  | 1d | 2025-10-03 A | 2025-10-03 A | 330, 331 | 100% |  |  |  | start no earlier than 2025-10-20 |
| 333 | 4.5 | Mass Grade Site |  | 14d | 2025-09-16 A | 2025-10-08 A | 331 | 100% |  |  |  | start no earlier than 2025-10-20 |
| 334 | 4.6 | Construct Retention Pond |  | 3d | 2025-10-10 A | 2026-03-05 | 333FS-5d |  | 3d | 92d | 89d | start no earlier than 2025-10-20 |
| 335 | 4.7 | Storm Sewer | milestone | 0d | 2025-11-14 A | 2026-02-27 A | 333 | 100% |  |  |  |  |
| 336 | 4.8 | Sanitary Sewer, Fire Line and domestic water |  | 6d | 2025-11-14 A | 2026-03-10 | 335SS, 333 |  | 6d | 89d | 86d | start no earlier than 2025-11-21 |
| 337 | 4.9 | Grade for building pad |  | 1d | 2025-10-01 A | 2025-10-08 A | 333FS-1d | 100% |  |  |  | start no earlier than 2025-10-20 |

| ID | WBS | Task | Type | Duration | Start | Finish | Predecessors | Complete | Remaining | Total slack | Free slack | Constraint |
| --- | --- | --- | --- | --- | --- | --- | --- | --- | --- | --- | --- | --- |
| 338 | 5 | **Building Pad Construction** |  | 43d | 2025-10-09 A | 2025-12-08 A |  | 100% |  |  |  |  |
| 339 | 5.1 | Survey and Form Perimeter Walls of Building |  | 10d | 2025-10-09 A | 2025-10-22 A | 337 | 100% |  |  |  | start no earlier than 2025-10-20 |
| 340 | 5.2 | Concrete Footings for Columns |  | 10d | 2025-10-28 A | 2025-12-05 A | 339FS-1d, 314, 6 | 100% |  |  |  |  |
| 341 | 5.3 | Excavation for Elevator Pits | milestone | 0d | 2025-10-28 A | 2025-11-07 A | 340SS+1d, 339, 332 | 100% |  |  |  |  |
| 342 | 5.4 | Waterproofing of Below Elevator Pit Floors |  | 3d | 2025-11-06 A | 2025-11-10 A | 341 | 100% |  |  |  |  |
| 343 | 5.5 | Construct Concrete Elevator Pit Floors and Sump Pits | milestone | 0d | 2025-11-06 A | 2025-11-07 A | 339SS+3d, 316, 342 | 100% |  |  |  |  |
| 344 | 5.6 | Form and Pour Elevator Pit Walls |  | 2d | 2025-11-06 A | 2025-11-07 A | 343FS-2d | 100% |  |  |  |  |
| 345 | 5.7 | Underslab Plumbing Rough | milestone | 0d | 2025-11-11 A | 2025-11-21 A | 340SS | 100% |  |  |  | start no earlier than 2025-11-21 |
| 346 | 5.8 | Fine Grade SOG-Place Stone | milestone | 0d | 2025-11-20 A | 2025-11-24 A | 345FS-2d, 347, 343, 344 | 100% |  |  |  |  |
| 347 | 5.9 | Underslab Electrical Rough | milestone | 0d | 2025-10-30 A | 2025-12-05 A | 340 | 100% |  |  |  |  |
| 348 | 5.10 | Vapor Barrier/Rebar for Slab on Grade |  | 9d | 2025-11-11 A | 2025-12-05 A | 346 | 100% |  |  |  |  |
| 349 | 5.11 | Pour First Half of Slab on Grade | milestone | 0d | 2025-11-22 A | 2025-11-22 A | 348 | 100% |  |  |  |  |
| 350 | 5.12 | Pour Second Half of Slab on Grade | milestone | 0d | 2025-12-06 A | 2025-12-06 A | 349 | 100% |  |  |  | must start on 2025-12-06 |
| 351 | 5.13 | Backfill Around Slab on Grade |  | 1d | 2025-12-08 A | 2025-12-08 A | 349, 350FS-2d | 100% |  |  |  |  |
| 352 | 6 | **Building Construction** |  | 179d | 2025-12-10 A | 2026-08-17 | 350 | 7% | 166.92d | 13d |  |  |
| 353 | 6.1 | Hollow metal frames to job site for CMU | milestone | 0d | 2025-12-10 A | 2025-12-10 A | 318, 140, 139, 349SS | 100% |  |  |  |  |
| 354 | 6.2 | Construct First Lift of Elevators/Stair Tower CMU | milestone | 0d | 2025-12-11 A | 2025-12-31 A | 349 | 100% |  |  |  |  |
| 355 | 6.3 | Construct Exterior CMU Walls - SOG to 2nd Floor | milestone | 0d | 2025-12-11 A | 2026-01-15 A | 349, 20, 22, 354SS, 351 | 100% |  |  |  |  |
| 356 | 6.4 | Install Hollow Metal Frames in CMU - 1st Floor |  | 1d | 2025-12-10 A | 2025-12-10 A | 354SS | 100% |  |  |  |  |
| 357 | 6.5 | Grout First Lift of CMU at Elevators/Stair Towers |  | 1d | 2025-12-31 A | 2025-12-31 A | 356 | 100% |  |  |  | start no earlier than 2026-01-26 |
| 358 | 6.6 | Construct Second Lift of Elevators/Stair Tower CMU |  | 8d | 2026-01-15 A | 2026-03-12 | 357 |  | 8d | 8d | 4d |  |
| 359 | 6.7 | Install Hollow Metal Frames in Stair Towers - 2nd Floor |  | 1d | 2026-02-25 A | 2026-02-25 A | 358SS | 100% |  |  |  |  |
| 360 | 6.8 | Grout Second Lift of CMU at Elevators/Stair Towers |  | 1d | 2026-02-19 A | 2026-02-26 A | 359 | 100% |  |  |  | start no earlier than 2026-03-02 |
| 361 | 6.9 | Construct Final Lift of Elevators/Stair Tower CMU |  | 8d | 2026-03-03 | 2026-03-12 | 360 |  |  | 23d | 0d | start no earlier than 2026-03-02 |
| 362 | 6.10 | Install Hollow Metal Frame in Stair Towers - 3rd Floor |  | 1d | 2026-03-03 | 2026-03-03 | 361SS |  |  | 23d | 14d | start no earlier than 2026-03-02 |
| 363 | 6.11 | Grout Final Lift of CMU at Elevators/Stair Towers |  | 2d | 2026-03-24 | 2026-03-25 | 343FS+5d, 349FS+5d, 20, 22, 31, 66, 109, 321, 362 |  |  | 9d | 8d |  |
| 364 | 6.12 | 1st floor structure erection/decking |  | 5d | 2026-01-07 A | 2026-02-12 A | 348, 349FS+5d, 355, 24, 28, 315 | 100% |  |  |  |  |
| 365 | 6.13 | 2nd floor SOD-Prep/wire install/Pour |  | 8d | 2026-01-21 A | 2026-02-21 A | 364FS-2d, 353 | 100% |  |  |  |  |
| 366 | 6.14 | 2nd floor SOD-Pour Completed | milestone | 0d | 2026-02-21 A | 2026-02-21 A | 365 | 100% |  |  |  |  |
| 367 | 6.15 | Construct Exterior CMU Walls - 2nd to 3rd floor |  | 10d | 2026-01-15 A | 2026-03-16 | 365FS+5d |  | 10d | 20d | 0d |  |
| 368 | 6.16 | 2nd floor-structure erection |  | 12d | 2026-02-16 A | 2026-03-18 | 366FS+5d, 367SS+3d |  | 12d | 4d | 0d |  |
| 369 | 6.17 | 3rd floor-SOD prep/wire install/Pour |  | 7d | 2026-03-19 | 2026-03-27 | 368, 367SS+5d, 358 |  |  | 4d | 0d |  |
| 370 | 6.18 | 3rd floor-SOD Pour Completed | milestone | 0d | 2026-03-27 | 2026-03-27 | 369 |  |  | 4d | 0d |  |
| 371 | 6.19 | Install stairs in stair towers |  | 7d | 2026-04-07 | 2026-04-15 | 348, 363, 349FS+5d, 34, 39 |  |  | 1d | 0d |  |
| 372 | 6.20 | Install Railings |  | 8d | 2026-04-16 | 2026-04-27 | 371, 39 |  |  | 18d | 17d |  |
| 373 | 6.21 | 3rd Floor - Construct CMU walls from 3rd Floor to Roof |  | 15d | 2026-04-06 | 2026-04-24 | 369FS+5d, 370FS+5d |  |  | 4d | 3d |  |
| 374 | 6.22 | 3rd floor structure erection & Roof |  | 25d | 2026-04-16 | 2026-05-20 | 370FS+5d, 373SS+5d, 41, 43, 105, 106, 107, 371 |  |  | 1d | 0d |  |
| 375 | 6.23 | Install TPO Roofing |  | 7d | 2026-05-21 | 2026-05-29 | 374, 373, 41, 43, 325, 372 |  |  | 1d | 0d |  |
| 376 | 6.24 | Roofing Complete - Building Dry-In | milestone | 0d | 2026-06-01 | 2026-06-01 | 375, 380 |  |  | 1d |  |  |
| 377 | 6.25 | EIFS/Stucco |  | 35d | 2026-05-21 | 2026-07-08 | 373, 374, 317, 326 |  |  | 3d | 0d |  |
| 378 | 6.26 | Storefront Frames Install |  | 10d | 2026-06-03 | 2026-06-16 | 376, 373, 374, 317, 319, 128 |  |  | 0d |  |  |
| 379 | 6.27 | Storefront Glass Installed |  | 10d | 2026-07-01 | 2026-07-14 | 378FS+10d, 143 |  |  | 0d |  |  |
| 380 | 6.28 | Stanley Sliding Door Install |  | 1d | 2026-06-01 | 2026-06-01 | 375, 131, 132 |  |  | 1d | 0d |  |
| 381 | 6.29 | Canopies |  | 8d | 2026-06-18 | 2026-06-29 | 377SS+20d, 380, 177 |  |  | 11d |  |  |
| 382 | 6.30 | Install Metal Coping/Downspouts/Trim |  | 6d | 2026-07-15 | 2026-07-22 | 375, 377, 381, 379, 146, 147 |  |  | 0d |  |  |
| 383 | 6.31 | Exterior Building Caulking |  | 5d | 2026-07-23 | 2026-07-29 | 382, 378, 377, 115, 113 |  |  | 2d | 0d |  |
| 384 | 6.32 | Exterior Building Punchlist |  | 5d | 2026-07-30 | 2026-08-05 | 383, 382, 433 |  |  | 2d |  |  |
| 385 | 6.33 | Light gauge office framing |  | 5d | 2026-05-21 | 2026-05-27 | 366, 364, 374 |  |  | 13d | 8d |  |
| 386 | 6.34 | Elevator #1 Install |  | 20d | 2026-06-23 | 2026-07-20 | 412, 376, 186, 194 |  |  | 13d | 0d |  |
| 387 | 6.35 | Elevator #2 install |  | 20d | 2026-07-21 | 2026-08-17 | 386, 186, 194 |  |  | 13d | 3d |  |
| 388 | 6.36 | Building Façade Complete | milestone | 0d | 2026-07-22 | 2026-07-22 | 382, 379 |  |  | 0d |  |  |

| ID | WBS | Task | Type | Duration | Start | Finish | Predecessors | Complete | Remaining | Total slack | Free slack | Constraint |
| --- | --- | --- | --- | --- | --- | --- | --- | --- | --- | --- | --- | --- |
| 389 | 7 | **Site Utlities/As-Builts** |  | 216d | 2025-11-20 A | 2026-09-17 |  | 16% | 180.69d | 0d |  |  |
| 390 | 7.1 | Electrical Gear Procurement | milestone | 0d | 2025-11-20 A | 2026-01-30 A | 1FS+20d, 250 | 100% |  |  |  | start no earlier than 2026-01-26 |
| 391 | 7.2 | Procure Transformer |  | 60d | 2026-02-18 A | 2026-05-25 | 1 |  | 60d | 16d | 0d |  |
| 392 | 7.3 | Install Primary Power Conduits to Transformer |  | 17d | 2026-01-23 A | 2026-02-16 A | 337, 235 | 100% |  |  |  |  |
| 393 | 7.4 | Install Secondary Power Conduits from Building to Transfomer | milestone | 0d | 2026-01-05 A | 2026-02-02 A | 392, 390, 411 | 100% |  |  |  |  |
| 394 | 7.5 | Set Transformer |  | 5d | 2026-05-26 | 2026-06-01 | 391, 337 |  |  | 16d | 0d |  |
| 395 | 7.6 | Permanent Power to Building |  | 10d | 2026-06-02 | 2026-06-15 | 393, 394 |  |  | 16d | 0d |  |
| 396 | 7.7 | As-Built Drawings for Sanitary and Storm Water |  | 12d | 2026-09-02 | 2026-09-17 | 335, 336, 440FS-3d |  |  | 0d |  | finish no earlier than 2026-09-16 |
| 397 | 8 | **Rough-ins and Finishes** |  | 161d | 2026-02-19 A | 2026-10-01 | 155, 157 |  | 161d | 5d |  |  |
| 398 | 8.1 | 1st Floor Electrical/Fire Alarm Rough In |  | 15d | 2026-02-19 A | 2026-05-25 | 364, 366, 399, 239FS+2d, 241, 243, 245, 252, 254, 256, 258, 266, 268, 270, 272, 273, 274, 400FS-5d |  | 15d | 5d | 0d |  |
| 399 | 8.2 | 1st Floor HVAC Rough In |  | 15d | 2026-02-24 A | 2026-05-04 | 366, 209, 229, 231, 227, 226, 211, 214, 215, 217, 220, 221, 223, 367, 370 |  | 15d | 0d |  |  |
| 400 | 8.3 | 1st Floor Sprinkler Rough-in/riser room-1st floor |  | 12d | 2026-03-03 A | 2026-04-22 | 366, 190, 189, 399SS+10d |  | 12d | 13d | 0d |  |
| 401 | 8.4 | 1st Floor HVAC Trim/Line Set |  | 10d | 2026-05-26 | 2026-06-08 | 399, 400, 398 |  |  | 5d | 0d |  |
| 402 | 8.5 | 1st Floor Plumbing rough walls |  | 5d | 2026-06-09 | 2026-06-15 | 385, 401, 400 |  |  | 5d | 0d |  |
| 403 | 8.6 | 1st Floor Hallway System- by Janus |  | 20d | 2026-06-16 | 2026-07-13 | 370, 399, 398, 400, 401, 402 |  |  | 5d | 0d |  |
| 404 | 8.7 | 1st Floor Electrical Trim/FA/Hang Lights |  | 7d | 2026-07-14 | 2026-07-22 | 403, 261, 398 |  |  | 18d | 13d |  |
| 405 | 8.8 | 2nd Floor HVAC Rough In |  | 15d | 2026-05-21 | 2026-06-10 | 370, 209, 226, 227, 229, 231, 211, 214, 215, 217, 220, 221, 223, 374 |  |  | 13d | 0d |  |
| 406 | 8.9 | 2nd Floor Electrical/Fire Alarm Rough In |  | 15d | 2026-06-11 | 2026-07-01 | 368, 405, 407FS-5d, 273, 274 |  |  | 13d | 8d |  |
| 407 | 8.10 | 2nd Floor Sprinkler Rough-in |  | 7d | 2026-06-04 | 2026-06-12 | 370, 405FS-5d, 400 |  |  | 16d | 0d |  |
| 408 | 8.11 | 2nd Floor HVAC Trim/Line Sets |  | 10d | 2026-06-15 | 2026-06-26 | 405, 407 |  |  | 16d | 11d |  |
| 409 | 8.12 | 2nd Floor Hallway System - by Janus |  | 20d | 2026-07-14 | 2026-08-10 | 406, 403, 407, 408 |  |  | 5d | 0d |  |
| 410 | 8.13 | 2nd Floor Electrical Trim/FA/Hang Light-2nd Floor |  | 7d | 2026-08-11 | 2026-08-19 | 404, 409 |  |  | 5d | 0d |  |
| 411 | 8.14 | Install Gear in Electrical Room |  | 10d | 2026-06-01 | 2026-06-12 | 398, 375, 390, 256 |  |  | 13d | 1d |  |
| 412 | 8.15 | Power to elevator machine rooms |  | 2d | 2026-06-16 | 2026-06-17 | 375, 395, 411 |  |  | 16d | 3d |  |
| 413 | 8.16 | 3rd Floor HVAC Rough In |  | 15d | 2026-05-26 | 2026-06-15 | 375SS+3d, 209, 229, 231, 227, 226, 211, 214, 215, 217, 220, 221, 223 |  |  | 6d | 0d |  |
| 414 | 8.17 | 3rd Floor Electrical/Fire Alarm Rough In |  | 15d | 2026-06-05 | 2026-06-25 | 375, 413SS+8d, 273, 274 |  |  | 6d | 0d |  |
| 415 | 8.18 | 3rd Floor Sprinkler Rough-in |  | 5d | 2026-06-26 | 2026-07-02 | 375, 413, 374, 414 |  |  | 6d | 0d |  |
| 416 | 8.19 | 3rd Floor HVAC Trim/Line Sets |  | 10d | 2026-07-03 | 2026-07-16 | 413, 415 |  |  | 6d | 0d |  |
| 417 | 8.20 | 3rd Floor Hallway System-by Janus |  | 20d | 2026-07-17 | 2026-08-13 | 414, 416, 415, 413 |  |  | 6d | 0d |  |
| 418 | 8.21 | 3rd Floor Electrical Trim/FA/Hang Lights |  | 7d | 2026-08-14 | 2026-08-24 | 417, 416 |  |  | 6d | 0d |  |
| 419 | 8.22 | Install Aluminum Wainscot at Elevator Lobbies |  | 5d | 2026-08-14 | 2026-08-20 | 36, 403, 409, 417, 429 |  |  | 8d | 0d |  |
| 420 | 8.23 | Office Buildout |  | 40d | 2026-06-17 | 2026-08-11 | 378, 402, 385, 41, 50, 52, 121, 149, 151, 153, 168, 411 |  |  | 11d | 0d |  |
| 421 | 8.24 | Initial BDA System Requirement Testing |  | 1d | 2026-08-14 | 2026-08-14 | 417 |  |  | 18d | 0d |  |
| 422 | 8.25 | Install BDA System |  | 10d | 2026-08-31 | 2026-09-11 | 421FS+10d |  |  | 18d | 0d |  |
| 423 | 8.26 | 1st Floor Punchlist Repairs |  | 5d | 2026-08-12 | 2026-08-18 | 429, 420, 404, 401, 403 |  |  | 15d | 9d |  |
| 424 | 8.27 | 2nd Floor Punchlist Repairs |  | 5d | 2026-08-21 | 2026-08-27 | 408, 406, 410, 419, 409 |  |  | 8d | 2d |  |
| 425 | 8.28 | 3rd Floor Punchlist Repairs |  | 5d | 2026-08-25 | 2026-08-31 | 418, 419, 416, 417 |  |  | 6d | 0d |  |
| 426 | 8.29 | Complete Interior Punchlist Work - All Floors |  | 2d | 2026-09-01 | 2026-09-02 | 430, 434, 179, 418, 419, 424, 425, 423 |  |  | 6d | 1d |  |
| 427 | 8.30 | Final Clean/Floor Sealer |  | 20d | 2026-09-04 | 2026-10-01 | 387, 420, 327, 418, 372, 432, 430, 431, 429, 200, 202, 428, 237, 424, 426 |  |  | 5d | 0d |  |
| 428 | 8.31 | HVAC Startup |  | 6d | 2026-08-27 | 2026-09-03 | 416, 420, 408, 401, 432 |  |  | 5d | 0d |  |
| 429 | 8.32 | Install Plumbing Fixtures and Water Heaters |  | 4d | 2026-07-17 | 2026-07-22 | 416, 196, 198, 200, 402 |  |  | 24d | 14d |  |
| 430 | 8.33 | Install Interior Signage |  | 1d | 2026-08-27 | 2026-08-27 | 417, 419, 420, 166, 432 |  |  | 8d | 2d |  |
| 431 | 8.34 | Install Fire Extinguishers and Cabinets |  | 1d | 2026-08-14 | 2026-08-14 | 417, 420, 409, 403, 170 |  |  | 9d | 4d |  |
| 432 | 8.35 | Final Painting, Stairs/Railings/Doors |  | 5d | 2026-08-20 | 2026-08-26 | 161, 417, 372, 429, 433, 410, 431FS-1d |  |  | 5d | 0d |  |
| 433 | 8.36 | Wall Packs |  | 3d | 2026-07-09 | 2026-07-13 | 377, 36 |  |  | 9d |  |  |
| 434 | 8.37 | Elevator Trim out by Subs |  | 3d | 2026-08-21 | 2026-08-25 | 387, 386, 417, 409, 403, 419 |  |  | 10d | 0d |  |

| ID | WBS | Task | Type | Duration | Start | Finish | Predecessors | Total slack | Free slack | Constraint |
| --- | --- | --- | --- | --- | --- | --- | --- | --- | --- | --- |
| 435 | 9 | **Finsh Sitework - Dumpster/Sidewalks/Paving/Landscaping** |  | 76d | 2026-07-09 | 2026-10-22 |  | 0d |  |  |
| 436 | 9.1 | Rough grade for landscaping |  | 2d | 2026-07-09 | 2026-07-10 | 377, 394, 336, 334 | 3d | 0d |  |
| 437 | 9.2 | Install Exterior Lighting in Parking Area |  | 5d | 2026-07-13 | 2026-07-17 | 436, 264, 290, 292 | 3d |  |  |
| 438 | 9.3 | Form and Pour Sidewalks |  | 5d | 2026-07-23 | 2026-07-29 | 436, 437, 388 | 0d |  |  |
| 439 | 9.4 | Landscaping and Irrigation Installation |  | 20d | 2026-07-27 | 2026-08-21 | 436FS-1d, 308, 310, 312, 433, 438FS-3d, 384FF+10d, 392 | 0d |  |  |
| 440 | 9.5 | Curb/Asphalt Paving |  | 10d | 2026-08-24 | 2026-09-04 | 436, 438, 280, 282, 284, 286, 288, 439 | 0d |  |  |
| 441 | 9.6 | Install Fencing |  | 5d | 2026-07-30 | 2026-08-05 | 438, 294, 296, 298, 322, 323, 324 | 21d | 12d |  |
| 442 | 9.7 | Striping |  | 1d | 2026-09-07 | 2026-09-07 | 440, 439SS+10d | 16d | 0d |  |
| 443 | 9.8 | Landscaping As-Built Drawings |  | 10d | 2026-08-24 | 2026-09-04 | 439, 441 | 9d | 0d |  |
| 444 | 9.9 | Developer's Letter of Dedication |  | 10d | 2026-09-07 | 2026-09-18 | 443 | 9d |  |  |
| 445 | 9.10 | Engineer's Certificate of Completion |  | 5d | 2026-09-07 | 2026-09-11 | 443 | 14d |  |  |
| 446 | 9.11 | Contractor's Letter of Completion |  | 2d | 2026-09-08 | 2026-09-09 | 439, 426, 433, 383, 384, 442 | 16d |  |  |
| 447 | 9.12 | Satisfaction Letter/Email from FDOT and City for Infrastructure |  | 10d | 2026-09-07 | 2026-09-18 | 443 | 9d |  |  |
| 448 | 9.13 | SOV for Site Utilites, Water, Wastewater, Reclaimed Water |  | 10d | 2026-09-18 | 2026-10-01 | 396 | 0d |  |  |
| 449 | 9.14 | Polk County Final Walkthrough Request |  | 5d | 2026-10-02 | 2026-10-08 | 443, 440, 444, 445, 446, 447, 448 | 0d |  |  |
| 450 | 9.15 | Polk County Approval of Site |  | 10d | 2026-10-09 | 2026-10-22 | 449 | 0d |  |  |
| 451 | 10 | **Final Building Sign-Offs** |  | 37d | 2026-08-26 | 2026-10-15 |  | 11d |  |  |
| 452 | 10.1 | Pre Closeout Meeting with AHJ |  | 1d | 2026-10-02 | 2026-10-02 | 388, 427, 453, 89, 90, 91, 135, 136, 431, 207, 426, 454 | 20d |  |  |
| 453 | 10.2 | Final BDA Test |  | 1d | 2026-09-14 | 2026-09-14 | 417SS+10d, 422 | 18d | 13d |  |
| 454 | 10.3 | Elevator Ready for State Inspection |  | 1d | 2026-08-26 | 2026-08-26 | 434, 395 | 31d | 26d |  |
| 455 | 10.4 | Final Building Inspections |  | 5d | 2026-10-09 | 2026-10-15 | 442, 427, 454, 443FS-1d, 453, 430, 179, 450SS | 0d |  |  |
| 456 | 11 | Weather Days per Contract (20 Calendar Days) |  | 15d | 2026-10-12 | 2026-10-30 | 455SS+1d | 0d |  |  |
| 457 | 12 | Substantial Completion | milestone | 0d | 2026-10-30 | 2026-10-30 | 455, 456, 426 | 0d |  | finish no later than 2026-10-30 |
