# Overall Construction Schedule

Schedule from MS Project, 2025-07-09 to 2026-10-30, status date 2026-04-20, A marks actual dates.
Toshiba

## Calendars

- Standard: Mon-Fri 08:00-12:00, 13:00-17:00; Sat-Sun off.

## Schedule

| ID | WBS | Task | Type | Duration | Start | Finish | Predecessors | Complete | Remaining | Total slack | Free slack | Constraint |
| --- | --- | --- | --- | --- | --- | --- | --- | --- | --- | --- | --- | --- |
| 1 | 1 | **Contract Administration** |  | 40d | 2025-07-09 A | 2025-09-02 A |  | 100% |  |  |  |  |
| 2 | 1.1 | Notice to Proceed |  | 34d | 2025-07-09 A | 2025-08-25 A |  | 100% |  |  |  |  |
| 3 | 1.2 | Mobilization |  | 1d | 2025-08-26 A | 2025-09-02 A | 2 | 100% |  |  |  |  |
| 4 | 2 | **Procurement** |  | 287d | 2025-08-07 A | 2026-09-11 |  | 62% | 109.98d | 35d |  |  |
| 5 | 2.1 | 033000 - CIP - Product Data/Material Certificates, Submittal |  | 1d | 2025-08-11 A | 2025-08-13 A | 2 | 100% |  |  |  |  |
| 6 | 2.2 | 033000 - CIP - Design Mixtures for Concrete, Submittal | milestone | 0d | 2025-08-07 A | 2025-08-08 A | 2 | 100% |  |  |  |  |
| 7 | 2.3 | 033000 - CIP - Rebar Shop Drawings, Submittal | milestone | 0d | 2025-08-07 A | 2025-08-08 A | 2 | 100% |  |  |  | finish no earlier than 2025-08-08 |
| 8 | 2.4 | 033000 - CIP - Construction Joint Layout, Submittal |  | 10d | 2026-03-26 A | 2026-04-08 A | 2 | 100% |  |  |  | start no earlier than 2026-03-25 |
| 9 | 2.5 | 033000 - CIP - Slab on Grade Control Joint Layout, Submittal |  | 10d | 2026-03-26 A | 2026-04-08 A | 2 | 100% |  |  |  | start no earlier than 2026-03-25 |
| 10 | 2.6 | 033000 - CIP - Product Data/Material Certificates, Review/Approval |  | 15d | 2026-03-26 A | 2026-04-15 A | 5 | 100% |  |  |  | start no earlier than 2026-03-25 |
| 11 | 2.7 | 033000 - CIP - Design Mixtures for Concrete, Review/Approval |  | 2d | 2025-08-08 A | 2025-08-25 A | 6 | 100% |  |  |  |  |
| 12 | 2.8 | 033000 - CIP - Rebar Shop Drawings, Review/Approval |  | 31d | 2025-08-08 A | 2025-09-22 A | 7 | 100% |  |  |  | start no earlier than 2025-10-20 |
| 13 | 2.9 | 033000 - CIP - Construction Joint Layout, Review/Approval |  | 15d | 2026-04-09 A | 2026-04-29 | 8 | 53% | 7d | 132d |  | start no earlier than 2026-03-25 |
| 14 | 2.10 | 033000 - CIP - Slab on Grade Control Joint Layout, Review/Approval |  | 15d | 2026-04-09 A | 2026-04-29 | 9 | 53% | 7d | 132d |  | start no earlier than 2026-03-25 |
| 15 | 2.11 | 033300 - Concrete Sealing, Product Data, F-01 Finish, Submittals |  | 2d | 2026-01-27 A | 2026-01-28 A | 2 | 100% |  |  |  | start no earlier than 2026-01-26 |
| 16 | 2.12 | 033300 - Concrete Polishing, Product Data FF-02, Submittals |  | 2d | 2026-01-27 A | 2026-01-28 A | 2 | 100% |  |  |  | start no earlier than 2026-01-26 |
| 17 | 2.13 | 033300 - Concrete Sealing, Product Data, F-01 Finish, Review/Approval |  | 15d | 2026-03-26 A | 2026-04-15 A | 15 | 100% |  |  |  | start no earlier than 2026-03-25 |
| 18 | 2.14 | 033300 - Concrete Polishing, Product Data FF-02, Review/Approval |  | 15d | 2026-03-26 A | 2026-04-15 A | 16 | 100% |  |  |  | start no earlier than 2026-03-25 |
| 19 | 2.15 | 042000 - Unit Masonry, Product Data, Masonry Accessories, Submittal | milestone | 0d | 2025-08-07 A | 2025-08-08 A | 2 | 100% |  |  |  |  |
| 20 | 2.16 | 042000 - Unit Masonry, Product Data, Masonry Accessories, Review/Approval | milestone | 0d | 2025-08-14 A | 2025-09-10 A | 19 | 100% |  |  |  |  |
| 21 | 2.17 | 042000 Unit Masonry, Grout Mix, Submittal | milestone | 0d | 2025-08-07 A | 2025-08-08 A | 2 | 100% |  |  |  |  |
| 22 | 2.18 | 042000 Unit Masonry, Grout Mix, Review/Approval | milestone | 0d | 2025-10-07 A | 2025-10-10 A | 21 | 100% |  |  |  |  |
| 23 | 2.19 | 051200 - Structural Steel Framing, Shop Drawings, Submittal |  | 1d | 2025-09-26 A | 2025-09-26 A | 2 | 100% |  |  |  | start no earlier than 2025-10-20 |
| 24 | 2.20 | 051200 - Structural Steel Framing, Shop Drawings, Review/Approval |  | 15d | 2025-09-29 A | 2025-10-17 A | 23 | 100% |  |  |  | start no earlier than 2025-10-20 |
| 25 | 2.21 | 054000 - Cold Formed Metal Framing, Product Data, Submittal |  | 2d | 2025-09-23 A | 2025-09-24 A | 2 | 100% |  |  |  | start no earlier than 2026-01-26 |
| 26 | 2.22 | 054000 - Cold Formed Metal Framing, Product Data, Review/Approval | milestone | 0d | 2025-09-25 A | 2025-09-26 A | 25 | 100% |  |  |  | start no earlier than 2025-11-10 |
| 27 | 2.23 | 054000 - Cold Formed Metal Framing, Shop Drawings, Submittal |  | 2d | 2025-09-25 A | 2025-09-26 A | 2 | 100% |  |  |  | start no earlier than 2026-01-26 |
| 28 | 2.24 | 054000 - Cold Formed Metal Framing, Shop Drawings, Review/Approval | milestone | 0d | 2025-09-29 A | 2025-10-17 A | 27 | 100% |  |  |  | start no earlier than 2025-10-20 |
| 29 | 2.25 | 055000 - Metal Fabricators, Shop Drawings, Submittal |  | 20d | 2025-09-01 A | 2025-09-28 A | 2 | 100% |  |  |  |  |
| 30 | 2.26 | 055000 - Metal Fabricators, Shop Drawings, Review/Approval |  | 14d | 2025-09-29 A | 2025-10-16 A | 29 | 100% |  |  |  |  |
| 31 | 2.27 | 055000 - Metal Fabricators, Fabrication/Delivery |  | 57d | 2025-10-17 A | 2026-01-05 A | 30 | 100% |  |  |  |  |
| 32 | 2.28 | 055100/055116 - Metal Stair, Shop Drawings, Submittal |  | 2d | 2025-10-30 A | 2025-10-31 A | 2 | 100% |  |  |  | start no earlier than 2025-11-21 |
| 33 | 2.29 | 055100/055116 - Metal Stair, Shop Drawings, Review/Approval | milestone | 0d | 2025-11-03 A | 2025-12-11 A | 32 | 100% |  |  |  |  |
| 34 | 2.30 | 055100/055116 - Metal Stair, Shop Drawings, Fabrication/Delivery |  | 10d | 2025-12-15 A | 2026-04-08 A | 33 | 100% |  |  |  | start no earlier than 2026-03-02 |
| 35 | 2.31 | 055110 - Aluminum Diamond Plate Wainscot, Product Data/Shop Drawings, Submittal |  | 25d | 2026-03-26 A | 2026-04-29 | 2 | 72% | 7d | 51d | 0d | start no earlier than 2026-03-25 |
| 36 | 2.32 | 055110 - Aluminum Diamond Plate Wainscot, Product Data/Shop Drawings, Review/Approval |  | 15d | 2026-04-30 | 2026-05-20 | 35 |  |  | 51d | 31d | start no earlier than 2026-01-26 |
| 37 | 2.33 | 055213 - Pipe and Tube Railings, Shop Drawings, Submittal |  | 2d | 2025-10-30 A | 2025-10-31 A | 2 | 100% |  |  |  | start no earlier than 2025-11-21 |
| 38 | 2.34 | 055213 - Pipe and Tube Railings, Shop Drawings, Review/Approval | milestone | 0d | 2025-11-03 A | 2025-12-11 A | 37 | 100% |  |  |  | start no earlier than 2025-10-20 |
| 39 | 2.35 | 055213 - Pipe and Tube Railings, Shop Drawings, Fabrication/Delivery |  | 5d | 2025-12-15 A | 2026-04-01 A | 38 | 100% |  |  |  |  |
| 40 | 2.36 | 061000 - Rough Carpentry, Product Data Submittals |  | 10d | 2026-03-26 A | 2026-04-08 A | 2 | 100% |  |  |  | start no earlier than 2026-03-25 |
| 41 | 2.37 | 061000 - Rough Carpentry, Product Data Approval |  | 15d | 2026-04-09 A | 2026-04-29 | 40 | 53% | 7d | 1d | 0d | start no earlier than 2026-03-25 |
| 42 | 2.38 | 061600 - Sheathing, Product Data Submittals |  | 2d | 2026-02-02 A | 2026-02-03 A | 2 | 100% |  |  |  |  |
| 43 | 2.39 | 061600 - Sheathing, Product Data Review/Approval | milestone | 0d | 2026-02-04 A | 2026-03-04 A | 42 | 100% |  |  |  | start no earlier than 2026-01-26 |
| 44 | 2.40 | 064116 - Plastic Laminate Casework, Product Data, Submittals |  | 20d | 2026-03-26 A | 2026-04-22 | 2 | 90% | 2d | 6d | 0d | start no earlier than 2026-03-25 |
| 45 | 2.41 | 064116 - Plastic Laminate Casework, Shop Drawings, Submittal |  | 20d | 2026-03-26 A | 2026-04-22 | 2 | 90% | 2d | 6d | 0d | start no earlier than 2026-03-25 |
| 46 | 2.42 | 064116 - Plastic Laminate Casework, Color Samples |  | 20d | 2026-03-26 A | 2026-04-22 | 2 | 90% | 2d | 6d | 0d | start no earlier than 2026-03-25 |
| 47 | 2.43 | 064116 - Plastic Laminate Casework, Product Data, Review/Approval |  | 15d | 2026-04-23 | 2026-05-13 | 44 |  |  | 6d | 0d | start no earlier than 2026-03-02 |
| 48 | 2.44 | 064116 - Plastic Laminate Casework, Shop Drawings, Review/Approval |  | 15d | 2026-04-23 | 2026-05-13 | 45 |  |  | 6d | 0d | start no earlier than 2026-03-02 |
| 49 | 2.45 | 064116 - Plastic Laminate Casework, Color Samples, Review/Approval |  | 15d | 2026-04-23 | 2026-05-13 | 46 |  |  | 6d | 0d | start no earlier than 2026-03-02 |
| 50 | 2.46 | 064116 - Plastic Laminate Casework, Fabrication/Delivery |  | 25d | 2026-05-14 | 2026-06-17 | 47, 48, 49 |  |  | 6d | 0d |  |
| 51 | 2.47 | 066400 - FRP Submittals |  | 25d | 2026-03-26 A | 2026-04-29 | 2 | 72% | 7d | 26d | 0d | start no earlier than 2026-03-25 |
| 52 | 2.48 | 066400 - FRP - Review/Approval |  | 15d | 2026-04-30 | 2026-05-20 | 51 |  |  | 26d | 0d | start no earlier than 2026-01-26 |
| 53 | 2.49 | 071113 - Bituminous Waterproofing, Product Data Submittals |  | 10d | 2026-03-26 A | 2026-04-08 A | 2 | 100% |  |  |  | start no earlier than 2026-03-25 |
| 54 | 2.50 | 071113 - Bituminous Waterproofing, Review/Approval |  | 15d | 2026-04-09 A | 2026-04-29 | 53 | 53% | 7d | 132d |  | start no earlier than 2026-03-25 |
| 55 | 2.51 | 071326 - Self-Adhering Sheet Waterproofing, Product Data Submittal |  | 1d | 2025-09-17 A | 2025-09-17 A | 2 | 100% |  |  |  | start no earlier than 2025-10-20 |
| 56 | 2.52 | 071326 - Self-Adhering Sheet Waterproofing, Product Data Review/Approval |  | 6d | 2025-09-24 A | 2025-10-01 A | 55 | 100% |  |  |  | start no earlier than 2025-10-20 |
| 57 | 2.53 | 071326 - Self-Adhering Sheet Waterproofing, Shop Drawings, Submittal |  | 10d | 2026-03-26 A | 2026-04-08 A | 2 | 100% |  |  |  | start no earlier than 2026-03-25 |
| 58 | 2.54 | 071326 - Self-Adhering Sheet Waterproofing, Shop Drawings, Review/Approval |  | 15d | 2026-04-09 A | 2026-04-29 | 57 | 53% | 7d | 132d |  | start no earlier than 2026-03-25 |
| 59 | 2.55 | 071326 - Self-Adhering Sheet Waterproofing, Samples, Submittal |  | 10d | 2026-03-26 A | 2026-04-08 A | 2 | 100% |  |  |  | start no earlier than 2026-03-25 |
| 60 | 2.56 | 071326 - Self-Adhering Sheet Waterproofing, Samples, Review/Approval |  | 15d | 2026-04-09 A | 2026-04-29 | 59 | 53% | 7d | 132d |  | start no earlier than 2026-03-25 |
| 61 | 2.57 | 071416 - Cold Fluid Applied Waterproofing, Product Data Submittals |  | 10d | 2026-03-26 A | 2026-04-08 A | 2 | 100% |  |  |  | start no earlier than 2026-03-25 |
| 62 | 2.58 | 071416 - Cold Fluid Applied Waterproofing, Shop Drawings, Submittal |  | 20d | 2026-03-26 A | 2026-04-22 | 2 | 90% | 2d | 14d | 0d | start no earlier than 2026-03-25 |
| 63 | 2.59 | 071416 - Cold Fluid Applied Waterproofing, Product Data, Review/Approval |  | 15d | 2026-04-09 A | 2026-04-29 | 61 | 53% | 7d | 24d | 10d | start no earlier than 2026-03-25 |
| 64 | 2.60 | 071416 - Cold Fluid Applied Waterproofing, Shop Drawings, Review/Approval |  | 15d | 2026-04-23 | 2026-05-13 | 62 |  |  | 14d | 0d | start no earlier than 2026-03-02 |
| 65 | 2.61 | 072100 - Thermal Insulation, Product Data Submittals |  | 2d | 2026-02-02 A | 2026-02-03 A | 2 | 100% |  |  |  | start no earlier than 2026-01-26 |
| 66 | 2.62 | 072100 - Thermal Insulation, Product Data, Review/Approval |  | 21d | 2026-02-04 A | 2026-03-04 A | 65 | 100% |  |  |  |  |
| 67 | 2.63 | 072410 - Stucco System, Product Data, Submittals |  | 6d | 2025-11-17 A | 2025-11-24 A | 2 | 100% |  |  |  | start no earlier than 2025-11-21 |
| 68 | 2.64 | 072410 - Stucco System, Manufacturers Standard Warranty, Submittal |  | 6d | 2025-11-17 A | 2025-11-24 A | 2 | 100% |  |  |  | start no earlier than 2025-11-21 |
| 69 | 2.65 | 072410 - Stucco System, Color Samples for Architect Approval |  | 15d | 2026-03-26 A | 2026-04-15 A | 2 | 100% |  |  |  | start no earlier than 2026-03-25 |
| 70 | 2.66 | 072410 - Stucco System, Shop Drawings for Approval |  | 15d | 2026-03-26 A | 2026-04-15 A | 2 | 100% |  |  |  | start no earlier than 2026-03-25 |

| ID | WBS | Task | Type | Duration | Start | Finish | Predecessors | Complete | Remaining | Total slack | Free slack | Constraint |
| --- | --- | --- | --- | --- | --- | --- | --- | --- | --- | --- | --- | --- |
| 71 | 2.67 | 072410 - Stucco System, Product Data, Review/Approval |  | 15d | 2026-03-26 A | 2026-04-15 A | 67 | 100% |  |  |  | start no earlier than 2026-03-25 |
| 72 | 2.68 | 072410 - Stucco System, Manufacturers Standard Warranty, Review/Approval |  | 15d | 2026-03-26 A | 2026-04-15 A | 68 | 100% |  |  |  | start no earlier than 2026-03-25 |
| 73 | 2.69 | 072410 - Stucco System, Color Samples, Review/Approval |  | 15d | 2026-04-16 A | 2026-05-06 | 69 | 20% | 12d | 19d | 0d | start no earlier than 2026-03-25 |
| 74 | 2.70 | 072410 - Stucco System, Shop Drawings, Review/Approval |  | 15d | 2026-04-16 A | 2026-05-06 | 70 | 20% | 12d | 19d | 0d | start no earlier than 2026-03-25 |
| 75 | 2.71 | 072500 - Weather Barriers, Product Data, Submittal |  | 10d | 2026-03-26 A | 2026-04-08 A | 2 | 100% |  |  |  | start no earlier than 2026-03-25 |
| 76 | 2.72 | 072500 - Weather Barriers, Product Data, Review/Approval |  | 15d | 2026-04-09 A | 2026-04-29 | 75 | 53% | 7d | 132d |  | start no earlier than 2026-03-25 |
| 77 | 2.73 | 072500 - Weather Barriers, Shop Drawings, Submittal |  | 10d | 2026-03-26 A | 2026-04-08 A | 2 | 100% |  |  |  | start no earlier than 2026-03-25 |
| 78 | 2.74 | 072500 - Weather Barriers, Shop Drawing, Review/Approval |  | 15d | 2026-04-09 A | 2026-04-29 | 77 | 53% | 7d | 132d |  | start no earlier than 2026-03-25 |
| 79 | 2.75 | 072713 - Modified Bituminous Sheet Air Barriers, Product Data, Submittals |  | 10d | 2026-03-26 A | 2026-04-08 A | 2 | 100% |  |  |  | start no earlier than 2026-03-25 |
| 80 | 2.76 | 072713 - Modified Bituminous Sheet Air Barriers, Shop Drawing, Submittals |  | 20d | 2026-03-26 A | 2026-04-22 | 2 | 90% | 2d | 122d | 0d | start no earlier than 2026-03-25 |
| 81 | 2.77 | 072713 - Modified Bituminous Sheet Air Barriers, Product Data, Review/Approval |  | 15d | 2026-04-09 A | 2026-04-29 | 79 | 53% | 7d | 132d |  | start no earlier than 2026-03-25 |
| 82 | 2.78 | 072713 - Modified Bituminous Sheet Air Barriers, Shop Drawing, Review/Approval |  | 15d | 2026-04-23 | 2026-05-13 | 80 |  |  | 122d |  |  |
| 83 | 2.79 | 075423 - TPO Roofing, Product Data, Submittals |  | 3d | 2025-11-12 A | 2025-11-14 A | 2 | 100% |  |  |  |  |
| 84 | 2.80 | 075423 - TPO Roofing, Shop Drawing, Submittals |  | 3d | 2025-11-12 A | 2025-11-14 A | 2 | 100% |  |  |  | start no earlier than 2026-03-25 |
| 85 | 2.81 | 075423 - TPO Roofing, Product Data, Review/Approval |  | 6d | 2026-03-23 A | 2026-04-28 | 83 |  | 6d | 133d | 23d |  |
| 86 | 2.82 | 075423 - TPO Roofing, Shop Drawing, Review/Approval |  | 20d | 2026-02-23 A | 2026-04-22 | 84 | 90% | 2d | 137d | 43d |  |
| 87 | 2.83 | 075423 - TPO Roofing, Sample Warranty, Submittal |  | 10d | 2026-03-26 A | 2026-04-08 A | 2 | 100% |  |  |  | start no earlier than 2026-03-25 |
| 88 | 2.84 | 075423- TPO Roofing, Sample Warranty, Review/Approval |  | 15d | 2026-04-09 A | 2026-04-29 | 87 | 53% | 7d | 132d | 10d | start no earlier than 2026-03-25 |
| 89 | 2.85 | 075423 - TPO Roofing, Closeout Submittal, Maintenance Data |  | 20d | 2026-05-12 | 2026-06-08 | 375 |  |  | 103d | 79d |  |
| 90 | 2.86 | 075423 - TPO Roofing, Closeout Submittal, Roof Warranty |  | 20d | 2026-05-12 | 2026-06-08 | 375 |  |  | 103d | 79d |  |
| 91 | 2.87 | 075423 - TPO Roofing, Closeout Submittal, Record Drawings |  | 20d | 2026-05-12 | 2026-06-08 | 375 |  |  | 103d | 79d |  |
| 92 | 2.88 | 076200 - Sheet Metal Flashing and Trim, Product Data, Submittals |  | 10d | 2026-03-26 A | 2026-04-08 A | 2 | 100% |  |  |  | start no earlier than 2026-03-25 |
| 93 | 2.89 | 076200 - Sheet Metal Flashing and Trim, Shop Drawings, Submittals |  | 20d | 2026-03-26 A | 2026-04-22 | 2 | 90% | 2d | 6d | 0d | start no earlier than 2026-03-25 |
| 94 | 2.90 | 076200 - Sheet Metal Flashing and Trim, Samples, Submittals |  | 20d | 2026-03-26 A | 2026-04-22 | 2 | 90% | 2d | 6d | 0d | start no earlier than 2026-03-25 |
| 95 | 2.91 | 076200 - Sheet Metal Flashing and Trim, Product Data, Review/Approval |  | 10d | 2026-04-09 A | 2026-04-22 | 2, 92 | 80% | 2d | 137d | 10d |  |
| 96 | 2.92 | 076200 - Sheet Metal Flashing and Trim, Shop Drawings, Review/Approval |  | 10d | 2026-04-23 | 2026-05-06 | 2, 93 |  |  | 6d | 0d | start no earlier than 2026-03-02 |
| 97 | 2.93 | 076200 - Sheet Metal Flashing and Trim, Samples, Review/Approval |  | 10d | 2026-04-23 | 2026-05-06 | 2, 94 |  |  | 6d | 0d | start no earlier than 2026-03-02 |
| 98 | 2.94 | 077100 - Roof Specialties, Product Data, Submittals |  | 20d | 2026-03-26 A | 2026-04-22 | 2 | 90% | 2d | 6d | 0d | start no earlier than 2026-03-25 |
| 99 | 2.95 | 077100 - Roof Specialties, Shop Drawing, Submittals |  | 20d | 2026-03-26 A | 2026-04-22 | 2 | 90% | 2d | 6d | 0d | start no earlier than 2026-03-25 |
| 100 | 2.96 | 077100 - Roof Specialties, Product Data, Review/Approval |  | 15d | 2026-04-23 | 2026-05-13 | 98 |  |  | 6d | 0d | start no earlier than 2026-03-02 |
| 101 | 2.97 | 077100 - Roof Specialties, Shop Drawing, Review/Approval |  | 15d | 2026-04-23 | 2026-05-13 | 99 |  |  | 6d | 0d | start no earlier than 2026-03-02 |
| 102 | 2.98 | 077200 - Roof Accessories, Product Data, Submittals |  | 15d | 2026-03-26 A | 2026-04-15 A | 2 | 100% |  |  |  | start no earlier than 2026-03-25 |
| 103 | 2.99 | 077200 - Roof Accessories, Shop Drawings, Submittal |  | 15d | 2026-03-26 A | 2026-04-15 A | 2 | 100% |  |  |  | start no earlier than 2026-03-25 |
| 104 | 2.100 | 077200 - Roof Accessories, Design Certifications, Submittal |  | 15d | 2026-03-26 A | 2026-04-15 A | 2 | 100% |  |  |  | start no earlier than 2026-03-25 |
| 105 | 2.101 | 077200 - Roof Accessories, Product Data, Review/Approval |  | 15d | 2026-04-16 A | 2026-05-06 | 102 | 20% | 12d | 127d |  | start no earlier than 2026-03-25 |
| 106 | 2.102 | 077200 - Roof Accessories, Shop Drawings, Review/Approval |  | 15d | 2026-04-16 A | 2026-05-06 | 103 | 20% | 12d | 127d |  | start no earlier than 2026-03-25 |
| 107 | 2.103 | 077200 - Roof Accessories, Design Certifications, Review/Approval |  | 15d | 2026-04-16 A | 2026-05-06 | 104 | 20% | 12d | 127d |  | start no earlier than 2026-03-25 |
| 108 | 2.104 | 078413 - Penetration Firestopping, Product Data, Submittals |  | 2d | 2025-10-20 A | 2025-10-21 A | 2 | 100% |  |  |  | start no earlier than 2026-01-26 |
| 109 | 2.105 | 078413 - Penetration Firestopping, Product Data, Review/Approval |  | 11d | 2025-10-22 A | 2025-11-05 A | 2, 108 | 100% |  |  |  | start no earlier than 2026-01-26 |
| 110 | 2.106 | 079200 - Joint Sealants, Product Data, Submittal |  | 2d | 2025-10-21 A | 2025-10-22 A | 2 | 100% |  |  |  | start no earlier than 2025-11-21 |
| 111 | 2.107 | 079200 - Joint Sealants, Initial Samples for Selection |  | 10d | 2026-03-26 A | 2026-04-08 A | 2 | 100% |  |  |  | start no earlier than 2026-03-25 |
| 112 | 2.108 | 079200 - Joint Sealants, Samples for Verificiation |  | 20d | 2026-04-23 | 2026-05-20 | 114 |  |  | 34d | 0d | start no earlier than 2026-03-02 |
| 113 | 2.109 | 079200 - Joint Sealants, Product Data, Review/Approval |  | 15d | 2025-10-23 A | 2025-11-12 A | 110 | 100% |  |  |  | start no earlier than 2025-11-10 |
| 114 | 2.110 | 079200 - Joint Sealants, Initial Samples for Selection, Review/Approval |  | 10d | 2026-04-09 A | 2026-04-22 | 111 | 80% | 2d | 34d | 0d | start no earlier than 2026-03-25 |
| 115 | 2.111 | 079200 - Joint Sealants, Samples for Verificiation, Review/Approval |  | 20d | 2026-05-21 | 2026-06-17 | 114, 112 |  |  | 34d | 32d |  |
| 116 | 2.112 | 081113 - Hollow Metal Doors and Frames, Product Data Submittal |  | 6d | 2025-08-25 A | 2025-09-02 A | 2 | 100% |  |  |  | start no earlier than 2025-10-20 |
| 117 | 2.113 | 081113 - Hollow Metal Doors and Frames, Shop Drawings, Submittal |  | 6d | 2025-08-25 A | 2025-09-02 A | 2 | 100% |  |  |  | start no earlier than 2025-10-20 |
| 118 | 2.114 | 081113 - Hollow Metal Doors and Frames, Product Data, Review/Approval | milestone | 0d | 2025-09-03 A | 2025-10-09 A | 116 | 100% |  |  |  | start no earlier than 2025-10-20 |
| 119 | 2.115 | 081113 - Hollow Metal Doors and Frames, Shop Drawings, Review/Approval |  | 15d | 2026-03-26 A | 2026-04-15 A | 117 | 100% |  |  |  | start no earlier than 2026-03-25 |
| 120 | 2.116 | 083113 - Access Doors and Frames, Product Data, Submittal |  | 10d | 2026-03-26 A | 2026-04-08 A | 2 | 100% |  |  |  | start no earlier than 2026-03-25 |
| 121 | 2.117 | 083113 - Access Doors and Frames, Product Data, Review/Approval |  | 15d | 2026-04-09 A | 2026-04-29 | 120 | 53% | 7d | 41d | 0d | start no earlier than 2026-03-25 |
| 122 | 2.118 | 084113 - Aluminum Framed Entrances and Storefronts, Product Data, Submittal |  | 84d | 2025-09-15 A | 2026-01-08 A | 2 | 100% |  |  |  | start no earlier than 2025-12-19 |
| 123 | 2.119 | 084113 - Aluminum Framed Entrances/Storefronts, Shop Drawings, Submittal |  | 84d | 2025-09-15 A | 2026-01-08 A | 2 | 100% |  |  |  | start no earlier than 2025-10-20 |
| 124 | 2.120 | 084113 - Aluminum Framing Samples, for review |  | 10d | 2026-03-26 A | 2026-04-08 A | 2 | 100% |  |  |  | start no earlier than 2026-03-25 |
| 125 | 2.121 | 084113 - Aluminum Framed Entrances and Storefronts, Product Data, Review/Approval |  | 3d | 2026-01-08 A | 2026-03-27 A | 2, 122 | 100% |  |  |  | start no earlier than 2025-10-20 |
| 126 | 2.122 | 084113 - Aluminum Framed Entrances/Storefronts, Shop Drawings, Review/Approval | milestone | 0d | 2026-01-08 A | 2026-01-29 A | 2, 123 | 100% |  |  |  | start no earlier than 2025-10-20 |
| 127 | 2.123 | 084113 - Aluminum Framing Samples, Review/Approval |  | 5d | 2026-04-09 A | 2026-04-15 A | 2, 124 | 100% |  |  |  | start no earlier than 2026-03-02 |
| 128 | 2.124 | 084113 - Aluminum Entrances/Storefront Fabrication/Delivery |  | 40d | 2026-04-17 A | 2026-06-11 | 319 | 5% | 38d | 0d |  |  |
| 129 | 2.125 | 084329 - Sliding Automatic Storm Entrances, Shop Drawing, Submittals | milestone | 0d | 2026-01-06 A | 2026-01-07 A | 2 | 100% |  |  |  |  |
| 130 | 2.126 | 084329 - Sliding Automatic Storm Entrance, Color Sample, for Approval |  | 10d | 2026-03-26 A | 2026-04-08 A | 2 | 100% |  |  |  | start no earlier than 2026-03-25 |
| 131 | 2.127 | 084329 - Sliding Automatic Storm Entrances, Shop Drawing, Review/Approval |  | 16d | 2026-01-08 A | 2026-04-06 A | 129 | 100% |  |  |  |  |
| 132 | 2.128 | 084329 - Sliding Automatic Storm Entrance, Color Sample, Review/Approval |  | 15d | 2026-04-09 A | 2026-04-29 | 130 | 53% | 7d | 30d | 8d | start no earlier than 2026-03-25 |
| 133 | 2.129 | 087111 - Door Hardware, Product Data, Submittal |  | 6d | 2025-08-25 A | 2025-09-02 A | 2 | 100% |  |  |  | start no earlier than 2025-08-25 |
| 134 | 2.130 | 087111 - Door Hardware Schedule for Approval |  | 9.5d | 2025-09-03 A | 2026-03-27 A | 2 | 100% |  |  |  | start no earlier than 2025-10-20 |
| 135 | 2.131 | 087111 - Door Hardware, Maintenance Data for Closeout |  | 10d | 2026-03-26 A | 2026-04-08 A | 353 | 100% |  |  |  | start no earlier than 2026-03-25 |
| 136 | 2.132 | 087111 - Door Hardware, Warranties |  | 10d | 2026-03-26 A | 2026-04-08 A | 353 | 100% |  |  |  | start no earlier than 2026-03-25 |
| 137 | 2.133 | 087111 - Door Hardware, Product Data, Review/Approval |  | 38d | 2025-09-03 A | 2026-03-27 A | 2, 133 | 100% |  |  |  | start no earlier than 2025-10-20 |
| 138 | 2.134 | 087111 - Door Hardware Schedule, Review/Approval |  | 15d | 2026-03-30 A | 2026-04-17 A | 2, 134 | 100% |  |  |  | start no earlier than 2026-03-25 |
| 139 | 2.135 | 087111 - Door Hardware, Qualification Data, Review/Approval |  | 15d | 2026-03-26 A | 2026-04-15 A | 2 | 100% |  |  |  | start no earlier than 2026-03-25 |
| 140 | 2.136 | 087111 - Door Hardware, Fabrication/Delivery |  | 20d | 2026-04-20 A | 2026-05-15 | 137, 138 | 5% | 19d | 120d |  | start no earlier than 2026-03-02 |

| ID | WBS | Task | Duration | Start | Finish | Predecessors | Complete | Remaining | Total slack | Free slack | Constraint |
| --- | --- | --- | --- | --- | --- | --- | --- | --- | --- | --- | --- |
| 141 | 2.137 | 088000 - Glazing, Product Data and Glazing Schedule, Submittal | 2d | 2026-01-07 A | 2026-01-08 A | 2 | 100% |  |  |  | start no earlier than 2026-01-26 |
| 142 | 2.138 | 088000 - Glazing, Product Data and Glazing Schedule, Review/Approval | 15d | 2026-01-09 A | 2026-04-06 A | 141 | 100% |  |  |  | start no earlier than 2026-01-26 |
| 143 | 2.139 | 088000 - Glazing Fabrication/Delivery | 60d | 2026-04-17 A | 2026-07-09 | 142, 319 | 3% | 58d | 0d |  |  |
| 144 | 2.140 | 089516 - Wall Vents, Product Data, Submittal | 20d | 2026-03-26 A | 2026-04-22 | 2 | 90% | 2d | 51d | 0d | start no earlier than 2026-03-25 |
| 145 | 2.141 | 089516 - Wall Vents, Metal Samples of Vents, for Approval | 20d | 2026-03-26 A | 2026-04-22 | 2 | 90% | 2d | 51d | 0d | start no earlier than 2026-03-25 |
| 146 | 2.142 | 089516 - Wall Vents, Product Data, Review/Approval | 15d | 2026-04-23 | 2026-05-13 | 144 |  |  | 51d |  | start no earlier than 2026-03-02 |
| 147 | 2.143 | 089516 - Wall Vents, Metal Samples of Vents, Review/Approval | 15d | 2026-04-23 | 2026-05-13 | 145 |  |  | 51d |  | start no earlier than 2026-03-02 |
| 148 | 2.144 | 092216 - Non-Structural Metal Framing, Product Data, Submittals | 10d | 2026-03-26 A | 2026-04-08 A | 2 | 100% |  |  |  | start no earlier than 2026-03-25 |
| 149 | 2.145 | 092216 - Non-Structural Metal Framing, Product Data, Review/Approval | 15d | 2026-04-09 A | 2026-04-29 | 148 | 53% | 7d | 41d | 0d | start no earlier than 2026-03-25 |
| 150 | 2.146 | 092900 - Gypsum Board, Product Data, Submittals | 1d | 2026-02-01 A | 2026-02-02 A | 2 | 100% |  |  |  | start no earlier than 2026-01-26 |
| 151 | 2.147 | 092900 - Gypsum Board, Product Data, Review/Approval | 15d | 2026-02-03 A | 2026-04-15 A | 150 | 100% |  |  |  | start no earlier than 2026-01-26 |
| 152 | 2.148 | 095113 - Acoustical Panel Ceilings, Product Data, Submittals | 1d | 2026-02-01 A | 2026-02-02 A | 2 | 100% |  |  |  | start no earlier than 2026-01-26 |
| 153 | 2.149 | 095113 - Acoustical Panel Ceilings, Product Data, Review/Approval | 15d | 2026-02-03 A | 2026-04-15 A | 152 | 100% |  |  |  | start no earlier than 2026-01-26 |
| 154 | 2.150 | 096513 - Resilient Base and Accessories, Product Data, Submittals | 2d | 2026-01-26 A | 2026-01-27 A | 2 | 100% |  |  |  | start no earlier than 2026-01-26 |
| 155 | 2.151 | 096513 - Resilient Base and Accessories, Product Data, Review/Approval | 15d | 2026-01-28 A | 2026-04-15 A | 154 | 100% |  |  |  | start no earlier than 2026-01-26 |
| 156 | 2.152 | 099100 - Painting, Product Data, Submittals | 10d | 2026-03-26 A | 2026-04-08 A | 2 | 100% |  |  |  | start no earlier than 2026-03-25 |
| 157 | 2.153 | 099100 - Painting, Product Data, Review/Approval | 15d | 2026-04-09 A | 2026-04-29 | 156 | 53% | 7d | -50d | 0d | start no earlier than 2026-03-25 |
| 158 | 2.154 | 099100 - Painting, Samples for Initial Selection | 10d | 2026-03-26 A | 2026-04-08 A | 2 | 100% |  |  |  | start no earlier than 2026-03-25 |
| 159 | 2.155 | 099100- Painting, Initial Paint Selection, Approval | 15d | 2026-04-09 A | 2026-04-29 | 158 | 53% | 7d | 59d | 0d | start no earlier than 2026-03-25 |
| 160 | 2.156 | 099100 - Painting, Samples for Verificiation, submittal to Architect | 10d | 2026-04-30 | 2026-05-13 | 159 |  |  | 59d | 0d | start no earlier than 2026-01-26 |
| 161 | 2.157 | 099100 - Painting, Samples for Verificaiton, Review/Approval | 15d | 2026-05-14 | 2026-06-03 | 160 |  |  | 59d | 51d |  |
| 162 | 2.158 | 101423 - Interior Signage, Product Data/Shop Drawings, Submittal | 20d | 2026-03-26 A | 2026-04-22 | 2 | 90% | 2d | 67d | 0d | start no earlier than 2026-03-25 |
| 163 | 2.159 | 101423 - Interior Signage, Samples for approval | 20d | 2026-03-26 A | 2026-04-22 | 2 | 90% | 2d | 67d | 0d | start no earlier than 2026-03-25 |
| 164 | 2.160 | 101423 - Interior Signage, Product Data/Shop Drawings, Review/Approval | 15d | 2026-04-23 | 2026-05-13 | 162 |  |  | 67d | 0d | start no earlier than 2026-03-02 |
| 165 | 2.161 | 101423 - Interior Signage, Samples, Review/Approval | 15d | 2026-04-23 | 2026-05-13 | 163 |  |  | 67d | 0d | start no earlier than 2026-03-02 |
| 166 | 2.162 | 101423 - Interior Signage, Fabrication/Delivery | 15d | 2026-05-14 | 2026-06-03 | 165, 164 |  |  | 67d | 56d |  |
| 167 | 2.163 | 102800 - Toilet Accessories, Product Data/Equipment Schedule, Submittal | 2d | 2026-01-26 A | 2026-01-27 A | 2 | 100% |  |  |  | start no earlier than 2026-01-26 |
| 168 | 2.164 | 102800 - Toilet Accessories, Product Data, Review/Approval | 15d | 2026-01-28 A | 2026-04-15 A | 167 | 100% |  |  |  | start no earlier than 2026-01-26 |
| 169 | 2.165 | 104413 - Fire Extinquishers/Cabinets, Product Data/Shop Drawings, Submittal | 25d | 2026-03-26 A | 2026-04-29 | 2 | 72% | 7d | 69d | 0d | start no earlier than 2026-03-25 |
| 170 | 2.166 | 104413 - Fire Extinquishers/Cabinets, Product Data/Shop Drawings, Review/Approval | 15d | 2026-04-30 | 2026-05-20 | 169 |  |  | 69d | 56d | start no earlier than 2026-01-26 |
| 171 | 2.167 | 107316 - Metal Canopies, Product Data, Submittal | 2d | 2026-01-19 A | 2026-01-20 A | 2 | 100% |  |  |  | start no earlier than 2026-01-26 |
| 172 | 2.168 | 107316 - Metal Canopies, Shop Drawings, for Approval | 2d | 2026-01-19 A | 2026-01-20 A | 2 | 100% |  |  |  | start no earlier than 2025-10-20 |
| 173 | 2.169 | 107316 - Metal Canopies, Color Samples | 5d | 2026-03-26 A | 2026-04-01 A | 2 | 100% |  |  |  | start no earlier than 2026-03-25 |
| 174 | 2.170 | 107316 - Metal Canopies, Product Data, Review/Approval | 12d | 2026-01-21 A | 2026-02-05 A | 171 | 100% |  |  |  | start no earlier than 2026-01-26 |
| 175 | 2.171 | 107316 - Metal Canopies, Shop Drawings, Review/Approval | 12d | 2026-01-21 A | 2026-04-10 A | 172 | 100% |  |  |  |  |
| 176 | 2.172 | 107316 - Metal Canopies, Color Samples, Review/Approval | 15d | 2026-04-02 A | 2026-04-22 | 173 | 87% | 2d | 7d | 0d | start no earlier than 2026-03-25 |
| 177 | 2.173 | 107316 - Metal Canopies, Fabrication/Delivery | 50d | 2026-04-24 | 2026-07-02 | 176, 174, 175, 320 |  |  | 7d | 0d |  |
| 178 | 2.174 | 113100 - Office Appliances, Product Data, Submittal | 30d | 2026-03-26 A | 2026-05-06 | 2 | 60% | 12d | 73d | 0d | start no earlier than 2026-03-25 |
| 179 | 2.175 | 113100 - Office Appliances, Product Data, Review/Approval | 15d | 2026-05-07 | 2026-05-27 | 2, 178 |  |  | 73d | 62d | start no earlier than 2025-10-20 |
| 180 | 2.176 | 142123 - Hydraulic Passenger Elevators, Product Data, Submittal | 3d | 2025-08-18 A | 2025-08-20 A | 2 | 100% |  |  |  |  |
| 181 | 2.177 | 142123 - Hydraulic Elevator, Shop Drawings, Submittal | 3d | 2025-08-18 A | 2025-08-20 A | 2 | 100% |  |  |  |  |
| 182 | 2.178 | 142123 - Hydraulic Elevator, Color Chart/Samples, for approval | 3d | 2025-08-18 A | 2025-08-20 A | 2 | 100% |  |  |  |  |
| 183 | 2.179 | 142123 - Hydraulic Passenger Elevators, Product Data, Review/Approval | 4d | 2025-08-21 A | 2025-08-26 A | 180 | 100% |  |  |  |  |
| 184 | 2.180 | 142123 - Hydraulic Elevator, Shop Drawings, Review/Approval | 4d | 2025-08-21 A | 2025-08-26 A | 181 | 100% |  |  |  |  |
| 185 | 2.181 | 142123 - Hydraulic Elevator, Color Chart/Samples, Review/Approval | 4d | 2025-08-21 A | 2025-08-26 A | 182 | 100% |  |  |  |  |
| 186 | 2.182 | 142123 - Hydraulic Elevators, Fabrication/Delivery | 16d | 2025-08-27 A | 2026-04-16 A | 185 | 100% |  |  |  |  |
| 187 | 2.183 | 211000 - Wet Pipe Fire Protection System, Product Data, Submittals | 2d | 2025-10-30 A | 2025-10-31 A | 2 | 100% |  |  |  | start no earlier than 2025-11-21 |
| 188 | 2.184 | 211000 - Wet Pipe Fire Protection, Sprinkler Shop Drawings, for Approval | 2d | 2025-10-30 A | 2025-10-31 A | 2 | 100% |  |  |  | start no earlier than 2025-11-21 |
| 189 | 2.185 | 211000 - Wet Pipe Fire Protection System, Product Data, Review/Approval | 12d | 2025-11-03 A | 2025-11-18 A | 187 | 100% |  |  |  | start no earlier than 2025-10-20 |
| 190 | 2.186 | 211000 - Wet Pipe Fire Protection, Sprinkler Shop Drawings, Review/Approval | 12d | 2025-11-03 A | 2025-11-18 A | 188 | 100% |  |  |  | start no earlier than 2025-10-20 |
| 191 | 2.187 | 220000 - Plumbing Submittals, Product Data, Submittals | 2d | 2025-09-19 A | 2025-09-22 A | 2 | 100% |  |  |  | start no earlier than 2025-11-21 |
| 192 | 2.188 | 220000 - Plumbing Submittals, Product Data, Review/Approval | 37d | 2025-09-23 A | 2025-11-12 A | 191 | 100% |  |  |  | start no earlier than 2025-10-20 |
| 193 | 2.189 | 221429 - Sump Pumps, Product Data, Submittals | 1d | 2025-09-19 A | 2025-09-19 A | 2 | 100% |  |  |  | start no earlier than 2025-10-20 |
| 194 | 2.190 | 221429 - Sump Pumps, Product Data, Review/Approval | 13d | 2025-09-22 A | 2025-10-08 A | 193 | 100% |  |  |  | start no earlier than 2025-10-20 |
| 195 | 2.191 | 223300 - Electric Domestic Water Heaters, Product Data/Shop Drawing, Submittal | 1d | 2025-09-19 A | 2025-09-19 A | 2 | 100% |  |  |  | start no earlier than 2025-10-20 |
| 196 | 2.192 | 223300 - Electric Domestic Water Heaters, Product Data/Shop Drawing, Review/Approval | 13d | 2025-09-22 A | 2025-10-08 A | 195 | 100% |  |  |  | start no earlier than 2025-10-20 |
| 197 | 2.193 | 224000 - Public Plumbing Fixtures, Product Data, Submittal | 1d | 2025-09-19 A | 2025-09-19 A | 2 | 100% |  |  |  | start no earlier than 2025-10-20 |
| 198 | 2.194 | 224000 - Public Plumbing Fixtures, Product Data, Review/Approval | 12.5d | 2025-09-22 A | 2025-11-12 A | 197 | 100% |  |  |  | start no earlier than 2025-10-20 |
| 199 | 2.195 | 224700 - Drinking Fountain and Water Coolers, Product Data, Submittal | 2d | 2025-09-19 A | 2025-09-22 A | 2 | 100% |  |  |  | start no earlier than 2025-11-21 |
| 200 | 2.196 | 224700 - Drinking Fountain and Water Coolers, Product Data, Review/Approval | 37d | 2025-09-23 A | 2025-11-12 A | 199 | 100% |  |  |  | start no earlier than 2025-10-20 |
| 201 | 2.197 | 230553 - ID for HVAC Piping & Equipment, Product Data, Submittals | 20d | 2026-03-26 A | 2026-04-22 | 2 | 90% | 2d | 85d | 0d | start no earlier than 2026-03-25 |
| 202 | 2.198 | 230553 - ID for HVAC Piping & Equipment, Product Data, Review/Approve | 15d | 2026-04-23 | 2026-05-13 | 201 |  |  | 85d | 77d | start no earlier than 2026-03-02 |
| 203 | 2.199 | 230593 - Testing and Balancing, Qualifications Data for TAB Firm | 20d | 2026-03-26 A | 2026-04-22 | 2 | 90% | 2d | 117d | 0d | start no earlier than 2026-03-25 |
| 204 | 2.200 | 230593 - Testing and Balancing, TAB agenda | 20d | 2026-03-26 A | 2026-04-22 | 2 | 90% | 2d | 117d | 0d | start no earlier than 2026-03-25 |
| 205 | 2.201 | 230593 - Testing and Balancing, Qualifications Data, Review/Approval | 20d | 2026-04-23 | 2026-05-20 | 2, 203 |  |  | 117d |  | start no earlier than 2026-03-02 |
| 206 | 2.202 | 230593 - Testing and Balancing, TAB agenda, Review/Approval | 20d | 2026-04-23 | 2026-05-20 | 2, 204 |  |  | 117d |  | start no earlier than 2026-03-02 |
| 207 | 2.203 | 230593 - Testing and Balancing, Final TAB Report | 10d | 2026-08-31 | 2026-09-11 | 428 |  |  | 34d | 10d |  |
| 208 | 2.204 | 230713 - Duct Insulation, Product Data, Submittals | 15d | 2026-03-26 A | 2026-04-15 A | 2 | 100% |  |  |  | start no earlier than 2026-03-25 |
| 209 | 2.205 | 230713 - Duct Insulation, Product Data, Review/Approval | 15d | 2026-04-16 A | 2026-05-06 | 208 | 20% | 12d | 0d |  | start no earlier than 2026-03-25 |
| 210 | 2.206 | 230719 - HVAC Piping Insulation, Product Data, Submittals | 15d | 2026-03-26 A | 2026-04-15 A | 2 | 100% |  |  |  | start no earlier than 2026-03-25 |

| ID | WBS | Task | Type | Duration | Start | Finish | Predecessors | Complete | Remaining | Total slack | Free slack | Constraint |
| --- | --- | --- | --- | --- | --- | --- | --- | --- | --- | --- | --- | --- |
| 211 | 2.207 | 230719 - HVAC Piping Insulation, Product Data, Review/Approval |  | 15d | 2026-04-16 A | 2026-05-06 | 210 | 20% | 12d | 0d |  | start no earlier than 2026-03-25 |
| 212 | 2.208 | 232300 - Refrigerant Piping, Product Data, Submittals |  | 15d | 2026-03-26 A | 2026-04-15 A | 2 | 100% |  |  |  | start no earlier than 2026-03-25 |
| 213 | 2.209 | 232300 - Refrigerant Piping, Shop Drawings, Submittals |  | 15d | 2026-03-26 A | 2026-04-15 A | 2 | 100% |  |  |  | start no earlier than 2026-03-25 |
| 214 | 2.210 | 232300 - Refrigerant Piping, Product Data, Review/Approvals |  | 15d | 2026-04-16 A | 2026-05-06 | 212 | 20% | 12d | 0d |  | start no earlier than 2026-03-25 |
| 215 | 2.211 | 232300 - Refrigerant Piping, Shop Drawings, Review/Approvals |  | 15d | 2026-04-16 A | 2026-05-06 | 213 | 20% | 12d | 0d |  | start no earlier than 2026-03-25 |
| 216 | 2.212 | 233113 - Metal Ducts, Shop Drawings, Submittal |  | 15d | 2026-03-26 A | 2026-04-15 A | 2 | 100% |  |  |  | start no earlier than 2026-03-25 |
| 217 | 2.213 | 233113 - Metal Ducts, Shop Drawings, Review/Approval |  | 15d | 2026-04-16 A | 2026-05-06 | 216 | 20% | 12d | 0d |  | start no earlier than 2026-03-25 |
| 218 | 2.214 | 233300 - Air Duct Accessories, Product Data, Submittals |  | 2d | 2025-10-20 A | 2025-10-21 A | 2 | 100% |  |  |  | start no earlier than 2026-01-26 |
| 219 | 2.215 | 233300 - Air Duct Accessories, Shop Drawings, Submittal |  | 15d | 2026-03-26 A | 2026-04-15 A | 2 | 100% |  |  |  | start no earlier than 2026-03-25 |
| 220 | 2.216 | 233300 - Air Duct Accessories, Product Data, Review/Approval |  | 13d | 2025-10-22 A | 2025-11-07 A | 218 | 100% |  |  |  | start no earlier than 2026-01-26 |
| 221 | 2.217 | 233300 - Air Duct Accessories, Shop Drawings, Review/Approval |  | 15d | 2026-04-16 A | 2026-05-06 | 219 | 20% | 12d | 0d |  | start no earlier than 2026-03-25 |
| 222 | 2.218 | 233713 - Diffusers, Registers and Grilles, Product Data, Submittals |  | 2d | 2026-02-20 A | 2026-02-23 A | 2 | 100% |  |  |  | start no earlier than 2026-01-26 |
| 223 | 2.219 | 233713 - Diffusers, Registers and Grilles, Product Data, Review/Approval |  | 15d | 2026-02-24 A | 2026-04-15 A | 222 | 100% |  |  |  | start no earlier than 2026-01-26 |
| 224 | 2.220 | 238126 - Split System Air-Conditioners, Product Data, Submittals |  | 2d | 2025-12-11 A | 2025-12-12 A | 2 | 100% |  |  |  | start no earlier than 2026-01-26 |
| 225 | 2.221 | 238126 - Split System Air-Conditioners, Shop Drawings, Submittal |  | 15d | 2026-03-26 A | 2026-04-15 A | 2 | 100% |  |  |  | start no earlier than 2026-03-25 |
| 226 | 2.222 | 238126 - Split System Air-Conditioners, Product Data, Review/Approval |  | 32d | 2025-12-15 A | 2026-01-27 A | 224 | 100% |  |  |  | start no earlier than 2026-01-26 |
| 227 | 2.223 | 238126 - Split System Air-Conditioners, Shop Drawings, Review/Approval |  | 15d | 2026-04-16 A | 2026-05-06 | 225 | 20% | 12d | 0d |  | start no earlier than 2026-03-25 |
| 228 | 2.224 | 238136 - VRF System, Product Data, Submittals |  | 2d | 2026-03-26 A | 2026-03-27 A | 2 | 100% |  |  |  | start no earlier than 2026-03-25 |
| 229 | 2.225 | 238136 - VRF System, Shop Drawing, Review/Approval |  | 15d | 2026-03-30 A | 2026-04-17 A | 228 | 100% |  |  |  | start no earlier than 2026-03-25 |
| 230 | 2.226 | 238239 - Decentralized HVAC Equipment, Product Data, Submittal |  | 15d | 2026-03-26 A | 2026-04-15 A | 2 | 100% |  |  |  | start no earlier than 2026-03-25 |
| 231 | 2.227 | 238239 - Decentralized HVAC Equipment, Product Data, Review/Approval |  | 15d | 2026-04-16 A | 2026-05-06 | 230 | 20% | 12d | 0d |  | start no earlier than 2026-03-25 |
| 232 | 2.228 | 260519 - Low-Voltage Power Conductors & Cables, Product Data, Submittals |  | 10d | 2026-03-26 A | 2026-04-08 A | 2 | 100% |  |  |  | start no earlier than 2026-03-25 |
| 233 | 2.229 | 260519 - Low-Voltage Power Conductors & Cables, Product Data, Review/Approvals |  | 15d | 2026-04-09 A | 2026-04-29 | 232 | 53% | 7d | 132d |  | start no earlier than 2026-03-25 |
| 234 | 2.230 | 260526 - Grounding and Bonding for Electrical, Product Data, Submittal |  | 10d | 2026-03-26 A | 2026-04-08 A | 2 | 100% |  |  |  | start no earlier than 2026-03-25 |
| 235 | 2.231 | 260526 - Grounding and Bonding for Electrical, Product Data, Review/Approval |  | 15d | 2026-04-09 A | 2026-04-29 | 234 | 53% | 7d | 132d |  | start no earlier than 2026-03-25 |
| 236 | 2.232 | 260553 - ID for Electrical Systems, Product Data/ID Schedule, Submittal |  | 20d | 2026-03-26 A | 2026-04-22 | 2 | 90% | 2d | 85d | 0d | start no earlier than 2026-03-25 |
| 237 | 2.233 | 260553 - ID for Electrical Systems, Product Data/ID Schedule, Review/Approval |  | 15d | 2026-04-23 | 2026-05-13 | 236 |  |  | 85d | 77d | start no earlier than 2026-03-02 |
| 238 | 2.234 | 260923 - Lighting Control Devices, Product Data, Submital |  | 1d | 2025-09-19 A | 2025-09-19 A | 2 | 100% |  |  |  | start no earlier than 2025-10-20 |
| 239 | 2.235 | 260923 - Lighting Control Devices, Product Data, Review/Approval |  | 15d | 2025-09-22 A | 2025-10-10 A | 238 | 100% |  |  |  | start no earlier than 2025-10-20 |
| 240 | 2.236 | 260923 - Lighting Control Devices, Shop Drawings, Submital |  | 10d | 2026-03-26 A | 2026-04-08 A | 2 | 100% |  |  |  | start no earlier than 2026-03-25 |
| 241 | 2.237 | 260923 - Lighting Control Devices, Shop Drawings, Review/Approval |  | 15d | 2026-04-09 A | 2026-04-29 | 240 | 53% | 7d | 12d | 0d | start no earlier than 2026-03-25 |
| 242 | 2.238 | 262200 - Low Voltage Transformers, Product Data, Submital |  | 10d | 2026-03-26 A | 2026-04-08 A | 2 | 100% |  |  |  | start no earlier than 2026-03-25 |
| 243 | 2.239 | 262200 - Low Voltage Transformers, Product Data, Review/Approval |  | 15d | 2026-04-09 A | 2026-04-29 | 242 | 53% | 7d | 12d | 0d | start no earlier than 2026-03-25 |
| 244 | 2.240 | 262200 - Low Voltage Transformers, Shop Drawings, Submital |  | 10d | 2026-03-26 A | 2026-04-08 A | 2 | 100% |  |  |  | start no earlier than 2026-03-25 |
| 245 | 2.241 | 262200 - Low Voltage Transformers, Shop Drawings, Review/Approval |  | 15d | 2026-04-09 A | 2026-04-29 | 244 | 53% | 7d | 12d | 0d | start no earlier than 2026-03-25 |
| 246 | 2.242 | 262416 - Panelboards, Product Data, Submittal |  | 1d | 2025-09-19 A | 2025-09-19 A | 2 | 100% |  |  |  | start no earlier than 2025-10-20 |
| 247 | 2.243 | 262416 - Panelboard, Product Data, Review/Approval |  | 14d | 2025-09-22 A | 2025-10-09 A | 246 | 100% |  |  |  | start no earlier than 2025-10-20 |
| 248 | 2.244 | 262416 - Panelboard, Shop Drawings/Schedules, Submittal |  | 2d | 2025-10-24 A | 2025-10-27 A | 2 | 100% |  |  |  | start no earlier than 2025-11-21 |
| 249 | 2.245 | 262416 - Panelboard, Shop Drawings/Schedules, Review/Approal |  | 17d | 2025-10-28 A | 2025-11-19 A | 248 | 100% |  |  |  | start no earlier than 2025-11-10 |
| 250 | 2.246 | 262416 - Panelboard, Release for Fabrication |  | 3d | 2025-11-20 A | 2026-03-30 A | 247, 249 | 100% |  |  |  | start no earlier than 2026-01-26 |
| 251 | 2.247 | 262726 - Wiring Devices, Product Data, Submittal |  | 10d | 2026-03-26 A | 2026-04-08 A | 2 | 100% |  |  |  | start no earlier than 2026-03-25 |
| 252 | 2.248 | 262726 - Wiring Devices, Product Data, Review/Approval |  | 15d | 2026-04-09 A | 2026-04-29 | 251 | 53% | 7d | 12d | 0d | start no earlier than 2026-03-25 |
| 253 | 2.249 | 262813 - Fuses, Product Data, Submittal |  | 2d | 2025-10-24 A | 2025-10-27 A | 2 | 100% |  |  |  | start no earlier than 2026-01-26 |
| 254 | 2.250 | 262813 -Fuses, Product Data, Review/Approval |  | 17d | 2025-10-28 A | 2025-11-19 A | 253 | 100% |  |  |  | start no earlier than 2026-01-26 |
| 255 | 2.251 | 262816 - Enclosed Switches & Circuit Breakers, Product Data, Submittal |  | 2d | 2025-10-24 A | 2025-10-27 A | 2 | 100% |  |  |  | start no earlier than 2026-01-26 |
| 256 | 2.252 | 262816 - Enclosed Switches & Circuit Breakers, Product Data, Review/Approval |  | 17d | 2025-10-28 A | 2025-11-19 A | 255 | 100% |  |  |  | start no earlier than 2026-01-26 |
| 257 | 2.253 | 262913 - Enclosed Controllers, Product Data/Shop Drawing, Submittal |  | 10d | 2026-03-26 A | 2026-04-08 A | 2 | 100% |  |  |  | start no earlier than 2026-03-25 |
| 258 | 2.254 | 262913 - Enclosed Controllers, Product Data/Shop Drawing, Review/Approval |  | 15d | 2026-04-09 A | 2026-04-29 | 257 | 53% | 7d | 12d | 0d | start no earlier than 2026-03-25 |
| 259 | 2.255 | 265100 - LED Interior Lighting, Product Data, Submittal |  | 1d | 2025-09-19 A | 2025-09-19 A | 2 | 100% |  |  |  | start no earlier than 2025-10-20 |
| 260 | 2.256 | 265100 - LED Interior Lighting, Product Data, Review/Approval | milestone | 0d | 2025-09-22 A | 2025-11-07 A | 259 | 100% |  |  |  | start no earlier than 2025-10-20 |
| 261 | 2.257 | 265100 - LED Interior Lighting, Fabrication/Delivery |  | 80d | 2026-03-26 A | 2026-07-15 | 260 | 23% | 62d | 15d | 0d | start no earlier than 2026-03-25 |
| 262 | 2.258 | 265600 - Exterior Lighting, Product Data, Submittal |  | 1d | 2025-09-19 A | 2025-09-19 A | 2 | 100% |  |  |  | start no earlier than 2025-10-20 |
| 263 | 2.259 | 265600 - Exterior Lighting, Product Data, Review/Approval | milestone | 0d | 2025-09-22 A | 2025-11-07 A | 262 | 100% |  |  |  | start no earlier than 2025-10-20 |
| 264 | 2.260 | 265600 - Exterior Lighting, Fabrication/Delivery |  | 80d | 2026-03-26 A | 2026-07-15 | 263 | 23% | 62d | 7d | 0d | start no earlier than 2026-03-25 |
| 265 | 2.261 | 275123 - Intercommunications & PA Systems, Shop Drawings/Product Data, Submittal |  | 20d | 2026-03-26 A | 2026-04-22 | 2 | 90% | 2d | 2d | 0d | start no earlier than 2026-03-25 |
| 266 | 2.262 | 275123 - Intercommunications & PA Systems, Shop Drawings/Product Data, Review/Approval |  | 15d | 2026-04-23 | 2026-05-13 | 265 |  |  | 2d | 0d | start no earlier than 2026-03-02 |
| 267 | 2.263 | 281300 - Access Control System, Shop Drawings, Submittal |  | 20d | 2026-03-26 A | 2026-04-22 | 2 | 90% | 2d | 2d | 0d | start no earlier than 2026-03-25 |
| 268 | 2.264 | 281300 - Access Control System, Shop Drawings, Review/Approval |  | 15d | 2026-04-23 | 2026-05-13 | 267 |  |  | 2d | 0d | start no earlier than 2026-03-02 |
| 269 | 2.265 | 282300 - Video Surveillance, Product Data, Submittal |  | 20d | 2026-03-26 A | 2026-04-22 | 2 | 90% | 2d | 2d | 0d | start no earlier than 2026-03-25 |
| 270 | 2.266 | 282300 - Video Surveillance, Product Data, Review/Approval |  | 15d | 2026-04-23 | 2026-05-13 | 269 |  |  | 2d | 0d | start no earlier than 2026-03-02 |
| 271 | 2.267 | 282300 - Video Surveillance, Shop Drawings, Submittal |  | 20d | 2026-03-26 A | 2026-04-22 | 2 | 90% | 2d | 2d | 0d | start no earlier than 2026-03-25 |
| 272 | 2.268 | 282300 - Video Surveillance, Shop Drawings, Review/Approval |  | 15d | 2026-04-23 | 2026-05-13 | 271 |  |  | 2d | 0d | start no earlier than 2026-03-02 |
| 273 | 2.269 | 283111 - Digital, Addressable Fire Alarm System, Product Data, to EOR | milestone | 0d | 2026-01-05 A | 2026-02-11 A | 276, 278 | 100% |  |  |  |  |
| 274 | 2.270 | 283111 - Digital, Addressable Fire Alarm System, Shop Drawings, to EOR Review/Approval |  | 4d | 2026-02-11 A | 2026-03-31 A |  | 100% |  |  |  |  |
| 275 | 2.271 | 283111 - Digital, Addressable Fire Alarm System, Product Data, Submittal to AHJ |  | 20d | 2026-03-26 A | 2026-04-22 | 2 | 90% | 2d | 77d | 0d | start no earlier than 2026-03-25 |
| 276 | 2.272 | 283111 - Digital, Addressable Fire Alarm System, Product Data, Review/Approval by AHJ |  | 60d | 2026-04-23 | 2026-07-15 | 275 |  |  | 77d |  | start no earlier than 2026-03-02 |
| 277 | 2.273 | 283111 - Digital, Addressable Fire Alarm System, Shop Drawings, Submittal to AHJ |  | 20d | 2026-03-26 A | 2026-04-22 | 2 | 90% | 2d | 77d | 0d | start no earlier than 2026-03-25 |
| 278 | 2.274 | 283111 - Digital, Addressable Fire Alarm System, Shop Drawings, AHJ Review/Approval |  | 60d | 2026-04-23 | 2026-07-15 | 277 |  |  | 77d |  | start no earlier than 2026-03-02 |
| 279 | 2.275 | 321216 - Asphalt Paving, Design Mix, Submittal |  | 2d | 2026-02-17 A | 2026-02-18 A | 2 | 100% |  |  |  | start no earlier than 2026-01-26 |
| 280 | 2.276 | 321216 - Asphalt Paving, Design Mix, Review/Approval |  | 1d | 2026-02-19 A | 2026-02-19 A | 279 | 100% |  |  |  | start no earlier than 2026-01-26 |

| ID | WBS | Task | Duration | Start | Finish | Predecessors | Complete | Remaining | Total slack | Free slack | Constraint |
| --- | --- | --- | --- | --- | --- | --- | --- | --- | --- | --- | --- |
| 281 | 2.277 | 321313 - Concrete Paving, Design Mixes, Submittal | 15d | 2026-03-26 A | 2026-04-15 A | 2 | 100% |  |  |  | start no earlier than 2026-03-25 |
| 282 | 2.278 | 321313 - Concrete Paving, Design Mixes, Review/Approval | 15d | 2026-04-16 A | 2026-05-06 | 281 | 20% | 12d | 84d | 0d | start no earlier than 2026-03-25 |
| 283 | 2.279 | 321313 - Concrete Paving, Product Data, Submittals | 15d | 2026-03-26 A | 2026-04-15 A | 2 | 100% |  |  |  | start no earlier than 2026-03-25 |
| 284 | 2.280 | 321313 - Concrete Paving, Product Data, Review/Approval | 15d | 2026-04-16 A | 2026-05-06 | 283 | 20% | 12d | 84d | 0d | start no earlier than 2026-03-25 |
| 285 | 2.281 | 321713 - Parking Bumpers and Bollards, Product Data, Submittal | 25d | 2026-03-26 A | 2026-04-29 | 2FS+10d | 72% | 7d | 74d | 0d | start no earlier than 2026-03-25 |
| 286 | 2.282 | 321713 - Parking Bumpers and Bollards, Product Data, Review/Approval | 15d | 2026-04-30 | 2026-05-20 | 285 |  |  | 74d | 0d | start no earlier than 2026-01-26 |
| 287 | 2.283 | 321723 - Pavement Markings, Product Data, Submittal | 25d | 2026-03-26 A | 2026-04-29 | 2FS+10d | 72% | 7d | 74d | 0d | start no earlier than 2026-03-25 |
| 288 | 2.284 | 321723 - Pavement Markings, Product Data, Review/Approval | 15d | 2026-04-30 | 2026-05-20 | 287 |  |  | 74d | 0d | start no earlier than 2026-01-26 |
| 289 | 2.285 | 321726 - Tactile Warning Surfacing, Product Data, Submittal | 25d | 2026-03-26 A | 2026-04-29 | 2FS+10d | 72% | 7d | 47d | 0d | start no earlier than 2026-03-25 |
| 290 | 2.286 | 321726 - Tactile Warning Surfacing, Product Data, Review/Approval | 15d | 2026-04-30 | 2026-05-20 | 289 |  |  | 47d | 40d | start no earlier than 2026-01-26 |
| 291 | 2.287 | 321726 - Tactile Warning Surfacing, Color Sample Chart, Submittal | 25d | 2026-03-26 A | 2026-04-29 | 2FS+10d | 72% | 7d | 47d | 0d | start no earlier than 2026-03-25 |
| 292 | 2.288 | 321726 - Tactile Warning Surfacing, Color Sample Chart, Review/Approval | 15d | 2026-04-30 | 2026-05-20 | 291 |  |  | 47d | 40d | start no earlier than 2026-01-26 |
| 293 | 2.289 | 323113 - Chain Link Fence, Product Data, Submittal | 25d | 2026-03-26 A | 2026-04-29 | 2FS+15d | 72% | 7d | 69d | 0d | start no earlier than 2026-03-25 |
| 294 | 2.290 | 323113 - Chain Link Fence, Product Data, Review/Approval | 15d | 2026-04-30 | 2026-05-20 | 293 |  |  | 69d | 0d | start no earlier than 2026-01-26 |
| 295 | 2.291 | 323113 - Chain Link Fence, Shop Drawings, Submittal | 25d | 2026-03-26 A | 2026-04-29 | 2FS+15d | 72% | 7d | 69d | 0d | start no earlier than 2026-03-25 |
| 296 | 2.292 | 323113 - Chain Link Fence, Shop Drawings, Review/Approval | 15d | 2026-04-30 | 2026-05-20 | 295 |  |  | 69d | 0d | start no earlier than 2026-01-26 |
| 297 | 2.293 | 323113 - Chain Link Fence, Samples, Submittal | 25d | 2026-03-26 A | 2026-04-29 | 2FS+15d | 72% | 7d | 69d | 0d | start no earlier than 2026-03-25 |
| 298 | 2.294 | 323113 - Chain Link Fence, Samples, Review/Approval | 15d | 2026-04-30 | 2026-05-20 | 297 |  |  | 69d | 0d | start no earlier than 2026-01-26 |
| 299 | 2.295 | 323114 - Security Wire Mesh Fences/Gates, Product Data, Submittals | 25d | 2026-03-26 A | 2026-04-29 | 2 | 72% | 7d | 69d | 0d | start no earlier than 2026-03-25 |
| 300 | 2.296 | 323114 - Security Wire Mesh Fences/Gates, Product Data, Review/Approval | 15d | 2026-04-30 | 2026-05-20 | 299 |  |  | 69d | 0d | start no earlier than 2026-01-26 |
| 301 | 2.297 | 323114 - Security Wire Mesh Fences/Gates, Shop Drawings, Submittals | 25d | 2026-03-26 A | 2026-04-29 | 2 | 72% | 7d | 69d | 0d | start no earlier than 2026-03-25 |
| 302 | 2.298 | 323114 - Security Wire Mesh Fences/Gates, Shop Drawings, Review/Approval | 15d | 2026-04-30 | 2026-05-20 | 301 |  |  | 69d | 0d | start no earlier than 2026-01-26 |
| 303 | 2.299 | 323119 - Decorative Metal Fences & Gates, Product Data, Submittal | 3d | 2025-10-13 A | 2025-10-15 A | 2 | 100% |  |  |  | start no earlier than 2025-11-21 |
| 304 | 2.300 | 323119 - Decorative Metal Fences & Gates, Product Data, Review/Approval | 15d | 2025-10-15 A | 2026-04-15 A | 303 | 100% |  |  |  | start no earlier than 2025-10-20 |
| 305 | 2.301 | 323119 - Decorative Metal Fences & Gates, Shop Drawings, Submittal | 1d | 2025-10-13 A | 2025-10-13 A | 2 | 100% |  |  |  | start no earlier than 2025-10-20 |
| 306 | 2.302 | 323119 - Decorative Metal Fences & Gates, Shop Drawings, Review/Approval | 15d | 2025-10-15 A | 2026-04-15 A | 305 | 100% |  |  |  | start no earlier than 2025-10-20 |
| 307 | 2.303 | 328400 - Planting Irrigation, Product Data/Shop Drawings, Submittal | 25d | 2026-03-26 A | 2026-04-29 | 2 | 72% | 7d | 54d | 0d | start no earlier than 2026-03-25 |
| 308 | 2.304 | 328400 - Planting Irrigation, Product Data/Shop Drawings, Review/Approval | 15d | 2026-04-30 | 2026-05-20 | 307 |  |  | 54d |  | start no earlier than 2026-01-26 |
| 309 | 2.305 | 329200 - Turf and Grasses, Product Data, Submittal | 25d | 2026-03-26 A | 2026-04-29 | 2 | 72% | 7d | 54d | 0d | start no earlier than 2026-03-25 |
| 310 | 2.306 | 329200 - Turf and Grasses, Product Data, Review/Approval | 15d | 2026-04-30 | 2026-05-20 | 309 |  |  | 54d |  | start no earlier than 2026-01-26 |
| 311 | 2.307 | 329300 - Plants, Product Data, Submittal | 25d | 2026-03-26 A | 2026-04-29 | 2 | 72% | 7d | 54d | 0d | start no earlier than 2026-03-25 |
| 312 | 2.308 | 329300 - Plants, Product Data, Review/Approval | 15d | 2026-04-30 | 2026-05-20 | 311 |  |  | 54d |  | start no earlier than 2026-01-26 |

| ID | WBS | Task | Type | Duration | Start | Finish | Predecessors | Complete | Remaining | Total slack | Free slack | Constraint |
| --- | --- | --- | --- | --- | --- | --- | --- | --- | --- | --- | --- | --- |
| 313 | 3 | **Pre-Installation Meetings** |  | 173d | 2025-09-23 A | 2026-05-21 |  | 50% | 86.5d | 69d |  |  |
| 314 | 3.1 | Preinstallation Meeting for CIP Concrete | milestone | 0d | 2025-09-23 A | 2025-10-23 A | 10, 6, 14, 13, 12, 11 | 100% |  |  |  | start no earlier than 2025-10-20 |
| 315 | 3.2 | Preinstallation Meeting, Cold Formed Metal Framing |  | 1d | 2025-12-16 A | 2025-12-16 A | 26, 28 | 100% |  |  |  | start no earlier than 2025-11-21 |
| 316 | 3.3 | Preinstallation Meeting, Bituminous and Self-Adhering Waterproofing | milestone | 0d | 2025-09-23 A | 2025-09-23 A | 54, 60, 58, 56, 81, 82 | 100% |  |  |  |  |
| 317 | 3.4 | Preinstallation Meeting, Cold Fluid Applied Waterproofing |  | 1d | 2026-05-14 | 2026-05-14 | 63, 64 |  |  | 14d | 0d |  |
| 318 | 3.5 | Preinstallation Meeting, Hollow Metal Doors and Frames |  | 1d | 2026-04-16 A | 2026-04-16 A | 118, 119, 134 | 100% |  |  |  | start no earlier than 2026-03-25 |
| 319 | 3.6 | Preinstallation Meeting, Aluminum Frames and Storefronts |  | 1d | 2026-04-16 A | 2026-04-16 A | 125, 126, 127 | 100% |  |  |  |  |
| 320 | 3.7 | Preinstallation Meeting, Metal Canopies |  | 1d | 2026-04-23 | 2026-04-23 | 176 |  |  | 7d | 0d |  |
| 321 | 3.8 | Preinstallation Meeting, Hydraulic Passenger Elevator |  | 1d | 2026-03-26 A | 2026-03-26 A | 183, 184, 185 | 100% |  |  |  | start no earlier than 2026-03-25 |
| 322 | 3.9 | Preinstallation Meeting, Fencing |  | 1d | 2026-05-21 | 2026-05-21 | 294, 296, 298 |  |  | 69d | 56d |  |
| 323 | 3.10 | Preinstallation Meeting, Security Wire Mesh Fence and Gates |  | 1d | 2026-05-21 | 2026-05-21 | 302, 300 |  |  | 69d | 56d |  |
| 324 | 3.11 | Preinstallation Meeting, Decorative Metal Fences and Gates |  | 1d | 2026-04-16 A | 2026-04-16 A | 306, 304 | 100% |  |  |  | start no earlier than 2026-03-25 |
| 325 | 3.12 | Preinstallation Meeting, TPO Roofing/Sheet Metal Flashing & Trim |  | 1d | 2026-04-23 | 2026-04-23 | 85SS, 86SS, 88SS, 95SS, 96SS, 97SS, 100SS, 101SS |  |  | 6d |  |  |
| 326 | 3.13 | Preinstallation Meeting, Stucco System |  | 1d | 2026-05-07 | 2026-05-07 | 71, 72, 73, 74, 325 |  |  | 19d | 5d |  |
| 327 | 3.14 | Preinstallation Meeting, Architectural Concrete Sealing & Polishing |  | 1d | 2026-04-17 A | 2026-04-17 A | 17, 18, 324 | 100% |  |  |  | start no earlier than 2026-03-25 |
| 328 | 4 | **Sitework** |  | 181d | 2025-07-24 A | 2026-04-02 A |  | 100% |  |  |  |  |
| 329 | 4.1 | Complete Erosion Control Install |  | 4d | 2025-07-24 A | 2025-09-08 A | 1, 2 | 100% |  |  |  | start no earlier than 2025-10-20 |
| 330 | 4.2 | Silt Fence Inspection |  | 1d | 2025-09-09 A | 2025-09-09 A | 329 | 100% |  |  |  | start no earlier than 2025-10-20 |
| 331 | 4.3 | Clear and Grub | milestone | 0d | 2025-09-03 A | 2025-09-18 A | 330 | 100% |  |  |  | finish no earlier than 2025-09-22 |
| 332 | 4.4 | Install Temporary Fencing |  | 1d | 2025-10-03 A | 2025-10-03 A | 330, 331 | 100% |  |  |  | start no earlier than 2025-10-20 |
| 333 | 4.5 | Mass Grade Site |  | 14d | 2025-09-16 A | 2025-10-08 A | 331 | 100% |  |  |  | start no earlier than 2025-10-20 |
| 334 | 4.6 | Construct Retention Pond | milestone | 0d | 2025-10-10 A | 2026-03-20 A | 333FS-5d | 100% |  |  |  | start no earlier than 2025-10-20 |
| 335 | 4.7 | Storm Sewer | milestone | 0d | 2025-11-14 A | 2026-02-27 A | 333 | 100% |  |  |  |  |
| 336 | 4.8 | Sanitary Sewer, Fire Line and domestic water |  | 6d | 2025-11-14 A | 2026-04-02 A | 335SS, 333 | 100% |  |  |  | start no earlier than 2025-11-21 |
| 337 | 4.9 | Grade for building pad |  | 1d | 2025-10-01 A | 2025-10-08 A | 333FS-1d | 100% |  |  |  | start no earlier than 2025-10-20 |

| ID | WBS | Task | Type | Duration | Start | Finish | Predecessors | Complete | Remaining | Total slack | Free slack | Constraint |
| --- | --- | --- | --- | --- | --- | --- | --- | --- | --- | --- | --- | --- |
| 338 | 5 | **Building Pad Construction** |  | 43d | 2025-10-09 A | 2025-12-08 A |  | 100% |  |  |  |  |
| 339 | 5.1 | Survey and Form Perimeter Walls of Building |  | 10d | 2025-10-09 A | 2025-10-22 A | 337 | 100% |  |  |  | start no earlier than 2025-10-20 |
| 340 | 5.2 | Concrete Footings for Columns |  | 10d | 2025-10-28 A | 2025-12-05 A | 339FS-1d, 314, 6 | 100% |  |  |  |  |
| 341 | 5.3 | Excavation for Elevator Pits | milestone | 0d | 2025-10-28 A | 2025-11-07 A | 340SS+1d, 339, 332 | 100% |  |  |  |  |
| 342 | 5.4 | Waterproofing of Below Elevator Pit Floors |  | 3d | 2025-11-06 A | 2025-11-10 A | 341 | 100% |  |  |  |  |
| 343 | 5.5 | Construct Concrete Elevator Pit Floors and Sump Pits | milestone | 0d | 2025-11-06 A | 2025-11-07 A | 339SS+3d, 316, 342 | 100% |  |  |  |  |
| 344 | 5.6 | Form and Pour Elevator Pit Walls |  | 2d | 2025-11-06 A | 2025-11-07 A | 343FS-2d | 100% |  |  |  |  |
| 345 | 5.7 | Underslab Plumbing Rough | milestone | 0d | 2025-11-11 A | 2025-11-21 A | 340SS | 100% |  |  |  | start no earlier than 2025-11-21 |
| 346 | 5.8 | Fine Grade SOG-Place Stone | milestone | 0d | 2025-11-20 A | 2025-11-24 A | 345FS-2d, 347, 343, 344 | 100% |  |  |  |  |
| 347 | 5.9 | Underslab Electrical Rough | milestone | 0d | 2025-10-30 A | 2025-12-05 A | 340 | 100% |  |  |  |  |
| 348 | 5.10 | Vapor Barrier/Rebar for Slab on Grade |  | 9d | 2025-11-11 A | 2025-12-05 A | 346 | 100% |  |  |  |  |
| 349 | 5.11 | Pour First Half of Slab on Grade | milestone | 0d | 2025-11-22 A | 2025-11-22 A | 348 | 100% |  |  |  |  |
| 350 | 5.12 | Pour Second Half of Slab on Grade | milestone | 0d | 2025-12-06 A | 2025-12-06 A | 349 | 100% |  |  |  | must start on 2025-12-06 |
| 351 | 5.13 | Backfill Around Slab on Grade |  | 1d | 2025-12-08 A | 2025-12-08 A | 349, 350FS-2d | 100% |  |  |  |  |
| 352 | 6 | **Building Construction** |  | 178d | 2025-12-10 A | 2026-08-14 | 350 | 28% | 128.45d | 13d |  |  |
| 353 | 6.1 | Hollow metal frames to job site for CMU | milestone | 0d | 2025-12-10 A | 2025-12-10 A | 318, 140, 139, 349SS | 100% |  |  |  |  |
| 354 | 6.2 | Construct First Lift of Elevators/Stair Tower CMU | milestone | 0d | 2025-12-11 A | 2025-12-31 A | 349 | 100% |  |  |  |  |
| 355 | 6.3 | Construct Exterior CMU Walls - SOG to 2nd Floor | milestone | 0d | 2025-12-11 A | 2026-01-15 A | 349, 20, 22, 354SS, 351 | 100% |  |  |  |  |
| 356 | 6.4 | Install Hollow Metal Frames in CMU - 1st Floor |  | 1d | 2025-12-10 A | 2025-12-10 A | 354SS | 100% |  |  |  |  |
| 357 | 6.5 | Grout First Lift of CMU at Elevators/Stair Towers |  | 1d | 2025-12-31 A | 2025-12-31 A | 356 | 100% |  |  |  | start no earlier than 2026-01-26 |
| 358 | 6.6 | Construct Second Lift of Elevators/Stair Tower CMU | milestone | 0d | 2026-01-15 A | 2026-03-10 A | 357 | 100% |  |  |  |  |
| 359 | 6.7 | Install Hollow Metal Frames in Stair Towers - 2nd Floor |  | 1d | 2026-02-25 A | 2026-02-25 A | 358SS | 100% |  |  |  |  |
| 360 | 6.8 | Grout Second Lift of CMU at Elevators/Stair Towers |  | 1d | 2026-02-19 A | 2026-02-26 A | 359 | 100% |  |  |  | start no earlier than 2026-03-02 |
| 361 | 6.9 | Construct Final Lift of Elevators/Stair Tower CMU |  | 8d | 2026-03-11 A | 2026-04-06 A | 360 | 100% |  |  |  |  |
| 362 | 6.10 | Install Hollow Metal Frame in Stair Towers - 3rd Floor |  | 1d | 2026-03-26 A | 2026-03-26 A | 361SS | 100% |  |  |  | start no earlier than 2026-03-25 |
| 363 | 6.11 | Grout Final Lift of CMU at Elevators/Stair Towers |  | 1d | 2026-04-10 A | 2026-04-10 A | 343FS+5d, 349FS+5d, 20, 22, 31, 66, 109, 321, 362 | 100% |  |  |  |  |
| 364 | 6.12 | 1st floor structure erection/decking |  | 5d | 2026-01-07 A | 2026-02-12 A | 348, 349FS+5d, 355, 24, 28, 315 | 100% |  |  |  |  |
| 365 | 6.13 | 2nd floor SOD-Prep/wire install/Pour |  | 8d | 2026-01-21 A | 2026-02-21 A | 364FS-2d, 353 | 100% |  |  |  |  |
| 366 | 6.14 | 2nd floor SOD-Pour Completed | milestone | 0d | 2026-02-21 A | 2026-02-21 A | 365 | 100% |  |  |  |  |
| 367 | 6.15 | Construct Exterior CMU Walls - 2nd to 3rd floor | milestone | 0d | 2026-01-15 A | 2026-03-04 A | 365FS+5d | 100% |  |  |  |  |
| 368 | 6.16 | 2nd floor-structure erection | milestone | 0d | 2026-02-16 A | 2026-03-13 A | 366FS+5d, 367SS+3d | 100% |  |  |  |  |
| 369 | 6.17 | 3rd floor-SOD prep/wire install/Pour |  | 7d | 2026-03-16 A | 2026-04-04 A | 368, 367SS+5d, 358 | 100% |  |  |  |  |
| 370 | 6.18 | 3rd floor-SOD Pour Completed | milestone | 0d | 2026-04-04 A | 2026-04-04 A | 369 | 100% |  |  |  |  |
| 371 | 6.19 | Install stairs in stair towers |  | 3d | 2026-04-08 A | 2026-04-11 A | 348, 363, 349FS+5d, 34, 39 | 100% |  |  |  |  |
| 372 | 6.20 | Install Railings |  | 1d | 2026-04-10 A | 2026-04-11 A | 371, 39 | 100% |  |  |  |  |
| 373 | 6.21 | 3rd Floor - Construct CMU walls from 3rd Floor to Roof | milestone | 0d | 2026-03-16 A | 2026-04-16 A | 369FS+5d, 370FS+5d | 100% |  |  |  |  |
| 374 | 6.22 | 3rd floor structure erection & Roof |  | 24d | 2026-03-30 A | 2026-04-30 | 373SS | 67% | 8d | 0d |  |  |
| 375 | 6.23 | Install TPO Roofing |  | 7d | 2026-05-01 | 2026-05-11 | 374, 373, 41, 43, 325SS, 361 |  |  | 0d |  |  |
| 376 | 6.24 | Roofing Complete - Building Dry-In | milestone | 0d | 2026-05-12 | 2026-05-12 | 375, 380 |  |  | 22d | 1d |  |
| 377 | 6.25 | EIFS/Stucco |  | 35d | 2026-05-15 | 2026-07-02 | 373, 374, 317, 326 |  |  | 14d | 0d |  |
| 378 | 6.26 | Storefront Frames Install |  | 10d | 2026-06-12 | 2026-06-25 | 376, 373, 374, 319, 128 |  |  | 0d |  |  |
| 379 | 6.27 | Storefront Glass Installed |  | 10d | 2026-07-10 | 2026-07-23 | 378FS+10d, 143 |  |  | 0d |  |  |
| 380 | 6.28 | Stanley Sliding Door Install |  | 1d | 2026-05-12 | 2026-05-12 | 375, 131, 132 |  |  | 22d | 0d |  |
| 381 | 6.29 | Canopies |  | 8d | 2026-07-03 | 2026-07-14 | 377SS+20d, 380, 177 |  |  | 7d |  |  |
| 382 | 6.30 | Install Metal Coping/Downspouts/Trim |  | 6d | 2026-07-24 | 2026-07-31 | 375, 377, 381, 379, 146, 147 |  |  | 0d |  |  |
| 383 | 6.31 | Exterior Building Caulking |  | 5d | 2026-08-03 | 2026-08-07 | 382, 378, 377, 115, 113 |  |  | 2d | 0d |  |
| 384 | 6.32 | Exterior Building Punchlist |  | 5d | 2026-08-10 | 2026-08-14 | 383, 382, 433 |  |  | 2d |  |  |
| 385 | 6.33 | Light gauge office framing |  | 5d | 2026-05-01 | 2026-05-07 | 366, 364, 374 |  |  | 35d | 0d |  |
| 386 | 6.34 | Elevator #1 Install |  | 20d | 2026-05-14 | 2026-06-10 | 412, 376, 186, 194 |  |  | 40d | 0d |  |
| 387 | 6.35 | Elevator #2 install |  | 20d | 2026-06-11 | 2026-07-08 | 386, 186, 194 |  |  | 40d | 24d |  |
| 388 | 6.36 | Building Façade Complete | milestone | 0d | 2026-07-31 | 2026-07-31 | 382, 379 |  |  | 0d |  |  |

| ID | WBS | Task | Type | Duration | Start | Finish | Predecessors | Complete | Remaining | Total slack | Free slack | Constraint |
| --- | --- | --- | --- | --- | --- | --- | --- | --- | --- | --- | --- | --- |
| 389 | 7 | **Site Utlities/As-Builts** |  | 215d | 2025-11-20 A | 2026-09-16 |  | 59% | 87.75d | 0d |  |  |
| 390 | 7.1 | Electrical Gear Procurement | milestone | 0d | 2025-11-20 A | 2026-01-30 A | 1FS+20d, 250 | 100% |  |  |  |  |
| 391 | 7.2 | Procure Transformer |  | 3d | 2026-02-18 A | 2026-03-30 A | 1 | 100% |  |  |  |  |
| 392 | 7.3 | Install Primary Power Conduits to Transformer |  | 17d | 2026-01-23 A | 2026-02-16 A | 337, 235 | 100% |  |  |  |  |
| 393 | 7.4 | Install Secondary Power Conduits from Building to Transfomer | milestone | 0d | 2026-01-05 A | 2026-02-02 A | 392, 390, 411 | 100% |  |  |  |  |
| 394 | 7.5 | Set Transformer |  | 1d | 2026-03-31 A | 2026-03-31 A | 391, 337 | 100% |  |  |  |  |
| 395 | 7.6 | Permanent Power to Building |  | 16d | 2026-04-17 A | 2026-05-08 | 393, 394 | 50% | 8d | 41d | 1d |  |
| 396 | 7.7 | As-Built Drawings for Sanitary and Storm Water |  | 12d | 2026-09-01 | 2026-09-16 | 335, 336 |  |  | 0d |  | finish no earlier than 2026-09-16 |
| 397 | 8 | **Rough-ins and Finishes** |  | 157d | 2026-02-19 A | 2026-09-25 | 155, 157 |  | 157d | 8d |  |  |
| 398 | 8.1 | 1st Floor Electrical/Fire Alarm Rough In |  | 7d | 2026-02-19 A | 2026-05-26 | 364, 366, 399, 239FS+2d, 241, 243, 245, 252, 254, 256, 258, 266, 268, 270, 272, 273, 274, 400FS-5d |  | 7d | 8d | 0d |  |
| 399 | 8.2 | 1st Floor HVAC Rough In |  | 7d | 2026-02-24 A | 2026-05-15 | 366, 209, 229, 231, 227, 226, 211, 214, 215, 217, 220, 221, 223, 367, 370 |  | 7d | 0d |  |  |
| 400 | 8.3 | 1st Floor Sprinkler Rough-in/riser room-1st floor |  | 12d | 2026-03-03 A | 2026-05-15 | 366, 190, 189, 399SS+10d |  | 12d | 5d | 0d |  |
| 401 | 8.4 | 1st Floor HVAC Trim/Line Set |  | 10d | 2026-05-27 | 2026-06-09 | 399, 400, 398 |  |  | 8d | 0d |  |
| 402 | 8.5 | 1st Floor Plumbing rough walls | milestone | 0d | 2026-03-25 A | 2026-04-03 A | 385, 401, 400 | 100% |  |  |  |  |
| 403 | 8.6 | 1st Floor Hallway System- by Janus |  | 20d | 2026-06-10 | 2026-07-07 | 370, 399, 398, 400, 401, 402 |  |  | 8d | 0d |  |
| 404 | 8.7 | 1st Floor Electrical Trim/FA/Hang Lights |  | 7d | 2026-07-16 | 2026-07-24 | 403, 261, 398 |  |  | 15d | 7d |  |
| 405 | 8.8 | 2nd Floor HVAC Rough In |  | 15d | 2026-05-07 | 2026-05-27 | 370, 209, 226, 227, 229, 231, 211, 214, 215, 217, 220, 221, 223, 374 |  |  | 0d |  |  |
| 406 | 8.9 | 2nd Floor Electrical/Fire Alarm Rough In |  | 15d | 2026-03-26 A | 2026-06-17 | 368, 405, 407FS-5d, 273, 274 |  | 15d | 22d | 14d |  |
| 407 | 8.10 | 2nd Floor Sprinkler Rough-in |  | 7d | 2026-05-21 | 2026-05-29 | 370, 405FS-5d, 400 |  |  | 3d | 0d |  |
| 408 | 8.11 | 2nd Floor HVAC Trim/Line Sets |  | 10d | 2026-06-01 | 2026-06-12 | 405, 407 |  |  | 25d | 17d |  |
| 409 | 8.12 | 2nd Floor Hallway System - by Janus |  | 20d | 2026-07-08 | 2026-08-04 | 406, 403, 407, 408 |  |  | 8d | 0d |  |
| 410 | 8.13 | 2nd Floor Electrical Trim/FA/Hang Light-2nd Floor |  | 7d | 2026-08-05 | 2026-08-13 | 404, 409 |  |  | 8d | 0d |  |
| 411 | 8.14 | Install Gear in Electrical Room |  | 7d | 2026-04-16 A | 2026-05-11 | 375SS, 390 |  | 7d | 33d | 0d |  |
| 412 | 8.15 | Power to elevator machine rooms |  | 2d | 2026-05-12 | 2026-05-13 | 375, 395, 411 |  |  | 40d | 0d |  |
| 413 | 8.16 | 3rd Floor HVAC Rough In |  | 15d | 2026-05-07 | 2026-05-27 | 375SS+3d, 209, 229, 231, 227, 226, 211, 214, 215, 217, 220, 221, 223 |  |  | 18d | 0d |  |
| 414 | 8.17 | 3rd Floor Electrical/Fire Alarm Rough In |  | 15d | 2026-05-19 | 2026-06-08 | 375, 413SS+8d, 273, 274 |  |  | 18d | 0d |  |
| 415 | 8.18 | 3rd Floor Sprinkler Rough-in |  | 5d | 2026-06-09 | 2026-06-15 | 375, 413, 374, 414 |  |  | 18d | 0d |  |
| 416 | 8.19 | 3rd Floor HVAC Trim/Line Sets |  | 10d | 2026-06-16 | 2026-06-29 | 413, 415 |  |  | 18d | 0d |  |
| 417 | 8.20 | 3rd Floor Hallway System-by Janus |  | 20d | 2026-06-30 | 2026-07-27 | 414, 416, 415, 413 |  |  | 18d | 0d |  |
| 418 | 8.21 | 3rd Floor Electrical Trim/FA/Hang Lights |  | 7d | 2026-07-28 | 2026-08-05 | 417, 416 |  |  | 18d | 4d |  |
| 419 | 8.22 | Install Aluminum Wainscot at Elevator Lobbies |  | 5d | 2026-08-05 | 2026-08-11 | 36, 403, 409, 417, 429 |  |  | 14d | 0d |  |
| 420 | 8.23 | Office Buildout |  | 30d | 2026-03-16 A | 2026-08-06 | 378, 402, 385, 41, 50, 52, 121, 149, 151, 153, 168, 411 |  | 30d | 13d | 0d |  |
| 421 | 8.24 | Initial BDA System Requirement Testing |  | 1d | 2026-07-28 | 2026-07-28 | 417 |  |  | 30d | 0d |  |
| 422 | 8.25 | Install BDA System |  | 10d | 2026-08-12 | 2026-08-25 | 421FS+10d |  |  | 30d | 0d |  |
| 423 | 8.26 | 1st Floor Punchlist Repairs |  | 5d | 2026-08-07 | 2026-08-13 | 429, 420, 404, 401, 403 |  |  | 17d | 6d |  |
| 424 | 8.27 | 2nd Floor Punchlist Repairs |  | 5d | 2026-08-14 | 2026-08-20 | 408, 406, 410, 419, 409 |  |  | 12d | 1d |  |
| 425 | 8.28 | 3rd Floor Punchlist Repairs |  | 5d | 2026-08-12 | 2026-08-18 | 418, 419, 416, 417 |  |  | 14d | 3d |  |
| 426 | 8.29 | Complete Interior Punchlist Work - All Floors |  | 2d | 2026-08-24 | 2026-08-25 | 430, 434, 179, 418, 419, 424, 425, 423 |  |  | 11d | 3d |  |
| 427 | 8.30 | Final Clean/Floor Sealer |  | 20d | 2026-08-31 | 2026-09-25 | 387, 420, 327, 418, 372, 432, 430, 431, 429, 200, 202, 428, 237, 424, 426 |  |  | 8d | 0d |  |
| 428 | 8.31 | HVAC Startup |  | 6d | 2026-08-21 | 2026-08-28 | 416, 420, 408, 401, 432 |  |  | 8d | 0d |  |
| 429 | 8.32 | Install Plumbing Fixtures and Water Heaters |  | 4d | 2026-06-30 | 2026-07-03 | 416, 196, 198, 200, 402 |  |  | 36d | 22d |  |
| 430 | 8.33 | Install Interior Signage |  | 1d | 2026-08-21 | 2026-08-21 | 417, 419, 420, 166, 432 |  |  | 11d | 0d |  |
| 431 | 8.34 | Install Fire Extinguishers and Cabinets |  | 1d | 2026-08-07 | 2026-08-07 | 417, 420, 409, 403, 170 |  |  | 13d | 5d |  |
| 432 | 8.35 | Final Painting, Stairs/Railings/Doors |  | 5d | 2026-08-14 | 2026-08-20 | 161, 417, 372, 429, 433, 410, 431FS-1d |  |  | 8d | 0d |  |
| 433 | 8.36 | Wall Packs |  | 3d | 2026-07-03 | 2026-07-07 | 377, 36 |  |  | 20d |  |  |
| 434 | 8.37 | Elevator Trim out by Subs |  | 3d | 2026-08-12 | 2026-08-14 | 387, 386, 417, 409, 403, 419 |  |  | 16d | 0d |  |

| ID | WBS | Task | Type | Duration | Start | Finish | Predecessors | Remaining | Total slack | Free slack | Constraint |
| --- | --- | --- | --- | --- | --- | --- | --- | --- | --- | --- | --- |
| 435 | 9 | **Finsh Sitework - Dumpster/Sidewalks/Paving/Landscaping** |  | 173d | 2026-02-23 A | 2026-10-21 |  | 173d | 0d |  |  |
| 436 | 9.1 | Rough grade for landscaping |  | 2d | 2026-07-03 | 2026-07-06 | 377, 394, 336, 334 |  | 14d | 0d |  |
| 437 | 9.2 | Install Exterior Lighting in Parking Area |  | 5d | 2026-07-16 | 2026-07-22 | 436, 264, 290, 292 |  | 7d |  |  |
| 438 | 9.3 | Form and Pour Sidewalks |  | 5d | 2026-08-03 | 2026-08-07 | 436, 437, 388 |  | 0d |  |  |
| 439 | 9.4 | Landscaping and Irrigation Installation |  | 20d | 2026-08-05 | 2026-09-01 | 436FS-1d, 308, 310, 312, 433, 438FS-3d, 384FF+10d, 392 |  | 0d |  |  |
| 440 | 9.5 | Curb/Asphalt Paving |  | 5d | 2026-02-23 A | 2026-09-08 | 436, 438, 280, 282, 284, 286, 288, 439 | 5d | 13d | 0d |  |
| 441 | 9.6 | Install Fencing |  | 5d | 2026-08-10 | 2026-08-14 | 438, 294, 296, 298, 322, 323, 324 |  | 13d | 12d |  |
| 442 | 9.7 | Striping |  | 1d | 2026-09-09 | 2026-09-09 | 440, 439SS+10d |  | 13d | 0d |  |
| 443 | 9.8 | Landscaping As-Built Drawings |  | 10d | 2026-09-02 | 2026-09-15 | 439, 441 |  | 1d | 0d |  |
| 444 | 9.9 | Developer's Letter of Dedication |  | 10d | 2026-09-16 | 2026-09-29 | 443 |  | 1d |  |  |
| 445 | 9.10 | Engineer's Certificate of Completion |  | 5d | 2026-09-16 | 2026-09-22 | 443 |  | 6d |  |  |
| 446 | 9.11 | Contractor's Letter of Completion |  | 2d | 2026-09-10 | 2026-09-11 | 439, 426, 433, 383, 384, 442 |  | 13d |  |  |
| 447 | 9.12 | Satisfaction Letter/Email from FDOT and City for Infrastructure |  | 10d | 2026-09-16 | 2026-09-29 | 443 |  | 1d |  |  |
| 448 | 9.13 | SOV for Site Utilites, Water, Wastewater, Reclaimed Water |  | 10d | 2026-09-17 | 2026-09-30 | 396 |  | 0d |  |  |
| 449 | 9.14 | Polk County Final Walkthrough Request |  | 5d | 2026-10-01 | 2026-10-07 | 443, 440, 444, 445, 446, 447, 448 |  | 0d |  |  |
| 450 | 9.15 | Polk County Approval of Site |  | 10d | 2026-10-08 | 2026-10-21 | 449 |  | 0d |  |  |
| 451 | 10 | **Final Building Sign-Offs** |  | 43d | 2026-08-17 | 2026-10-14 |  |  | 12d |  |  |
| 452 | 10.1 | Pre Closeout Meeting with AHJ |  | 1d | 2026-09-28 | 2026-09-28 | 388, 427, 453, 89, 90, 91, 135, 136, 431, 207, 426, 454 |  | 24d |  |  |
| 453 | 10.2 | Final BDA Test |  | 1d | 2026-08-26 | 2026-08-26 | 417SS+10d, 422 |  | 30d | 22d |  |
| 454 | 10.3 | Elevator Ready for State Inspection |  | 1d | 2026-08-17 | 2026-08-17 | 434, 395 |  | 37d | 29d |  |
| 455 | 10.4 | Final Building Inspections |  | 5d | 2026-10-08 | 2026-10-14 | 442, 427, 454, 443FS-1d, 453, 430, 179, 450SS |  | 0d |  |  |
| 456 | 11 | Weather Days Remaining per Contract (1 Used to date) |  | 14d | 2026-10-13 | 2026-10-30 | 455SS+3d |  | 0d |  |  |
| 457 | 12 | Substantial Completion | milestone | 0d | 2026-10-30 | 2026-10-30 | 455, 456, 426 |  | 0d |  | finish no later than 2026-10-30 |
