# Public Storage Fairfax VA - DEC 2025

Schedule from Primavera P6, 2025-05-05 to 2026-09-11, data date 2025-12-31, A marks actual dates.
Must finish by 2026-09-19

## Calendars

- 5 Day: Mon-Fri 08:00-12:00, 13:00-17:00; Sat-Sun off.
- G7: Mon-Sun 08:00-12:00, 13:00-17:00.

## Schedule

| ID | WBS | Activity | Type | Duration | Start | Finish | Predecessors | Complete | Remaining | Planned start | Planned finish | Total float | Free float | Constraint | Calendar | 1 | 2 | 3 |
| --- | --- | --- | --- | --- | --- | --- | --- | --- | --- | --- | --- | --- | --- | --- | --- | --- | --- | --- |
|  | 1 | **Public Storage Fairfax VA** |  |  | 2025-05-05 | 2026-09-11 |  |  |  |  |  |  |  |  |  |  |  |  |
|  | 3 | **Milestones** |  |  | 2025-05-05 | 2026-09-11 |  |  |  |  |  |  |  |  |  |  |  |  |
| MIL-1000 |  | Notice to Proceed (05.05.25) | milestone | 0d | 2025-05-05 A | 2025-05-05 A |  | 100% |  |  |  |  |  |  |  | Public | Precon |  |
| MIL-1010 |  | Weathertight - Main Building | milestone | 0d | 2026-04-16 | 2026-04-16 | CON-MB-L1-1260 FF, CON-MB-L5-1020 FF, CON-MB-L3-1050 FF, CON-MB-L4-1040 FF, CON-MB-L5-1030 FF, CON-MB-L1-1250 FF, CON-MB-L2-1050 FF |  |  |  |  | 42d | 0d |  |  |  |  |  |
| MIL-1020 |  | Permanent Power | milestone | 0d | 2026-05-06 | 2026-05-06 | CON-POW-1070 |  |  |  |  | 61d | 49d |  |  |  |  |  |
| MIL-1030 |  | Substantial Completion (08.19.26) | milestone | 0d | 2026-08-19 | 2026-08-19 | CLO-MB-1020 FF, SITE-MB-1140 FF, CON-MB-2010 FF, SITE-MB-1090 FF |  |  |  |  | 0d | 23d | finish on or before 2026-08-19 | G7 |  |  |  |
| MIL-1040 |  | Final Completion - Main Building | milestone | 0d | 2026-09-11 | 2026-09-11 | MIL-1030, CLO-MB-1050, CLO-OFF-1050 |  |  |  |  | 8d | 0d | finish on or before 2026-09-19 | G7 |  |  |  |
|  | 1 | **Preconstruction** |  |  | 2025-05-05 | 2026-03-11 |  |  |  |  |  |  |  |  |  |  |  |  |
|  | 1 | **Procurement** |  |  | 2025-05-05 | 2026-03-11 |  |  |  |  |  |  |  |  |  |  |  |  |
| PROC-1000 |  | Precon Construction |  | 1d | 2025-05-05 A | 2025-05-05 A |  | 100% |  |  |  |  |  |  |  | Public | Precon |  |
| PROC-1010 |  | Contractor Procurement |  | 60d | 2025-05-06 A | 2025-11-07 A | MIL-1000 | 100% |  | 2025-05-06 | 2025-07-28 |  |  |  |  |  |  |  |
|  | 2 | **Long Lead Items** |  |  | 2025-06-12 | 2026-03-11 |  |  |  |  |  |  |  |  |  |  |  |  |
| PROC-1020 |  | Elevator Submittal |  | 23d | 2025-06-12 A | 2025-07-14 A | PROC-1010 | 100% |  |  |  |  |  | start on or after 2025-06-30 |  | Public | Construction | Long |
| PROC-1030 |  | Brick Submittal and Fabrication |  | 60d | 2025-07-01 A | 2025-09-19 A |  | 100% |  | 2025-07-01 | 2025-09-22 |  |  | start on or after 2025-07-01 |  | Public | Construction | Long |
| PROC-1120 |  | Ferguson Tank Submittal |  | 20d | 2025-07-29 A | 2025-10-15 A | PROC-1010 | 100% |  | 2025-11-17 | 2025-12-12 |  |  |  |  |  |  |  |
| PROC-1040 |  | Switchgear Submittal |  | 15d | 2025-07-31 A | 2025-08-20 A | PROC-1010 | 100% |  |  |  |  |  | start on or after 2025-07-31 |  | Public | Construction | Long |
| PROC-1050 |  | Light Fixtures Submittal |  | 20d | 2025-08-04 A | 2025-08-29 A | PROC-1010 | 100% |  |  |  |  |  | start on or after 2025-08-04 |  | Public | Construction | Long |
| PROC-1060 |  | Switchgear Fabrication |  | 30d | 2025-08-21 A | 2025-09-30 A | PROC-1040 | 100% |  | 2025-08-21 | 2025-10-01 |  |  |  |  | Public | Construction | Long |
| PROC-1070 |  | Light Fixtures Fabrication |  | 20d | 2025-09-01 A | 2025-09-25 A | PROC-1050 | 100% |  | 2025-09-01 | 2025-09-26 |  |  |  |  | Public | Construction | Long |
| PROC-1080 |  | Glass Field Measurement and Fabrication - Office |  | 45d | 2025-09-15 A | 2025-12-22 A | PROC-1010 SS | 100% |  | 2025-09-15 | 2025-11-14 |  |  |  |  | Public | Construction | Long |
| PROC-1110 |  | HVAC Equipment Submittal |  | 20d | 2025-09-15 A | 2025-09-30 A | PROC-1010 | 100% |  | 2025-10-15 | 2025-11-11 |  |  |  |  | Public | Construction | Long |
| PROC-1130 |  | HVAC Equipment Fabrication |  | 70d | 2025-10-20 A | 2026-02-11 | PROC-1110 | 57% | 30d | 2025-12-15 | 2026-03-20 | 29d | 0d |  |  | Public | Construction | Long |
| PROC-1090 |  | Fire Pump Submittal |  | 40d | 2025-10-27 A | 2026-01-01 | PROC-1010 | 98% | 1d | 2025-09-29 | 2025-11-21 | 129d | 0d | start on or after 2025-09-01 |  | Public | Construction | Long |
| PROC-1140 |  | Ferguson Tank Fabrication |  | 15d | 2025-10-27 A | 2025-11-21 A | PROC-1120 | 100% |  | 2025-11-17 | 2025-12-05 |  |  |  |  |  |  |  |
| PROC-1100 |  | Elevator Fabrication |  | 50d | 2026-01-01 | 2026-03-11 | PROC-1020 |  |  |  |  | 40d | 14d |  |  | Public | Construction | Long |
| PROC-1150 |  | Fire Pump Fabrication |  | 20d | 2026-01-02 | 2026-01-29 | PROC-1090 |  |  |  |  | 129d | 117d |  |  | Public | Construction | Long |

| ID | WBS | Activity | Duration | Start | Finish | Predecessors | Complete | Remaining | Planned start | Planned finish | Total float | Free float | Constraint | 1 | 2 | 3 |
| --- | --- | --- | --- | --- | --- | --- | --- | --- | --- | --- | --- | --- | --- | --- | --- | --- |
|  | 2 | **Construction** |  | 2025-05-05 | 2026-08-19 |  |  |  |  |  |  |  |  |  |  |  |
|  | 2 | **Site Work** |  | 2025-05-05 | 2026-08-19 |  |  |  |  |  |  |  |  |  |  |  |
| SITE-1020 |  | Mobilization | 1d | 2025-05-05 A | 2025-05-05 A | MIL-1000 | 100% |  |  |  |  |  | start on or after 2025-05-05 | Public | Construction | Site |
| SITE-1000 |  | Erosion Control Phase I | 4d | 2025-05-06 A | 2025-05-09 A | SITE-1020 | 100% |  |  |  |  |  |  | Public | Construction | Site |
| SITE-1010 |  | Stormwater Management Ponds Phase I | 10d | 2025-11-03 A | 2025-11-21 A | SITE-MB-1040, PROC-1140 | 100% |  | 2026-01-01 | 2026-01-14 |  |  |  | Public | Construction | Site |
| SITE-1030 |  | Stormwater Management Ponds Phase II | 10d | 2026-03-23 | 2026-04-03 | SITE-MB-1070, CON-MB-L5-1100 |  |  |  |  | 103d | 98d |  | Public | Construction | Site |
|  | 1 | **Site Work - Main Building** |  | 2025-05-12 | 2026-08-19 |  |  |  |  |  |  |  |  |  |  |  |
| SITE-MB-1010 |  | Demo/Clear Site - Main Building | 10d | 2025-05-12 A | 2025-05-23 A | SITE-1000 | 100% |  |  |  |  |  |  | Public | Construction | Site |
| SITE-MB-1020 |  | Rough Grading - Main Building | 10d | 2025-05-26 A | 2025-06-06 A | SITE-MB-1010 | 100% |  |  |  |  |  |  | Public | Construction | Site |
| SITE-MB-1030 |  | Building Pad Delivery - Main Building | 35d | 2025-06-09 A | 2025-07-25 A | SITE-MB-1020 | 100% |  |  |  |  |  | finish on or after 2025-07-25 | Public | Construction | Site |
| SITE-MB-1040 |  | Domestic & Fire Water Online - Main Building | 27d | 2025-07-28 A | 2025-09-02 A | SITE-MB-1030 | 100% |  |  |  |  |  |  | Public | Construction | Site |
| SITE-MB-1050 |  | Storm Structures and Pipe - Main Building | 30d | 2025-11-03 A | 2026-01-14 | SITE-MB-1040 | 67% | 10d | 2025-12-01 | 2026-01-09 | 114d | 54d |  | Public | Construction | Site |
| SITE-MB-1070 |  | Fine Grading - Main Building | 15d | 2026-01-01 | 2026-01-21 | SITE-1010 |  |  |  |  | 31d |  |  | Public | Construction | Site |
| SITE-MB-1060 |  | Sanitary Sewer - Main Building | 10d | 2026-04-01 | 2026-04-14 | SITE-MB-1050 |  |  |  |  | 60d |  | start on or after 2026-04-01 | Public | Construction | Site |
| SITE-MB-1100 |  | Curb and Gutter - Main Building | 7d | 2026-05-08 | 2026-05-18 | SITE-MB-1070, CON-MB-EXT-1000, CON-MB-EXT-1020 |  |  |  |  | 36d | 0d |  | Public | Construction | Site |
| SITE-MB-1120 |  | Stone Base Parking Lot - Main Building | 10d | 2026-05-19 | 2026-06-01 | SITE-MB-1100 |  |  |  |  | 36d |  |  | Public | Construction | Site |
| SITE-MB-1080 |  | Sidewalk - Main Building | 10d | 2026-07-08 | 2026-07-21 | CON-MB-EXT-1050, CON-MB-EXT-1100, SITE-MB-1060, SITE-MB-1100 |  |  |  |  | 0d |  |  | Public | Construction | Site |
| SITE-MB-1130 |  | Paving (Includes SHA Work) - Main Building | 11d | 2026-07-22 | 2026-08-05 | SITE-MB-1120, SITE-MB-1080 |  |  |  |  | 0d |  |  | Public | Construction | Site |
| SITE-MB-1090 |  | Landscape - Main Building | 10d | 2026-08-06 | 2026-08-19 | SITE-MB-1080, SITE-MB-1130, CON-MB-EXT-1030, CON-MB-EXT-1050 |  |  |  |  | 0d |  |  | Public | Construction | Site |
| SITE-MB-1140 |  | Line Striping - Main Building | 2d | 2026-08-06 | 2026-08-07 | SITE-MB-1130 |  |  |  |  | 8d |  |  | Public | Construction | Site |
|  | 3 | **Site Work - Office** |  | 2025-05-12 | 2026-01-26 |  |  |  |  |  |  |  |  |  |  |  |
| SITE-OFF-1000 |  | Demo/Clear Site - Office Building | 10d | 2025-05-12 A | 2025-05-23 A | SITE-1000 | 100% |  |  |  |  |  |  | Public | Construction | Site |
| SITE-OFF-1010 |  | Rough Grading - Office Building | 10d | 2025-05-26 A | 2025-06-06 A | SITE-OFF-1000 | 100% |  |  |  |  |  |  | Public | Construction | Site |
| SITE-OFF-1020 |  | Building Pad Delivery - Office Building | 35d | 2025-06-09 A | 2025-07-25 A | SITE-OFF-1010 | 100% |  |  |  |  |  | finish on or after 2025-07-25 | Public | Construction | Site |
| SITE-OFF-1030 |  | Domestic & Fire Water Online - Office Building | 10d | 2026-01-01 | 2026-01-14 | SITE-OFF-1020, PROC-1010 |  |  |  |  | 148d | 0d |  | Public | Construction | Site |
| SITE-OFF-1060 |  | Fine Grading - Office Building | 6d | 2026-01-01 | 2026-01-08 | SITE-OFF-1020, PROC-1010 |  |  |  |  | 152d | 0d |  | Public | Construction | Site |
| SITE-OFF-1080 |  | Landscape - Office Building | 1d | 2026-01-09 | 2026-01-09 | SITE-OFF-1060 |  |  |  |  | 163d | 14d |  | Public | Construction | Site |
| SITE-OFF-1090 |  | Curb and Gutter - Office Building | 1d | 2026-01-15 | 2026-01-15 | SITE-OFF-1060, SITE-OFF-1030 |  |  |  |  | 148d | 0d |  | Public | Construction | Site |
| SITE-OFF-1070 |  | Sidewalk - Office Building | 2d | 2026-01-16 | 2026-01-19 | SITE-OFF-1090, CON-OFF-1170 |  |  |  |  | 148d | 0d |  | Public | Construction | Site |
| SITE-OFF-1110 |  | Stone Base Parking Lot - Office Building | 1d | 2026-01-16 | 2026-01-16 | SITE-OFF-1090 |  |  |  |  | 149d | 1d |  | Public | Construction | Site |
| SITE-OFF-1120 |  | Paving - Office Building | 2d | 2026-01-20 | 2026-01-21 | SITE-OFF-1110, SITE-OFF-1070 |  |  |  |  | 148d | 0d |  | Public | Construction | Site |
| SITE-OFF-1100 |  | Misc Exterior Items (Vehicle Gate Operator) - Office Building | 3d | 2026-01-22 | 2026-01-26 | SITE-OFF-1120 |  |  |  |  | 152d | 3d |  | Public | Construction | Site |
| SITE-OFF-1130 |  | Line Striping - Office Building | 1d | 2026-01-22 | 2026-01-22 | SITE-OFF-1120 |  |  |  |  | 148d | 5d |  | Public | Construction | Site |

| ID | WBS | Activity | Duration | Start | Finish | Predecessors | Complete | Remaining | Planned start | Planned finish | Total float | Free float | Constraint | 1 | 2 | 3 | 4 | 5 | 6 |
| --- | --- | --- | --- | --- | --- | --- | --- | --- | --- | --- | --- | --- | --- | --- | --- | --- | --- | --- | --- |
|  | 1 | **Main Building** |  | 2025-08-04 | 2026-07-13 |  |  |  |  |  |  |  |  |  |  |  |  |  |  |
|  | 1 | **Substructure** |  | 2025-08-04 | 2026-01-26 |  |  |  |  |  |  |  |  |  |  |  |  |  |  |
| CON-MB-1000 |  | UG Electric Rough In | 10d | 2025-08-04 A | 2025-08-27 A | SITE-MB-1030 | 100% |  | 2025-08-04 | 2025-08-15 |  |  | start on or after 2025-08-04 | Public | Construction | Site | Building | Structure | First |
| CON-MB-1010 |  | UG Plumbing Roughin | 8d | 2025-08-18 A | 2025-08-27 A | CON-MB-1000 | 100% |  |  |  |  |  |  | Public | Construction | Site | Building | Structure | First |
| CON-MB-1020 |  | Prep/Pour SOG 1/2 | 12d | 2025-08-27 A | 2025-09-10 A | CON-MB-1000, CON-MB-1010 | 100% |  | 2025-08-27 | 2025-09-11 |  |  | finish on or after 2025-09-10 | Public | Construction | Site | Building | Structure | First |
| CON-MB-1030 |  | Prep/Pour SOG 2/2 | 18d | 2025-08-29 A | 2025-09-22 A | CON-MB-1020 FS+2d | 100% |  | 2025-08-29 | 2025-09-23 |  |  | finish on or after 2025-09-22 | Public | Construction | Site | Building | Structure | First |
| CON-MB-1040 |  | Foundation Waterproofing | 5d | 2026-01-20 | 2026-01-26 | CON-MB-1030 FS+4d, CON-MB-L1-1250 |  |  |  |  | 10d | 6d |  | Public | Construction | Site | Building | Structure | First |
|  | 9 | **Superstructure** |  | 2025-09-29 | 2026-04-17 |  |  |  |  |  |  |  |  |  |  |  |  |  |  |
|  | 1 | **First Floor Superstructure** |  | 2025-09-29 | 2026-01-09 |  |  |  |  |  |  |  |  |  |  |  |  |  |  |
| CON-MB-L1-1040 |  | Structural Steel Columns & Beams - 1st Floor | 18d | 2025-09-29 A | 2025-10-28 A | CON-MB-1030 FS+4d | 100% |  | 2025-11-03 | 2025-11-26 |  |  |  | Public | Construction | Site | Building | Structure | First |
| CON-MB-L1-1060 |  | Metal Decking - 2nd floor | 4d | 2025-10-23 A | 2025-10-28 A | CON-MB-L1-1040 | 100% |  | 2025-11-27 | 2025-12-02 |  |  |  | Public | Construction | Site | Building | Structure | First |
| CON-MB-L1-1090 |  | Exterior & Interior Framing - 1st Floor | 10d | 2025-10-28 A | 2026-01-09 | CON-MB-L1-1070, CON-MB-L1-1040 | 30% | 7d | 2025-11-04 | 2025-11-17 | 10d | 0d |  | Public | Construction | Site | Building | Structure | First |
| CON-MB-L1-1070 |  | Prep/Pour SOD - 2nd Floor | 8d | 2025-10-29 A | 2025-11-01 A | CON-MB-L1-1060 | 100% |  | 2025-12-03 | 2025-12-12 |  |  |  | Public | Construction | Site | Building | Structure | First |
|  | 2 | **Second Floor Superstructure** |  | 2025-11-04 | 2026-02-04 |  |  |  |  |  |  |  |  |  |  |  |  |  |  |
| CON-MB-L2-1000 |  | Structural Steel Columns & Beams - 2nd Floor | 14d | 2025-11-04 A | 2025-11-21 A | CON-MB-L1-1070, CON-MB-L1-1040 | 100% |  | 2025-12-01 | 2025-12-18 |  |  |  | Public | Construction | Site | Building | Structure | Second |
| CON-MB-L2-1010 |  | Metal Decking 3rd Floor | 4d | 2025-11-24 A | 2025-11-27 A | CON-MB-L2-1000 | 100% |  | 2025-12-19 | 2025-12-24 |  |  |  | Public | Construction | Site | Building | Structure | Second |
| CON-MB-L2-1020 |  | Prep/Pour SOD - 3rd floor | 8d | 2025-11-28 A | 2025-12-04 A | CON-MB-L2-1010 | 100% |  | 2025-12-25 | 2026-01-05 |  |  |  | Public | Construction | Site | Building | Structure | Second |
| CON-MB-L2-1040 |  | Exterior & Interior Framing - 2nd Floor | 10d | 2026-01-22 | 2026-02-04 | CON-MB-L2-1020, CON-MB-L2-1090 |  |  |  |  | 4d | 0d |  | Public | Construction | Site | Building | Structure | Second |
|  | 3 | **Third Floor Superstructure** |  | 2025-12-01 | 2026-02-16 |  |  |  |  |  |  |  |  |  |  |  |  |  |  |
| CON-MB-L3-1000 |  | Structural Steel Columns & Beams - 3rd Floor | 14d | 2025-12-01 A | 2025-12-19 A | CON-MB-L2-1020, CON-MB-L2-1000 | 100% |  | 2026-01-01 | 2026-01-20 |  |  |  | Public | Construction | Site | Building | Structure | Third |
| CON-MB-L3-1010 |  | Metal Decking - 4th Floor | 4d | 2025-12-19 A | 2025-12-23 A | CON-MB-L3-1000 | 100% |  | 2026-01-21 | 2026-01-26 |  |  |  | Public | Construction | Site | Building | Structure | Third |
| CON-MB-L3-1020 |  | Prep & Pour SOD - 4th Floor | 8d | 2025-12-22 A | 2026-01-05 | CON-MB-L3-1010 | 62% | 3d | 2026-02-02 | 2026-02-11 | 0d |  |  | Public | Construction | Site | Building | Structure | Third |
| CON-MB-L3-1040 |  | Exterior & Interior Framing - 3rd Floor | 10d | 2026-02-03 | 2026-02-16 | CON-MB-L3-1020, CON-MB-L3-1060 |  |  |  |  | 50d | 0d |  | Public | Construction | Site | Building | Structure | Third |
|  | 6 | **Fourth Floor Superstructure** |  | 2026-01-06 | 2026-03-02 |  |  |  |  |  |  |  |  |  |  |  |  |  |  |
| CON-MB-L4-1000 |  | Structural Steel Columns & Beams - 4th Floor | 14d | 2026-01-06 | 2026-01-23 | CON-MB-L3-1020, CON-MB-L3-1000 |  |  |  |  | 0d |  |  | Public | Construction | Site | Building | Structure | Fourth |
| CON-MB-L4-1010 |  | Metal Decking - 5th Floor | 4d | 2026-01-26 | 2026-01-29 | CON-MB-L4-1000 |  |  |  |  | 0d |  |  | Public | Construction | Site | Building | Structure | Fourth |
| CON-MB-L4-1020 |  | Prep & Pour SOD - 5th Floor | 4d | 2026-01-30 | 2026-02-04 | CON-MB-L4-1010 |  |  |  |  | 0d |  |  | Public | Construction | Site | Building | Structure | Fourth |
| CON-MB-L4-1030 |  | Exterior & Interior Framing - 4th Floor | 10d | 2026-02-17 | 2026-03-02 | CON-MB-L4-1020, CON-MB-L4-1050 |  |  |  |  | 0d |  |  | Public | Construction | Site | Building | Structure | Fourth |

| ID | WBS | Activity | Duration | Start | Finish | Predecessors | Complete | Remaining | Planned start | Planned finish | Total float | Free float | 1 | 2 | 3 | 4 | 5 | 6 |
| --- | --- | --- | --- | --- | --- | --- | --- | --- | --- | --- | --- | --- | --- | --- | --- | --- | --- | --- |
|  | 4 | **Fifth Floor Superstructure** |  | 2026-02-05 | 2026-04-17 |  |  |  |  |  |  |  |  |  |  |  |  |  |
| CON-MB-L5-1000 |  | Structural Steel Columns & Beams - 5th Floor | 14d | 2026-02-05 | 2026-02-24 | CON-MB-L4-1020, CON-MB-L4-1000 |  |  |  |  | 9d | 0d | Public | Construction | Site | Building | Structure | Fifth |
| CON-MB-L5-1010 |  | Framing & Metal Decking - Roof | 10d | 2026-02-25 | 2026-03-10 | CON-MB-L5-1000 |  |  |  |  | 9d | 0d | Public | Construction | Site | Building | Structure | Fifth |
| CON-MB-L5-1050 |  | Exterior & Interior Framing - 5th Floor | 10d | 2026-04-06 | 2026-04-17 | CON-MB-L5-1000, CON-MB-L5-1010, CON-MB-L5-1040 SS+3d |  |  |  |  | 9d | 0d | Public | Construction | Site | Building | Structure | Fifth |
|  | 3 | **Interior Finishes** |  | 2025-09-15 | 2026-06-30 |  |  |  |  |  |  |  |  |  |  |  |  |  |
| CON-MB-2020 |  | Winterization | 5d | 2025-12-22 A | 2025-12-29 A | MIL-1000 SS | 100% |  | 2026-01-01 | 2026-01-07 |  |  |  |  |  |  |  |  |
| CON-MB-2000 |  | Grind/Seal Floors (Full Building) | 10d | 2026-06-05 | 2026-06-18 | CON-MB-L1-1270, CON-MB-L2-1070, CON-MB-L3-1150, CON-MB-L4-1140, CON-MB-L5-1170 |  |  |  |  | 29d | 0d |  |  |  |  |  |  |
| CON-MB-2010 |  | Final Cleaning (Full Building) | 15d | 2026-06-09 | 2026-06-29 | CON-MB-2000 SS+2d, CON-MB-2000 FF+2d |  |  |  |  | 37d |  |  |  |  |  |  |  |
|  | 6 | **Elevator** |  | 2025-09-15 | 2026-06-30 |  |  |  |  |  |  |  |  |  |  |  |  |  |
| CON-ELEV-1000 |  | Elevator 3 CMU Shaft | 12d | 2025-09-15 A | 2025-09-30 A | CON-MB-1020 FS+2d | 100% |  |  |  |  |  | Public | Construction | Site | Building | Structure | First |
| CON-ELEV-1010 |  | Elevator 1/2 CMU Shaft | 14d | 2025-10-01 A | 2025-10-17 A | CON-ELEV-1000 | 100% |  | 2026-01-01 | 2026-01-20 |  |  | Public | Construction | Site | Building | Structure | First |
| CON-ELEV-1020 |  | Elevator Install | 65d | 2026-04-01 | 2026-06-30 | CON-MB-L5-1020, PROC-1020, PROC-1100, CON-ELEV-1010, CON-ELEV-1000 |  |  |  |  | 26d | 14d | Public | Construction | Site | Building | Structure | Elevator |
|  | 8 | **Stair Shafts** |  | 2025-09-15 | 2026-01-13 |  |  |  |  |  |  |  |  |  |  |  |  |  |
| CON-STAIR-1000 |  | Stair Tower B CMU | 25d | 2025-09-15 A | 2025-10-24 A | CON-MB-1020 FS+2d | 100% |  | 2025-09-15 | 2025-10-17 |  |  | Public | Construction | Site | Building | Structure | First |
| CON-STAIR-1010 |  | Stair Tower A CMU | 10d | 2025-10-03 A | 2025-10-17 A | CON-ELEV-1000 | 100% |  | 2025-11-03 | 2025-11-14 |  |  | Public | Construction | Site | Building | Structure | First |
| CON-STAIR-1020 |  | Stair Stringers and Pans | 10d | 2025-12-29 A | 2026-01-07 | CON-STAIR-1000, CON-STAIR-1010 | 50% | 5d | 2026-01-01 | 2026-01-14 | 143d | 0d | Public | Construction | Site | Building | Structure | Second |
| CON-STAIR-1030 |  | Doors & HW - Stairs | 2d | 2026-01-08 | 2026-01-09 | CON-STAIR-1010, CON-STAIR-1000, CON-STAIR-1020 |  |  |  |  | 143d | 0d | Public | Construction | Site | Building | Structure | Second |
| CON-STAIR-1040 |  | Prep/Paint - Stairs | 2d | 2026-01-12 | 2026-01-13 | CON-STAIR-1020, CON-STAIR-1030 |  |  |  |  | 161d | 156d | Public | Construction | Site | Building | Structure | Second |
|  | 1 | **First Floor Interior Finishes** |  | 2025-12-12 | 2026-05-06 |  |  |  |  |  |  |  |  |  |  |  |  |  |
| CON-MB-L1-1130 |  | Fireproofing Structural Steel - 1st Floor | 8d | 2025-12-12 A | 2026-01-09 | CON-MB-L1-1070, CON-MB-2020 | 12% | 7d | 2026-01-01 | 2026-01-12 | 2d | 0d | Public | Construction | Site | Building | Structure | First |
| CON-MB-L1-1140 |  | OH & Wall Plumbing Rough In - 1st Floor | 3d | 2026-01-12 | 2026-01-14 | CON-MB-L1-1130, CON-MB-L1-1090 |  |  |  |  | 68d | 23d | Public | Construction | Site | Building | Structure | First |
| CON-MB-L1-1150 |  | Electric & Low Voltage OH & Wall Rough In - 1st Floor | 10d | 2026-01-12 | 2026-01-23 | CON-MB-L1-1130, CON-MB-L1-1090 |  |  |  |  | 61d | 16d | Public | Construction | Site | Building | Structure | First |
| CON-MB-L1-1170 |  | Sprinkler Rough In - 1st Floor | 10d | 2026-01-12 | 2026-01-23 | CON-MB-L1-1130, CON-MB-L1-1090, PROC-1010 |  |  |  |  | 143d | 131d | Public | Construction | Site | Building | Structure | First |
| CON-MB-L1-1160 |  | HVAC Rough In - 1st Floor | 3d | 2026-02-12 | 2026-02-16 | CON-MB-L1-1130, PROC-1130, CON-MB-L1-1090 |  |  |  |  | 45d | 0d | Public | Construction | Site | Building | Structure | First |
| CON-MB-L1-1180 |  | OH & Wall MEP Inspections - 1st Floor | 2d | 2026-02-17 | 2026-02-18 | CON-MB-L1-1140, CON-MB-L1-1150, CON-MB-L1-1160 |  |  |  |  | 45d | 16d | Public | Construction | Site | Building | Structure | First |
| CON-MB-L1-1270 |  | Janus Wall Panels - 1st Floor | 15d | 2026-03-13 | 2026-04-02 | CON-MB-L2-1070, CON-MB-L1-1180 |  |  |  |  | 29d | 0d | Public | Construction | Site | Building | Structure | First |
| CON-MB-L1-1190 |  | Hang & Finish Drywall - 1st Floor | 7d | 2026-04-17 | 2026-04-27 | CON-MB-L1-1180, MIL-1010 |  |  |  |  | 80d | 0d | Public | Construction | Site | Building | Structure | First |
| CON-MB-L1-1200 |  | Doors & HW - 1st Floor | 2d | 2026-04-28 | 2026-04-29 | CON-MB-L1-1180, CON-MB-L1-1190 |  |  |  |  | 102d | 97d | Public | Construction | Site | Building | Structure | First |
| CON-MB-L1-1210 |  | Prep/Paint Walls & Ceilings - 1st Floor | 2d | 2026-04-28 | 2026-04-29 | CON-MB-L1-1190 |  |  |  |  | 80d | 0d | Public | Construction | Site | Building | Structure | First |
| CON-MB-L1-1220 |  | Plumbing Fixtures - 1st Floor | 2d | 2026-04-30 | 2026-05-01 | CON-MB-L1-1210 |  |  |  |  | 83d | 78d | Public | Construction | Site | Building | Structure | First |
| CON-MB-L1-1230 |  | Diffusers - 1st Floor | 5d | 2026-04-30 | 2026-05-06 | CON-MB-L1-1210 |  |  |  |  | 80d | 75d | Public | Construction | Site | Building | Structure | First |
| CON-MB-L1-1240 |  | Light Fixtures - 1st Floor | 5d | 2026-04-30 | 2026-05-06 | CON-MB-L1-1210, PROC-1070 |  |  |  |  | 80d | 75d | Public | Construction | Site | Building | Structure | First |

| ID | WBS | Activity | Duration | Start | Finish | Predecessors | Total float | Free float | 1 | 2 | 3 | 4 | 5 | 6 |
| --- | --- | --- | --- | --- | --- | --- | --- | --- | --- | --- | --- | --- | --- | --- |
|  | 2 | **Second Floor Interior Finishes** |  | 2026-01-12 | 2026-03-12 |  |  |  |  |  |  |  |  |  |
| CON-MB-L2-1090 |  | Fireproofing Structural Steel - 2nd Floor | 8d | 2026-01-12 | 2026-01-21 | CON-MB-L1-1130, CON-MB-L2-1020 | 2d | 0d | Public | Construction | Site | Building | Structure | Second |
| CON-MB-L2-1060 |  | Doors & HW - 2nd Floor | 2d | 2026-02-05 | 2026-02-06 | CON-MB-L2-1040 | 141d | 0d | Public | Construction | Site | Building | Structure | Second |
| CON-MB-L2-1100 |  | Electric OH & Wall Rough In - 2nd Floor | 10d | 2026-02-05 | 2026-02-18 | CON-MB-L2-1090, CON-MB-L2-1040 | 29d | 0d | Public | Construction | Site | Building | Structure | Second |
| CON-MB-L2-1120 |  | Sprinkler Rough In - 2nd Floor | 10d | 2026-02-05 | 2026-02-18 | CON-MB-L2-1090, CON-MB-L2-1040 | 125d | 113d | Public | Construction | Site | Building | Structure | Second |
| CON-MB-L2-1080 |  | Prep/Paint Walls - 2nd Floor | 2d | 2026-02-09 | 2026-02-10 | CON-MB-L2-1060 | 141d | 136d | Public | Construction | Site | Building | Structure | Second |
| CON-MB-L2-1110 |  | HVAC Rough In - 2nd Floor | 5d | 2026-02-12 | 2026-02-18 | CON-MB-L2-1090, PROC-1130, CON-MB-L2-1040 | 29d | 0d | Public | Construction | Site | Building | Structure | Second |
| CON-MB-L2-1140 |  | OH & Wall MEP Inspections - 2nd Floor | 1d | 2026-02-19 | 2026-02-19 | CON-MB-L2-1100, CON-MB-L2-1040, CON-MB-L2-1110 | 29d | 0d | Public | Construction | Site | Building | Structure | Second |
| CON-MB-L2-1070 |  | Janus Wall Panels - 2nd Floor | 15d | 2026-02-20 | 2026-03-12 | CON-MB-L2-1140 | 29d | 0d | Public | Construction | Site | Building | Structure | Second |
| CON-MB-L2-1150 |  | Diffusers - 2nd Floor | 5d | 2026-02-20 | 2026-02-26 | CON-MB-L2-1140 | 146d | 141d | Public | Construction | Site | Building | Structure | Second |
| CON-MB-L2-1160 |  | Light Fixtures - 2nd Floor | 5d | 2026-02-20 | 2026-02-26 | CON-MB-L2-1140, PROC-1070 | 146d | 141d | Public | Construction | Site | Building | Structure | Second |
|  | 3 | **Third Floor Interior Finishes** |  | 2026-01-22 | 2026-05-07 |  |  |  |  |  |  |  |  |  |
| CON-MB-L3-1060 |  | Fire Proofing Structural Steel - 3rd Floor | 8d | 2026-01-22 | 2026-02-02 | CON-MB-L2-1090, CON-MB-L3-1020, CON-MB-L3-1000 | 2d | 0d | Public | Construction | Site | Building | Structure | Third |
| CON-MB-L3-1070 |  | OH & Wall Plumbing Rough In - 3rd Floor | 3d | 2026-02-17 | 2026-02-19 | CON-MB-L3-1060, CON-MB-L3-1040 | 57d | 7d | Public | Construction | Site | Building | Structure | Third |
| CON-MB-L3-1080 |  | Electric & Low Voltage OH & Wall Rough In - 3rd Floor | 10d | 2026-02-17 | 2026-03-02 | CON-MB-L3-1060, CON-MB-L3-1040 | 50d | 0d | Public | Construction | Site | Building | Structure | Third |
| CON-MB-L3-1090 |  | HVAC Rough In - 3rd Floor | 5d | 2026-02-17 | 2026-02-23 | CON-MB-L3-1060, PROC-1130, CON-MB-L3-1040 | 55d | 5d | Public | Construction | Site | Building | Structure | Third |
| CON-MB-L3-1100 |  | Sprinkler Rough In - 3rd Floor | 10d | 2026-02-17 | 2026-03-02 | CON-MB-L3-1060, CON-MB-L3-1040 | 117d | 105d | Public | Construction | Site | Building | Structure | Third |
| CON-MB-L3-1120 |  | OH & Wall MEP Inspections - 3rd Floor | 2d | 2026-03-03 | 2026-03-04 | CON-MB-L3-1090, CON-MB-L3-1070, CON-MB-L3-1080 | 50d | 21d | Public | Construction | Site | Building | Structure | Third |
| CON-MB-L3-1150 |  | Janus Wall Panels - 3rd Floor | 15d | 2026-04-03 | 2026-04-23 | CON-MB-L1-1270, CON-MB-L3-1120 | 29d | 0d | Public | Construction | Site | Building | Structure | Third |
| CON-MB-L3-1130 |  | Hang/Finish Drywall - 3rd Floor | 7d | 2026-04-17 | 2026-04-27 | CON-MB-L3-1120, MIL-1010 | 69d | 0d | Public | Construction | Site | Building | Structure | Third |
| CON-MB-L3-1140 |  | Prep/Paint Walls & Ceilings - 3rd Floor | 3d | 2026-04-28 | 2026-04-30 | CON-MB-L3-1130 | 69d | 0d | Public | Construction | Site | Building | Structure | Third |
| CON-MB-L3-1160 |  | Plumbing Fixtures - 3rd Floor | 4d | 2026-05-01 | 2026-05-06 | CON-MB-L3-1140 | 70d | 58d | Public | Construction | Site | Building | Structure | Third |
| CON-MB-L3-1170 |  | Diffusers - 3rd Floor | 5d | 2026-05-01 | 2026-05-07 | CON-MB-L3-1140 | 69d | 57d | Public | Construction | Site | Building | Structure | Third |
| CON-MB-L3-1180 |  | Light Fixtures - 3rd Floor | 5d | 2026-05-01 | 2026-05-07 | CON-MB-L3-1140, PROC-1070 | 69d | 57d | Public | Construction | Site | Building | Structure | Third |

| ID | WBS | Activity | Duration | Start | Finish | Predecessors | Total float | Free float | 1 | 2 | 3 | 4 | 5 | 6 |
| --- | --- | --- | --- | --- | --- | --- | --- | --- | --- | --- | --- | --- | --- | --- |
|  | 4 | **Fourth Floor Interior Finishes** |  | 2026-02-05 | 2026-05-14 |  |  |  |  |  |  |  |  |  |
| CON-MB-L4-1050 |  | Fire Proofing Structural Steel - 4th Floor | 8d | 2026-02-05 | 2026-02-16 | CON-MB-L3-1060, CON-MB-L4-1020, CON-MB-L3-1020 | 0d |  | Public | Construction | Site | Building | Structure | Fourth |
| CON-MB-L4-1060 |  | Electric OH & Wall Rough In - 4th Floor | 10d | 2026-03-03 | 2026-03-16 | CON-MB-L4-1050 FS+2d, CON-MB-L4-1030 | 56d | 0d | Public | Construction | Site | Building | Structure | Fourth |
| CON-MB-L4-1070 |  | HVAC Rough In - 4th Floor | 5d | 2026-03-03 | 2026-03-09 | CON-MB-L4-1050 FS+2d, PROC-1130, CON-MB-L4-1030 | 61d | 5d | Public | Construction | Site | Building | Structure | Fourth |
| CON-MB-L4-1080 |  | Sprinkler Rough In - 4th Floor | 10d | 2026-03-03 | 2026-03-16 | CON-MB-L4-1050 FS+2d, CON-MB-L4-1030 | 107d | 95d | Public | Construction | Site | Building | Structure | Fourth |
| CON-MB-L4-1100 |  | OH & Wall MEP Inspections - 4th Floor | 1d | 2026-03-17 | 2026-03-17 | CON-MB-L4-1070, CON-MB-L4-1060 | 56d | 0d | Public | Construction | Site | Building | Structure | Fourth |
| CON-MB-L4-1110 |  | Prep/Paint Walls - 4th Floor | 2d | 2026-03-18 | 2026-03-19 | CON-MB-L4-1100 | 104d | 92d | Public | Construction | Site | Building | Structure | Fourth |
| CON-MB-L4-1120 |  | Diffusers - 4th Floor | 5d | 2026-03-18 | 2026-03-24 | CON-MB-L4-1100 | 101d | 89d | Public | Construction | Site | Building | Structure | Fourth |
| CON-MB-L4-1130 |  | Light Fixtures - 4th Floor | 5d | 2026-03-18 | 2026-03-24 | CON-MB-L4-1100, PROC-1070 | 101d | 89d | Public | Construction | Site | Building | Structure | Fourth |
| CON-MB-L4-1140 |  | Janus Wall Panels - 4th Floor | 15d | 2026-04-24 | 2026-05-14 | CON-MB-L3-1150, CON-MB-L4-1100 | 29d | 0d | Public | Construction | Site | Building | Structure | Fourth |
|  | 5 | **Fifth Floor Interior Finishes** |  | 2026-04-01 | 2026-06-04 |  |  |  |  |  |  |  |  |  |
| CON-MB-L5-1040 |  | Fire Proofing Structural Steel - 5th Floor | 8d | 2026-04-01 | 2026-04-10 | CON-MB-L5-1000, CON-MB-L4-1020, CON-MB-L4-1050, CON-MB-L5-1020 | 9d | 0d | Public | Construction | Site | Building | Structure | Fifth |
| CON-MB-L5-1060 |  | Electric & Low Voltage OH & Wall Rough In - 5th Floor | 10d | 2026-04-20 | 2026-05-01 | CON-MB-L5-1050, CON-MB-L5-1040 | 30d | 0d | Public | Construction | Site | Building | Structure | Fifth |
| CON-MB-L5-1070 |  | OH & Wall Plumbing Rough In - 5th Floor | 3d | 2026-04-20 | 2026-04-22 | CON-MB-L5-1050, CON-MB-L5-1040 | 37d | 7d | Public | Construction | Site | Building | Structure | Fifth |
| CON-MB-L5-1080 |  | HVAC Rough In - 5th Floor | 5d | 2026-04-20 | 2026-04-24 | CON-MB-L5-1050, PROC-1130, CON-MB-L5-1040 | 35d | 5d | Public | Construction | Site | Building | Structure | Fifth |
| CON-MB-L5-1090 |  | Sprinkler Rough In - 5th Floor | 10d | 2026-04-20 | 2026-05-01 | CON-MB-L5-1050, CON-MB-L5-1040 | 73d | 61d | Public | Construction | Site | Building | Structure | Fifth |
| CON-MB-L5-1110 |  | OH & Wall MEP Inspections - 5th Floor | 1d | 2026-05-04 | 2026-05-04 | CON-MB-L5-1060, CON-MB-L5-1070, CON-MB-L5-1080 | 30d | 0d | Public | Construction | Site | Building | Structure | Fifth |
| CON-MB-L5-1120 |  | Hang/Finish Drywall - 5th Floor | 7d | 2026-05-05 | 2026-05-13 | CON-MB-L5-1110, MIL-1010 | 30d | 0d | Public | Construction | Site | Building | Structure | Fifth |
| CON-MB-L5-1130 |  | Prep/Paint Walls - 5th Floor | 2d | 2026-05-14 | 2026-05-15 | CON-MB-L5-1120 | 86d | 0d | Public | Construction | Site | Building | Structure | Fifth |
| CON-MB-L5-1170 |  | Janus Wall Panels - 5th Floor | 15d | 2026-05-15 | 2026-06-04 | CON-MB-L5-1120, CON-MB-L4-1140, CON-MB-L5-1110 | 29d | 0d | Public | Construction | Site | Building | Structure | Fifth |
| CON-MB-L5-1140 |  | Plumbing Fixtures - 5th Floor | 4d | 2026-05-18 | 2026-05-21 | CON-MB-L5-1130 | 86d | 81d | Public | Construction | Site | Building | Structure | Fifth |
| CON-MB-L5-1150 |  | Diffusers - 5th Floor | 1d | 2026-05-18 | 2026-05-18 | CON-MB-L5-1130 | 89d | 84d | Public | Construction | Site | Building | Structure | Fifth |
| CON-MB-L5-1160 |  | Light Fixtures - 5th Floor | 1d | 2026-05-18 | 2026-05-18 | CON-MB-L5-1130, PROC-1070 | 89d | 84d | Public | Construction | Site | Building | Structure | Fifth |
|  | 7 | **Switchgear Room** |  | 2026-01-20 | 2026-05-05 |  |  |  |  |  |  |  |  |  |
| CON-POW-1000 |  | Switchgear Room Enclosure | 10d | 2026-01-20 | 2026-02-02 | CON-MB-L1-1250, CON-MB-L2-1020 | 61d | 0d | Public | Construction | Site | Building | Structure | Permanent |
| CON-POW-1010 |  | Install Switchgear Equipment | 15d | 2026-02-03 | 2026-02-23 | PROC-1060, CON-POW-1000 | 61d | 0d | Public | Construction | Site | Building | Structure | Permanent |
| CON-POW-1020 |  | Switchgear Lights and Power | 15d | 2026-02-24 | 2026-03-16 | CON-POW-1010, PROC-1070 | 61d | 0d | Public | Construction | Site | Building | Structure | Permanent |
| CON-POW-1030 |  | City Inspection | 1d | 2026-03-17 | 2026-03-17 | CON-POW-1020 | 61d | 0d | Public | Construction | Site | Building | Structure | Permanent |
| CON-POW-1040 |  | Dominion Primary | 20d | 2026-03-18 | 2026-04-14 | CON-POW-1030 | 61d | 0d | Public | Construction | Site | Building | Structure | Permanent |
| CON-POW-1050 |  | Dominion Transformer | 5d | 2026-04-15 | 2026-04-21 | CON-POW-1040 | 61d | 0d | Public | Construction | Site | Building | Structure | Permanent |
| CON-POW-1060 |  | Dominion Secondary | 5d | 2026-04-22 | 2026-04-28 | CON-POW-1050 | 61d | 0d | Public | Construction | Site | Building | Structure | Permanent |
| CON-POW-1070 |  | Power Activation | 5d | 2026-04-29 | 2026-05-05 | CON-POW-1060 | 61d | 0d | Public | Construction | Site | Building | Structure | Permanent |

| ID | WBS | Activity | Duration | Start | Finish | Predecessors | Total float | Free float | 1 | 2 | 3 | 4 | 5 | 6 |
| --- | --- | --- | --- | --- | --- | --- | --- | --- | --- | --- | --- | --- | --- | --- |
|  | 2 | **Exterior Finishes** |  | 2026-01-12 | 2026-07-13 |  |  |  |  |  |  |  |  |  |
| CON-MB-L1-1250 |  | Exterior Sheathing - 1st Floor | 6d | 2026-01-12 | 2026-01-19 | CON-MB-L1-1090 | 10d | 0d | Public | Construction | Site | Building | Structure | First |
| CON-MB-L2-1050 |  | Exterior Sheathing - 2nd Floor | 6d | 2026-01-27 | 2026-02-03 | CON-MB-L2-1040 SS+3d | 4d | 0d | Public | Construction | Site | Building | Structure | Second |
| CON-MB-L1-1280 |  | Perimeter Waterproofing - 1st Floor | 3d | 2026-02-04 | 2026-02-06 | CON-MB-L2-1050, CON-MB-1040 | 4d | 0d |  |  |  |  |  |  |
| CON-MB-L3-1050 |  | Exterior Sheathing - 3rd Floor | 6d | 2026-02-06 | 2026-02-13 | CON-MB-L3-1040 SS+3d | 55d | 44d | Public | Construction | Site | Building | Structure | Third |
| CON-MB-L5-1100 |  | Brick Facade - 1st Floor | 30d | 2026-02-09 | 2026-03-20 | CON-MB-L1-1280 | 4d | 0d |  |  |  |  |  |  |
| CON-MB-L4-1040 |  | Exterior Sheathing - 4th Floor | 6d | 2026-02-20 | 2026-02-27 | CON-MB-L4-1030 SS+3d | 0d |  | Public | Construction | Site | Building | Structure | Fourth |
| CON-MB-L1-1260 |  | Perimeter Waterproofing West Elevation (Excluding 5th Floor) | 4d | 2026-03-02 | 2026-03-05 | CON-MB-L4-1040 | 0d |  |  |  |  |  |  |  |
| CON-MB-EXT-1000 |  | Brick West Elevation (Excluding 5th Floor) | 20d | 2026-03-06 | 2026-04-02 | PROC-1030, SITE-MB-1070, CON-MB-L1-1260, CON-MB-L5-1100 FF+5d, CON-MB-L4-1040 | 0d |  | Public | Construction | Site | Building | Exterior |  |
| CON-MB-L2-1280 |  | Perimeter Waterproofing North Elevation (Excluding 5th Floor) | 4d | 2026-03-06 | 2026-03-11 | CON-MB-L2-1050, CON-MB-L1-1260 | 16d |  |  |  |  |  |  |  |
| CON-MB-EXT-1130 |  | Storefront | 20d | 2026-03-23 | 2026-04-17 | CON-MB-L5-1100 | 66d | 0d | Public | Construction | Site | Building | Exterior |  |
| CON-MB-EXT-1020 |  | Brick North and West Elevations (5th Floor) | 25d | 2026-04-03 | 2026-05-07 | CON-MB-EXT-1000, SITE-MB-1070, CON-MB-L2-1280 | 0d |  | Public | Construction | Site | Building | Exterior |  |
| CON-MB-EXT-1040 |  | Stucco West Elevation | 15d | 2026-04-03 | 2026-04-23 | CON-MB-EXT-1000, CON-MB-L1-1260 | 25d | 0d | Public | Construction | Site | Building | Exterior |  |
| CON-MB-L5-1030 |  | Exterior Sheathing - 5th Floor | 6d | 2026-04-09 | 2026-04-16 | CON-MB-L5-1010, CON-MB-L5-1050 SS+3d | 9d | 0d | Public | Construction | Site | Building | Structure | Fifth |
| CON-MB-L2-1310 |  | Perimeter Waterproofing West/North Elevations (5th Floor) | 2d | 2026-04-17 | 2026-04-20 | CON-MB-L5-1030 | 9d | 0d |  |  |  |  |  |  |
| CON-MB-EXT-1150 |  | Canopies | 7d | 2026-04-20 | 2026-04-28 | CON-MB-EXT-1130 | 66d | 54d | Public | Construction | Site | Building | Exterior |  |
| CON-MB-L2-1290 |  | Perimeter Waterproofing East Elevation | 4d | 2026-04-21 | 2026-04-24 | CON-MB-L3-1050, CON-MB-L2-1280, CON-MB-L5-1030, CON-MB-L2-1310 | 9d | 0d |  |  |  |  |  |  |
| CON-MB-EXT-1070 |  | Glass West Elevation | 7d | 2026-04-24 | 2026-05-04 | CON-MB-EXT-1040 | 41d | 0d | Public | Construction | Site | Building | Exterior |  |
| CON-MB-L2-1300 |  | Perimeter Waterproofing South Elevation | 4d | 2026-04-27 | 2026-04-30 | CON-MB-L4-1040, CON-MB-L2-1290, CON-MB-L5-1030 | 30d | 26d |  |  |  |  |  |  |
| CON-MB-EXT-1090 |  | Glass North Elevation | 7d | 2026-05-05 | 2026-05-13 | CON-MB-EXT-1070 | 41d | 0d | Public | Construction | Site | Building | Exterior |  |
| CON-MB-EXT-1030 |  | Brick East Elevation | 25d | 2026-05-08 | 2026-06-11 | CON-MB-EXT-1020, SITE-MB-1070, CON-MB-L2-1290 | 0d |  | Public | Construction | Site | Building | Exterior |  |
| CON-MB-EXT-1060 |  | Stucco North Elevation | 7d | 2026-05-08 | 2026-05-18 | CON-MB-EXT-1040, CON-MB-EXT-1020, CON-MB-L2-1280 | 15d | 0d | Public | Construction | Site | Building | Exterior |  |
| CON-MB-EXT-1110 |  | Glass East Elevation | 7d | 2026-05-14 | 2026-05-22 | CON-MB-EXT-1090 | 41d | 0d | Public | Construction | Site | Building | Exterior |  |
| CON-MB-EXT-1080 |  | Stucco East Elevation | 14d | 2026-05-19 | 2026-06-05 | CON-MB-EXT-1060, CON-MB-L2-1290 | 15d | 0d | Public | Construction | Site | Building | Exterior |  |
| CON-MB-EXT-1140 |  | Glass South Elevation | 7d | 2026-05-25 | 2026-06-02 | CON-MB-EXT-1110 | 41d | 29d | Public | Construction | Site | Building | Exterior |  |
| CON-MB-EXT-1100 |  | Stucco South Elevation | 7d | 2026-06-08 | 2026-06-16 | CON-MB-EXT-1080, CON-MB-L2-1300 | 15d |  | Public | Construction | Site | Building | Exterior |  |
| CON-MB-EXT-1050 |  | Brick South Elevation | 18d | 2026-06-12 | 2026-07-07 | CON-MB-EXT-1030, SITE-MB-1070, CON-MB-L2-1300 | 0d |  | Public | Construction | Site | Building | Exterior |  |
| CON-MB-EXT-1120 |  | Swing Doors/ Automatic Sliding Entrance | 4d | 2026-07-08 | 2026-07-13 | CON-MB-EXT-1050 | 12d | 0d | Public | Construction | Site | Building | Exterior |  |

| ID | WBS | Activity | Duration | Start | Finish | Predecessors | Complete | Remaining | Planned start | Planned finish | Total float | Free float | Constraint | 1 | 2 | 3 | 4 | 5 | 6 |
| --- | --- | --- | --- | --- | --- | --- | --- | --- | --- | --- | --- | --- | --- | --- | --- | --- | --- | --- | --- |
|  | 5 | **Roofing** |  | 2026-03-11 | 2026-03-31 |  |  |  |  |  |  |  |  |  |  |  |  |  |  |
| CON-MB-L5-1020 |  | Roof Insulation & TPO | 15d | 2026-03-11 | 2026-03-31 | CON-MB-L5-1010 |  |  |  |  | 9d | 0d |  | Public | Construction | Site | Building | Structure | Fifth |
|  | 3 | **Office Building** |  | 2025-07-21 | 2026-01-23 |  |  |  |  |  |  |  |  |  |  |  |  |  |  |
|  | 1 | **Structure - Office** |  | 2025-07-21 | 2025-12-02 |  |  |  |  |  |  |  |  |  |  |  |  |  |  |
| CON-OFF-1000 |  | Prep/Pour SOG - Office Building | 5d | 2025-07-21 A | 2025-07-22 A | SITE-OFF-1020 | 100% |  | 2025-09-30 | 2025-10-06 |  |  |  |  |  |  |  |  |  |
| CON-OFF-1010 |  | Structural Steel - Office Building | 2d | 2025-09-30 A | 2025-09-30 A | CON-OFF-1000 | 100% |  | 2025-09-30 | 2025-10-01 |  |  |  | Public | Construction | Site | Building | New |  |
| CON-OFF-1030 |  | Interior/Exterior Framing - Office Building | 8d | 2025-10-10 A | 2025-10-22 A | CON-OFF-1010 | 100% |  | 2025-11-03 | 2025-11-12 |  |  |  | Public | Construction | Site | Building | New |  |
| CON-OFF-1070 |  | Framing Inspection - Office Building | 1d | 2025-10-22 A | 2025-10-22 A | CON-OFF-1030 | 100% |  | 2025-11-03 | 2025-11-03 |  |  |  | Public | Construction | Site | Building | New |  |
| CON-OFF-1050 |  | Roof Decking - Office Building | 1d | 2025-10-27 A | 2025-10-27 A | CON-OFF-1030, CON-OFF-1010, CON-OFF-1070 | 100% |  | 2025-11-04 | 2025-11-04 |  |  |  | Public | Construction | Site | Building | New |  |
| CON-OFF-1020 |  | Foundation Waterproofing - Office Building | 2d | 2025-10-31 A | 2025-12-02 A | CON-OFF-1000, PROC-1010 SS | 100% |  | 2025-11-03 | 2025-11-04 |  |  |  | Public | Construction | Site | Building | New |  |
|  | 2 | **Interior Finishes - Office** |  | 2025-12-03 | 2026-01-23 |  |  |  |  |  |  |  |  |  |  |  |  |  |  |
| CON-OFF-1080 |  | MEP Rough In - Office Building | 3d | 2025-12-03 A | 2025-12-12 A | CON-OFF-1040, CON-OFF-1070, CON-OFF-1020 | 100% |  | 2026-01-05 | 2026-01-07 |  |  |  | Public | Construction | Site | Building | New |  |
| CON-OFF-1090 |  | MEP Inspections - Office Building | 1d | 2025-12-29 A | 2026-01-02 | CON-OFF-1080 |  | 2d | 2026-01-08 | 2026-01-08 | 143d | 0d |  | Public | Construction | Site | Building | New |  |
| CON-OFF-1100 |  | Hang/Finish Drywall - Office Building | 3d | 2026-01-05 | 2026-01-07 | CON-OFF-1090, CON-OFF-1070 |  |  |  |  | 143d | 0d |  | Public | Construction | Site | Building | New |  |
| CON-OFF-1110 |  | Doors, Frames & Hardware - Office Building | 2d | 2026-01-08 | 2026-01-09 | CON-OFF-1100, CON-OFF-1030 |  |  |  |  | 143d | 0d |  | Public | Construction | Site | Building | New |  |
| CON-OFF-1120 |  | Prep/Paint Walls - Office Building | 2d | 2026-01-12 | 2026-01-13 | CON-OFF-1110 |  |  |  |  | 143d | 0d |  | Public | Construction | Site | Building | New |  |
| CON-OFF-1130 |  | Flooring - Office Building | 5d | 2026-01-14 | 2026-01-20 | CON-OFF-1120 |  |  |  |  | 143d | 0d |  |  |  |  |  |  |  |
| CON-OFF-1140 |  | MEP Finishes, Fixtures, Accessories - Office Building | 2d | 2026-01-21 | 2026-01-22 | CON-OFF-1120, CON-OFF-1130 |  |  |  |  | 143d | 0d |  | Public | Construction | Site | Building | New |  |
| CON-OFF-1150 |  | Millwork - Office Building | 2d | 2026-01-21 | 2026-01-22 | CON-OFF-1110, CON-OFF-1130 |  |  |  |  | 147d | 0d |  | Public | Construction | Site | Building | New |  |
| CON-OFF-1220 |  | Final Cleaning - Office Building | 1d | 2026-01-23 | 2026-01-23 | CON-OFF-1110, CON-OFF-1120, CON-OFF-1130, CON-OFF-1140, CON-OFF-1150, SITE-OFF-1070, CON-OFF-1160 |  |  |  |  | 147d | 4d |  | Public | Construction | Site | Building | New |  |
|  | 3 | **Exterior Finishes - Office** |  | 2025-10-29 | 2026-01-12 |  |  |  |  |  |  |  |  |  |  |  |  |  |  |
| CON-OFF-1040 |  | Roofing - Office Building | 2d | 2025-10-29 A | 2025-10-29 A | CON-OFF-1030, CON-OFF-1050 | 100% |  | 2025-11-05 | 2025-11-06 |  |  | finish on or after 2025-10-07 | Public | Construction | Site | Building | New |  |
| CON-OFF-1060 |  | Exterior Sheathing/Waterproofing - Office Building | 3d | 2025-12-29 A | 2026-01-05 | CON-OFF-1030, CON-OFF-1070, CON-OFF-1050 |  | 3d | 2026-01-01 | 2026-01-05 | 151d | 0d |  |  |  |  |  |  |  |
| CON-OFF-1160 |  | Store Front & Windows - Office Building | 3d | 2026-01-06 | 2026-01-08 | PROC-1080, CON-OFF-1060 |  |  |  |  | 153d | 10d |  | Public | Construction | Site | Building | New |  |
| CON-OFF-1170 |  | Brick Facade - Office Building | 5d | 2026-01-06 | 2026-01-12 | PROC-1030, CON-OFF-1060 |  |  |  |  | 151d | 3d |  | Public | Construction | Site | Building | New |  |

| ID | WBS | Activity | Duration | Start | Finish | Predecessors | Total float | Free float | Constraint | 1 | 2 | 3 | 4 | 5 |
| --- | --- | --- | --- | --- | --- | --- | --- | --- | --- | --- | --- | --- | --- | --- |
|  | 4 | **Final Inspections & Close Out** |  | 2026-01-23 | 2026-09-11 |  |  |  |  |  |  |  |  |  |
|  | 1 | **Office Building** |  | 2026-01-23 | 2026-02-23 |  |  |  |  |  |  |  |  |  |
| CLO-OFF-1030 |  | Final Building Inspections - Office Building | 5d | 2026-01-23 | 2026-01-29 | CON-OFF-1140, CON-OFF-1170, CON-OFF-1090, CON-OFF-1160 | 143d | 0d |  | Public | Construction | Site | Building | Final |
| CLO-OFF-1000 |  | Office Temporary Occupancy | 1d | 2026-01-30 | 2026-01-30 | CON-OFF-1220, CLO-OFF-1030, SITE-OFF-1130 | 143d | 160d | finish on or before 2026-08-19 |  |  |  |  |  |
| CLO-OFF-1040 |  | Punch List Walk - Office Building | 2d | 2026-01-30 | 2026-02-02 | SITE-OFF-1130, SITE-OFF-1100, CLO-OFF-1030, CON-OFF-1220, CON-OFF-1140, CON-OFF-1150, SITE-OFF-1080 | 149d | 0d |  | Public | Construction | Site | Building | Final |
| CLO-OFF-1050 |  | Punch List Corrections - Office Building | 15d | 2026-02-03 | 2026-02-23 | CLO-OFF-1040 | 149d | 144d |  | Public | Construction | Site | Building | Final |
|  | 2 | **Main Building** |  | 2026-07-14 | 2026-09-11 |  |  |  |  |  |  |  |  |  |
| CLO-MB-1000 |  | Fire Alarm Inspection | 5d | 2026-07-14 | 2026-07-20 | CON-MB-EXT-1150, CON-STAIR-1030, CON-MB-EXT-1140, CON-MB-EXT-1120, MIL-1020 SS, CON-MB-2000, PROC-1150 | 12d | 0d |  | Public | Construction | Site | Building | Final |
| CLO-MB-1010 |  | State Inspection for Elevators | 5d | 2026-07-21 | 2026-07-27 | CLO-MB-1000, CON-ELEV-1020, MIL-1020 SS | 12d | 0d |  | Public | Construction | Site | Building | Final |
| CLO-MB-1020 |  | Final Building Inspections | 5d | 2026-07-28 | 2026-08-03 | CLO-MB-1010, CON-MB-L3-1160, CON-MB-L3-1170, CON-MB-L3-1180, CON-MB-L4-1130, CON-MB-L4-1120, CON-MB-L4-1110, CON-MB-L4-1080, CON-MB-L3-1100, CON-MB-L2-1120, CON-MB-L1-1170, CON-MB-L5-1090, MIL-1020 SS | 12d |  |  | Public | Construction | Site | Building | Final |
| CLO-MB-1040 |  | Punch List Walk - Main Building | 2d | 2026-08-20 | 2026-08-21 | SITE-MB-1140, CON-MB-L1-1220, CON-MB-L1-1230, CON-MB-L1-1240, SITE-MB-1090, CON-STAIR-1040, CON-MB-L3-1160, CON-MB-L3-1170, CON-MB-L3-1180, CON-MB-L4-1130, CON-MB-L4-1120, CON-MB-L4-1110, CON-MB-L4-1080, CON-MB-L3-1100, CON-MB-L2-1120, CON-MB-L1-1170, CON-MB-L5-1090, CON-MB-2010, CON-MB-L2-1080, SITE-1030 | 5d | 0d |  | Public | Construction | Site | Building | Final |
| CLO-MB-1050 |  | Punch List Corrections - Main Building | 15d | 2026-08-24 | 2026-09-11 | CLO-MB-1040 | 5d | 0d |  | Public | Construction | Site | Building | Final |

## Activity codes

| Code | Value | Meaning |
| --- | --- | --- |
| 1 | Public | Public Storage Fairfax VA |
| 3 | Long | Long Lead Items |
| 3 | Site | Site Work Utilities |
| 5 | Exterior | Exterior Building |
| 5 | Final | Final Inspections& Close Out |
| 5 | New | New Office |
| 6 | Fifth | Fifth Floor Structural & Interior Finishes |
| 6 | First | First Floor Structure & Interior Framing |
| 6 | Fourth | Fourth Floor Structural & Interior Finishes |
| 6 | Permanent | Permanent Power |
| 6 | Second | Second Floor Structural & Interior Finishes |
| 6 | Third | Third Floor Structural & Interior Finishes |
