# Public Storage Fairfax VA - JAN 2026

Schedule from Primavera P6, 2025-05-05 to 2026-09-04, data date 2026-01-31, A marks actual dates.
Must finish by 2026-08-19

## Calendars

- 5 Day: Mon-Fri 08:00-12:00, 13:00-17:00; Sat-Sun off.
- G7: Mon-Sun 08:00-12:00, 13:00-17:00.

## Schedule

| ID | WBS | Activity | Type | Duration | Start | Finish | Predecessors | Complete | Remaining | Planned start | Planned finish | Total float | Free float | Constraint | Calendar | 1 | 2 | 3 |
| --- | --- | --- | --- | --- | --- | --- | --- | --- | --- | --- | --- | --- | --- | --- | --- | --- | --- | --- |
|  | 1 | **Public Storage Fairfax VA** |  |  | 2025-05-05 | 2026-09-04 |  |  |  |  |  |  |  |  |  |  |  |  |
|  | 3 | **Milestones** |  |  | 2025-05-05 | 2026-09-04 |  |  |  |  |  |  |  |  |  |  |  |  |
| MIL-1000 |  | Notice to Proceed (05.05.25) | milestone | 0d | 2025-05-05 A | 2025-05-05 A |  | 100% |  |  |  |  |  |  |  | Public | Precon |  |
| MIL-1010 |  | Weathertight - Main Building | milestone | 0d | 2026-05-01 | 2026-05-01 | CON-MB-L1-1260 FF, CON-MB-L5-1020 FF, CON-MB-L3-1050 FF, CON-MB-L4-1040 FF, CON-MB-L5-1030 FF, CON-MB-L1-1250 FF, CON-MB-L2-1050 FF |  |  |  |  | 22d | 0d |  |  |  |  |  |
| MIL-1020 |  | Permanent Power | milestone | 0d | 2026-05-20 | 2026-05-20 | CON-POW-1070 |  |  |  |  | 45.8d | 0d |  |  |  |  |  |
| MIL-1030 |  | Substantial Completion (08.19.26) | milestone | 0d | 2026-08-12 | 2026-08-12 | CLO-MB-1020 FF, SITE-MB-1140 FF, CON-MB-2010 FF, SITE-MB-1090 FF, CLO-OFF-1000 FF |  |  |  |  | 7d | 23d | finish on or before 2026-08-19 | G7 |  |  |  |
| MIL-1040 |  | Final Completion - Main Building | milestone | 0d | 2026-09-04 | 2026-09-04 | MIL-1030, CLO-MB-1050, CLO-OFF-1050 |  |  |  |  | -16d | 0d | finish on or before 2026-09-19 | G7 |  |  |  |
|  | 5 | **Impacts/Delays** |  |  | 2026-01-26 | 2026-02-13 |  |  |  |  |  |  |  |  |  |  |  |  |
|  | 1 | **Fragnet 001 - Weather Delays** |  |  | 2026-01-26 | 2026-02-13 |  |  |  |  |  |  |  |  |  |  |  |  |
| FRAG01-1000 |  | Site Shutdown Due to Ice and Road Conditions |  | 2d | 2026-01-26 A | 2026-01-27 A | MIL-1000 SS | 100% |  | 2026-02-02 | 2026-02-03 |  |  |  |  |  |  |  |
| FRAG01-1010 |  | Labor Crew Clear Snow and Start Tenting |  | 5d | 2026-01-28 A | 2026-02-03 | FRAG01-1000 | 60% | 2d | 2026-02-04 | 2026-02-10 | -9d | 3d |  |  |  |  |  |
| FRAG01-1020 |  | Temporary Heat Permit Obtained |  | 7d | 2026-01-29 A | 2026-02-06 | FRAG01-1000 | 29% | 5d | 2026-02-09 | 2026-02-17 | -12d | 0d |  |  |  |  |  |
| FRAG01-1030 |  | Propane Heaters Installed, Melt Snow/Ice |  | 5d | 2026-02-09 | 2026-02-13 | FRAG01-1020, FRAG01-1010 |  |  |  |  | -12d | 0d |  |  |  |  |  |
|  | 1 | **Preconstruction** |  |  | 2025-05-05 | 2026-03-06 |  |  |  |  |  |  |  |  |  |  |  |  |
|  | 1 | **Procurement** |  |  | 2025-05-05 | 2026-03-06 |  |  |  |  |  |  |  |  |  |  |  |  |
| PROC-1000 |  | Precon Construction |  | 1d | 2025-05-05 A | 2025-05-05 A | MIL-1000 SS | 100% |  |  |  |  |  |  |  | Public | Precon |  |
| PROC-1010 |  | Contractor Procurement |  | 60d | 2025-05-06 A | 2025-11-07 A | MIL-1000, PROC-1000 | 100% |  | 2025-05-06 | 2025-07-28 |  |  |  |  |  |  |  |
|  | 2 | **Long Lead Items** |  |  | 2025-06-12 | 2026-03-06 |  |  |  |  |  |  |  |  |  |  |  |  |
| PROC-1020 |  | Elevator Submittal |  | 23d | 2025-06-12 A | 2025-07-14 A | PROC-1010 | 100% |  |  |  |  |  |  |  | Public | Construction | Long |
| PROC-1030 |  | Brick Submittal and Fabrication |  | 60d | 2025-07-01 A | 2025-09-19 A | MIL-1000 SS | 100% |  | 2025-07-01 | 2025-09-22 |  |  |  |  | Public | Construction | Long |
| PROC-1120 |  | Ferguson Tank Submittal |  | 20d | 2025-07-29 A | 2025-10-15 A | PROC-1010 | 100% |  | 2025-11-17 | 2025-12-12 |  |  |  |  |  |  |  |
| PROC-1040 |  | Switchgear Submittal |  | 15d | 2025-07-31 A | 2025-08-20 A | PROC-1010 | 100% |  |  |  |  |  |  |  | Public | Construction | Long |
| PROC-1050 |  | Light Fixtures Submittal |  | 20d | 2025-08-04 A | 2025-08-29 A | PROC-1010 | 100% |  |  |  |  |  |  |  | Public | Construction | Long |
| PROC-1060 |  | Switchgear Fabrication |  | 30d | 2025-08-21 A | 2025-09-30 A | PROC-1040 | 100% |  | 2025-08-21 | 2025-10-01 |  |  |  |  | Public | Construction | Long |
| PROC-1070 |  | Light Fixtures Fabrication |  | 20d | 2025-09-01 A | 2025-09-25 A | PROC-1050 | 100% |  | 2025-09-01 | 2025-09-26 |  |  |  |  | Public | Construction | Long |
| PROC-1080 |  | Glass Field Measurement and Fabrication - Office |  | 45d | 2025-09-15 A | 2025-12-22 A | PROC-1010 SS | 100% |  | 2025-09-15 | 2025-11-14 |  |  |  |  | Public | Construction | Long |
| PROC-1110 |  | HVAC Equipment Submittal |  | 20d | 2025-09-15 A | 2025-09-30 A | PROC-1010 | 100% |  | 2025-10-15 | 2025-11-11 |  |  |  |  | Public | Construction | Long |
| PROC-1130 |  | HVAC Equipment Fabrication |  | 70d | 2025-10-20 A | 2026-01-16 A | PROC-1110 | 100% |  | 2025-12-15 | 2026-03-20 |  |  |  |  | Public | Construction | Long |
| PROC-1090 |  | Fire Pump Submittal |  | 40d | 2025-10-27 A | 2026-02-02 | PROC-1010 | 98% | 1d | 2025-09-29 | 2025-11-21 | 107d | 0d |  |  | Public | Construction | Long |
| PROC-1140 |  | Ferguson Tank Fabrication |  | 15d | 2025-10-27 A | 2025-11-21 A | PROC-1120 | 100% |  | 2025-11-17 | 2025-12-05 |  |  |  |  |  |  |  |
| PROC-1100 |  | Elevator Fabrication |  | 50d | 2025-12-02 A | 2026-03-06 | PROC-1020 | 50% | 25d | 2026-02-02 | 2026-04-10 | 43d | 28d |  |  | Public | Construction | Long |
| PROC-1150 |  | Fire Pump Fabrication |  | 20d | 2026-02-03 | 2026-03-02 | PROC-1090 |  |  |  |  | 107d | 90d |  |  | Public | Construction | Long |

| ID | WBS | Activity | Duration | Start | Finish | Predecessors | Complete | Remaining | Planned start | Planned finish | Total float | Free float | 1 | 2 | 3 |
| --- | --- | --- | --- | --- | --- | --- | --- | --- | --- | --- | --- | --- | --- | --- | --- |
|  | 2 | **Construction** |  | 2025-05-05 | 2026-08-12 |  |  |  |  |  |  |  |  |  |  |
|  | 2 | **Site Work** |  | 2025-05-05 | 2026-08-12 |  |  |  |  |  |  |  |  |  |  |
| SITE-1020 |  | Mobilization | 1d | 2025-05-05 A | 2025-05-05 A | MIL-1000 | 100% |  |  |  |  |  | Public | Construction | Site |
| SITE-1000 |  | Erosion Control Phase I | 4d | 2025-05-06 A | 2025-05-09 A | SITE-1020 | 100% |  |  |  |  |  | Public | Construction | Site |
| SITE-1010 |  | Stormwater Management Ponds Phase I | 10d | 2025-11-03 A | 2025-11-21 A | SITE-MB-1040, PROC-1140 | 100% |  | 2026-01-01 | 2026-01-14 |  |  | Public | Construction | Site |
| SITE-1030 |  | Stormwater Management Ponds Phase II | 10d | 2026-03-27 | 2026-04-10 | SITE-MB-1070, CON-MB-L5-1100 |  |  |  |  | 76.8d | 88.8d | Public | Construction | Site |
|  | 1 | **Site Work - Main Building** |  | 2025-05-12 | 2026-08-12 |  |  |  |  |  |  |  |  |  |  |
| SITE-MB-1010 |  | Demo/Clear Site - Main Building | 10d | 2025-05-12 A | 2025-05-23 A | SITE-1000 | 100% |  |  |  |  |  | Public | Construction | Site |
| SITE-MB-1020 |  | Rough Grading - Main Building | 10d | 2025-05-26 A | 2025-06-06 A | SITE-MB-1010 | 100% |  |  |  |  |  | Public | Construction | Site |
| SITE-MB-1030 |  | Building Pad Delivery - Main Building | 35d | 2025-06-09 A | 2025-07-25 A | SITE-MB-1020 | 100% |  |  |  |  |  | Public | Construction | Site |
| SITE-MB-1040 |  | Domestic & Fire Water Online - Main Building | 27d | 2025-07-28 A | 2025-09-02 A | SITE-MB-1030 | 100% |  |  |  |  |  | Public | Construction | Site |
| SITE-MB-1050 |  | Storm Structures and Pipe - Main Building | 30d | 2025-11-03 A | 2026-02-11 | SITE-MB-1040 | 75% | 7.5d | 2025-12-01 | 2026-01-09 | 77.5d | 0d | Public | Construction | Site |
| SITE-MB-1070 |  | Fine Grading - Main Building | 15d | 2025-12-16 A | 2026-02-11 | SITE-1010 | 50% | 7.5d | 2026-02-02 | 2026-02-20 | 15.5d | 27.5d | Public | Construction | Site |
| SITE-MB-1060 |  | Sanitary Sewer - Main Building | 10d | 2026-02-11 | 2026-02-25 | SITE-MB-1050 |  |  |  |  | 77.5d | 89.5d | Public | Construction | Site |
| SITE-MB-1100 |  | Curb and Gutter - Main Building | 7d | 2026-05-12 | 2026-05-20 | SITE-MB-1070, CON-MB-EXT-1000, CON-MB-EXT-1020 |  |  |  |  | 17d | 0d | Public | Construction | Site |
| SITE-MB-1120 |  | Stone Base Parking Lot - Main Building | 10d | 2026-05-21 | 2026-06-03 | SITE-MB-1100 |  |  |  |  | 17d | 29d | Public | Construction | Site |
| SITE-MB-1080 |  | Sidewalk - Main Building | 10d | 2026-07-01 | 2026-07-14 | CON-MB-EXT-1050, CON-MB-EXT-1100, SITE-MB-1060, SITE-MB-1100 |  |  |  |  | -12d | 0d | Public | Construction | Site |
| SITE-MB-1130 |  | Paving (Includes SHA Work) - Main Building | 11d | 2026-07-15 | 2026-07-29 | SITE-MB-1120, SITE-MB-1080 |  |  |  |  | -12d | 0d | Public | Construction | Site |
| SITE-MB-1090 |  | Landscape - Main Building | 10d | 2026-07-30 | 2026-08-12 | SITE-MB-1080, SITE-MB-1130, CON-MB-EXT-1030, CON-MB-EXT-1050 |  |  |  |  | -12d | 0d | Public | Construction | Site |
| SITE-MB-1140 |  | Line Striping - Main Building | 2d | 2026-07-30 | 2026-07-31 | SITE-MB-1130 |  |  |  |  | -4d | 8d | Public | Construction | Site |
|  | 3 | **Site Work - Office** |  | 2025-05-12 | 2026-05-25 |  |  |  |  |  |  |  |  |  |  |
| SITE-OFF-1000 |  | Demo/Clear Site - Office Building | 10d | 2025-05-12 A | 2025-05-23 A | SITE-1000 | 100% |  |  |  |  |  | Public | Construction | Site |
| SITE-OFF-1010 |  | Rough Grading - Office Building | 10d | 2025-05-26 A | 2025-06-06 A | SITE-OFF-1000 | 100% |  |  |  |  |  | Public | Construction | Site |
| SITE-OFF-1020 |  | Building Pad Delivery - Office Building | 35d | 2025-06-09 A | 2025-07-25 A | SITE-OFF-1010 | 100% |  |  |  |  |  | Public | Construction | Site |
| SITE-OFF-1060 |  | Fine Grading - Office Building | 6d | 2025-12-16 A | 2026-01-16 A | SITE-OFF-1020, PROC-1010 | 100% |  | 2026-02-02 | 2026-02-09 |  |  | Public | Construction | Site |
| SITE-OFF-1110 |  | Stone Base Parking Lot - Office Building | 1d | 2025-12-17 A | 2025-12-17 A | SITE-OFF-1060 | 100% |  | 2026-02-17 | 2026-02-17 |  |  | Public | Construction | Site |
| SITE-OFF-1120 |  | Paving - Office Building | 2d | 2025-12-18 A | 2026-02-03 | SITE-OFF-1110 |  | 2d | 2026-02-19 | 2026-02-20 | 121d | 0d | Public | Construction | Site |
| SITE-OFF-1030 |  | Domestic & Fire Water Online - Office Building | 10d | 2026-02-02 | 2026-02-13 | SITE-OFF-1020, PROC-1010 |  |  |  |  | 114d | 0d | Public | Construction | Site |
| SITE-OFF-1080 |  | Landscape - Office Building | 1d | 2026-02-02 | 2026-02-02 | SITE-OFF-1060 |  |  |  |  | 125d | 79.2d | Public | Construction | Site |
| SITE-OFF-1070 |  | Sidewalk - Office Building | 2d | 2026-02-04 | 2026-02-05 | CON-OFF-1170, SITE-OFF-1120 |  |  |  |  | 121d | 7d | Public | Construction | Site |
| SITE-OFF-1130 |  | Line Striping - Office Building | 1d | 2026-02-04 | 2026-02-04 | SITE-OFF-1120 |  |  |  |  | 123d | 11.5d | Public | Construction | Site |
| SITE-OFF-1090 |  | Curb and Gutter - Office Building | 1d | 2026-02-16 | 2026-02-16 | SITE-OFF-1030, SITE-OFF-1120 |  |  |  |  | 114d | 0d | Public | Construction | Site |
| SITE-OFF-1100 |  | Misc Exterior Items (Vehicle Gate Operator) - Office Building | 3d | 2026-05-20 | 2026-05-25 | SITE-OFF-1120, MIL-1020 SS |  |  |  |  | 45.8d | 0d | Public | Construction | Site |

| ID | WBS | Activity | Duration | Start | Finish | Predecessors | Complete | Remaining | Planned start | Planned finish | Total float | Free float | 1 | 2 | 3 | 4 | 5 | 6 |
| --- | --- | --- | --- | --- | --- | --- | --- | --- | --- | --- | --- | --- | --- | --- | --- | --- | --- | --- |
|  | 1 | **Main Building** |  | 2025-08-04 | 2026-07-15 |  |  |  |  |  |  |  |  |  |  |  |  |  |
|  | 1 | **Substructure** |  | 2025-08-04 | 2026-02-10 |  |  |  |  |  |  |  |  |  |  |  |  |  |
| CON-MB-1000 |  | UG Electric Rough In | 10d | 2025-08-04 A | 2025-08-27 A | SITE-MB-1030 | 100% |  | 2025-08-04 | 2025-08-15 |  |  | Public | Construction | Site | Building | Structure | First |
| CON-MB-1010 |  | UG Plumbing Roughin | 8d | 2025-08-18 A | 2025-08-27 A | CON-MB-1000 | 100% |  |  |  |  |  | Public | Construction | Site | Building | Structure | First |
| CON-MB-1020 |  | Prep/Pour SOG 1/2 | 12d | 2025-08-27 A | 2025-09-10 A | CON-MB-1000, CON-MB-1010 | 100% |  | 2025-08-27 | 2025-09-11 |  |  | Public | Construction | Site | Building | Structure | First |
| CON-MB-1030 |  | Prep/Pour SOG 2/2 | 18d | 2025-08-29 A | 2025-09-22 A | CON-MB-1020 | 100% |  | 2025-08-29 | 2025-09-23 |  |  | Public | Construction | Site | Building | Structure | First |
| CON-MB-1040 |  | Foundation Waterproofing | 5d | 2026-02-03 | 2026-02-10 | CON-MB-1030, CON-MB-L1-1250 |  |  |  |  | -3.2d | 0d | Public | Construction | Site | Building | Structure | First |
|  | 9 | **Superstructure** |  | 2025-09-29 | 2026-05-04 |  |  |  |  |  |  |  |  |  |  |  |  |  |
|  | 1 | **First Floor Superstructure** |  | 2025-09-29 | 2026-01-30 |  |  |  |  |  |  |  |  |  |  |  |  |  |
| CON-MB-L1-1040 |  | Structural Steel Columns & Beams - 1st Floor | 18d | 2025-09-29 A | 2025-10-28 A | CON-MB-1030 | 100% |  | 2025-11-03 | 2025-11-26 |  |  | Public | Construction | Site | Building | Structure | First |
| CON-MB-L1-1060 |  | Metal Decking - 2nd floor | 4d | 2025-10-23 A | 2025-10-28 A | CON-MB-L1-1040 | 100% |  | 2025-11-27 | 2025-12-02 |  |  | Public | Construction | Site | Building | Structure | First |
| CON-MB-L1-1090 |  | Exterior & Interior Framing - 1st Floor | 10d | 2025-10-28 A | 2026-01-30 A | CON-MB-L1-1070, CON-MB-L1-1040 | 100% |  | 2025-11-04 | 2025-11-17 |  |  | Public | Construction | Site | Building | Structure | First |
| CON-MB-L1-1070 |  | Prep/Pour SOD - 2nd Floor | 8d | 2025-10-29 A | 2025-11-01 A | CON-MB-L1-1060 | 100% |  | 2025-12-03 | 2025-12-12 |  |  | Public | Construction | Site | Building | Structure | First |
|  | 2 | **Second Floor Superstructure** |  | 2025-11-04 | 2026-02-03 |  |  |  |  |  |  |  |  |  |  |  |  |  |
| CON-MB-L2-1000 |  | Structural Steel Columns & Beams - 2nd Floor | 14d | 2025-11-04 A | 2025-11-21 A | CON-MB-L1-1070, CON-MB-L1-1040 | 100% |  | 2025-12-01 | 2025-12-18 |  |  | Public | Construction | Site | Building | Structure | Second |
| CON-MB-L2-1010 |  | Metal Decking 3rd Floor | 4d | 2025-11-24 A | 2025-11-27 A | CON-MB-L2-1000 | 100% |  | 2025-12-19 | 2025-12-24 |  |  | Public | Construction | Site | Building | Structure | Second |
| CON-MB-L2-1020 |  | Prep/Pour SOD - 3rd floor | 8d | 2025-11-28 A | 2025-12-04 A | CON-MB-L2-1010 | 100% |  | 2025-12-25 | 2026-01-05 |  |  | Public | Construction | Site | Building | Structure | Second |
| CON-MB-L2-1040 |  | Exterior & Interior Framing - 2nd Floor | 10d | 2026-01-13 A | 2026-02-03 | CON-MB-L2-1020, CON-MB-L2-1090 | 80% | 2d | 2026-01-22 | 2026-02-04 | -3d | 0d | Public | Construction | Site | Building | Structure | Second |
|  | 3 | **Third Floor Superstructure** |  | 2025-12-01 | 2026-02-25 |  |  |  |  |  |  |  |  |  |  |  |  |  |
| CON-MB-L3-1000 |  | Structural Steel Columns & Beams - 3rd Floor | 14d | 2025-12-01 A | 2025-12-19 A | CON-MB-L2-1020, CON-MB-L2-1000 | 100% |  | 2026-01-01 | 2026-01-20 |  |  | Public | Construction | Site | Building | Structure | Third |
| CON-MB-L3-1010 |  | Metal Decking - 4th Floor | 4d | 2025-12-19 A | 2025-12-23 A | CON-MB-L3-1000 | 100% |  | 2026-01-21 | 2026-01-26 |  |  | Public | Construction | Site | Building | Structure | Third |
| CON-MB-L3-1020 |  | Prep & Pour SOD - 4th Floor | 8d | 2025-12-22 A | 2026-01-05 A | CON-MB-L3-1010 | 100% |  | 2026-02-02 | 2026-02-11 |  |  | Public | Construction | Site | Building | Structure | Third |
| CON-MB-L3-1040 |  | Exterior & Interior Framing - 3rd Floor | 10d | 2026-02-12 | 2026-02-25 | CON-MB-L3-1020, CON-MB-L3-1060 |  |  |  |  | 34d | 0d | Public | Construction | Site | Building | Structure | Third |
|  | 6 | **Fourth Floor Superstructure** |  | 2026-01-06 | 2026-03-17 |  |  |  |  |  |  |  |  |  |  |  |  |  |
| CON-MB-L4-1000 |  | Structural Steel Columns & Beams - 4th Floor | 14d | 2026-01-06 A | 2026-01-23 A | CON-MB-L3-1020, CON-MB-L3-1000 | 100% |  |  |  |  |  | Public | Construction | Site | Building | Structure | Fourth |
| CON-MB-L4-1010 |  | Metal Decking - 5th Floor | 4d | 2026-01-16 A | 2026-01-23 A | CON-MB-L4-1000 | 100% |  | 2026-01-26 | 2026-01-29 |  |  | Public | Construction | Site | Building | Structure | Fourth |
| CON-MB-L4-1020 |  | Prep & Pour SOD - 5th Floor | 4d | 2026-02-16 | 2026-02-19 | CON-MB-L4-1010, FRAG01-1030 |  |  |  |  | -12d | 0d | Public | Construction | Site | Building | Structure | Fourth |
| CON-MB-L4-1030 |  | Exterior & Interior Framing - 4th Floor | 10d | 2026-03-04 | 2026-03-17 | CON-MB-L4-1020, CON-MB-L4-1050 |  |  |  |  | -12d | 0d | Public | Construction | Site | Building | Structure | Fourth |

| ID | WBS | Activity | Duration | Start | Finish | Predecessors | Complete | Remaining | Planned start | Planned finish | Total float | Free float | 1 | 2 | 3 | 4 | 5 | 6 |
| --- | --- | --- | --- | --- | --- | --- | --- | --- | --- | --- | --- | --- | --- | --- | --- | --- | --- | --- |
|  | 4 | **Fifth Floor Superstructure** |  | 2026-02-20 | 2026-05-04 |  |  |  |  |  |  |  |  |  |  |  |  |  |
| CON-MB-L5-1000 |  | Structural Steel Columns & Beams - 5th Floor | 14d | 2026-02-20 | 2026-03-11 | CON-MB-L4-1020, CON-MB-L4-1000 |  |  |  |  | -12d | 0d | Public | Construction | Site | Building | Structure | Fifth |
| CON-MB-L5-1010 |  | Framing & Metal Decking - Roof | 10d | 2026-03-12 | 2026-03-25 | CON-MB-L5-1000 |  |  |  |  | -12d | 0d | Public | Construction | Site | Building | Structure | Fifth |
| CON-MB-L5-1050 |  | Exterior & Interior Framing - 5th Floor | 10d | 2026-04-21 | 2026-05-04 | CON-MB-L5-1000, CON-MB-L5-1010, CON-MB-L5-1040 SS+3d |  |  |  |  | -12d | 0d | Public | Construction | Site | Building | Structure | Fifth |
|  | 3 | **Interior Finishes** |  | 2025-09-15 | 2026-07-15 |  |  |  |  |  |  |  |  |  |  |  |  |  |
| CON-MB-2020 |  | Winterization | 5d | 2025-12-22 A | 2025-12-29 A | MIL-1000 SS | 100% |  | 2026-01-01 | 2026-01-07 |  |  |  |  |  |  |  |  |
| CON-MB-2000 |  | Grind/Seal Floors (Full Building) | 10d | 2026-06-19 | 2026-07-02 | CON-MB-L1-1270, CON-MB-L2-1070, CON-MB-L3-1150, CON-MB-L4-1140, CON-MB-L5-1170 |  |  |  |  | 10d | 0d |  |  |  |  |  |  |
| CON-MB-2010 |  | Final Cleaning (Full Building) | 15d | 2026-06-23 | 2026-07-13 | CON-MB-2000 SS+2d, CON-MB-2000 FF+2d |  |  |  |  | 10d | 22d |  |  |  |  |  |  |
|  | 6 | **Elevator** |  | 2025-09-15 | 2026-07-15 |  |  |  |  |  |  |  |  |  |  |  |  |  |
| CON-ELEV-1000 |  | Elevator 3 CMU Shaft | 12d | 2025-09-15 A | 2025-09-30 A | CON-MB-1020 | 100% |  |  |  |  |  | Public | Construction | Site | Building | Structure | First |
| CON-ELEV-1010 |  | Elevator 1/2 CMU Shaft | 14d | 2025-10-01 A | 2025-10-17 A | CON-ELEV-1000 | 100% |  | 2026-01-01 | 2026-01-20 |  |  | Public | Construction | Site | Building | Structure | First |
| CON-ELEV-1020 |  | Elevator Install | 65d | 2026-04-16 | 2026-07-15 | CON-MB-L5-1020, PROC-1020, PROC-1100, CON-ELEV-1010, CON-ELEV-1000 |  |  |  |  | 15d | 0d | Public | Construction | Site | Building | Structure | Elevator |
|  | 8 | **Stair Shafts** |  | 2025-09-15 | 2026-02-05 |  |  |  |  |  |  |  |  |  |  |  |  |  |
| CON-STAIR-1000 |  | Stair Tower B CMU | 25d | 2025-09-15 A | 2025-10-24 A | CON-MB-1020 | 100% |  | 2025-09-15 | 2025-10-17 |  |  | Public | Construction | Site | Building | Structure | First |
| CON-STAIR-1010 |  | Stair Tower A CMU | 10d | 2025-10-03 A | 2025-10-17 A | CON-ELEV-1000 | 100% |  | 2025-11-03 | 2025-11-14 |  |  | Public | Construction | Site | Building | Structure | First |
| CON-STAIR-1020 |  | Stair Stringers and Pans | 10d | 2025-12-29 A | 2026-01-07 A | CON-STAIR-1000, CON-STAIR-1010 | 100% |  | 2026-01-01 | 2026-01-14 |  |  | Public | Construction | Site | Building | Structure | Second |
| CON-STAIR-1030 |  | Doors & HW - Stairs | 2d | 2026-02-02 | 2026-02-03 | CON-STAIR-1010, CON-STAIR-1000, CON-STAIR-1020 |  |  |  |  | 122d | 0d | Public | Construction | Site | Building | Structure | Second |
| CON-STAIR-1040 |  | Prep/Paint - Stairs | 2d | 2026-02-04 | 2026-02-05 | CON-STAIR-1020, CON-STAIR-1030 |  |  |  |  | 122d | 134d | Public | Construction | Site | Building | Structure | Second |
|  | 1 | **First Floor Interior Finishes** |  | 2025-12-12 | 2026-05-25 |  |  |  |  |  |  |  |  |  |  |  |  |  |
| CON-MB-L1-1130 |  | Fireproofing Structural Steel - 1st Floor | 8d | 2025-12-12 A | 2026-01-09 A | CON-MB-L1-1070, CON-MB-2020 | 100% |  | 2026-01-01 | 2026-01-12 |  |  | Public | Construction | Site | Building | Structure | First |
| CON-MB-L1-1160 |  | HVAC Rough In - 1st Floor | 3d | 2026-01-06 A | 2026-02-03 | CON-MB-L1-1130, PROC-1130, CON-MB-L1-1090 | 50% | 1.5d | 2026-02-11 | 2026-02-13 | 45.5d | 4.5d | Public | Construction | Site | Building | Structure | First |
| CON-MB-L1-1140 |  | OH & Wall Plumbing Rough In - 1st Floor | 3d | 2026-01-07 A | 2026-02-03 | CON-MB-L1-1130, CON-MB-L1-1090 | 60% | 1.2d | 2026-02-11 | 2026-02-13 | 45.8d | 4.8d | Public | Construction | Site | Building | Structure | First |
| CON-MB-L1-1150 |  | Electric & Low Voltage OH & Wall Rough In - 1st Floor | 10d | 2026-01-07 A | 2026-02-09 | CON-MB-L1-1130, CON-MB-L1-1090 | 40% | 6d | 2026-02-11 | 2026-02-24 | 41d | 0d | Public | Construction | Site | Building | Structure | First |
| CON-MB-L1-1170 |  | Sprinkler Rough In - 1st Floor | 10d | 2026-01-12 A | 2026-02-11 | CON-MB-L1-1130, CON-MB-L1-1090, PROC-1010 | 20% | 8d | 2026-02-11 | 2026-02-24 | 118d | 115d | Public | Construction | Site | Building | Structure | First |
| CON-MB-L1-1180 |  | OH & Wall MEP Inspections - 1st Floor | 2d | 2026-02-10 | 2026-02-11 | CON-MB-L1-1140, CON-MB-L1-1150, CON-MB-L1-1160 |  |  |  |  | 41d | 20d | Public | Construction | Site | Building | Structure | First |
| CON-MB-L1-1270 |  | Janus Wall Panels - 1st Floor | 15d | 2026-03-12 | 2026-04-01 | CON-MB-L2-1070, CON-MB-L1-1180 |  |  |  |  | 21d | 0d | Public | Construction | Site | Building | Structure | First |
| CON-MB-L1-1190 |  | Hang & Finish Drywall - 1st Floor | 7d | 2026-05-04 | 2026-05-12 | CON-MB-L1-1180, MIL-1010 |  |  |  |  | 45d | 0d | Public | Construction | Site | Building | Structure | First |
| CON-MB-L1-1200 |  | Doors & HW - 1st Floor | 2d | 2026-05-13 | 2026-05-14 | CON-MB-L1-1180, CON-MB-L1-1190 |  |  |  |  | 45d | 0d | Public | Construction | Site | Building | Structure | First |
| CON-MB-L1-1210 |  | Prep/Paint Walls & Ceilings - 1st Floor | 2d | 2026-05-15 | 2026-05-18 | CON-MB-L1-1190, CON-MB-L1-1200 |  |  |  |  | 45d | 0d | Public | Construction | Site | Building | Structure | First |
| CON-MB-L1-1220 |  | Plumbing Fixtures - 1st Floor | 2d | 2026-05-19 | 2026-05-20 | CON-MB-L1-1210 |  |  |  |  | 48d | 60d | Public | Construction | Site | Building | Structure | First |
| CON-MB-L1-1230 |  | Diffusers - 1st Floor | 5d | 2026-05-19 | 2026-05-25 | CON-MB-L1-1210 |  |  |  |  | 45d | 57d | Public | Construction | Site | Building | Structure | First |
| CON-MB-L1-1240 |  | Light Fixtures - 1st Floor | 5d | 2026-05-19 | 2026-05-25 | CON-MB-L1-1210, PROC-1070 |  |  |  |  | 45d | 57d | Public | Construction | Site | Building | Structure | First |

| ID | WBS | Activity | Duration | Start | Finish | Predecessors | Complete | Remaining | Planned start | Planned finish | Total float | Free float | 1 | 2 | 3 | 4 | 5 | 6 |
| --- | --- | --- | --- | --- | --- | --- | --- | --- | --- | --- | --- | --- | --- | --- | --- | --- | --- | --- |
|  | 2 | **Second Floor Interior Finishes** |  | 2026-01-12 | 2026-03-11 |  |  |  |  |  |  |  |  |  |  |  |  |  |
| CON-MB-L2-1090 |  | Fireproofing Structural Steel - 2nd Floor | 8d | 2026-01-12 A | 2026-01-23 A | CON-MB-L1-1130, CON-MB-L2-1020 | 100% |  | 2026-02-11 | 2026-02-20 |  |  | Public | Construction | Site | Building | Structure | Second |
| CON-MB-L2-1110 |  | HVAC Rough In - 2nd Floor | 5d | 2026-01-19 A | 2026-02-05 | CON-MB-L2-1090, PROC-1130, CON-MB-L2-1040 SS+3d | 20% | 4d | 2026-02-12 | 2026-02-18 | 29d | 8d | Public | Construction | Site | Building | Structure | Second |
| CON-MB-L2-1060 |  | Doors & HW - 2nd Floor | 2d | 2026-02-04 | 2026-02-05 | CON-MB-L2-1040 |  |  |  |  | 120d | 0d | Public | Construction | Site | Building | Structure | Second |
| CON-MB-L2-1100 |  | Electric OH & Wall Rough In - 2nd Floor | 10d | 2026-02-04 | 2026-02-17 | CON-MB-L2-1090, CON-MB-L2-1040 |  |  |  |  | 21d | 0d | Public | Construction | Site | Building | Structure | Second |
| CON-MB-L2-1120 |  | Sprinkler Rough In - 2nd Floor | 10d | 2026-02-04 | 2026-02-17 | CON-MB-L2-1090, CON-MB-L2-1040 |  |  |  |  | 114d | 111d | Public | Construction | Site | Building | Structure | Second |
| CON-MB-L2-1080 |  | Prep/Paint Walls - 2nd Floor | 2d | 2026-02-06 | 2026-02-09 | CON-MB-L2-1060 |  |  |  |  | 120d | 132d | Public | Construction | Site | Building | Structure | Second |
| CON-MB-L2-1140 |  | OH & Wall MEP Inspections - 2nd Floor | 1d | 2026-02-18 | 2026-02-18 | CON-MB-L2-1100, CON-MB-L2-1040, CON-MB-L2-1110 |  |  |  |  | 21d | 0d | Public | Construction | Site | Building | Structure | Second |
| CON-MB-L2-1070 |  | Janus Wall Panels - 2nd Floor | 15d | 2026-02-19 | 2026-03-11 | CON-MB-L2-1140 |  |  |  |  | 21d | 0d | Public | Construction | Site | Building | Structure | Second |
| CON-MB-L2-1150 |  | Diffusers - 2nd Floor | 5d | 2026-02-19 | 2026-02-25 | CON-MB-L2-1140 |  |  |  |  | 108d | 120d | Public | Construction | Site | Building | Structure | Second |
| CON-MB-L2-1160 |  | Light Fixtures - 2nd Floor | 5d | 2026-02-19 | 2026-02-25 | CON-MB-L2-1140, PROC-1070 |  |  |  |  | 108d | 120d | Public | Construction | Site | Building | Structure | Second |
|  | 3 | **Third Floor Interior Finishes** |  | 2026-02-02 | 2026-05-22 |  |  |  |  |  |  |  |  |  |  |  |  |  |
| CON-MB-L3-1060 |  | Fire Proofing Structural Steel - 3rd Floor | 8d | 2026-02-02 | 2026-02-11 | CON-MB-L2-1090, CON-MB-L3-1020, CON-MB-L3-1000 |  |  |  |  | -6d | 0d | Public | Construction | Site | Building | Structure | Third |
| CON-MB-L3-1070 |  | OH & Wall Plumbing Rough In - 3rd Floor | 3d | 2026-02-26 | 2026-03-02 | CON-MB-L3-1060, CON-MB-L3-1040 |  |  |  |  | 41d | 7d | Public | Construction | Site | Building | Structure | Third |
| CON-MB-L3-1080 |  | Electric & Low Voltage OH & Wall Rough In - 3rd Floor | 10d | 2026-02-26 | 2026-03-11 | CON-MB-L3-1060, CON-MB-L3-1040 |  |  |  |  | 34d | 0d | Public | Construction | Site | Building | Structure | Third |
| CON-MB-L3-1090 |  | HVAC Rough In - 3rd Floor | 5d | 2026-02-26 | 2026-03-04 | CON-MB-L3-1060, PROC-1130, CON-MB-L3-1040 |  |  |  |  | 39d | 5d | Public | Construction | Site | Building | Structure | Third |
| CON-MB-L3-1100 |  | Sprinkler Rough In - 3rd Floor | 10d | 2026-02-26 | 2026-03-11 | CON-MB-L3-1060, CON-MB-L3-1040 |  |  |  |  | 98d | 95d | Public | Construction | Site | Building | Structure | Third |
| CON-MB-L3-1120 |  | OH & Wall MEP Inspections - 3rd Floor | 2d | 2026-03-12 | 2026-03-13 | CON-MB-L3-1090, CON-MB-L3-1070, CON-MB-L3-1080 |  |  |  |  | 34d | 13d | Public | Construction | Site | Building | Structure | Third |
| CON-MB-L3-1150 |  | Janus Wall Panels - 3rd Floor | 15d | 2026-04-02 | 2026-04-22 | CON-MB-L1-1270, CON-MB-L3-1120 |  |  |  |  | 21d | 0d | Public | Construction | Site | Building | Structure | Third |
| CON-MB-L3-1130 |  | Hang/Finish Drywall - 3rd Floor | 7d | 2026-05-04 | 2026-05-12 | CON-MB-L3-1120, MIL-1010 |  |  |  |  | 46d | 0d | Public | Construction | Site | Building | Structure | Third |
| CON-MB-L3-1140 |  | Prep/Paint Walls & Ceilings - 3rd Floor | 3d | 2026-05-13 | 2026-05-15 | CON-MB-L3-1130 |  |  |  |  | 46d | 0d | Public | Construction | Site | Building | Structure | Third |
| CON-MB-L3-1160 |  | Plumbing Fixtures - 3rd Floor | 4d | 2026-05-18 | 2026-05-21 | CON-MB-L3-1140 |  |  |  |  | 47d | 44d | Public | Construction | Site | Building | Structure | Third |
| CON-MB-L3-1170 |  | Diffusers - 3rd Floor | 5d | 2026-05-18 | 2026-05-22 | CON-MB-L3-1140 |  |  |  |  | 46d | 43d | Public | Construction | Site | Building | Structure | Third |
| CON-MB-L3-1180 |  | Light Fixtures - 3rd Floor | 5d | 2026-05-18 | 2026-05-22 | CON-MB-L3-1140, PROC-1070 |  |  |  |  | 46d | 43d | Public | Construction | Site | Building | Structure | Third |

| ID | WBS | Activity | Duration | Start | Finish | Predecessors | Total float | Free float | 1 | 2 | 3 | 4 | 5 | 6 |
| --- | --- | --- | --- | --- | --- | --- | --- | --- | --- | --- | --- | --- | --- | --- |
|  | 4 | **Fourth Floor Interior Finishes** |  | 2026-02-20 | 2026-05-13 |  |  |  |  |  |  |  |  |  |
| CON-MB-L4-1050 |  | Fire Proofing Structural Steel - 4th Floor | 8d | 2026-02-20 | 2026-03-03 | CON-MB-L3-1060, CON-MB-L4-1020, CON-MB-L3-1020 | -12d | 0d | Public | Construction | Site | Building | Structure | Fourth |
| CON-MB-L4-1060 |  | Electric OH & Wall Rough In - 4th Floor | 10d | 2026-03-18 | 2026-03-31 | CON-MB-L4-1050, CON-MB-L4-1030 | 36d | 0d | Public | Construction | Site | Building | Structure | Fourth |
| CON-MB-L4-1070 |  | HVAC Rough In - 4th Floor | 5d | 2026-03-18 | 2026-03-24 | CON-MB-L4-1050, PROC-1130, CON-MB-L4-1030 | 41d | 5d | Public | Construction | Site | Building | Structure | Fourth |
| CON-MB-L4-1080 |  | Sprinkler Rough In - 4th Floor | 10d | 2026-03-18 | 2026-03-31 | CON-MB-L4-1050, CON-MB-L4-1030 | 84d | 81d | Public | Construction | Site | Building | Structure | Fourth |
| CON-MB-L4-1100 |  | OH & Wall MEP Inspections - 4th Floor | 1d | 2026-04-01 | 2026-04-01 | CON-MB-L4-1070, CON-MB-L4-1060 | 36d | 0d | Public | Construction | Site | Building | Structure | Fourth |
| CON-MB-L4-1110 |  | Prep/Paint Walls - 4th Floor | 2d | 2026-04-02 | 2026-04-03 | CON-MB-L4-1100 | 81d | 78d | Public | Construction | Site | Building | Structure | Fourth |
| CON-MB-L4-1120 |  | Diffusers - 4th Floor | 5d | 2026-04-02 | 2026-04-08 | CON-MB-L4-1100 | 78d | 75d | Public | Construction | Site | Building | Structure | Fourth |
| CON-MB-L4-1130 |  | Light Fixtures - 4th Floor | 5d | 2026-04-02 | 2026-04-08 | CON-MB-L4-1100, PROC-1070 | 78d | 75d | Public | Construction | Site | Building | Structure | Fourth |
| CON-MB-L4-1140 |  | Janus Wall Panels - 4th Floor | 15d | 2026-04-23 | 2026-05-13 | CON-MB-L3-1150, CON-MB-L4-1100 | 21d | 11d | Public | Construction | Site | Building | Structure | Fourth |
|  | 5 | **Fifth Floor Interior Finishes** |  | 2026-04-16 | 2026-06-18 |  |  |  |  |  |  |  |  |  |
| CON-MB-L5-1040 |  | Fire Proofing Structural Steel - 5th Floor | 8d | 2026-04-16 | 2026-04-27 | CON-MB-L5-1000, CON-MB-L4-1020, CON-MB-L4-1050, CON-MB-L5-1020 | -12d | 0d | Public | Construction | Site | Building | Structure | Fifth |
| CON-MB-L5-1060 |  | Electric & Low Voltage OH & Wall Rough In - 5th Floor | 10d | 2026-05-05 | 2026-05-18 | CON-MB-L5-1050, CON-MB-L5-1040 | 10d | 0d | Public | Construction | Site | Building | Structure | Fifth |
| CON-MB-L5-1070 |  | OH & Wall Plumbing Rough In - 5th Floor | 3d | 2026-05-05 | 2026-05-07 | CON-MB-L5-1050, CON-MB-L5-1040 | 17d | 7d | Public | Construction | Site | Building | Structure | Fifth |
| CON-MB-L5-1080 |  | HVAC Rough In - 5th Floor | 5d | 2026-05-05 | 2026-05-11 | CON-MB-L5-1050, PROC-1130, CON-MB-L5-1040 | 15d | 5d | Public | Construction | Site | Building | Structure | Fifth |
| CON-MB-L5-1090 |  | Sprinkler Rough In - 5th Floor | 10d | 2026-05-05 | 2026-05-18 | CON-MB-L5-1050, CON-MB-L5-1040 | 50d | 47d | Public | Construction | Site | Building | Structure | Fifth |
| CON-MB-L5-1110 |  | OH & Wall MEP Inspections - 5th Floor | 1d | 2026-05-19 | 2026-05-19 | CON-MB-L5-1060, CON-MB-L5-1070, CON-MB-L5-1080 | 10d | 0d | Public | Construction | Site | Building | Structure | Fifth |
| CON-MB-L5-1120 |  | Hang/Finish Drywall - 5th Floor | 7d | 2026-05-20 | 2026-05-28 | CON-MB-L5-1110, MIL-1010 | 10d | 0d | Public | Construction | Site | Building | Structure | Fifth |
| CON-MB-L5-1130 |  | Prep/Paint Walls - 5th Floor | 2d | 2026-05-29 | 2026-06-01 | CON-MB-L5-1120 | 36d | 0d | Public | Construction | Site | Building | Structure | Fifth |
| CON-MB-L5-1170 |  | Janus Wall Panels - 5th Floor | 15d | 2026-05-29 | 2026-06-18 | CON-MB-L5-1120, CON-MB-L4-1140, CON-MB-L5-1110 | 10d | 0d | Public | Construction | Site | Building | Structure | Fifth |
| CON-MB-L5-1140 |  | Plumbing Fixtures - 5th Floor | 4d | 2026-06-02 | 2026-06-05 | CON-MB-L5-1130 | 36d | 48d | Public | Construction | Site | Building | Structure | Fifth |
| CON-MB-L5-1150 |  | Diffusers - 5th Floor | 1d | 2026-06-02 | 2026-06-02 | CON-MB-L5-1130 | 39d | 51d | Public | Construction | Site | Building | Structure | Fifth |
| CON-MB-L5-1160 |  | Light Fixtures - 5th Floor | 1d | 2026-06-02 | 2026-06-02 | CON-MB-L5-1130, PROC-1070 | 39d | 51d | Public | Construction | Site | Building | Structure | Fifth |
|  | 7 | **Switchgear Room** |  | 2026-02-03 | 2026-05-20 |  |  |  |  |  |  |  |  |  |
| CON-POW-1000 |  | Switchgear Room Enclosure | 10d | 2026-02-03 | 2026-02-17 | CON-MB-L1-1250, CON-MB-L2-1020 | 45.8d | 0d | Public | Construction | Site | Building | Structure | Permanent |
| CON-POW-1010 |  | Install Switchgear Equipment | 15d | 2026-02-17 | 2026-03-10 | PROC-1060, CON-POW-1000 | 45.8d | 0d | Public | Construction | Site | Building | Structure | Permanent |
| CON-POW-1020 |  | Switchgear Lights and Power | 15d | 2026-03-10 | 2026-03-31 | CON-POW-1010, PROC-1070 | 45.8d | 0d | Public | Construction | Site | Building | Structure | Permanent |
| CON-POW-1030 |  | City Inspection | 1d | 2026-03-31 | 2026-04-01 | CON-POW-1020 | 45.8d | 0d | Public | Construction | Site | Building | Structure | Permanent |
| CON-POW-1040 |  | Dominion Primary | 20d | 2026-04-01 | 2026-04-29 | CON-POW-1030 | 45.8d | 0d | Public | Construction | Site | Building | Structure | Permanent |
| CON-POW-1050 |  | Dominion Transformer | 5d | 2026-04-29 | 2026-05-06 | CON-POW-1040 | 45.8d | 0d | Public | Construction | Site | Building | Structure | Permanent |
| CON-POW-1060 |  | Dominion Secondary | 5d | 2026-05-06 | 2026-05-13 | CON-POW-1050 | 45.8d | 0d | Public | Construction | Site | Building | Structure | Permanent |
| CON-POW-1070 |  | Power Activation | 5d | 2026-05-13 | 2026-05-20 | CON-POW-1060 | 45.8d | 0d | Public | Construction | Site | Building | Structure | Permanent |

| ID | WBS | Activity | Duration | Start | Finish | Predecessors | Complete | Remaining | Planned start | Planned finish | Total float | Free float | 1 | 2 | 3 | 4 | 5 | 6 |
| --- | --- | --- | --- | --- | --- | --- | --- | --- | --- | --- | --- | --- | --- | --- | --- | --- | --- | --- |
|  | 2 | **Exterior Finishes** |  | 2026-01-12 | 2026-07-06 |  |  |  |  |  |  |  |  |  |  |  |  |  |
| CON-MB-L1-1250 |  | Exterior Sheathing - 1st Floor | 6d | 2026-01-12 A | 2026-02-03 | CON-MB-L1-1090 | 80% | 1.2d | 2026-02-02 | 2026-02-09 | -3.2d | 0d | Public | Construction | Site | Building | Structure | First |
| CON-MB-L2-1050 |  | Exterior Sheathing - 2nd Floor | 6d | 2026-02-02 | 2026-02-09 | CON-MB-L2-1040 SS+3d |  |  |  |  | -3d | 0.2d | Public | Construction | Site | Building | Structure | Second |
| CON-MB-L1-1280 |  | Perimeter Waterproofing - 1st Floor | 3d | 2026-02-10 | 2026-02-13 | CON-MB-L2-1050, CON-MB-1040 |  |  |  |  | -3.2d | 0d |  |  |  |  |  |  |
| CON-MB-L5-1100 |  | Brick Facade - 1st Floor | 30d | 2026-02-13 | 2026-03-27 | CON-MB-L1-1280 |  |  |  |  | -3.2d | 0d |  |  |  |  |  |  |
| CON-MB-L3-1050 |  | Exterior Sheathing - 3rd Floor | 6d | 2026-02-17 | 2026-02-24 | CON-MB-L3-1040 SS+3d |  |  |  |  | 38d | 48d | Public | Construction | Site | Building | Structure | Third |
| CON-MB-L4-1040 |  | Exterior Sheathing - 4th Floor | 6d | 2026-03-09 | 2026-03-16 | CON-MB-L4-1030 SS+3d |  |  |  |  | -12d | 0d | Public | Construction | Site | Building | Structure | Fourth |
| CON-MB-L1-1260 |  | Perimeter Waterproofing West Elevation (Excluding 5th Floor) | 4d | 2026-03-17 | 2026-03-20 | CON-MB-L4-1040 |  |  |  |  | -12d | 0d |  |  |  |  |  |  |
| CON-MB-EXT-1000 |  | Brick West Elevation (Excluding 5th Floor) | 18d | 2026-03-23 | 2026-04-15 | PROC-1030, SITE-MB-1070, CON-MB-L1-1260, CON-MB-L5-1100 FF+5d, CON-MB-L4-1040 |  |  |  |  | -12d | 0d | Public | Construction | Site | Building | Exterior |  |
| CON-MB-L2-1280 |  | Perimeter Waterproofing North Elevation (Excluding 5th Floor) | 4d | 2026-03-23 | 2026-03-26 | CON-MB-L2-1050, CON-MB-L1-1260 |  |  |  |  | 2d | 14d |  |  |  |  |  |  |
| CON-MB-EXT-1130 |  | Storefront | 20d | 2026-03-27 | 2026-04-24 | CON-MB-L5-1100 |  |  |  |  | 61.8d | 0d | Public | Construction | Site | Building | Exterior |  |
| CON-MB-EXT-1020 |  | Brick North and West Elevations (5th Floor) | 18d | 2026-04-16 | 2026-05-11 | CON-MB-EXT-1000, SITE-MB-1070, CON-MB-L2-1280 |  |  |  |  | -12d | 0d | Public | Construction | Site | Building | Exterior |  |
| CON-MB-EXT-1040 |  | Stucco West Elevation | 15d | 2026-04-16 | 2026-05-06 | CON-MB-EXT-1000, CON-MB-L1-1260 |  |  |  |  | -1d | 0d | Public | Construction | Site | Building | Exterior |  |
| CON-MB-L5-1030 |  | Exterior Sheathing - 5th Floor | 6d | 2026-04-24 | 2026-05-01 | CON-MB-L5-1010, CON-MB-L5-1050 SS+3d |  |  |  |  | -12d | 0d | Public | Construction | Site | Building | Structure | Fifth |
| CON-MB-EXT-1150 |  | Canopies | 7d | 2026-04-24 | 2026-05-05 | CON-MB-EXT-1130 |  |  |  |  | 61.8d | 44.8d | Public | Construction | Site | Building | Exterior |  |
| CON-MB-L2-1310 |  | Perimeter Waterproofing West/North Elevations (5th Floor) | 2d | 2026-05-04 | 2026-05-05 | CON-MB-L5-1030 |  |  |  |  | -12d | 0d |  |  |  |  |  |  |
| CON-MB-L2-1290 |  | Perimeter Waterproofing East Elevation | 4d | 2026-05-06 | 2026-05-11 | CON-MB-L3-1050, CON-MB-L2-1280, CON-MB-L5-1030, CON-MB-L2-1310 |  |  |  |  | -12d | 0d |  |  |  |  |  |  |
| CON-MB-EXT-1070 |  | Glass West Elevation | 7d | 2026-05-07 | 2026-05-15 | CON-MB-EXT-1040 |  |  |  |  | 32d | 0d | Public | Construction | Site | Building | Exterior |  |
| CON-MB-EXT-1030 |  | Brick East Elevation | 18d | 2026-05-12 | 2026-06-04 | CON-MB-EXT-1020, SITE-MB-1070, CON-MB-L2-1290 |  |  |  |  | -12d | 0d | Public | Construction | Site | Building | Exterior |  |
| CON-MB-EXT-1060 |  | Stucco North Elevation | 7d | 2026-05-12 | 2026-05-20 | CON-MB-EXT-1040, CON-MB-EXT-1020, CON-MB-L2-1280 |  |  |  |  | -4d | 0d | Public | Construction | Site | Building | Exterior |  |
| CON-MB-L2-1300 |  | Perimeter Waterproofing South Elevation | 4d | 2026-05-12 | 2026-05-15 | CON-MB-L4-1040, CON-MB-L2-1290, CON-MB-L5-1030 |  |  |  |  | 2d | 14d |  |  |  |  |  |  |
| CON-MB-EXT-1090 |  | Glass North Elevation | 7d | 2026-05-18 | 2026-05-26 | CON-MB-EXT-1070 |  |  |  |  | 32d | 0d | Public | Construction | Site | Building | Exterior |  |
| CON-MB-EXT-1080 |  | Stucco East Elevation | 14d | 2026-05-21 | 2026-06-09 | CON-MB-EXT-1060, CON-MB-L2-1290 |  |  |  |  | -4d | 0d | Public | Construction | Site | Building | Exterior |  |
| CON-MB-EXT-1110 |  | Glass East Elevation | 7d | 2026-05-27 | 2026-06-04 | CON-MB-EXT-1090 |  |  |  |  | 32d | 0d | Public | Construction | Site | Building | Exterior |  |
| CON-MB-EXT-1050 |  | Brick South Elevation | 18d | 2026-06-05 | 2026-06-30 | CON-MB-EXT-1030, SITE-MB-1070, CON-MB-L2-1300 |  |  |  |  | -12d | 0d | Public | Construction | Site | Building | Exterior |  |
| CON-MB-EXT-1140 |  | Glass South Elevation | 7d | 2026-06-05 | 2026-06-15 | CON-MB-EXT-1110 |  |  |  |  | 32d | 15d | Public | Construction | Site | Building | Exterior |  |
| CON-MB-EXT-1100 |  | Stucco South Elevation | 7d | 2026-06-10 | 2026-06-18 | CON-MB-EXT-1080, CON-MB-L2-1300 |  |  |  |  | -4d | 8d | Public | Construction | Site | Building | Exterior |  |
| CON-MB-EXT-1120 |  | Swing Doors/ Automatic Sliding Entrance | 4d | 2026-07-01 | 2026-07-06 | CON-MB-EXT-1050 |  |  |  |  | 17d | 0d | Public | Construction | Site | Building | Exterior |  |

| ID | WBS | Activity | Duration | Start | Finish | Predecessors | Complete | Remaining | Planned start | Planned finish | Total float | Free float | 1 | 2 | 3 | 4 | 5 | 6 |
| --- | --- | --- | --- | --- | --- | --- | --- | --- | --- | --- | --- | --- | --- | --- | --- | --- | --- | --- |
|  | 5 | **Roofing** |  | 2026-03-26 | 2026-04-15 |  |  |  |  |  |  |  |  |  |  |  |  |  |
| CON-MB-L5-1020 |  | Roof Insulation & TPO | 15d | 2026-03-26 | 2026-04-15 | CON-MB-L5-1010 |  |  |  |  | -12d | 0d | Public | Construction | Site | Building | Structure | Fifth |
|  | 3 | **Office Building** |  | 2025-07-21 | 2026-02-17 |  |  |  |  |  |  |  |  |  |  |  |  |  |
|  | 1 | **Structure - Office** |  | 2025-07-21 | 2025-12-02 |  |  |  |  |  |  |  |  |  |  |  |  |  |
| CON-OFF-1000 |  | Prep/Pour SOG - Office Building | 5d | 2025-07-21 A | 2025-07-22 A | SITE-OFF-1020 | 100% |  | 2025-09-30 | 2025-10-06 |  |  |  |  |  |  |  |  |
| CON-OFF-1010 |  | Structural Steel - Office Building | 2d | 2025-09-30 A | 2025-09-30 A | CON-OFF-1000 | 100% |  | 2025-09-30 | 2025-10-01 |  |  | Public | Construction | Site | Building | New |  |
| CON-OFF-1030 |  | Interior/Exterior Framing - Office Building | 8d | 2025-10-10 A | 2025-10-22 A | CON-OFF-1010 | 100% |  | 2025-11-03 | 2025-11-12 |  |  | Public | Construction | Site | Building | New |  |
| CON-OFF-1070 |  | Framing Inspection - Office Building | 1d | 2025-10-22 A | 2025-10-22 A | CON-OFF-1030 | 100% |  | 2025-11-03 | 2025-11-03 |  |  | Public | Construction | Site | Building | New |  |
| CON-OFF-1050 |  | Roof Decking - Office Building | 1d | 2025-10-27 A | 2025-10-27 A | CON-OFF-1030, CON-OFF-1010, CON-OFF-1070 | 100% |  | 2025-11-04 | 2025-11-04 |  |  | Public | Construction | Site | Building | New |  |
| CON-OFF-1020 |  | Foundation Waterproofing - Office Building | 2d | 2025-10-31 A | 2025-12-02 A | CON-OFF-1000, PROC-1010 SS | 100% |  | 2025-11-03 | 2025-11-04 |  |  | Public | Construction | Site | Building | New |  |
|  | 2 | **Interior Finishes - Office** |  | 2025-12-03 | 2026-02-17 |  |  |  |  |  |  |  |  |  |  |  |  |  |
| CON-OFF-1080 |  | MEP Rough In - Office Building | 3d | 2025-12-03 A | 2025-12-12 A | CON-OFF-1040, CON-OFF-1070, CON-OFF-1020 | 100% |  | 2026-01-05 | 2026-01-07 |  |  | Public | Construction | Site | Building | New |  |
| CON-OFF-1090 |  | MEP Inspections - Office Building | 1d | 2025-12-29 A | 2026-01-23 A | CON-OFF-1080 | 100% |  | 2026-01-08 | 2026-01-08 |  |  | Public | Construction | Site | Building | New |  |
| CON-OFF-1100 |  | Hang/Finish Drywall - Office Building | 3d | 2025-12-31 A | 2026-01-30 A | CON-OFF-1090, CON-OFF-1070 | 100% |  | 2026-02-02 | 2026-02-04 |  |  | Public | Construction | Site | Building | New |  |
| CON-OFF-1110 |  | Doors, Frames & Hardware - Office Building | 2d | 2026-01-08 A | 2026-02-02 | CON-OFF-1100, CON-OFF-1030 | 75% | 0.5d | 2026-02-05 | 2026-02-06 | 111.5d | 0d | Public | Construction | Site | Building | New |  |
| CON-OFF-1120 |  | Prep/Paint Walls - Office Building | 2d | 2026-02-02 | 2026-02-04 | CON-OFF-1110 |  |  |  |  | 111.5d | 0d | Public | Construction | Site | Building | New |  |
| CON-OFF-1130 |  | Flooring - Office Building | 5d | 2026-02-04 | 2026-02-11 | CON-OFF-1120 |  |  |  |  | 111.5d | 0d |  |  |  |  |  |  |
| CON-OFF-1140 |  | MEP Finishes, Fixtures, Accessories - Office Building | 2d | 2026-02-11 | 2026-02-13 | CON-OFF-1120, CON-OFF-1130 |  |  |  |  | 111.5d | 0d | Public | Construction | Site | Building | New |  |
| CON-OFF-1150 |  | Millwork - Office Building | 2d | 2026-02-11 | 2026-02-13 | CON-OFF-1110, CON-OFF-1130 |  |  |  |  | 115.5d | 1.5d | Public | Construction | Site | Building | New |  |
| CON-OFF-1220 |  | Final Cleaning - Office Building | 1d | 2026-02-17 | 2026-02-17 | CON-OFF-1110, CON-OFF-1120, CON-OFF-1130, CON-OFF-1140, CON-OFF-1150, SITE-OFF-1070, CON-OFF-1160, SITE-OFF-1090 |  |  |  |  | 114d | 2.5d | Public | Construction | Site | Building | New |  |
|  | 3 | **Exterior Finishes - Office** |  | 2025-10-29 | 2026-02-02 |  |  |  |  |  |  |  |  |  |  |  |  |  |
| CON-OFF-1040 |  | Roofing - Office Building | 2d | 2025-10-29 A | 2025-10-29 A | CON-OFF-1030, CON-OFF-1050 | 100% |  | 2025-11-05 | 2025-11-06 |  |  | Public | Construction | Site | Building | New |  |
| CON-OFF-1060 |  | Exterior Sheathing/Waterproofing - Office Building | 3d | 2025-12-10 A | 2025-12-16 A | CON-OFF-1030, CON-OFF-1070, CON-OFF-1050 | 100% |  | 2026-01-01 | 2026-01-05 |  |  |  |  |  |  |  |  |
| CON-OFF-1170 |  | Brick Facade - Office Building | 5d | 2025-12-17 A | 2026-02-02 | PROC-1030, CON-OFF-1060 | 85% | 0.75d | 2026-02-05 | 2026-02-11 | 120.25d | 1.25d | Public | Construction | Site | Building | New |  |
| CON-OFF-1160 |  | Store Front & Windows - Office Building | 3d | 2025-12-30 A | 2026-01-08 A | PROC-1080, CON-OFF-1060 | 100% |  | 2026-02-05 | 2026-02-09 |  |  | Public | Construction | Site | Building | New |  |

| ID | WBS | Activity | Duration | Start | Finish | Predecessors | Total float | Free float | Constraint | 1 | 2 | 3 | 4 | 5 |
| --- | --- | --- | --- | --- | --- | --- | --- | --- | --- | --- | --- | --- | --- | --- |
|  | 4 | **Final Inspections & Close Out** |  | 2026-02-13 | 2026-09-04 |  |  |  |  |  |  |  |  |  |
|  | 1 | **Office Building** |  | 2026-02-13 | 2026-06-17 |  |  |  |  |  |  |  |  |  |
| CLO-OFF-1030 |  | Final Building Inspections - Office Building | 5d | 2026-02-13 | 2026-02-20 | CON-OFF-1140, CON-OFF-1170, CON-OFF-1090, CON-OFF-1160 | 111.5d | 0d |  | Public | Construction | Site | Building | Final |
| CLO-OFF-1000 |  | Office Temporary Occupancy | 1d | 2026-02-20 | 2026-02-23 | CON-OFF-1220, CLO-OFF-1030, SITE-OFF-1130 | 127.5d | 122.5d | finish on or before 2026-08-19 |  |  |  |  |  |
| CLO-OFF-1040 |  | Punch List Walk - Office Building | 2d | 2026-05-25 | 2026-05-27 | SITE-OFF-1130, SITE-OFF-1100, CLO-OFF-1030, CON-OFF-1220, CON-OFF-1140, CON-OFF-1150, SITE-OFF-1080 | 45.8d | 0d |  | Public | Construction | Site | Building | Final |
| CLO-OFF-1050 |  | Punch List Corrections - Office Building | 15d | 2026-05-27 | 2026-06-17 | CLO-OFF-1040 | 45.8d | 57.8d |  | Public | Construction | Site | Building | Final |
|  | 2 | **Main Building** |  | 2026-07-07 | 2026-09-04 |  |  |  |  |  |  |  |  |  |
| CLO-MB-1000 |  | Fire Alarm Inspection | 5d | 2026-07-07 | 2026-07-13 | CON-MB-EXT-1150, CON-STAIR-1030, CON-MB-EXT-1140, CON-MB-EXT-1120, MIL-1020 SS, CON-MB-2000, PROC-1150 | 17d | 2d |  | Public | Construction | Site | Building | Final |
| CLO-MB-1010 |  | State Inspection for Elevators | 5d | 2026-07-16 | 2026-07-22 | CLO-MB-1000, CON-ELEV-1020, MIL-1020 SS | 15d | 0d |  | Public | Construction | Site | Building | Final |
| CLO-MB-1020 |  | Final Building Inspections | 5d | 2026-07-23 | 2026-07-29 | CLO-MB-1010, CON-MB-L3-1160, CON-MB-L3-1170, CON-MB-L3-1180, CON-MB-L4-1130, CON-MB-L4-1120, CON-MB-L4-1110, CON-MB-L4-1080, CON-MB-L3-1100, CON-MB-L2-1120, CON-MB-L1-1170, CON-MB-L5-1090, MIL-1020 SS | 15d | 10d |  | Public | Construction | Site | Building | Final |
| CLO-MB-1040 |  | Punch List Walk - Main Building | 2d | 2026-08-13 | 2026-08-14 | SITE-MB-1140, CON-MB-L1-1220, CON-MB-L1-1230, CON-MB-L1-1240, SITE-MB-1090, CON-STAIR-1040, CON-MB-L3-1160, CON-MB-L3-1170, CON-MB-L3-1180, CON-MB-L4-1130, CON-MB-L4-1120, CON-MB-L4-1110, CON-MB-L4-1080, CON-MB-L3-1100, CON-MB-L2-1120, CON-MB-L1-1170, CON-MB-L5-1090, CON-MB-2010, CON-MB-L2-1080, SITE-1030, CON-MB-L2-1150, CON-MB-L2-1160, CON-MB-L5-1140, CON-MB-L5-1150, CON-MB-L5-1160 | -12d | 0d |  | Public | Construction | Site | Building | Final |
| CLO-MB-1050 |  | Punch List Corrections - Main Building | 15d | 2026-08-17 | 2026-09-04 | CLO-MB-1040 | -12d | 0d |  | Public | Construction | Site | Building | Final |

## Activity codes

| Code | Value | Meaning |
| --- | --- | --- |
| 1 | Public | Public Storage Fairfax VA |
| 3 | Long | Long Lead Items |
| 3 | Site | Site Work Utilities |
| 5 | Exterior | Exterior Building |
| 5 | Final | Final Inspections& Close Out |
| 5 | New | New Office |
| 6 | Fifth | Fifth Floor Structural & Interior Finishes |
| 6 | First | First Floor Structure & Interior Framing |
| 6 | Fourth | Fourth Floor Structural & Interior Finishes |
| 6 | Permanent | Permanent Power |
| 6 | Second | Second Floor Structural & Interior Finishes |
| 6 | Third | Third Floor Structural & Interior Finishes |
