# Public Storage Fairfax VA - FEB 2026

Schedule from Primavera P6, 2025-05-05 to 2026-09-09, data date 2026-02-28, A marks actual dates.
Must finish by 2026-09-19

## Calendars

- 5 Day: Mon-Fri 08:00-12:00, 13:00-17:00; Sat-Sun off.
- G7: Mon-Sun 08:00-12:00, 13:00-17:00.

## Schedule

| ID | WBS | Activity | Type | Duration | Start | Finish | Predecessors | Complete | Remaining | Planned start | Planned finish | Total float | Free float | Constraint | Calendar | 3 | 2 | 1 |
| --- | --- | --- | --- | --- | --- | --- | --- | --- | --- | --- | --- | --- | --- | --- | --- | --- | --- | --- |
|  | 1 | **Public Storage Fairfax VA** |  |  | 2025-05-05 | 2026-09-09 |  |  |  |  |  |  |  |  |  |  |  |  |
|  | 3 | **Milestones** |  |  | 2025-05-05 | 2026-09-09 |  |  |  |  |  |  |  |  |  |  |  |  |
| MIL-1000 |  | Notice to Proceed (05.05.25) | milestone | 0d | 2025-05-05 A | 2025-05-05 A |  | 100% |  |  |  |  |  |  |  |  | Precon | Public |
| MIL-1010 |  | Weathertight - Main Building | milestone | 0d | 2026-04-30 | 2026-04-30 | CON-MB-L2-1050 FF, CON-MB-L1-1250 FF, CON-MB-L5-1030 FF, CON-MB-L4-1040 FF, CON-MB-L3-1050 FF, CON-MB-L5-1020 FF, CON-MB-L1-1260 FF |  |  |  |  | 35d | 0d |  |  |  |  |  |
| MIL-1020 |  | Permanent Power | milestone | 0d | 2026-06-17 | 2026-06-17 | CON-POW-1070 |  |  |  |  | 34d | 25d |  |  |  |  |  |
| MIL-1030 |  | Substantial Completion (08.24.26) | milestone | 0d | 2026-08-17 | 2026-08-17 | SITE-MB-1090 FF, CON-MB-2010 FF, SITE-MB-1140 FF, CLO-MB-1020 FF, CLO-OFF-1000 FF |  |  |  |  | 7d | 23d | finish on or before 2026-08-24 | G7 |  |  |  |
| MIL-1040 |  | Final Completion - Main Building | milestone | 0d | 2026-09-09 | 2026-09-09 | CLO-OFF-1050, CLO-MB-1050, MIL-1030 |  |  |  |  | 10d | 0d | finish on or before 2026-09-19 | G7 |  |  |  |
|  | 1 | **Preconstruction** |  |  | 2025-05-05 | 2026-03-30 |  |  |  |  |  |  |  |  |  |  |  |  |
|  | 1 | **Procurement** |  |  | 2025-05-05 | 2026-03-30 |  |  |  |  |  |  |  |  |  |  |  |  |
| PROC-1000 |  | Precon Construction |  | 1d | 2025-05-05 A | 2025-05-05 A | MIL-1000 SS | 100% |  |  |  |  |  |  |  |  | Precon | Public |
| PROC-1010 |  | Contractor Procurement |  | 60d | 2025-05-06 A | 2025-11-07 A | MIL-1000, PROC-1000 | 100% |  | 2025-05-06 | 2025-07-28 |  |  |  |  |  |  |  |
|  | 2 | **Long Lead Items** |  |  | 2025-06-12 | 2026-03-30 |  |  |  |  |  |  |  |  |  |  |  |  |
| PROC-1020 |  | Elevator Submittal |  | 23d | 2025-06-12 A | 2025-07-14 A | PROC-1010 | 100% |  |  |  |  |  |  |  | Long | Construction | Public |
| PROC-1030 |  | Brick Submittal and Fabrication |  | 60d | 2025-07-01 A | 2025-09-19 A | MIL-1000 SS | 100% |  | 2025-07-01 | 2025-09-22 |  |  |  |  | Long | Construction | Public |
| PROC-1120 |  | Ferguson Tank Submittal |  | 20d | 2025-07-29 A | 2025-10-15 A | PROC-1010 | 100% |  | 2025-11-17 | 2025-12-12 |  |  |  |  |  |  |  |
| PROC-1040 |  | Switchgear Submittal |  | 15d | 2025-07-31 A | 2025-08-20 A | PROC-1010 | 100% |  |  |  |  |  |  |  | Long | Construction | Public |
| PROC-1050 |  | Light Fixtures Submittal |  | 20d | 2025-08-04 A | 2025-08-29 A | PROC-1010 | 100% |  |  |  |  |  |  |  | Long | Construction | Public |
| PROC-1060 |  | Switchgear Fabrication |  | 30d | 2025-08-21 A | 2025-09-30 A | PROC-1040 | 100% |  | 2025-08-21 | 2025-10-01 |  |  |  |  | Long | Construction | Public |
| PROC-1070 |  | Light Fixtures Fabrication |  | 20d | 2025-09-01 A | 2025-09-25 A | PROC-1050 | 100% |  | 2025-09-01 | 2025-09-26 |  |  |  |  | Long | Construction | Public |
| PROC-1080 |  | Glass Field Measurement and Fabrication - Office |  | 45d | 2025-09-15 A | 2025-12-22 A | PROC-1010 SS | 100% |  | 2025-09-15 | 2025-11-14 |  |  |  |  | Long | Construction | Public |
| PROC-1110 |  | HVAC Equipment Submittal |  | 20d | 2025-09-15 A | 2025-09-30 A | PROC-1010 | 100% |  | 2025-10-15 | 2025-11-11 |  |  |  |  | Long | Construction | Public |
| PROC-1130 |  | HVAC Equipment Fabrication |  | 70d | 2025-10-20 A | 2026-02-16 A | PROC-1110 | 100% |  | 2025-12-15 | 2026-03-20 |  |  |  |  | Long | Construction | Public |
| PROC-1090 |  | Fire Pump Submittal |  | 40d | 2025-10-27 A | 2026-03-02 | PROC-1010 | 98% | 1d | 2025-09-29 | 2025-11-21 | 90d | 0d |  |  | Long | Construction | Public |
| PROC-1140 |  | Ferguson Tank Fabrication |  | 15d | 2025-10-27 A | 2025-11-21 A | PROC-1120 | 100% |  | 2025-11-17 | 2025-12-05 |  |  |  |  |  |  |  |
| PROC-1100 |  | Elevator Fabrication |  | 50d | 2026-01-05 A | 2026-03-27 | PROC-1020 | 60% | 20d | 2026-03-02 | 2026-05-08 | 31d | 12d |  |  | Long | Construction | Public |
| PROC-1150 |  | Fire Pump Fabrication |  | 20d | 2026-03-03 | 2026-03-30 | PROC-1090 |  |  |  |  | 90d | 81d |  |  | Long | Construction | Public |

| ID | WBS | Activity | Duration | Start | Finish | Predecessors | Complete | Remaining | Planned start | Planned finish | Total float | Free float | Constraint | 3 | 2 | 1 |
| --- | --- | --- | --- | --- | --- | --- | --- | --- | --- | --- | --- | --- | --- | --- | --- | --- |
|  | 5 | **Fragnets** |  | 2026-01-26 | 2026-02-23 |  |  |  |  |  |  |  |  |  |  |  |
|  | 1 | **Fragnet 01 - Weather Impact January 2026** |  | 2026-01-26 | 2026-02-09 |  |  |  |  |  |  |  |  |  |  |  |
| FRAG01-1000 |  | Site Shutdown Due to Ice and Road Conditions | 2d | 2026-01-26 A | 2026-01-27 A | MIL-1000 SS | 100% |  | 2026-02-02 | 2026-02-03 |  |  |  |  |  |  |
| FRAG01-1010 |  | Labor Crew Clear Snow and Start Tenting | 5d | 2026-01-28 A | 2026-02-05 A | FRAG01-1000 | 100% |  | 2026-02-02 | 2026-02-06 |  |  |  |  |  |  |
| FRAG01-1030 |  | Melt Snow/Ice Using Diesel Heat | 5d | 2026-02-06 A | 2026-02-09 A | FRAG01-1010, MIL-1000 SS, FRAG02-1000 | 100% |  | 2026-03-11 | 2026-03-17 |  |  |  |  |  |  |
|  | 2 | **Fragnet 02 - Weather Impact February 2026** |  | 2026-02-02 | 2026-02-23 |  |  |  |  |  |  |  |  |  |  |  |
| FRAG02-1000 |  | Weather Delay - 2/2-2/5 | 5d | 2026-02-02 A | 2026-02-05 A | MIL-1000 SS | 100% |  | 2026-03-02 | 2026-03-06 |  |  |  |  |  |  |
| FRAG02-1010 |  | Weather Delay - 2/23 | 5d | 2026-02-23 A | 2026-02-23 A | MIL-1000 SS | 100% |  | 2026-03-02 | 2026-03-06 |  |  |  |  |  |  |
|  | 2 | **Construction** |  | 2025-05-05 | 2026-08-17 |  |  |  |  |  |  |  |  |  |  |  |
|  | 2 | **Site Work** |  | 2025-05-05 | 2026-08-17 |  |  |  |  |  |  |  |  |  |  |  |
| SITE-1020 |  | Mobilization | 1d | 2025-05-05 A | 2025-05-05 A | MIL-1000 | 100% |  |  |  |  |  |  | Site | Construction | Public |
| SITE-1000 |  | Erosion Control Phase I | 4d | 2025-05-06 A | 2025-05-09 A | SITE-1020 | 100% |  |  |  |  |  |  | Site | Construction | Public |
| SITE-1010 |  | Stormwater Management Ponds Phase I | 10d | 2025-11-03 A | 2025-11-21 A | PROC-1140, SITE-MB-1040 | 100% |  | 2026-01-01 | 2026-01-14 |  |  |  | Site | Construction | Public |
| SITE-1030 |  | Stormwater Management Ponds Phase II | 10d | 2026-04-24 | 2026-05-07 | CON-MB-L5-1100, SITE-MB-1070 |  |  |  |  | 79d | 72d |  | Site | Construction | Public |
|  | 1 | **Site Work - Main Building** |  | 2025-05-12 | 2026-08-17 |  |  |  |  |  |  |  |  |  |  |  |
| SITE-MB-1010 |  | Demo/Clear Site - Main Building | 10d | 2025-05-12 A | 2025-05-23 A | SITE-1000 | 100% |  |  |  |  |  |  | Site | Construction | Public |
| SITE-MB-1020 |  | Rough Grading - Main Building | 10d | 2025-05-26 A | 2025-06-06 A | SITE-MB-1010 | 100% |  |  |  |  |  |  | Site | Construction | Public |
| SITE-MB-1030 |  | Building Pad Delivery - Main Building | 35d | 2025-06-09 A | 2025-07-25 A | SITE-MB-1020 | 100% |  |  |  |  |  |  | Site | Construction | Public |
| SITE-MB-1040 |  | Domestic & Fire Water Online - Main Building | 27d | 2025-07-28 A | 2025-09-02 A | SITE-MB-1030 | 100% |  |  |  |  |  |  | Site | Construction | Public |
| SITE-MB-1050 |  | Storm Structures and Pipe - Main Building | 30d | 2025-11-03 A | 2026-03-13 | SITE-MB-1040 | 67% | 10d | 2025-12-01 | 2026-01-09 | 83d | 12d |  | Site | Construction | Public |
| SITE-MB-1070 |  | Fine Grading - Main Building | 15d | 2026-03-02 | 2026-03-20 | SITE-1010 |  |  |  |  | 16d | 11d |  | Site | Construction | Public |
| SITE-MB-1060 |  | Sanitary Sewer - Main Building | 10d | 2026-04-01 | 2026-04-14 | SITE-MB-1050 |  |  |  |  | 71d | 66d | start on or after 2026-04-01 | Site | Construction | Public |
| SITE-MB-1100 |  | Curb and Gutter - Main Building | 7d | 2026-05-27 | 2026-06-04 | CON-MB-EXT-1020, CON-MB-EXT-1000, SITE-MB-1070 |  |  |  |  | 34d | 0d |  | Site | Construction | Public |
| SITE-MB-1120 |  | Stone Base Parking Lot - Main Building | 10d | 2026-06-05 | 2026-06-18 | SITE-MB-1100 |  |  |  |  | 34d | 29d |  | Site | Construction | Public |
| SITE-MB-1080 |  | Sidewalk - Main Building | 10d | 2026-07-16 | 2026-07-29 | SITE-MB-1100, SITE-MB-1060, CON-MB-EXT-1100, CON-MB-EXT-1050 |  |  |  |  | 5d | 0d |  | Site | Construction | Public |
| SITE-MB-1090 |  | Landscape - Main Building | 10d | 2026-07-16 | 2026-07-29 | CON-MB-EXT-1050, CON-MB-EXT-1030 |  |  |  |  | 18d | 13d |  | Site | Construction | Public |
| SITE-MB-1130 |  | Paving (Includes SHA Work) - Main Building | 11d | 2026-07-30 | 2026-08-13 | SITE-MB-1080, SITE-MB-1120 |  |  |  |  | 5d | 0d |  | Site | Construction | Public |
| SITE-MB-1140 |  | Line Striping - Main Building | 2d | 2026-08-14 | 2026-08-17 | SITE-MB-1130 |  |  |  |  | 5d | 0d |  | Site | Construction | Public |

| ID | WBS | Activity | Duration | Start | Finish | Predecessors | Complete | Planned start | Planned finish | Total float | Free float | 6 | 5 | 4 | 3 | 2 | 1 |
| --- | --- | --- | --- | --- | --- | --- | --- | --- | --- | --- | --- | --- | --- | --- | --- | --- | --- |
|  | 3 | **Site Work - Office** |  | 2025-05-12 | 2026-03-25 |  |  |  |  |  |  |  |  |  |  |  |  |
| SITE-OFF-1000 |  | Demo/Clear Site - Office Building | 10d | 2025-05-12 A | 2025-05-23 A | SITE-1000 | 100% |  |  |  |  |  |  |  | Site | Construction | Public |
| SITE-OFF-1010 |  | Rough Grading - Office Building | 10d | 2025-05-26 A | 2025-06-06 A | SITE-OFF-1000 | 100% |  |  |  |  |  |  |  | Site | Construction | Public |
| SITE-OFF-1020 |  | Building Pad Delivery - Office Building | 35d | 2025-06-09 A | 2025-07-25 A | SITE-OFF-1010 | 100% |  |  |  |  |  |  |  | Site | Construction | Public |
| SITE-OFF-1030 |  | Domestic & Fire Water Online - Office Building | 10d | 2026-03-02 | 2026-03-13 | PROC-1010, SITE-OFF-1020 |  |  |  | 106d | 0d |  |  |  | Site | Construction | Public |
| SITE-OFF-1060 |  | Fine Grading - Office Building | 6d | 2026-03-02 | 2026-03-09 | PROC-1010, SITE-OFF-1020 |  |  |  | 110d | 0d |  |  |  | Site | Construction | Public |
| SITE-OFF-1080 |  | Landscape - Office Building | 1d | 2026-03-10 | 2026-03-10 | SITE-OFF-1060 |  |  |  | 121d | 14d |  |  |  | Site | Construction | Public |
| SITE-OFF-1090 |  | Curb and Gutter - Office Building | 1d | 2026-03-16 | 2026-03-16 | SITE-OFF-1030, SITE-OFF-1060 |  |  |  | 106d | 0d |  |  |  | Site | Construction | Public |
| SITE-OFF-1070 |  | Sidewalk - Office Building | 2d | 2026-03-17 | 2026-03-18 | CON-OFF-1170, SITE-OFF-1090 |  |  |  | 106d | 0d |  |  |  | Site | Construction | Public |
| SITE-OFF-1110 |  | Stone Base Parking Lot - Office Building | 1d | 2026-03-17 | 2026-03-17 | SITE-OFF-1090 |  |  |  | 107d | 1d |  |  |  | Site | Construction | Public |
| SITE-OFF-1120 |  | Paving - Office Building | 2d | 2026-03-19 | 2026-03-20 | SITE-OFF-1070, SITE-OFF-1110 |  |  |  | 106d | 0d |  |  |  | Site | Construction | Public |
| SITE-OFF-1100 |  | Misc Exterior Items (Vehicle Gate Operator) - Office Building | 3d | 2026-03-23 | 2026-03-25 | SITE-OFF-1120 |  |  |  | 110d | 3d |  |  |  | Site | Construction | Public |
| SITE-OFF-1130 |  | Line Striping - Office Building | 1d | 2026-03-23 | 2026-03-23 | SITE-OFF-1120 |  |  |  | 106d | 5d |  |  |  | Site | Construction | Public |
|  | 1 | **Main Building** |  | 2025-08-04 | 2026-07-21 |  |  |  |  |  |  |  |  |  |  |  |  |
|  | 1 | **Substructure** |  | 2025-08-04 | 2026-03-09 |  |  |  |  |  |  |  |  |  |  |  |  |
| CON-MB-1000 |  | UG Electric Rough In | 10d | 2025-08-04 A | 2025-08-27 A | SITE-MB-1030 | 100% | 2025-08-04 | 2025-08-15 |  |  | First | Structure | Building | Site | Construction | Public |
| CON-MB-1010 |  | UG Plumbing Roughin | 8d | 2025-08-18 A | 2025-08-27 A | CON-MB-1000 | 100% |  |  |  |  | First | Structure | Building | Site | Construction | Public |
| CON-MB-1020 |  | Prep/Pour SOG 1/2 | 12d | 2025-08-27 A | 2025-09-10 A | CON-MB-1010, CON-MB-1000 | 100% | 2025-08-27 | 2025-09-11 |  |  | First | Structure | Building | Site | Construction | Public |
| CON-MB-1030 |  | Prep/Pour SOG 2/2 | 18d | 2025-08-29 A | 2025-09-22 A | CON-MB-1020 | 100% | 2025-08-29 | 2025-09-23 |  |  | First | Structure | Building | Site | Construction | Public |
| CON-MB-1040 |  | Foundation Waterproofing | 5d | 2026-03-03 | 2026-03-09 | CON-MB-L1-1250, CON-MB-1030 |  |  |  | 5d | 0d | First | Structure | Building | Site | Construction | Public |
|  | 9 | **Superstructure** |  | 2025-09-29 | 2026-05-01 |  |  |  |  |  |  |  |  |  |  |  |  |
|  | 1 | **First Floor Superstructure** |  | 2025-09-29 | 2026-02-27 |  |  |  |  |  |  |  |  |  |  |  |  |
| CON-MB-L1-1040 |  | Structural Steel Columns & Beams - 1st Floor | 18d | 2025-09-29 A | 2025-10-28 A | CON-MB-1030 | 100% | 2025-11-03 | 2025-11-26 |  |  | First | Structure | Building | Site | Construction | Public |
| CON-MB-L1-1060 |  | Metal Decking - 2nd floor | 4d | 2025-10-23 A | 2025-10-28 A | CON-MB-L1-1040 | 100% | 2025-11-27 | 2025-12-02 |  |  | First | Structure | Building | Site | Construction | Public |
| CON-MB-L1-1090 |  | Exterior & Interior Framing - 1st Floor | 10d | 2025-10-28 A | 2026-02-27 A | CON-MB-L1-1040, CON-MB-L1-1070 | 100% | 2025-11-04 | 2025-11-17 |  |  | First | Structure | Building | Site | Construction | Public |
| CON-MB-L1-1070 |  | Prep/Pour SOD - 2nd Floor | 8d | 2025-10-29 A | 2025-11-01 A | CON-MB-L1-1060 | 100% | 2025-12-03 | 2025-12-12 |  |  | First | Structure | Building | Site | Construction | Public |

| ID | WBS | Activity | Duration | Start | Finish | Predecessors | Complete | Remaining | Planned start | Planned finish | Total float | Free float | 6 | 5 | 4 | 3 | 2 | 1 |
| --- | --- | --- | --- | --- | --- | --- | --- | --- | --- | --- | --- | --- | --- | --- | --- | --- | --- | --- |
|  | 2 | **Second Floor Superstructure** |  | 2025-11-04 | 2026-03-02 |  |  |  |  |  |  |  |  |  |  |  |  |  |
| CON-MB-L2-1000 |  | Structural Steel Columns & Beams - 2nd Floor | 14d | 2025-11-04 A | 2025-11-21 A | CON-MB-L1-1040, CON-MB-L1-1070 | 100% |  | 2025-12-01 | 2025-12-18 |  |  | Second | Structure | Building | Site | Construction | Public |
| CON-MB-L2-1010 |  | Metal Decking 3rd Floor | 4d | 2025-11-24 A | 2025-11-27 A | CON-MB-L2-1000 | 100% |  | 2025-12-19 | 2025-12-24 |  |  | Second | Structure | Building | Site | Construction | Public |
| CON-MB-L2-1020 |  | Prep/Pour SOD - 3rd floor | 8d | 2025-11-28 A | 2025-12-04 A | CON-MB-L2-1010 | 100% |  | 2025-12-25 | 2026-01-05 |  |  | Second | Structure | Building | Site | Construction | Public |
| CON-MB-L2-1040 |  | Exterior & Interior Framing - 2nd Floor | 10d | 2026-02-02 A | 2026-03-02 | CON-MB-L2-1090, CON-MB-L2-1020 | 90% | 1d | 2026-03-23 | 2026-04-03 | 5d | 0d | Second | Structure | Building | Site | Construction | Public |
|  | 3 | **Third Floor Superstructure** |  | 2025-12-01 | 2026-03-18 |  |  |  |  |  |  |  |  |  |  |  |  |  |
| CON-MB-L3-1000 |  | Structural Steel Columns & Beams - 3rd Floor | 14d | 2025-12-01 A | 2025-12-19 A | CON-MB-L2-1000, CON-MB-L2-1020 | 100% |  | 2026-01-01 | 2026-01-20 |  |  | Third | Structure | Building | Site | Construction | Public |
| CON-MB-L3-1010 |  | Metal Decking - 4th Floor | 4d | 2025-12-19 A | 2025-12-23 A | CON-MB-L3-1000 | 100% |  | 2026-01-21 | 2026-01-26 |  |  | Third | Structure | Building | Site | Construction | Public |
| CON-MB-L3-1020 |  | Prep & Pour SOD - 4th Floor | 8d | 2025-12-22 A | 2026-01-05 A | CON-MB-L3-1010 | 100% |  | 2026-02-02 | 2026-02-11 |  |  | Third | Structure | Building | Site | Construction | Public |
| CON-MB-L3-1040 |  | Exterior & Interior Framing - 3rd Floor | 10d | 2026-03-05 | 2026-03-18 | CON-MB-L3-1060, CON-MB-L3-1020 |  |  |  |  | 31d | 0d | Third | Structure | Building | Site | Construction | Public |
|  | 6 | **Fourth Floor Superstructure** |  | 2026-01-07 | 2026-03-30 |  |  |  |  |  |  |  |  |  |  |  |  |  |
| CON-MB-L4-1000 |  | Structural Steel Columns & Beams - 4th Floor | 14d | 2026-01-07 A | 2026-01-23 A | CON-MB-L3-1000, CON-MB-L3-1020 | 100% |  | 2026-03-05 | 2026-03-24 |  |  | Fourth | Structure | Building | Site | Construction | Public |
| CON-MB-L4-1010 |  | Metal Decking - 5th Floor | 4d | 2026-01-20 A | 2026-01-23 A | CON-MB-L4-1000 | 100% |  | 2026-03-25 | 2026-03-30 |  |  | Fourth | Structure | Building | Site | Construction | Public |
| CON-MB-L4-1020 |  | Prep & Pour SOD - 5th Floor | 4d | 2026-02-09 A | 2026-02-11 A | FRAG01-1030, CON-MB-L4-1010, FRAG02-1000 | 100% |  | 2026-03-31 | 2026-04-03 |  |  | Fourth | Structure | Building | Site | Construction | Public |
| CON-MB-L4-1030 |  | Exterior & Interior Framing - 4th Floor | 10d | 2026-03-17 | 2026-03-30 | CON-MB-L4-1050, CON-MB-L4-1020 |  |  |  |  | 7d | 0d | Fourth | Structure | Building | Site | Construction | Public |
|  | 4 | **Fifth Floor Superstructure** |  | 2026-02-16 | 2026-05-01 |  |  |  |  |  |  |  |  |  |  |  |  |  |
| CON-MB-L5-1000 |  | Structural Steel Columns & Beams - 5th Floor | 14d | 2026-02-16 A | 2026-03-10 | CON-MB-L4-1000, CON-MB-L4-1020, FRAG02-1010 | 50% | 7d | 2026-04-06 | 2026-04-23 | 17d | 0d | Fifth | Structure | Building | Site | Construction | Public |
| CON-MB-L5-1010 |  | Framing & Metal Decking - Roof | 10d | 2026-03-11 | 2026-03-24 | CON-MB-L5-1000, FRAG02-1010 |  |  |  |  | 17d | 0d | Fifth | Structure | Building | Site | Construction | Public |
| CON-MB-L5-1050 |  | Exterior & Interior Framing - 5th Floor | 10d | 2026-04-20 | 2026-05-01 | CON-MB-L5-1040 SS+3d, CON-MB-L5-1010, CON-MB-L5-1000 |  |  |  |  | 17d | 0d | Fifth | Structure | Building | Site | Construction | Public |
|  | 3 | **Interior Finishes** |  | 2025-09-15 | 2026-07-20 |  |  |  |  |  |  |  |  |  |  |  |  |  |
| CON-MB-2020 |  | Winterization | 5d | 2025-12-22 A | 2025-12-29 A | MIL-1000 SS | 100% |  | 2026-01-01 | 2026-01-07 |  |  |  |  |  |  |  |  |
| CON-MB-2000 |  | Grind/Seal Floors (Full Building) | 10d | 2026-06-26 | 2026-07-09 | CON-MB-L5-1170, CON-MB-L4-1140, CON-MB-L3-1150, CON-MB-L2-1070, CON-MB-L1-1270 |  |  |  |  | 17d | 0d |  |  |  |  |  |  |
| CON-MB-2010 |  | Final Cleaning (Full Building) | 15d | 2026-06-30 | 2026-07-20 | CON-MB-2000 FF+2d, CON-MB-2000 SS+2d |  |  |  |  | 25d | 20d |  |  |  |  |  |  |
|  | 6 | **Elevator** |  | 2025-09-15 | 2026-07-14 |  |  |  |  |  |  |  |  |  |  |  |  |  |
| CON-ELEV-1000 |  | Elevator 3 CMU Shaft | 12d | 2025-09-15 A | 2025-09-30 A | CON-MB-1020 | 100% |  |  |  |  |  | First | Structure | Building | Site | Construction | Public |
| CON-ELEV-1010 |  | Elevator 1/2 CMU Shaft | 14d | 2025-10-01 A | 2025-10-17 A | CON-ELEV-1000 | 100% |  | 2026-01-01 | 2026-01-20 |  |  | First | Structure | Building | Site | Construction | Public |
| CON-ELEV-1020 |  | Elevator Install | 65d | 2026-04-15 | 2026-07-14 | CON-ELEV-1000, CON-ELEV-1010, PROC-1100, PROC-1020, CON-MB-L5-1020 |  |  |  |  | 19d | 10d | Elevator | Structure | Building | Site | Construction | Public |

| ID | WBS | Activity | Duration | Start | Finish | Predecessors | Complete | Remaining | Planned start | Planned finish | Total float | Free float | 6 | 5 | 4 | 3 | 2 | 1 |
| --- | --- | --- | --- | --- | --- | --- | --- | --- | --- | --- | --- | --- | --- | --- | --- | --- | --- | --- |
|  | 8 | **Stair Shafts** |  | 2025-09-15 | 2026-04-20 |  |  |  |  |  |  |  |  |  |  |  |  |  |
| CON-STAIR-1000 |  | Stair Tower B CMU | 25d | 2025-09-15 A | 2025-10-24 A | CON-MB-1020 | 100% |  | 2025-09-15 | 2025-10-17 |  |  | First | Structure | Building | Site | Construction | Public |
| CON-STAIR-1010 |  | Stair Tower A CMU | 10d | 2025-10-03 A | 2025-10-17 A | CON-ELEV-1000 | 100% |  | 2025-11-03 | 2025-11-14 |  |  | First | Structure | Building | Site | Construction | Public |
| CON-STAIR-1020 |  | Stair Stringers and Pans | 10d | 2025-12-29 A | 2026-01-07 A | CON-STAIR-1010, CON-STAIR-1000 | 100% |  | 2026-01-01 | 2026-01-14 |  |  | Second | Structure | Building | Site | Construction | Public |
| CON-STAIR-1030 |  | Doors & HW - Stairs | 2d | 2026-04-15 | 2026-04-16 | CON-STAIR-1020, CON-STAIR-1000, CON-STAIR-1010, CON-MB-L5-1020 |  |  |  |  | 77d | 0d | Second | Structure | Building | Site | Construction | Public |
| CON-STAIR-1040 |  | Prep/Paint - Stairs | 2d | 2026-04-17 | 2026-04-20 | CON-STAIR-1030, CON-STAIR-1020 |  |  |  |  | 92d | 85d | Second | Structure | Building | Site | Construction | Public |
|  | 1 | **First Floor Interior Finishes** |  | 2025-12-12 | 2026-05-22 |  |  |  |  |  |  |  |  |  |  |  |  |  |
| CON-MB-L1-1130 |  | Fireproofing Structural Steel - 1st Floor | 8d | 2025-12-12 A | 2025-12-30 A | CON-MB-2020, CON-MB-L1-1070 | 100% |  | 2026-01-01 | 2026-01-12 |  |  | First | Structure | Building | Site | Construction | Public |
| CON-MB-L1-1160 |  | HVAC Rough In - 1st Floor | 3d | 2026-01-06 A | 2026-02-13 A | CON-MB-L1-1090, PROC-1130, CON-MB-L1-1130 | 100% |  | 2026-03-02 | 2026-03-04 |  |  | First | Structure | Building | Site | Construction | Public |
| CON-MB-L1-1140 |  | OH & Wall Plumbing Rough In - 1st Floor | 3d | 2026-01-12 A | 2026-02-10 A | CON-MB-L1-1090, CON-MB-L1-1130 | 100% |  | 2026-03-02 | 2026-03-04 |  |  | First | Structure | Building | Site | Construction | Public |
| CON-MB-L1-1170 |  | Sprinkler Rough In - 1st Floor | 10d | 2026-01-12 A | 2026-02-27 A | PROC-1010, CON-MB-L1-1090, CON-MB-L1-1130 | 100% |  | 2026-03-02 | 2026-03-13 |  |  | First | Structure | Building | Site | Construction | Public |
| CON-MB-L1-1150 |  | Electric & Low Voltage OH & Wall Rough In - 1st Floor | 10d | 2026-02-11 A | 2026-02-25 A | CON-MB-L1-1090, CON-MB-L1-1130 | 100% |  | 2026-03-02 | 2026-03-13 |  |  | First | Structure | Building | Site | Construction | Public |
| CON-MB-L1-1180 |  | OH & Wall MEP Inspections - 1st Floor | 2d | 2026-03-02 | 2026-03-03 | CON-MB-L1-1160, CON-MB-L1-1150, CON-MB-L1-1140 |  |  |  |  | 39d | 22d | First | Structure | Building | Site | Construction | Public |
| CON-MB-L1-1270 |  | Janus Wall Panels - 1st Floor | 15d | 2026-04-03 | 2026-04-23 | CON-MB-L1-1180, CON-MB-L2-1070 |  |  |  |  | 17d | 0d | First | Structure | Building | Site | Construction | Public |
| CON-MB-L1-1190 |  | Hang & Finish Drywall - 1st Floor | 7d | 2026-05-01 | 2026-05-11 | MIL-1010, CON-MB-L1-1180 |  |  |  |  | 68d | 0d | First | Structure | Building | Site | Construction | Public |
| CON-MB-L1-1200 |  | Doors & HW - 1st Floor | 2d | 2026-05-12 | 2026-05-13 | CON-MB-L1-1190, CON-MB-L1-1180 |  |  |  |  | 68d | 0d | First | Structure | Building | Site | Construction | Public |
| CON-MB-L1-1210 |  | Prep/Paint Walls & Ceilings - 1st Floor | 2d | 2026-05-14 | 2026-05-15 | CON-MB-L1-1190, CON-MB-L1-1200 |  |  |  |  | 68d | 0d | First | Structure | Building | Site | Construction | Public |
| CON-MB-L1-1220 |  | Plumbing Fixtures - 1st Floor | 2d | 2026-05-18 | 2026-05-19 | CON-MB-L1-1210 |  |  |  |  | 71d | 64d | First | Structure | Building | Site | Construction | Public |
| CON-MB-L1-1230 |  | Diffusers - 1st Floor | 5d | 2026-05-18 | 2026-05-22 | CON-MB-L1-1210 |  |  |  |  | 68d | 61d | First | Structure | Building | Site | Construction | Public |
| CON-MB-L1-1240 |  | Light Fixtures - 1st Floor | 5d | 2026-05-18 | 2026-05-22 | PROC-1070, CON-MB-L1-1210 |  |  |  |  | 68d | 61d | First | Structure | Building | Site | Construction | Public |
|  | 2 | **Second Floor Interior Finishes** |  | 2026-01-05 | 2026-04-02 |  |  |  |  |  |  |  |  |  |  |  |  |  |
| CON-MB-L2-1090 |  | Fireproofing Structural Steel - 2nd Floor | 8d | 2026-01-05 A | 2026-01-23 A | CON-MB-L2-1020, CON-MB-L1-1130 | 100% |  | 2026-03-11 | 2026-03-20 |  |  | Second | Structure | Building | Site | Construction | Public |
| CON-MB-L2-1110 |  | HVAC Rough In - 2nd Floor | 5d | 2026-02-19 A | 2026-03-03 | CON-MB-L2-1040 SS+5d, PROC-1130, CON-MB-L2-1090 | 60% | 2d | 2026-03-03 | 2026-03-09 | 23d | 6d | Second | Structure | Building | Site | Construction | Public |
| CON-MB-L2-1100 |  | Electric OH & Wall Rough In - 2nd Floor | 10d | 2026-02-26 A | 2026-03-11 | CON-MB-L2-1040 SS+5d, CON-MB-L2-1090 | 20% | 8d | 2026-03-03 | 2026-03-16 | 17d | 0d | Second | Structure | Building | Site | Construction | Public |
| CON-MB-L2-1060 |  | Doors & HW - 2nd Floor | 2d | 2026-03-03 | 2026-03-04 | CON-MB-L2-1040 |  |  |  |  | 123d | 0d | Second | Structure | Building | Site | Construction | Public |
| CON-MB-L2-1120 |  | Sprinkler Rough In - 2nd Floor | 10d | 2026-03-03 | 2026-03-16 | CON-MB-L2-1040, CON-MB-L2-1090 |  |  |  |  | 110d | 101d | Second | Structure | Building | Site | Construction | Public |
| CON-MB-L2-1080 |  | Prep/Paint Walls - 2nd Floor | 2d | 2026-03-05 | 2026-03-06 | CON-MB-L2-1060 |  |  |  |  | 123d | 116d | Second | Structure | Building | Site | Construction | Public |
| CON-MB-L2-1140 |  | OH & Wall MEP Inspections - 2nd Floor | 1d | 2026-03-12 | 2026-03-12 | CON-MB-L2-1110, CON-MB-L2-1040, CON-MB-L2-1100 |  |  |  |  | 17d | 0d | Second | Structure | Building | Site | Construction | Public |
| CON-MB-L2-1070 |  | Janus Wall Panels - 2nd Floor | 15d | 2026-03-13 | 2026-04-02 | CON-MB-L2-1140 |  |  |  |  | 17d | 0d | Second | Structure | Building | Site | Construction | Public |
| CON-MB-L2-1150 |  | Diffusers - 2nd Floor | 5d | 2026-03-13 | 2026-03-19 | CON-MB-L2-1140 |  |  |  |  | 114d | 107d | Second | Structure | Building | Site | Construction | Public |
| CON-MB-L2-1160 |  | Light Fixtures - 2nd Floor | 5d | 2026-03-13 | 2026-03-19 | PROC-1070, CON-MB-L2-1140 |  |  |  |  | 114d | 107d | Second | Structure | Building | Site | Construction | Public |

| ID | WBS | Activity | Duration | Start | Finish | Predecessors | Complete | Remaining | Planned start | Planned finish | Total float | Free float | 6 | 5 | 4 | 3 | 2 | 1 |
| --- | --- | --- | --- | --- | --- | --- | --- | --- | --- | --- | --- | --- | --- | --- | --- | --- | --- | --- |
|  | 3 | **Third Floor Interior Finishes** |  | 2026-02-23 | 2026-05-21 |  |  |  |  |  |  |  |  |  |  |  |  |  |
| CON-MB-L3-1060 |  | Fire Proofing Structural Steel - 3rd Floor | 8d | 2026-02-23 A | 2026-03-04 | CON-MB-L3-1000, CON-MB-L3-1020, CON-MB-L2-1090 | 62% | 3d | 2026-03-23 | 2026-04-01 | 7d | 0d | Third | Structure | Building | Site | Construction | Public |
| CON-MB-L3-1070 |  | OH & Wall Plumbing Rough In - 3rd Floor | 3d | 2026-03-19 | 2026-03-23 | CON-MB-L3-1040, CON-MB-L3-1060 |  |  |  |  | 38d | 7d | Third | Structure | Building | Site | Construction | Public |
| CON-MB-L3-1080 |  | Electric & Low Voltage OH & Wall Rough In - 3rd Floor | 10d | 2026-03-19 | 2026-04-01 | CON-MB-L3-1040, CON-MB-L3-1060 |  |  |  |  | 31d | 0d | Third | Structure | Building | Site | Construction | Public |
| CON-MB-L3-1090 |  | HVAC Rough In - 3rd Floor | 5d | 2026-03-19 | 2026-03-25 | CON-MB-L3-1040, PROC-1130, CON-MB-L3-1060 |  |  |  |  | 36d | 5d | Third | Structure | Building | Site | Construction | Public |
| CON-MB-L3-1100 |  | Sprinkler Rough In - 3rd Floor | 10d | 2026-03-19 | 2026-04-01 | CON-MB-L3-1040, CON-MB-L3-1060 |  |  |  |  | 98d | 89d | Third | Structure | Building | Site | Construction | Public |
| CON-MB-L3-1120 |  | OH & Wall MEP Inspections - 3rd Floor | 2d | 2026-04-02 | 2026-04-03 | CON-MB-L3-1080, CON-MB-L3-1070, CON-MB-L3-1090 |  |  |  |  | 31d | 14d | Third | Structure | Building | Site | Construction | Public |
| CON-MB-L3-1150 |  | Janus Wall Panels - 3rd Floor | 15d | 2026-04-24 | 2026-05-14 | CON-MB-L3-1120, CON-MB-L1-1270 |  |  |  |  | 17d | 0d | Third | Structure | Building | Site | Construction | Public |
| CON-MB-L3-1130 |  | Hang/Finish Drywall - 3rd Floor | 7d | 2026-05-01 | 2026-05-11 | MIL-1010, CON-MB-L3-1120 |  |  |  |  | 62d | 0d | Third | Structure | Building | Site | Construction | Public |
| CON-MB-L3-1140 |  | Prep/Paint Walls & Ceilings - 3rd Floor | 3d | 2026-05-12 | 2026-05-14 | CON-MB-L3-1130 |  |  |  |  | 62d | 0d | Third | Structure | Building | Site | Construction | Public |
| CON-MB-L3-1160 |  | Plumbing Fixtures - 3rd Floor | 4d | 2026-05-15 | 2026-05-20 | CON-MB-L3-1140 |  |  |  |  | 63d | 54d | Third | Structure | Building | Site | Construction | Public |
| CON-MB-L3-1170 |  | Diffusers - 3rd Floor | 5d | 2026-05-15 | 2026-05-21 | CON-MB-L3-1140 |  |  |  |  | 62d | 53d | Third | Structure | Building | Site | Construction | Public |
| CON-MB-L3-1180 |  | Light Fixtures - 3rd Floor | 5d | 2026-05-15 | 2026-05-21 | PROC-1070, CON-MB-L3-1140 |  |  |  |  | 62d | 53d | Third | Structure | Building | Site | Construction | Public |
|  | 4 | **Fourth Floor Interior Finishes** |  | 2026-03-05 | 2026-06-04 |  |  |  |  |  |  |  |  |  |  |  |  |  |
| CON-MB-L4-1050 |  | Fire Proofing Structural Steel - 4th Floor | 8d | 2026-03-05 | 2026-03-16 | CON-MB-L3-1020, CON-MB-L4-1020, CON-MB-L3-1060 |  |  |  |  | 7d | 0d | Fourth | Structure | Building | Site | Construction | Public |
| CON-MB-L4-1060 |  | Electric OH & Wall Rough In - 4th Floor | 10d | 2026-03-31 | 2026-04-13 | CON-MB-L4-1030, CON-MB-L4-1050 |  |  |  |  | 39d | 0d | Fourth | Structure | Building | Site | Construction | Public |
| CON-MB-L4-1070 |  | HVAC Rough In - 4th Floor | 5d | 2026-03-31 | 2026-04-06 | CON-MB-L4-1030, PROC-1130, CON-MB-L4-1050 |  |  |  |  | 44d | 5d | Fourth | Structure | Building | Site | Construction | Public |
| CON-MB-L4-1080 |  | Sprinkler Rough In - 4th Floor | 10d | 2026-03-31 | 2026-04-13 | CON-MB-L4-1030, CON-MB-L4-1050 |  |  |  |  | 90d | 81d | Fourth | Structure | Building | Site | Construction | Public |
| CON-MB-L4-1100 |  | OH & Wall MEP Inspections - 4th Floor | 1d | 2026-04-14 | 2026-04-14 | CON-MB-L4-1060, CON-MB-L4-1070 |  |  |  |  | 39d | 0d | Fourth | Structure | Building | Site | Construction | Public |
| CON-MB-L4-1110 |  | Prep/Paint Walls - 4th Floor | 2d | 2026-04-15 | 2026-04-16 | CON-MB-L4-1100 |  |  |  |  | 87d | 78d | Fourth | Structure | Building | Site | Construction | Public |
| CON-MB-L4-1120 |  | Diffusers - 4th Floor | 5d | 2026-04-15 | 2026-04-21 | CON-MB-L4-1100 |  |  |  |  | 84d | 75d | Fourth | Structure | Building | Site | Construction | Public |
| CON-MB-L4-1130 |  | Light Fixtures - 4th Floor | 5d | 2026-04-15 | 2026-04-21 | PROC-1070, CON-MB-L4-1100 |  |  |  |  | 84d | 75d | Fourth | Structure | Building | Site | Construction | Public |
| CON-MB-L4-1140 |  | Janus Wall Panels - 4th Floor | 15d | 2026-05-15 | 2026-06-04 | CON-MB-L4-1100, CON-MB-L3-1150 |  |  |  |  | 17d | 0d | Fourth | Structure | Building | Site | Construction | Public |
|  | 5 | **Fifth Floor Interior Finishes** |  | 2026-04-15 | 2026-06-25 |  |  |  |  |  |  |  |  |  |  |  |  |  |
| CON-MB-L5-1040 |  | Fire Proofing Structural Steel - 5th Floor | 8d | 2026-04-15 | 2026-04-24 | CON-MB-L5-1020, CON-MB-L4-1050, CON-MB-L4-1020, CON-MB-L5-1000 |  |  |  |  | 17d | 0d | Fifth | Structure | Building | Site | Construction | Public |
| CON-MB-L5-1060 |  | Electric & Low Voltage OH & Wall Rough In - 5th Floor | 10d | 2026-05-04 | 2026-05-15 | CON-MB-L5-1040, CON-MB-L5-1050 |  |  |  |  | 23d | 0d | Fifth | Structure | Building | Site | Construction | Public |
| CON-MB-L5-1070 |  | OH & Wall Plumbing Rough In - 5th Floor | 3d | 2026-05-04 | 2026-05-06 | CON-MB-L5-1040, CON-MB-L5-1050 |  |  |  |  | 30d | 7d | Fifth | Structure | Building | Site | Construction | Public |
| CON-MB-L5-1080 |  | HVAC Rough In - 5th Floor | 5d | 2026-05-04 | 2026-05-08 | CON-MB-L5-1040, PROC-1130, CON-MB-L5-1050 |  |  |  |  | 28d | 5d | Fifth | Structure | Building | Site | Construction | Public |
| CON-MB-L5-1090 |  | Sprinkler Rough In - 5th Floor | 10d | 2026-05-04 | 2026-05-15 | CON-MB-L5-1040, CON-MB-L5-1050 |  |  |  |  | 66d | 57d | Fifth | Structure | Building | Site | Construction | Public |
| CON-MB-L5-1110 |  | OH & Wall MEP Inspections - 5th Floor | 1d | 2026-05-18 | 2026-05-18 | CON-MB-L5-1080, CON-MB-L5-1070, CON-MB-L5-1060 |  |  |  |  | 23d | 0d | Fifth | Structure | Building | Site | Construction | Public |
| CON-MB-L5-1120 |  | Hang/Finish Drywall - 5th Floor | 7d | 2026-05-19 | 2026-05-27 | MIL-1010, CON-MB-L5-1110 |  |  |  |  | 23d | 0d | Fifth | Structure | Building | Site | Construction | Public |
| CON-MB-L5-1130 |  | Prep/Paint Walls - 5th Floor | 2d | 2026-05-28 | 2026-05-29 | CON-MB-L5-1120 |  |  |  |  | 59d | 0d | Fifth | Structure | Building | Site | Construction | Public |
| CON-MB-L5-1140 |  | Plumbing Fixtures - 5th Floor | 4d | 2026-06-01 | 2026-06-04 | CON-MB-L5-1130 |  |  |  |  | 59d | 52d | Fifth | Structure | Building | Site | Construction | Public |
| CON-MB-L5-1150 |  | Diffusers - 5th Floor | 1d | 2026-06-01 | 2026-06-01 | CON-MB-L5-1130 |  |  |  |  | 62d | 55d | Fifth | Structure | Building | Site | Construction | Public |
| CON-MB-L5-1160 |  | Light Fixtures - 5th Floor | 1d | 2026-06-01 | 2026-06-01 | PROC-1070, CON-MB-L5-1130 |  |  |  |  | 62d | 55d | Fifth | Structure | Building | Site | Construction | Public |
| CON-MB-L5-1170 |  | Janus Wall Panels - 5th Floor | 15d | 2026-06-05 | 2026-06-25 | CON-MB-L5-1110, CON-MB-L4-1140, CON-MB-L5-1120 |  |  |  |  | 17d | 0d | Fifth | Structure | Building | Site | Construction | Public |

| ID | WBS | Activity | Duration | Start | Finish | Predecessors | Complete | Remaining | Planned start | Planned finish | Total float | Free float | 6 | 5 | 4 | 3 | 2 | 1 |
| --- | --- | --- | --- | --- | --- | --- | --- | --- | --- | --- | --- | --- | --- | --- | --- | --- | --- | --- |
|  | 7 | **Switchgear Room** |  | 2026-03-03 | 2026-06-16 |  |  |  |  |  |  |  |  |  |  |  |  |  |
| CON-POW-1000 |  | Switchgear Room Enclosure | 10d | 2026-03-03 | 2026-03-16 | CON-MB-L2-1020, CON-MB-L1-1250 |  |  |  |  | 34d | 0d | Permanent | Structure | Building | Site | Construction | Public |
| CON-POW-1010 |  | Install Switchgear Equipment | 15d | 2026-03-17 | 2026-04-06 | CON-POW-1000, PROC-1060 |  |  |  |  | 34d | 0d | Permanent | Structure | Building | Site | Construction | Public |
| CON-POW-1020 |  | Switchgear Lights and Power | 15d | 2026-04-07 | 2026-04-27 | PROC-1070, CON-POW-1010 |  |  |  |  | 34d | 0d | Permanent | Structure | Building | Site | Construction | Public |
| CON-POW-1030 |  | City Inspection | 1d | 2026-04-28 | 2026-04-28 | CON-POW-1020 |  |  |  |  | 34d | 0d | Permanent | Structure | Building | Site | Construction | Public |
| CON-POW-1040 |  | Dominion Primary | 20d | 2026-04-29 | 2026-05-26 | CON-POW-1030 |  |  |  |  | 34d | 0d | Permanent | Structure | Building | Site | Construction | Public |
| CON-POW-1050 |  | Dominion Transformer | 5d | 2026-05-27 | 2026-06-02 | CON-POW-1040 |  |  |  |  | 34d | 0d | Permanent | Structure | Building | Site | Construction | Public |
| CON-POW-1060 |  | Dominion Secondary | 5d | 2026-06-03 | 2026-06-09 | CON-POW-1050 |  |  |  |  | 34d | 0d | Permanent | Structure | Building | Site | Construction | Public |
| CON-POW-1070 |  | Power Activation | 5d | 2026-06-10 | 2026-06-16 | CON-POW-1060 |  |  |  |  | 34d | 0d | Permanent | Structure | Building | Site | Construction | Public |
|  | 2 | **Exterior Finishes** |  | 2026-01-05 | 2026-07-21 |  |  |  |  |  |  |  |  |  |  |  |  |  |
| CON-MB-L1-1250 |  | Exterior Sheathing - 1st Floor | 6d | 2026-01-05 A | 2026-03-02 | CON-MB-L1-1090 | 83% | 1d | 2026-03-02 | 2026-03-09 | 5d | 0d | First | Structure | Building | Site | Construction | Public |
| CON-MB-L2-1050 |  | Exterior Sheathing - 2nd Floor | 6d | 2026-03-02 | 2026-03-09 | CON-MB-L2-1040 SS+3d |  |  |  |  | 5d | 0d | Second | Structure | Building | Site | Construction | Public |
| CON-MB-L1-1280 |  | Perimeter Waterproofing - 1st Floor | 3d | 2026-03-10 | 2026-03-12 | CON-MB-1040, CON-MB-L2-1050 |  |  |  |  | 5d | 0d |  |  |  |  |  |  |
| CON-MB-L3-1050 |  | Exterior Sheathing - 3rd Floor | 6d | 2026-03-10 | 2026-03-17 | CON-MB-L3-1040 SS+3d |  |  |  |  | 51d | 32d | Third | Structure | Building | Site | Construction | Public |
| CON-MB-L5-1100 |  | Brick Facade - 1st Floor | 30d | 2026-03-13 | 2026-04-23 | CON-MB-L1-1280 |  |  |  |  | 5d | 0d |  |  |  |  |  |  |
| CON-MB-L4-1040 |  | Exterior Sheathing - 4th Floor | 6d | 2026-03-20 | 2026-03-27 | CON-MB-L4-1030 SS+3d |  |  |  |  | 7d | 0d | Fourth | Structure | Building | Site | Construction | Public |
| CON-MB-L1-1260 |  | Perimeter Waterproofing West Elevation (Excluding 5th Floor) | 4d | 2026-03-30 | 2026-04-02 | CON-MB-L4-1040 |  |  |  |  | 7d | 0d |  |  |  |  |  |  |
| CON-MB-L2-1280 |  | Perimeter Waterproofing North Elevation (Excluding 5th Floor) | 4d | 2026-04-03 | 2026-04-08 | CON-MB-L1-1260, CON-MB-L2-1050 |  |  |  |  | 21d | 16d |  |  |  |  |  |  |
| CON-MB-EXT-1000 |  | Brick West Elevation (Excluding 5th Floor) | 18d | 2026-04-07 | 2026-04-30 | CON-MB-L4-1040, CON-MB-L5-1100 FF+5d, CON-MB-L1-1260, SITE-MB-1070, PROC-1030 |  |  |  |  | 5d | 0d |  | Exterior | Building | Site | Construction | Public |
| CON-MB-L5-1030 |  | Exterior Sheathing - 5th Floor | 6d | 2026-04-23 | 2026-04-30 | CON-MB-L5-1050 SS+3d, CON-MB-L5-1010 |  |  |  |  | 17d | 0d | Fifth | Structure | Building | Site | Construction | Public |
| CON-MB-EXT-1130 |  | Storefront | 20d | 2026-04-24 | 2026-05-21 | CON-MB-L5-1100 |  |  |  |  | 45d | 0d |  | Exterior | Building | Site | Construction | Public |
| CON-MB-EXT-1020 |  | Brick North and West Elevations (5th Floor) | 18d | 2026-05-01 | 2026-05-26 | CON-MB-L2-1280, SITE-MB-1070, CON-MB-EXT-1000 |  |  |  |  | 5d | 0d |  | Exterior | Building | Site | Construction | Public |
| CON-MB-EXT-1040 |  | Stucco West Elevation | 15d | 2026-05-01 | 2026-05-21 | CON-MB-L1-1260, CON-MB-EXT-1000 |  |  |  |  | 16d | 0d |  | Exterior | Building | Site | Construction | Public |
| CON-MB-L2-1310 |  | Perimeter Waterproofing West/North Elevations (5th Floor) | 2d | 2026-05-01 | 2026-05-04 | CON-MB-L5-1030 |  |  |  |  | 17d | 0d |  |  |  |  |  |  |
| CON-MB-L2-1290 |  | Perimeter Waterproofing East Elevation | 4d | 2026-05-05 | 2026-05-08 | CON-MB-L2-1310, CON-MB-L5-1030, CON-MB-L2-1280, CON-MB-L3-1050 |  |  |  |  | 17d | 0d |  |  |  |  |  |  |
| CON-MB-L2-1300 |  | Perimeter Waterproofing South Elevation | 4d | 2026-05-11 | 2026-05-14 | CON-MB-L5-1030, CON-MB-L2-1290, CON-MB-L4-1040 |  |  |  |  | 31d | 26d |  |  |  |  |  |  |
| CON-MB-EXT-1070 |  | Glass West Elevation | 7d | 2026-05-22 | 2026-06-01 | CON-MB-EXT-1040 |  |  |  |  | 24d | 0d |  | Exterior | Building | Site | Construction | Public |
| CON-MB-EXT-1150 |  | Canopies | 7d | 2026-05-22 | 2026-06-01 | CON-MB-EXT-1130 |  |  |  |  | 45d | 36d |  | Exterior | Building | Site | Construction | Public |
| CON-MB-EXT-1030 |  | Brick East Elevation | 18d | 2026-05-27 | 2026-06-19 | CON-MB-L2-1290, SITE-MB-1070, CON-MB-EXT-1020 |  |  |  |  | 5d | 0d |  | Exterior | Building | Site | Construction | Public |
| CON-MB-EXT-1060 |  | Stucco North Elevation | 7d | 2026-05-27 | 2026-06-04 | CON-MB-L2-1280, CON-MB-EXT-1020, CON-MB-EXT-1040 |  |  |  |  | 13d | 0d |  | Exterior | Building | Site | Construction | Public |
| CON-MB-EXT-1090 |  | Glass North Elevation | 7d | 2026-06-02 | 2026-06-10 | CON-MB-EXT-1070 |  |  |  |  | 24d | 0d |  | Exterior | Building | Site | Construction | Public |
| CON-MB-EXT-1080 |  | Stucco East Elevation | 14d | 2026-06-05 | 2026-06-24 | CON-MB-L2-1290, CON-MB-EXT-1060 |  |  |  |  | 13d | 0d |  | Exterior | Building | Site | Construction | Public |
| CON-MB-EXT-1110 |  | Glass East Elevation | 7d | 2026-06-11 | 2026-06-19 | CON-MB-EXT-1090 |  |  |  |  | 24d | 0d |  | Exterior | Building | Site | Construction | Public |
| CON-MB-EXT-1050 |  | Brick South Elevation | 18d | 2026-06-22 | 2026-07-15 | CON-MB-L2-1300, SITE-MB-1070, CON-MB-EXT-1030 |  |  |  |  | 5d | 0d |  | Exterior | Building | Site | Construction | Public |
| CON-MB-EXT-1140 |  | Glass South Elevation | 7d | 2026-06-22 | 2026-06-30 | CON-MB-EXT-1110 |  |  |  |  | 24d | 15d |  | Exterior | Building | Site | Construction | Public |
| CON-MB-EXT-1100 |  | Stucco South Elevation | 7d | 2026-06-25 | 2026-07-03 | CON-MB-L2-1300, CON-MB-EXT-1080 |  |  |  |  | 13d | 8d |  | Exterior | Building | Site | Construction | Public |
| CON-MB-EXT-1120 |  | Swing Doors/ Automatic Sliding Entrance | 4d | 2026-07-16 | 2026-07-21 | CON-MB-EXT-1050 |  |  |  |  | 9d | 0d |  | Exterior | Building | Site | Construction | Public |

| ID | WBS | Activity | Duration | Start | Finish | Predecessors | Complete | Remaining | Planned start | Planned finish | Total float | Free float | 6 | 5 | 4 | 3 | 2 | 1 |
| --- | --- | --- | --- | --- | --- | --- | --- | --- | --- | --- | --- | --- | --- | --- | --- | --- | --- | --- |
|  | 5 | **Roofing** |  | 2026-03-25 | 2026-04-14 |  |  |  |  |  |  |  |  |  |  |  |  |  |
| CON-MB-L5-1020 |  | Roof Insulation & TPO | 15d | 2026-03-25 | 2026-04-14 | CON-MB-L5-1010 |  |  |  |  | 17d | 0d | Fifth | Structure | Building | Site | Construction | Public |
|  | 3 | **Office Building** |  | 2025-07-21 | 2026-03-24 |  |  |  |  |  |  |  |  |  |  |  |  |  |
|  | 1 | **Structure - Office** |  | 2025-07-21 | 2025-12-02 |  |  |  |  |  |  |  |  |  |  |  |  |  |
| CON-OFF-1000 |  | Prep/Pour SOG - Office Building | 5d | 2025-07-21 A | 2025-07-22 A | SITE-OFF-1020 | 100% |  | 2025-09-30 | 2025-10-06 |  |  |  |  |  |  |  |  |
| CON-OFF-1010 |  | Structural Steel - Office Building | 2d | 2025-09-30 A | 2025-09-30 A | CON-OFF-1000 | 100% |  | 2025-09-30 | 2025-10-01 |  |  |  | New | Building | Site | Construction | Public |
| CON-OFF-1030 |  | Interior/Exterior Framing - Office Building | 8d | 2025-10-10 A | 2025-10-22 A | CON-OFF-1010 | 100% |  | 2025-11-03 | 2025-11-12 |  |  |  | New | Building | Site | Construction | Public |
| CON-OFF-1070 |  | Framing Inspection - Office Building | 1d | 2025-10-22 A | 2025-10-22 A | CON-OFF-1030 | 100% |  | 2025-11-03 | 2025-11-03 |  |  |  | New | Building | Site | Construction | Public |
| CON-OFF-1050 |  | Roof Decking - Office Building | 1d | 2025-10-27 A | 2025-10-27 A | CON-OFF-1070, CON-OFF-1010, CON-OFF-1030 | 100% |  | 2025-11-04 | 2025-11-04 |  |  |  | New | Building | Site | Construction | Public |
| CON-OFF-1020 |  | Foundation Waterproofing - Office Building | 2d | 2025-10-31 A | 2025-12-02 A | PROC-1010 SS, CON-OFF-1000 | 100% |  | 2025-11-03 | 2025-11-04 |  |  |  | New | Building | Site | Construction | Public |
|  | 2 | **Interior Finishes - Office** |  | 2025-12-03 | 2026-03-24 |  |  |  |  |  |  |  |  |  |  |  |  |  |
| CON-OFF-1080 |  | MEP Rough In - Office Building | 3d | 2025-12-03 A | 2025-12-12 A | CON-OFF-1020, CON-OFF-1070, CON-OFF-1040 | 100% |  | 2026-01-05 | 2026-01-07 |  |  |  | New | Building | Site | Construction | Public |
| CON-OFF-1090 |  | MEP Inspections - Office Building | 1d | 2025-12-29 A | 2026-03-03 | CON-OFF-1080 |  | 2d | 2026-01-08 | 2026-01-08 | 101d | 0d |  | New | Building | Site | Construction | Public |
| CON-OFF-1100 |  | Hang/Finish Drywall - Office Building | 3d | 2026-03-04 | 2026-03-06 | CON-OFF-1070, CON-OFF-1090 |  |  |  |  | 101d | 0d |  | New | Building | Site | Construction | Public |
| CON-OFF-1110 |  | Doors, Frames & Hardware - Office Building | 2d | 2026-03-09 | 2026-03-10 | CON-OFF-1030, CON-OFF-1100 |  |  |  |  | 101d | 0d |  | New | Building | Site | Construction | Public |
| CON-OFF-1120 |  | Prep/Paint Walls - Office Building | 2d | 2026-03-11 | 2026-03-12 | CON-OFF-1110 |  |  |  |  | 101d | 0d |  | New | Building | Site | Construction | Public |
| CON-OFF-1130 |  | Flooring - Office Building | 5d | 2026-03-13 | 2026-03-19 | CON-OFF-1120 |  |  |  |  | 101d | 0d |  |  |  |  |  |  |
| CON-OFF-1140 |  | MEP Finishes, Fixtures, Accessories - Office Building | 2d | 2026-03-20 | 2026-03-23 | CON-OFF-1130, CON-OFF-1120 |  |  |  |  | 101d | 0d |  | New | Building | Site | Construction | Public |
| CON-OFF-1150 |  | Millwork - Office Building | 2d | 2026-03-20 | 2026-03-23 | CON-OFF-1130, CON-OFF-1110 |  |  |  |  | 105d | 0d |  | New | Building | Site | Construction | Public |
| CON-OFF-1220 |  | Final Cleaning - Office Building | 1d | 2026-03-24 | 2026-03-24 | CON-OFF-1160, SITE-OFF-1070, CON-OFF-1150, CON-OFF-1140, CON-OFF-1130, CON-OFF-1120, CON-OFF-1110 |  |  |  |  | 105d | 4d |  | New | Building | Site | Construction | Public |
|  | 3 | **Exterior Finishes - Office** |  | 2025-10-29 | 2026-03-11 |  |  |  |  |  |  |  |  |  |  |  |  |  |
| CON-OFF-1040 |  | Roofing - Office Building | 2d | 2025-10-29 A | 2025-10-29 A | CON-OFF-1050, CON-OFF-1030 | 100% |  | 2025-11-05 | 2025-11-06 |  |  |  | New | Building | Site | Construction | Public |
| CON-OFF-1060 |  | Exterior Sheathing/Waterproofing - Office Building | 3d | 2025-12-29 A | 2026-03-04 | CON-OFF-1050, CON-OFF-1070, CON-OFF-1030 |  | 3d | 2026-01-01 | 2026-01-05 | 109d | 0d |  |  |  |  |  |  |
| CON-OFF-1160 |  | Store Front & Windows - Office Building | 3d | 2026-03-05 | 2026-03-09 | CON-OFF-1060, PROC-1080 |  |  |  |  | 111d | 10d |  | New | Building | Site | Construction | Public |
| CON-OFF-1170 |  | Brick Facade - Office Building | 5d | 2026-03-05 | 2026-03-11 | CON-OFF-1060, PROC-1030 |  |  |  |  | 109d | 3d |  | New | Building | Site | Construction | Public |

| ID | WBS | Activity | Duration | Start | Finish | Predecessors | Total float | Free float | Constraint | 5 | 4 | 3 | 2 | 1 |
| --- | --- | --- | --- | --- | --- | --- | --- | --- | --- | --- | --- | --- | --- | --- |
|  | 4 | **Final Inspections & Close Out** |  | 2026-03-24 | 2026-09-09 |  |  |  |  |  |  |  |  |  |
|  | 1 | **Office Building** |  | 2026-03-24 | 2026-04-22 |  |  |  |  |  |  |  |  |  |
| CLO-OFF-1030 |  | Final Building Inspections - Office Building | 5d | 2026-03-24 | 2026-03-30 | CON-OFF-1160, CON-OFF-1090, CON-OFF-1170, CON-OFF-1140 | 101d | 0d |  | Final | Building | Site | Construction | Public |
| CLO-OFF-1000 |  | Office Temporary Occupancy | 1d | 2026-03-31 | 2026-03-31 | SITE-OFF-1130, CLO-OFF-1030, CON-OFF-1220 | 101d | 99d | finish on or before 2026-08-19 |  |  |  |  |  |
| CLO-OFF-1040 |  | Punch List Walk - Office Building | 2d | 2026-03-31 | 2026-04-01 | SITE-OFF-1080, CON-OFF-1150, CON-OFF-1140, CON-OFF-1220, CLO-OFF-1030, SITE-OFF-1100, SITE-OFF-1130 | 107d | 0d |  | Final | Building | Site | Construction | Public |
| CLO-OFF-1050 |  | Punch List Corrections - Office Building | 15d | 2026-04-02 | 2026-04-22 | CLO-OFF-1040 | 107d | 100d |  | Final | Building | Site | Construction | Public |
|  | 2 | **Main Building** |  | 2026-07-22 | 2026-09-09 |  |  |  |  |  |  |  |  |  |
| CLO-MB-1000 |  | Fire Alarm Inspection | 5d | 2026-07-22 | 2026-07-28 | PROC-1150, CON-MB-2000, MIL-1020 SS, CON-MB-EXT-1120, CON-MB-EXT-1140, CON-STAIR-1030, CON-MB-EXT-1150 | 9d | 0d |  | Final | Building | Site | Construction | Public |
| CLO-MB-1010 |  | State Inspection for Elevators | 5d | 2026-07-29 | 2026-08-04 | MIL-1020 SS, CON-ELEV-1020, CLO-MB-1000 | 9d | 0d |  | Final | Building | Site | Construction | Public |
| CLO-MB-1020 |  | Final Building Inspections | 5d | 2026-08-05 | 2026-08-11 | MIL-1020 SS, CON-MB-L5-1090, CON-MB-L1-1170, CON-MB-L2-1120, CON-MB-L3-1100, CON-MB-L4-1080, CON-MB-L4-1110, CON-MB-L4-1120, CON-MB-L4-1130, CON-MB-L3-1180, CON-MB-L3-1170, CON-MB-L3-1160, CLO-MB-1010 | 9d | 4d |  | Final | Building | Site | Construction | Public |
| CLO-MB-1040 |  | Punch List Walk - Main Building | 2d | 2026-08-18 | 2026-08-19 | SITE-1030, CON-MB-L2-1080, CON-MB-2010, CON-MB-L5-1090, CON-MB-L1-1170, CON-MB-L2-1120, CON-MB-L3-1100, CON-MB-L4-1080, CON-MB-L4-1110, CON-MB-L4-1120, CON-MB-L4-1130, CON-MB-L3-1180, CON-MB-L3-1170, CON-MB-L3-1160, CON-STAIR-1040, SITE-MB-1090, CON-MB-L1-1240, CON-MB-L1-1230, CON-MB-L1-1220, SITE-MB-1140, CON-MB-L2-1150, CON-MB-L2-1160, CON-MB-L5-1140, CON-MB-L5-1150, CON-MB-L5-1160 | 7d | 0d |  | Final | Building | Site | Construction | Public |
| CLO-MB-1050 |  | Punch List Corrections - Main Building | 15d | 2026-08-20 | 2026-09-09 | CLO-MB-1040 | 7d | 0d |  | Final | Building | Site | Construction | Public |

## Activity codes

| Code | Value | Meaning |
| --- | --- | --- |
| 1 | Public | Public Storage Fairfax VA |
| 3 | Long | Long Lead Items |
| 3 | Site | Site Work Utilities |
| 5 | Exterior | Exterior Building |
| 5 | Final | Final Inspections& Close Out |
| 5 | New | New Office |
| 6 | Fifth | Fifth Floor Structural & Interior Finishes |
| 6 | First | First Floor Structure & Interior Framing |
| 6 | Fourth | Fourth Floor Structural & Interior Finishes |
| 6 | Permanent | Permanent Power |
| 6 | Second | Second Floor Structural & Interior Finishes |
| 6 | Third | Third Floor Structural & Interior Finishes |
