# Mesa Public Storage Project Schedule Updated 1-12-25 Revised All New

Schedule from MS Project, 2024-12-27 to 2026-04-08, A marks actual dates.

## Calendars

- Standard: Mon-Fri 08:00-12:00, 13:00-17:00; Sat-Sun off. Exceptions (off unless hours are given): 2025-02-17 (Presidents Day), 2025-05-26 (Memorial Day), 2025-07-04 (Independence Day), 2025-09-01 (Labor Day), 2025-11-27 to 2025-11-28 (Thanksgiving), 2025-12-24 to 2025-12-26 (Christmas), 2026-01-01 (New Years), 2026-02-16 (Presidents Day).

## Schedule

| ID | WBS | Task | Type | Duration | Start | Finish | Predecessors | Complete | Remaining | Total slack |
| --- | --- | --- | --- | --- | --- | --- | --- | --- | --- | --- |
| 1 | 1 | **Public Storage - Mesa AZ** |  | 323d | 2024-12-27 A | 2026-04-08 |  | 58% | 136.93d | 0d |
| 2 | 1.1 | **PreConstruction** |  | 18d | 2024-12-27 A | 2025-01-21 A |  | 100% |  |  |
| 3 | 1.1.1 | Notice To Proceed | milestone | 0d | 2024-12-27 A | 2024-12-27 A |  | 100% |  |  |
| 4 | 1.1.2 | Mobilzation |  | 5d | 2024-12-30 A | 2025-01-03 A | 3FS+1d | 100% |  |  |
| 5 | 1.1.3 | Erosion Control |  | 3d | 2025-01-06 A | 2025-01-08 A | 4 | 100% |  |  |
| 6 | 1.1.4 | Hydrant Meter | milestone | 0d | 2025-01-03 A | 2025-01-03 A | 4 | 100% |  |  |
| 7 | 1.1.5 | Hydrant Meter Delay |  | 12d | 2025-01-06 A | 2025-01-21 A | 6 | 100% |  |  |
| 8 | 1.2 | **Surface Demo & Grading** |  | 42d | 2025-01-22 A | 2025-03-21 A |  | 100% |  |  |
| 9 | 1.2.1 | Surface Demo |  | 15d | 2025-01-22 A | 2025-02-11 A | 5, 6, 7 | 100% |  |  |
| 10 | 1.2.2 | Site Survey |  | 1d | 2025-02-12 A | 2025-02-12 A | 9 | 100% |  |  |
| 11 | 1.2.3 | Pregrade Meeting |  | 1d | 2025-02-12 A | 2025-02-12 A | 9 | 100% |  |  |
| 12 | 1.2.4 | Over-Ex & Recompact Bldg Pad |  | 15d | 2025-02-13 A | 2025-03-06 A | 11, 10 | 100% |  |  |
| 13 | 1.2.5 | Grading Delay For Spetic System 2/12, 2/13, 2/14 |  | 3d | 2025-03-07 A | 2025-03-11 A | 12 | 100% |  |  |
| 14 | 1.2.6 | Grading Rain Day Delays 3/7, 3/8, 3/9, 3/12, 3/13, 3/14, 3/15 |  | 7d | 2025-03-12 A | 2025-03-20 A | 13 | 100% |  |  |
| 15 | 1.2.7 | Pad Certification |  | 1d | 2025-03-21 A | 2025-03-21 A | 14 | 100% |  |  |
| 16 | 1.3 | **On Site Improvements** |  | 35d | 2025-03-24 A | 2025-05-09 A |  | 100% |  |  |
| 17 | 1.3.1 | Site Wall |  | 35d | 2025-03-24 A | 2025-05-09 A | 15 | 100% |  |  |
| 18 | 1.4 | **On Site Wet Utilites** |  | 20d | 2025-05-12 A | 2025-06-09 A |  | 100% |  |  |
| 19 | 1.4.1 | Install Sewer |  | 5d | 2025-05-12 A | 2025-05-16 A | 17 | 100% |  |  |
| 20 | 1.4.2 | Install Storm Drain |  | 5d | 2025-05-19 A | 2025-05-23 A | 19 | 100% |  |  |
| 21 | 1.4.3 | Install Fire Loop & Riser |  | 6d | 2025-05-27 A | 2025-06-03 A | 20 | 100% |  |  |
| 22 | 1.4.4 | Install Domestic Water |  | 4d | 2025-06-04 A | 2025-06-09 A | 21 | 100% |  |  |
| 23 | 1.5 | **Off Site Wet Utilites** |  | 92d | 2025-05-12 A | 2025-09-19 A |  | 100% |  |  |
| 24 | 1.5.1 | Water: Fire & Domestic Laterals 8th Street |  | 5d | 2025-05-12 A | 2025-05-16 A | 17 | 100% |  |  |
| 25 | 1.5.2 | Water: Delay (City could not Shut Down) |  | 82d | 2025-05-19 A | 2025-09-12 A | 24 | 100% |  |  |
| 26 | 1.5.3 | Water: Fire & Domestic 8th Street |  | 5d | 2025-09-15 A | 2025-09-19 A | 25 | 100% |  |  |
| 27 | 1.5.4 | Water: Fire Line Lateral Country Club Only |  | 5d | 2025-05-12 A | 2025-05-16 A | 17 | 100% |  |  |
| 28 | 1.5.5 | Water: Delay Country Club (City could not Shut Down) |  | 26d | 2025-05-19 A | 2025-06-24 A | 27 | 100% |  |  |
| 29 | 1.5.6 | Water: Fire Line lateral Coutnry Club (Weekend Only) |  | 31d | 2025-06-25 A | 2025-08-07 A | 28 | 100% |  |  |

| ID | WBS | Task | Type | Duration | Start | Finish | Predecessors | Complete | Remaining | Total slack | Free slack |
| --- | --- | --- | --- | --- | --- | --- | --- | --- | --- | --- | --- |
| 30 | 1.6 | **On & Off Site Dry Utilites Power & Comms** |  | 250d | 2025-03-24 A | 2026-03-20 |  | 48% | 129.7d | 13d |  |
| 31 | 1.6.1 | Approved Power & Comms Permits & Plans |  | 1d | 2025-03-24 | 2025-03-24 | 15 |  |  | 262d |  |
| 32 | 1.6.2 | Delay: Approved Power & Comms Permits & Plans |  | 159d | 2025-03-25 A | 2025-11-05 A | 31 | 100% |  |  |  |
| 33 | 1.6.3 | ROW Permit |  | 1d | 2025-11-06 A | 2025-11-06 A | 32 | 100% |  |  |  |
| 34 | 1.6.4 | Delay: ROW Permit 8th Street (City Moratorium) |  | 13d | 2025-11-07 A | 2025-11-25 A | 33 | 100% |  |  |  |
| 35 | 1.6.5 | Delay: ROW Permit Country Club (City Moratorium) |  | 40d | 2025-11-07 | 2026-01-09 | 33 |  |  | 0d |  |
| 36 | 1.6.6 | **8th Street Dry Utilies Power & Comms** |  | 54d | 2025-11-26 A | 2026-02-18 |  | 7% | 50.44d | 35d |  |
| 37 | 1.6.6.1 | Set Up Message Board (5day Notice Period) |  | 1d | 2025-11-26 A | 2025-11-26 A | 34 | 100% |  |  |  |
| 38 | 1.6.6.2 | Set Up Lane & Sidewalk Closure |  | 1d | 2025-12-01 A | 2025-12-01 A | 37 | 100% |  |  |  |
| 39 | 1.6.6.3 | Relocate Temp fence to behind Barricades |  | 2d | 2025-12-03 A | 2025-12-04 A | 38 | 100% |  |  |  |
| 40 | 1.6.6.4 | Demo & Haul off Sidewalks |  | 1d | 2025-12-05 A | 2025-12-05 A | 39 | 100% |  |  |  |
| 41 | 1.6.6.5 | Survey For New UG Power & Comms |  | 1d | 2025-12-08 A | 2025-12-08 A | 40 | 100% |  |  |  |
| 42 | 1.6.6.6 | UG for Coms & Power from Building to Splice Pit |  | 12d | 2025-12-08 | 2025-12-23 | 40 |  |  | 26d | 0d |
| 43 | 1.6.6.7 | City of Mesa Working In Vaults |  | 3d | 2025-12-08 | 2025-12-10 | 40 |  |  | 18d | 0d |
| 44 | 1.6.6.8 | 2nd Crew Cox Trench & Conduits |  | 2d | 2025-12-11 | 2025-12-12 | 43 |  |  | 18d | 0d |
| 45 | 1.6.6.9 | City of Mesa Shut Down Redesign |  | 7d | 2025-12-15 | 2025-12-23 | 44 |  |  | 18d | 0d |
| 46 | 1.6.6.10 | City Inspection Shut down for PTO |  | 4d | 2025-12-29 | 2026-01-02 | 45 |  |  | 18d | 0d |
| 47 | 1.6.6.11 | Restart Excavation By Main Vault |  | 2d | 2026-01-05 | 2026-01-06 | 46 |  |  | 18d | 0d |
| 48 | 1.6.6.12 | Break Into Splice Pit by Main Vault |  | 2d | 2026-01-06 | 2026-01-07 | 47FS-1d |  |  | 18d | 0d |
| 49 | 1.6.6.13 | Rain |  | 1d | 2026-01-08 | 2026-01-08 | 48 |  |  | 18d | 0d |
| 50 | 1.6.6.14 | Penetrate Vault West Side |  | 1d | 2026-01-09 | 2026-01-09 | 49 |  |  | 18d | 0d |
| 51 | 1.6.6.15 | Install UG Conduit WestSide Splice pit into Vault |  | 1d | 2026-01-12 | 2026-01-12 | 50 |  |  | 61d |  |
| 52 | 1.6.6.16 | Install UG Conduit SouthSide Main Vault |  | 3d | 2026-01-12 | 2026-01-14 | 50 |  |  | 18d | 0d |
| 53 | 1.6.6.17 | Slurry Encase Conduits |  | 1d | 2026-01-15 | 2026-01-15 | 52 |  |  | 18d | 0d |
| 54 | 1.6.6.18 | Backfill Vault Area |  | 1d | 2026-01-16 | 2026-01-16 | 53 |  |  | 18d | 0d |
| 55 | 1.6.6.19 | Trench For Coms |  | 1d | 2026-01-19 | 2026-01-19 | 54 |  |  | 18d | 0d |
| 56 | 1.6.6.20 | Install UG Comms Conduits |  | 1d | 2026-01-20 | 2026-01-20 | 55 |  |  | 18d | 0d |
| 57 | 1.6.6.21 | Slurry & Set Boxes |  | 2d | 2026-01-21 | 2026-01-22 | 56 |  |  | 18d | 0d |
| 58 | 1.6.6.22 | Set Vaults/Pads |  | 2d | 2026-01-23 | 2026-01-26 | 57 |  |  | 18d | 0d |
| 59 | 1.6.6.23 | Punch Work |  | 1d | 2026-01-27 | 2026-01-27 | 58 |  |  | 18d | 0d |
| 60 | 1.6.6.24 | Survey For New UG Power & Comms For As-Builts |  | 2d | 2026-01-28 | 2026-01-29 | 59 |  |  | 18d | 0d |
| 61 | 1.6.6.25 | Grade for new Drive Entry |  | 4d | 2025-12-29 | 2026-01-02 | 42 |  |  | 26d | 0d |
| 62 | 1.6.6.26 | Form New Drive Entry & Curbs |  | 3d | 2026-01-05 | 2026-01-07 | 61 |  |  | 26d | 0d |
| 63 | 1.6.6.27 | Rain |  | 1d | 2026-01-08 | 2026-01-08 | 62 |  |  | 26d | 0d |
| 64 | 1.6.6.28 | Pour New Drive Entry & Curbs |  | 3d | 2026-01-12 | 2026-01-14 | 63FS+1d |  |  | 26d | 0d |
| 65 | 1.6.6.29 | Grade for Aspahlt Paving |  | 2d | 2026-01-15 | 2026-01-16 | 64 |  |  | 26d | 0d |
| 66 | 1.6.6.30 | Asphalt Slot Patch & Pave at New Drive Entry |  | 1d | 2026-01-19 | 2026-01-19 | 65 |  |  | 26d | 8d |
| 67 | 1.6.6.31 | Grade for new Sidewalks |  | 1d | 2026-01-30 | 2026-01-30 | 60, 66 |  |  | 18d | 0d |
| 68 | 1.6.6.32 | Form & Pour New Concrete & Sidewalks |  | 2d | 2026-02-02 | 2026-02-03 | 67 |  |  | 45d |  |
| 69 | 1.6.6.33 | Relocate Temp Fence |  | 2d | 2026-02-02 | 2026-02-03 | 67 |  |  | 43d | 0d |
| 70 | 1.6.6.34 | Traffic Control Removal |  | 2d | 2026-02-04 | 2026-02-05 | 69 |  |  | 43d | 0d |
| 71 | 1.6.6.35 | Public Sidewalk Open | milestone | 0d | 2026-02-05 | 2026-02-05 | 70 |  |  | 43d |  |
| 72 | 1.6.6.36 | City Of Mesa Work Scope Power to Building |  | 10d | 2026-01-28 | 2026-02-10 | 59 |  |  | 27d | 0d |
| 73 | 1.6.6.37 | City Of Mesa or Cox Poles Removal? |  | 5d | 2026-02-11 | 2026-02-18 | 72 |  |  | 35d |  |

| ID | WBS | Task | Type | Duration | Start | Finish | Predecessors | Total slack | Free slack |
| --- | --- | --- | --- | --- | --- | --- | --- | --- | --- |
| 74 | 1.6.7 | **Country Club Dry Utilies Power** |  | 49d | 2026-01-12 | 2026-03-20 |  | 0d |  |
| 75 | 1.6.7.1 | Set Up Message Board (5day Notice Period) |  | 5d | 2026-01-12 | 2026-01-16 | 35 | 0d |  |
| 76 | 1.6.7.2 | Set Up Lane & Sidewalk Closure |  | 2d | 2026-01-19 | 2026-01-20 | 75 | 0d |  |
| 77 | 1.6.7.3 | Relocate Temp fence to behind Barricades |  | 1d | 2026-01-21 | 2026-01-21 | 76 | 0d |  |
| 78 | 1.6.7.4 | Demo & Haul off Sidewalks |  | 2d | 2026-01-22 | 2026-01-23 | 77, 209 | 0d |  |
| 79 | 1.6.7.5 | Survey For New UG Power & Comms |  | 1d | 2026-01-26 | 2026-01-26 | 78 | 0d |  |
| 80 | 1.6.7.6 | Dig Vaults |  | 2d | 2026-01-27 | 2026-01-28 | 79 | 0d |  |
| 81 | 1.6.7.7 | Build Junction |  | 1d | 2026-01-29 | 2026-01-29 | 80 | 0d |  |
| 82 | 1.6.7.8 | Build Switch |  | 3d | 2026-01-30 | 2026-02-03 | 81 | 0d |  |
| 83 | 1.6.7.9 | Dig Vault |  | 1d | 2026-02-04 | 2026-02-04 | 82 | 0d |  |
| 84 | 1.6.7.10 | Build Vault |  | 2d | 2026-02-05 | 2026-02-06 | 83 | 0d |  |
| 85 | 1.6.7.11 | Set Vault |  | 1d | 2026-02-09 | 2026-02-09 | 84 | 0d |  |
| 86 | 1.6.7.12 | Build TX |  | 1d | 2026-02-10 | 2026-02-10 | 85 | 0d |  |
| 87 | 1.6.7.13 | Trench |  | 2d | 2026-02-11 | 2026-02-12 | 86 | 0d |  |
| 88 | 1.6.7.14 | Pipe/Rack |  | 2d | 2026-02-13 | 2026-02-17 | 87 | 0d |  |
| 89 | 1.6.7.15 | Slurry Encasement |  | 2d | 2026-02-18 | 2026-02-19 | 88 | 0d |  |
| 90 | 1.6.7.16 | Backfill |  | 2d | 2026-02-20 | 2026-02-23 | 89 | 0d |  |
| 91 | 1.6.7.17 | Punch Work |  | 2d | 2026-02-24 | 2026-02-25 | 90 | 11d | 0d |
| 92 | 1.6.7.18 | Dig For Bore Receiving Pit |  | 1d | 2026-02-17 | 2026-02-17 | 87FS+1d | 11d | 0d |
| 93 | 1.6.7.19 | Mobilize Bore Equipment |  | 1d | 2026-02-18 | 2026-02-18 | 92 | 11d | 0d |
| 94 | 1.6.7.20 | Bore Trench |  | 2d | 2026-02-19 | 2026-02-20 | 93 | 11d | 0d |
| 95 | 1.6.7.21 | Back Ream Bore Trench |  | 1d | 2026-02-23 | 2026-02-23 | 94 | 11d | 0d |
| 96 | 1.6.7.22 | Bore Punch |  | 2d | 2026-02-24 | 2026-02-25 | 95 | 11d | 0d |
| 97 | 1.6.7.23 | Survey For New UG Power & Comms For As-Builts |  | 1d | 2026-02-26 | 2026-02-26 | 96, 91 | 11d | 0d |
| 98 | 1.6.7.24 | Grade for new Sidewalks & Drive Entry |  | 3d | 2026-02-27 | 2026-03-03 | 97 | 11d | 0d |
| 99 | 1.6.7.25 | Form & Pour New Concrete & Sidewalks |  | 8d | 2026-03-04 | 2026-03-13 | 98 | 11d | 0d |
| 100 | 1.6.7.26 | Asphalt Slot Patch @ Drive Entry |  | 2d | 2026-03-16 | 2026-03-17 | 99 | 11d | 0d |
| 101 | 1.6.7.27 | Relocate Temp Fence |  | 1d | 2026-03-18 | 2026-03-18 | 100 | 11d | 0d |
| 102 | 1.6.7.28 | Traffic Control Removal |  | 1d | 2026-03-19 | 2026-03-19 | 101 | 11d | 0d |
| 103 | 1.6.7.29 | Public Sidewalk Open | milestone | 0d | 2026-03-20 | 2026-03-20 | 102FS+1d | 11d | 0d |
| 104 | 1.6.7.30 | City Of Mesa Work Scope Power to AAMCO |  | 10d | 2026-02-26 | 2026-03-11 | 91, 96 | 18d | 0d |
| 105 | 1.6.7.31 | City Of Mesa of Pole Removal? |  | 2d | 2026-03-12 | 2026-03-13 | 104 | 18d |  |

| ID | WBS | Task | Type | Duration | Start | Finish | Predecessors | Complete | Remaining | Total slack | Free slack | Constraint |
| --- | --- | --- | --- | --- | --- | --- | --- | --- | --- | --- | --- | --- |
| 106 | 1.7 | **On-Site Improvements West & South** |  | 52d | 2025-12-01 A | 2026-02-17 |  | 11% | 46.47d | 36d |  |  |
| 107 | 1.7.1 | Grade for Curb & Gutter |  | 5d | 2025-12-01 A | 2025-12-05 A |  | 100% |  |  |  | start no earlier than 2025-12-01 |
| 108 | 1.7.2 | Concrete Curb & Gutters |  | 4d | 2025-12-08 | 2025-12-11 | 107 |  |  | 16d | 0d |  |
| 109 | 1.7.3 | Grade for Sidewalks, Handicap Ramps, etc |  | 2d | 2025-12-12 | 2025-12-15 | 108 |  |  | 16d | 0d |  |
| 110 | 1.7.4 | Concrete Pour Walks, Ramps, Etc |  | 4d | 2025-12-16 | 2025-12-19 | 109 |  |  | 16d | 0d |  |
| 111 | 1.7.5 | Grade For Paving |  | 2d | 2025-12-22 | 2025-12-23 | 110 |  |  | 16d | 0d |  |
| 112 | 1.7.6 | AC Paving |  | 2d | 2025-12-29 | 2025-12-30 | 111 |  |  | 16d | 0d |  |
| 113 | 1.7.7 | Landscape Sleeving |  | 2d | 2025-12-31 | 2026-01-02 | 112 |  |  | 41d | 0d |  |
| 114 | 1.7.8 | Gate Tracks |  | 5d | 2026-01-05 | 2026-01-09 | 113 |  |  | 41d | 0d |  |
| 115 | 1.7.9 | Gate Fencing |  | 5d | 2026-01-12 | 2026-01-16 | 114 |  |  | 41d | 0d |  |
| 116 | 1.7.10 | Gate Installation |  | 5d | 2026-01-19 | 2026-01-23 | 115 |  |  | 41d | 5d |  |
| 117 | 1.7.11 | Landscape Irrigation and Planting |  | 9d | 2026-02-02 | 2026-02-12 | 67, 116 |  |  | 36d | 0d |  |
| 118 | 1.7.12 | Striping & Signage |  | 2d | 2026-02-13 | 2026-02-17 | 117 |  |  | 36d |  |  |
| 119 | 1.8 | **Building Shell Construction** |  | 151d | 2025-03-24 A | 2025-10-23 A |  | 100% |  |  |  |  |
| 120 | 1.8.1 | Underslab Plumbing & Electrical |  | 8d | 2025-03-24 A | 2025-04-02 A |  | 100% |  |  |  | finish no earlier than 2025-04-02 |
| 121 | 1.8.2 | Elevator Pits form & Pour | manual | 10d | 2025-03-24 A | 2025-04-04 A |  | 100% |  |  |  |  |
| 122 | 1.8.3 | Drill & Set Jack Casings | manual | 5d | 2025-04-07 A | 2025-04-11 A |  | 100% |  |  |  |  |
| 123 | 1.8.4 | CMU Wall Footings | manual | 10d | 2025-03-27 A | 2025-04-09 A |  | 100% |  |  |  |  |
| 124 | 1.8.5 | Fine grade Granular Base & Reinforce Slab on grade -North | manual | 5d | 2025-04-03 A | 2025-04-09 A |  | 100% |  |  |  |  |
| 125 | 1.8.6 | Fine grade Granular Base & Reinforce Slab on grade -South | manual | 5d | 2025-04-10 A | 2025-04-16 A |  | 100% |  |  |  |  |
| 126 | 1.8.7 | Pour Slab on grade North 8" | manual | 3d | 2025-04-14 A | 2025-04-16 A |  | 100% |  |  |  |  |
| 127 | 1.8.8 | Pour Slab on grade South 8" | manual | 3d | 2025-04-17 A | 2025-04-21 A |  | 100% |  |  |  |  |
| 128 | 1.8.9 | CMU walls/Ledgers to 3rd floor | manual | 24d | 2025-04-17 A | 2025-05-20 A |  | 100% |  |  |  |  |
| 129 | 1.8.10 | Shearwalls/Beams & Deck for 2nd floor North | manual | 16d | 2025-05-14 A | 2025-06-05 A |  | 100% |  |  |  |  |
| 130 | 1.8.11 | Reinforce & Pour 2nd floor deck North | manual | 4d | 2025-06-06 A | 2025-06-11 A |  | 100% |  |  |  |  |
| 131 | 1.8.12 | Deck cure | manual | 5d | 2025-06-12 A | 2025-06-18 A |  | 100% |  |  |  |  |
| 132 | 1.8.13 | Shearwalls/Beams & Deck for 2nd floor South | manual | 16d | 2025-06-06 A | 2025-06-27 A |  | 100% |  |  |  |  |
| 133 | 1.8.14 | Reinforce & Pour 2nd floor deck South | manual | 4d | 2025-06-30 A | 2025-07-03 A |  | 100% |  |  |  |  |
| 134 | 1.8.15 | Deck cure | manual | 5d | 2025-07-08 A | 2025-07-14 A |  | 100% |  |  |  |  |
| 135 | 1.8.16 | CMU walls 3rd floor to top out North | manual | 15d | 2025-06-19 A | 2025-07-10 A |  | 100% |  |  |  |  |
| 136 | 1.8.17 | Shearwalls/Beams & Deck for 3rd floor North | manual | 16d | 2025-07-14 A | 2025-08-04 A |  | 100% |  |  |  |  |
| 137 | 1.8.18 | Reinforce & Pour deck 3 North | manual | 4d | 2025-08-05 A | 2025-08-08 A |  | 100% |  |  |  |  |
| 138 | 1.8.19 | Deck Cure | manual | 5d | 2025-08-11 A | 2025-08-15 A |  | 100% |  |  |  |  |
| 139 | 1.8.20 | CMU walls 3rd floor to top out South | manual | 18d | 2025-07-15 A | 2025-08-07 A |  | 100% |  |  |  |  |
| 140 | 1.8.21 | Shearwalls/Beams & Deck for 3rd floor South | manual | 18d | 2025-08-08 A | 2025-09-03 A |  | 100% |  |  |  |  |
| 141 | 1.8.22 | Reinforce & Pour Deck 3 South | manual | 4d | 2025-09-04 A | 2025-09-09 A |  | 100% |  |  |  |  |
| 142 | 1.8.23 | Deck Cure | manual | 5d | 2025-09-10 A | 2025-09-16 A |  | 100% |  |  |  |  |
| 143 | 1.8.24 | Shearwalls/Beams & Roof Deck North | manual | 18d | 2025-09-04 A | 2025-09-29 A |  | 100% |  |  |  |  |
| 144 | 1.8.25 | Shearwalls/Beams & Roof Deck South | manual | 18d | 2025-09-30 A | 2025-10-23 A |  | 100% |  |  |  |  |
| 145 | 1.8.26 | Roof Structural @ platforms & Screens | manual | 5d | 2025-09-30 A | 2025-10-06 A |  | 100% |  |  |  |  |

| ID | WBS | Task | Type | Duration | Start | Finish | Predecessors | Complete | Remaining | Total slack | Free slack |
| --- | --- | --- | --- | --- | --- | --- | --- | --- | --- | --- | --- |
| 146 | 1.9 | **Building Roof Exterior** |  | 35d | 2025-09-30 | 2025-11-17 |  |  |  | 0d |  |
| 147 | 1.9.1 | Install roof accessories/Curbs, drains etc. | manual | 10d | 2025-09-30 | 2025-10-13 |  |  |  |  |  |
| 148 | 1.9.2 | Roof Insulation cover board & Membrane | manual | 22d | 2025-10-14 | 2025-11-12 |  |  |  |  |  |
| 149 | 1.9.3 | Set rooftop Equipment | manual | 3d | 2025-11-13 | 2025-11-17 |  |  |  |  |  |
| 150 | 1.10 | **Building Interior Main Storage** |  | 145d | 2025-07-15 A | 2026-02-11 |  | 55% | 65.09d | 39d |  |
| 151 | 1.10.1 | Layout & Install Hangars from 2nd fl deck |  | 5d | 2025-07-15 A | 2025-07-21 A | 134 | 100% |  |  |  |
| 152 | 1.10.2 | Overhead M,P,E & Fire 1st fl |  | 20d | 2025-07-22 A | 2025-08-18 A | 151 | 100% |  |  |  |
| 153 | 1.10.3 | Hallway System & Doors 1st floor |  | 25d | 2025-08-19 A | 2025-09-23 | 152 | 75% | 6.25d | 2.25d | 0d |
| 154 | 1.10.4 | Finish Mech. & Electrical 1st Fl |  | 3d | 2025-09-24 A | 2025-09-26 | 153 | 75% | 0.75d | 131d |  |
| 155 | 1.10.5 | Layout & Install Overhead Hangars from 3rd fl deck | manual | 5d | 2025-08-18 A | 2025-08-22 A | 138 | 100% |  |  |  |
| 156 | 1.10.6 | Overhead M,P,E & Fire 2nd Fl |  | 20d | 2025-08-25 A | 2025-09-22 | 155 | 75% | 5d | 11d | 0d |
| 157 | 1.10.7 | Hallway System & Doors 2nd Floor |  | 22d | 2025-09-23 A | 2025-10-22 | 156 | 50% | 11d | 110d | 0d |
| 158 | 1.10.8 | Finish Mech. & Electrical 2nd Fl |  | 3d | 2025-10-23 | 2025-10-27 | 157 |  |  | 110d |  |
| 159 | 1.10.9 | Layout & Install Overhead Hangars from Roof deck | manual | 5d | 2025-10-24 A | 2025-10-30 A | 144 | 100% |  |  |  |
| 160 | 1.10.10 | Overhead M,P,E & Fire 3rd Fl |  | 20d | 2025-10-31 A | 2025-12-01 | 159 | 75% | 5d | 39d | 0d |
| 161 | 1.10.11 | Hallway System & Doors 3rd Floor |  | 25d | 2025-12-02 | 2026-01-09 | 160 |  |  | 39d | 0d |
| 162 | 1.10.12 | Finish Mech. & Electrical 3rd Fl |  | 3d | 2026-01-12 | 2026-01-14 | 161 |  |  | 39d | 0d |
| 163 | 1.10.13 | Finish Paint Storage Area |  | 5d | 2026-01-15 | 2026-01-21 | 162 |  |  | 39d | 0d |
| 164 | 1.10.14 | Final Clean up & Seal floors |  | 15d | 2026-01-22 | 2026-02-11 | 163 |  |  | 39d |  |
| 165 | 1.11 | **Building Interior Office** |  | 70d | 2025-11-13 A | 2026-02-27 |  | 33% | 46.67d | 28d |  |
| 166 | 1.11.1 | Office Framing |  | 6d | 2025-11-13 A | 2025-11-20 A | 148 | 100% |  |  |  |
| 167 | 1.11.2 | Office M/E/P Rough in |  | 6d | 2025-11-21 A | 2025-12-02 A | 166 | 100% |  |  |  |
| 168 | 1.11.3 | Office Drywall |  | 10d | 2026-01-26 | 2026-02-06 | 167, 186FS+5d |  |  | 25d | 0d |
| 169 | 1.11.4 | Install HM Doors & Hardware |  | 2d | 2026-02-09 | 2026-02-10 | 168 |  |  | 25d | 0d |
| 170 | 1.11.5 | Finish Painting in Storage areas |  | 3d | 2026-02-11 | 2026-02-13 | 169 |  |  | 25d | 0d |
| 171 | 1.11.6 | Suspended Ceilings |  | 3d | 2026-02-17 | 2026-02-19 | 170 |  |  | 25d | 0d |
| 172 | 1.11.7 | Office Fixtures & Finishes |  | 3d | 2026-02-20 | 2026-02-24 | 171 |  |  | 25d | 0d |
| 173 | 1.11.8 | Final Clean up & Seal floors |  | 3d | 2026-02-25 | 2026-02-27 | 172 |  |  | 28d |  |

| ID | WBS | Task | Type | Duration | Start | Finish | Predecessors | Total slack | Free slack |
| --- | --- | --- | --- | --- | --- | --- | --- | --- | --- |
| 174 | 1.12 | **Elevator** |  | 56d | 2025-12-08 | 2026-03-02 |  | 0d |  |
| 175 | 1.12.1 | Demo for Sump Pit Relocation | manual | 3d | 2025-12-08 | 2025-12-10 |  |  |  |
| 176 | 1.12.2 | Sump Pit Delay Filling Up with Ground Water |  | 5d | 2025-12-11 | 2025-12-17 | 175 | 14d | 0d |
| 177 | 1.12.3 | Construct & Concrete Pour New Pit |  | 4d | 2025-12-18 | 2025-12-23 | 176 | 14d | 0d |
| 178 | 1.12.4 | Install Pit Lights & Electric |  | 4d | 2025-12-29 | 2026-01-02 | 177 | 14d | 0d |
| 179 | 1.12.5 | Relocate Plumb & Fire Sprinkler |  | 2d | 2026-01-05 | 2026-01-06 | 178 | 14d | 0d |
| 180 | 1.12.6 | Build Temp Cover |  | 3d | 2026-01-07 | 2026-01-09 | 179 | 14d | 0d |
| 181 | 1.12.7 | Elevator Construction Car #1 |  | 15d | 2026-01-12 | 2026-01-30 | 180, 179, 178 | 14d | 0d |
| 182 | 1.12.8 | Elevator Construction Car #2 |  | 15d | 2026-02-02 | 2026-02-23 | 181 | 14d | 0d |
| 183 | 1.12.9 | Test & Adjust Elevators |  | 5d | 2026-02-24 | 2026-03-02 | 182 | 14d | 0d |
| 184 | 1.13 | **Building Exterior West & South** |  | 48d | 2025-12-31 | 2026-03-10 |  | 16d |  |
| 185 | 1.13.1 | Install Storefront Spandral at EFIS |  | 6d | 2025-12-31 | 2026-01-08 | 112 | 16d | 0d |
| 186 | 1.13.2 | Install Storefront At Main Openings |  | 6d | 2026-01-09 | 2026-01-16 | 185 | 16d | 0d |
| 187 | 1.13.3 | Install Scaffolding at Building Perimeter |  | 3d | 2026-01-19 | 2026-01-21 | 186 | 16d | 0d |
| 188 | 1.13.4 | Exterior Sheathing |  | 5d | 2026-01-22 | 2026-01-28 | 187 | 16d | 0d |
| 189 | 1.13.5 | EIFS |  | 15d | 2026-01-29 | 2026-02-19 | 188 | 16d | 0d |
| 190 | 1.13.6 | Remove Scaffolding |  | 3d | 2026-02-20 | 2026-02-24 | 189 | 16d | 0d |
| 191 | 1.13.7 | Install Metal Panel Systems @ Tower Framing |  | 10d | 2026-02-25 | 2026-03-10 | 190 | 21d |  |
| 192 | 1.13.8 | Exterior Breakmetal, flashings, Sealants, & Painting |  | 7d | 2026-02-24 | 2026-03-04 | 190FS-1d, 189 | 16d | 0d |
| 193 | 1.13.9 | Install Steel Canopies |  | 3d | 2026-03-05 | 2026-03-09 | 192 | 16d | 0d |
| 194 | 1.13.10 | Install Glass |  | 3d | 2026-03-05 | 2026-03-09 | 192 | 22d |  |
| 195 | 1.14 | **Building Exterior North** |  | 39d | 2026-01-19 | 2026-03-13 |  | 18d |  |
| 196 | 1.14.1 | Install Storefront At Main Openings |  | 5d | 2026-01-19 | 2026-01-23 | 186 | 49d | 0d |
| 197 | 1.14.2 | Install Storefront Spandral at EFIS |  | 3d | 2026-01-26 | 2026-01-28 | 196 | 49d |  |
| 198 | 1.14.3 | Install Scaffolding at Building Perimeter |  | 2d | 2026-02-02 | 2026-02-03 | 67 | 18d | 0d |
| 199 | 1.14.4 | Exterior Sheathing |  | 5d | 2026-02-04 | 2026-02-10 | 198 | 18d | 0d |
| 200 | 1.14.5 | EIFS |  | 10d | 2026-02-11 | 2026-02-25 | 199 | 18d | 0d |
| 201 | 1.14.6 | Remove Scaffolding |  | 2d | 2026-02-26 | 2026-02-27 | 200 | 18d | 0d |
| 202 | 1.14.7 | Install Metal Panel Systems @ Tower Framing |  | 5d | 2026-03-02 | 2026-03-06 | 201 | 23d |  |
| 203 | 1.14.8 | Exterior Breakmetal, flashings, Sealants, & Painting |  | 3d | 2026-03-02 | 2026-03-04 | 201 | 18d | 0d |
| 204 | 1.14.9 | Install Steel Canopies |  | 2d | 2026-03-05 | 2026-03-06 | 203 | 23d |  |
| 205 | 1.14.10 | Install Glass |  | 2d | 2026-03-05 | 2026-03-06 | 203 | 18d | 0d |
| 206 | 1.14.11 | Landscape |  | 5d | 2026-03-09 | 2026-03-13 | 205 | 18d |  |

| ID | WBS | Task | Type | Duration | Start | Finish | Predecessors | Total slack | Free slack |
| --- | --- | --- | --- | --- | --- | --- | --- | --- | --- |
| 207 | 1.15 | **Building Exterior East** |  | 60d | 2026-01-12 | 2026-04-06 |  | 0d |  |
| 208 | 1.15.1 | Install Storefront Spandral at EFIS |  | 3d | 2026-01-12 | 2026-01-14 | 35 | 0d |  |
| 209 | 1.15.2 | Exterior Sheathing |  | 5d | 2026-01-15 | 2026-01-21 | 208 | 0d |  |
| 210 | 1.15.3 | Install Scaffolding at Building Perimeter |  | 3d | 2026-02-24 | 2026-02-26 | 90 | 0d |  |
| 211 | 1.15.4 | EIFS |  | 10d | 2026-02-27 | 2026-03-12 | 210 | 0d |  |
| 212 | 1.15.5 | Remove Scaffolding |  | 3d | 2026-03-13 | 2026-03-17 | 211 | 0d |  |
| 213 | 1.15.6 | Final Grade |  | 2d | 2026-03-18 | 2026-03-19 | 212 | 0d |  |
| 214 | 1.15.7 | Install Storefront Glass |  | 3d | 2026-03-20 | 2026-03-24 | 212, 213 | 11d |  |
| 215 | 1.15.8 | Install Metal Panel Systems @ Tower Framing |  | 5d | 2026-03-20 | 2026-03-26 | 212, 213 | 0d |  |
| 216 | 1.15.9 | Exterior Breakmetal, flashings, Sealants, & Painting |  | 6d | 2026-03-23 | 2026-03-30 | 212, 215FS-4d | 0d |  |
| 217 | 1.15.10 | Landscape |  | 5d | 2026-03-31 | 2026-04-06 | 216 | 0d |  |
| 218 | 1.16 | **Final Inspections** |  | 27d | 2026-03-03 | 2026-04-08 |  | 0d |  |
| 219 | 1.16.1 | Electrical |  | 1d | 2026-03-10 | 2026-03-10 | 72, 193, 172, 162 | 16d | 0d |
| 220 | 1.16.2 | Mechanical |  | 1d | 2026-03-11 | 2026-03-11 | 219, 72 | 16d | 0d |
| 221 | 1.16.3 | Plumbing |  | 1d | 2026-03-12 | 2026-03-12 | 220, 72 | 16d | 2d |
| 222 | 1.16.4 | Public Works |  | 1d | 2026-03-23 | 2026-03-23 | 102, 103 | 11d | 0d |
| 223 | 1.16.5 | Elevator inspection scheduling and approval |  | 10d | 2026-03-03 | 2026-03-16 | 183, 72 | 14d | 0d |
| 224 | 1.16.6 | Fire Life & Safety |  | 2d | 2026-03-17 | 2026-03-18 | 221, 223 | 14d | 3d |
| 225 | 1.16.7 | TCO (If City Will Allow it) |  | 1d | 2026-03-24 | 2026-03-24 | 224, 222 | 11d |  |
| 226 | 1.16.8 | Grading |  | 1d | 2026-04-07 | 2026-04-07 | 217 | 0d |  |
| 227 | 1.16.9 | Planning & Zoning |  | 1d | 2026-04-07 | 2026-04-07 | 217 | 0d |  |
| 228 | 1.16.10 | Building Final |  | 1d | 2026-04-08 | 2026-04-08 | 219, 220, 221, 222, 223, 224, 226, 227 | 0d |  |
| 229 | 1.16.11 | CofO | milestone | 0d | 2026-04-08 | 2026-04-08 | 228 | 0d |  |
| 230 | 1.16.12 | Open Date | milestone | 0d | 2026-04-08 | 2026-04-08 | 228 | 0d |  |
