# Public Storage - Mt. Juliet (Golden Bear Place)

Schedule from Primavera P6, 2025-07-02 to 2027-10-14, data date 2025-10-01, A marks actual dates.

## Calendars

- **CA - 5 Day Wk w/ Holidays 2050 - Modified 2025: Mon-Fri 08:00-12:00, 13:00-17:00; Sat-Sun off. Exceptions (off unless hours are given): 2025-07-04, 2025-09-01, 2025-11-27 to 2025-11-28, 2025-12-24 to 2025-12-25, 2025-12-31 to 2026-01-01, 2026-01-19, 2026-05-25, 2026-07-03, 2026-09-07, 2026-11-26 to 2026-11-27, 2026-12-24 to 2026-12-25, 2026-12-31 to 2027-01-01, 2027-01-18, 2027-05-31, 2027-07-05, 2027-09-06.

## Schedule

| ID | WBS | Activity | Type | Duration | Start | Finish | Predecessors | Complete | Planned start | Planned finish | Total float | Free float |
| --- | --- | --- | --- | --- | --- | --- | --- | --- | --- | --- | --- | --- |
|  | 3 | **Project Summary** |  |  | 2025-07-02 | 2026-11-30 |  |  |  |  |  |  |
|  | 1 | **Contract Milestones** |  |  | 2025-07-02 | 2026-11-30 |  |  |  |  |  |  |
| PS-CMIL-1000 |  | Proposals/Bids Due | milestone | 0d | 2025-07-02 A | 2025-07-02 A |  | 100% |  |  |  |  |
| PS-CMIL-1020 |  | Interviews | milestone | 0d | 2025-07-10 A | 2025-07-10 A | PS-CMIL-1000 SS+5d | 100% |  |  |  |  |
| PS-CMIL-1030 |  | Award Contract | milestone | 0d | 2025-09-04 A | 2025-09-04 A | PS-CMIL-1020 SS+7d | 100% | 2025-07-21 | 2025-07-21 |  |  |
| PS-CMIL-1040 |  | Notice to Proceed | milestone | 0d | 2025-09-11 A | 2025-09-11 A | PS-CMIL-1030 SS+3d | 100% | 2025-07-24 | 2025-07-24 |  |  |
| PS-CMIL-1050 |  | Operational Setup |  | 18d | 2025-09-11 A | 2025-09-25 A | PS-CMIL-1040 SS | 100% | 2025-07-24 | 2025-08-18 |  |  |
| PS-CMIL-1010 |  | Project Open | milestone | 0d | 2026-10-28 | 2026-10-28 | EE-NRTH-1170 FF, EE-EAST-1120 FF, EE-SOTH-1140 FF, EE-WEST-1120 FF, SW-FIN-1200 FF, SW-RTLN-1180 FF, IB-L3UN-1100 FF, IB-STAR-1020 FF, IB-L1RR-1100 FF, IB-L1M\S-1140 FF |  |  |  | 0d |  |
| PS-CMIL-1150 |  | Project SC - Before Weather Impacts | milestone | 0d | 2026-10-29 | 2026-10-29 | CO-BF-1060 FF |  |  |  | 220d | 0d |
| PS-CMIL-1160 |  | Anticipated Remaining Weather Impacts |  | 20d | 2026-10-30 | 2026-11-30 | PS-CMIL-1150 |  |  |  | 220d | 0d |
| PS-CMIL-1170 |  | Project Sustainability Complete - After Weather Impacts | milestone | 0d | 2026-11-30 | 2026-11-30 | PS-CMIL-1160 FF |  |  |  | 220d |  |
|  | 2 | **Construction Milestones** |  |  | 2025-09-26 | 2026-10-23 |  |  |  |  |  |  |
| PS-CMIL-1070 |  | Start Construction | milestone | 0d | 2025-09-26 A | 2025-09-26 A | CN-MOBL-1000 SS | 100% | 2025-09-25 | 2025-09-25 |  |  |
| PS-CMIL-1060 |  | Permit Approved | milestone | 0d | 2025-10-01 | 2025-10-01 | PS-CMIL-1040 SS |  |  |  | 512d |  |
| PS-CMIL-1080 |  | Start of Foundations | milestone | 0d | 2026-01-12 | 2026-01-12 | FS-LVL1-1000 SS |  |  |  | 445d |  |
| PS-CMIL-1090 |  | Start of Elevated Structure | milestone | 0d | 2026-02-06 | 2026-02-06 | FS-LVL1-1050 SS |  |  |  | 427d |  |
| PS-CMIL-1100 |  | Stair & Elevator Cores Complete to Roof | milestone | 0d | 2026-03-09 | 2026-03-09 | FS-LVL1-1020 FF |  |  |  | 405d |  |
| PS-CMIL-1120 |  | Structure Complete | milestone | 0d | 2026-06-05 | 2026-06-05 | FS-ROOF-1020 FF |  |  |  | 342d |  |
| PS-CMIL-1130 |  | Building Dry In | milestone | 0d | 2026-07-14 | 2026-07-14 | EE-ROOF-1060 FF |  |  |  | 316d |  |
| PS-CMIL-1110 |  | Exterior Work Complete | milestone | 0d | 2026-10-07 | 2026-10-07 | EE-WEST-1100 FF |  |  |  | 256d |  |
| PS-CMIL-1140 |  | Landscape & Hardscape Complete | milestone | 0d | 2026-10-23 | 2026-10-23 | SW-FIN-1190 FF |  |  |  | 244d |  |
|  | 4 | **Pre-Construction** |  |  | 2025-09-19 | 2025-10-21 |  |  |  |  |  |  |
|  | 1 | **Procurement** |  |  | 2025-09-19 | 2025-10-21 |  |  |  |  |  |  |
| PS-PROC-1000 |  | Contracting of Early Trades |  | 10d | 2025-09-19 A | 2025-10-02 A | PS-CMIL-1030 SS | 100% |  |  |  |  |
| PS-PROC-1010 |  | Elevator |  | 5d | 2025-10-01 | 2025-10-07 | PS-PROC-1000 |  |  |  | 256d | 0d |
| PS-PROC-1020 |  | Electric Room MDP |  | 5d | 2025-10-08 | 2025-10-14 | PS-PROC-1010 |  |  |  | 256d | 0d |
| PS-PROC-1030 |  | Owner's Enabling Work |  | 5d | 2025-10-15 | 2025-10-21 | PS-PROC-1020 |  |  |  | 256d |  |

| ID | WBS | Activity | Duration | Start | Finish | Predecessors | Complete | Remaining | Planned start | Planned finish | Total float |
| --- | --- | --- | --- | --- | --- | --- | --- | --- | --- | --- | --- |
|  | 1 | **Construction** |  | 2025-09-26 | 2026-10-28 |  |  |  |  |  |  |
|  | MOB | **Mobilization** |  | 2025-09-26 | 2025-11-07 |  |  |  |  |  |  |
| CN-MOBL-1000 |  | Survey Project Limits | 1d | 2025-09-26 A | 2025-09-26 A | PS-CMIL-1050 | 100% |  | 2025-09-25 | 2025-09-25 |  |
| CN-MOBL-1020 |  | Install SWPPs | 2d | 2025-09-26 A | 2025-09-29 A | CN-MOBL-1000 SS | 100% |  | 2025-09-30 | 2025-10-01 |  |
| CN-MOBL-1030 |  | Set Stabilized Entrance | 1d | 2025-09-30 A | 2025-09-30 A | CN-MOBL-1020 FF | 100% |  | 2025-10-01 | 2025-10-01 |  |
| CN-MOBL-1010 |  | Install Temp Fencing | 2d | 2025-10-29 | 2025-10-30 | SU-STWK-1010 |  |  |  |  | 0d |
| CN-MOBL-1040 |  | Install Temp Power | 2d | 2025-10-31 | 2025-11-03 | CN-MOBL-1010 |  |  |  |  | 0d |
| CN-MOBL-1050 |  | Set Field Office | 1d | 2025-11-04 | 2025-11-04 | CN-MOBL-1040 |  |  |  |  | 0d |
| CN-MOBL-1060 |  | Field Office MEP Hook-Up | 2d | 2025-11-05 | 2025-11-06 | CN-MOBL-1050 |  |  |  |  | 0d |
| CN-MOBL-1070 |  | Install Temp Toilets, Waste & Hand Wash Stations | 1d | 2025-11-07 | 2025-11-07 | CN-MOBL-1060 |  |  |  |  | 0d |
|  | Sitework | **Sitework & Utilities** |  | 2025-10-01 | 2026-01-09 |  |  |  |  |  |  |
|  | SW | **Sitework** |  | 2025-10-01 | 2026-01-09 |  |  |  |  |  |  |
| SU-STWK-1010 |  | Mass Excavation & Rock Removal | 20d | 2025-10-01 A | 2025-10-28 | CN-MOBL-1030 |  | 20d | 2025-10-07 | 2025-11-03 | 0d |
| SU-STWK-1000 |  | Clear & Grub | 3d | 2025-10-24 | 2025-10-28 | SU-STWK-1010 FF |  |  |  |  | 0d |
| SU-STWK-1020 |  | Building Pad Prep & Grading | 7d | 2025-10-29 | 2025-11-06 | SU-STWK-1010, SU-STWK-1000 |  |  |  |  | 0d |
| SU-STWK-1030 |  | Building Layout & Staking | 1d | 2025-11-07 | 2025-11-07 | SU-STWK-1020 |  |  |  |  | 0d |
| SU-STWK-1040 |  | Compact Subgrade | 3d | 2025-11-10 | 2025-11-12 | SU-STWK-1030, CN-MOBL-1070 |  |  |  |  | 0d |
| SU-STWK-1050 |  | Install Stone Base | 3d | 2025-12-11 | 2025-12-15 | SU-STWK-1040, SU-SUTL-1050 |  |  |  |  | 0d |
| SU-STWK-1060 |  | Install Prime Coat, Binder, & Tack Coat | 2d | 2025-12-16 | 2025-12-17 | SU-STWK-1050 |  |  |  |  | 0d |
| SU-STWK-1070 |  | Install Asphalt (Wearing Course) | 1d | 2025-12-18 | 2025-12-18 | SU-STWK-1060 |  |  |  |  | 0d |
| SU-STWK-1080 |  | Form & Reinforce Curb & Gutter | 5d | 2025-12-19 | 2025-12-29 | SU-STWK-1070 |  |  |  |  | 0d |
| SU-STWK-1090 |  | Pour Curb & Gutter | 2d | 2025-12-30 | 2026-01-02 | SU-STWK-1080 |  |  |  |  | 0d |
| SU-STWK-1100 |  | Rough Grade Site | 5d | 2026-01-05 | 2026-01-09 | SU-STWK-1000, SU-STWK-1090 |  |  |  |  | 0d |
|  | SIte | **Site Utilities** |  | 2025-11-13 | 2025-12-10 |  |  |  |  |  |  |
| SU-SUTL-1000 |  | Cut, Cap, and Relocate Existing Utilities | 5d | 2025-11-13 | 2025-11-19 | SU-STWK-1040 |  |  |  |  | 0d |
| SU-SUTL-1010 |  | Install Irrigation Sleeves | 3d | 2025-11-20 | 2025-11-24 | SU-SUTL-1000 |  |  |  |  | 0d |
| SU-SUTL-1020 |  | Install U.G. Sewer | 10d | 2025-11-25 | 2025-12-10 | SU-SUTL-1010 |  |  |  |  | 0d |
| SU-SUTL-1030 |  | Install U.G. Storm Drain | 10d | 2025-11-25 | 2025-12-10 | SU-SUTL-1020 SS |  |  |  |  | 0d |
| SU-SUTL-1040 |  | Install U.G. Electrical Duct Banks | 10d | 2025-11-25 | 2025-12-10 | SU-SUTL-1030 SS |  |  |  |  | 0d |
| SU-SUTL-1050 |  | Install U.G. Fire Water & Domestic | 10d | 2025-11-25 | 2025-12-10 | SU-SUTL-1040 SS |  |  |  |  | 0d |

| ID | WBS | Activity | Duration | Start | Finish | Predecessors | Total float | Free float |
| --- | --- | --- | --- | --- | --- | --- | --- | --- |
|  | 1 | **Foundation & Structural** |  | 2026-01-12 | 2026-06-05 |  |  |  |
|  | 1 | **Level 1** |  | 2026-01-12 | 2026-03-09 |  |  |  |
| FS-LVL1-1000 |  | Footings & Foundation CIP Walls (includes elevator pit) | 25d | 2026-01-12 | 2026-02-16 | SU-STWK-1100 | 0d |  |
| FS-LVL1-1010 |  | Underground MEPF Install (Pre-Pour) | 5d | 2026-01-20 | 2026-01-26 | FS-LVL1-1000 SS+5d | 0d |  |
| FS-LVL1-1030 |  | Slab Prep & Pour (Pour A1) | 5d | 2026-01-27 | 2026-02-02 | FS-LVL1-1010 | 0d |  |
| FS-LVL1-1040 |  | Slab Prep & Pour (Pour A2) | 3d | 2026-02-03 | 2026-02-05 | FS-LVL1-1030 | 0d |  |
| FS-LVL1-1050 |  | Steel Erection (Colums & Beams) | 10d | 2026-02-06 | 2026-02-19 | FS-LVL1-1040 | 0d |  |
| FS-LVL1-1020 |  | Erect Stairs & Elevator Shafts (CMU Cores) | 15d | 2026-02-17 | 2026-03-09 | FS-LVL1-1000 | 149d | 0d |
| FS-LVL1-1060 |  | Fireproofing | 3d | 2026-02-20 | 2026-02-24 | FS-LVL1-1050, FS-LVL2-1000 | 173d |  |
|  | 2 | **Level 2** |  | 2026-02-16 | 2026-03-24 |  |  |  |
| FS-LVL2-1000 |  | Install Metal Decking | 4d | 2026-02-16 | 2026-02-19 | FS-LVL1-1050 FF | 0d |  |
| FS-LVL2-1010 |  | MEPF Rough-In (Pre-Pour) | 5d | 2026-02-20 | 2026-02-26 | FS-LVL2-1000 | 0d |  |
| FS-LVL2-1020 |  | FRP Metal Deck Slab (Pour A1) | 5d | 2026-02-27 | 2026-03-05 | FS-LVL2-1010 | 0d |  |
| FS-LVL2-1030 |  | FRP Metal Deck Slab (Pour A2) | 3d | 2026-03-06 | 2026-03-10 | FS-LVL2-1020 | 0d |  |
| FS-LVL2-1040 |  | Layout & Erect Load Bearing Framing | 10d | 2026-03-11 | 2026-03-24 | FS-LVL2-1030 | 0d |  |
|  | 3 | **Level 3** |  | 2026-03-19 | 2026-04-24 |  |  |  |
| FS-LVL3-1000 |  | Install Metal Decking | 4d | 2026-03-19 | 2026-03-24 | FS-LVL2-1040 FF | 0d |  |
| FS-LVL3-1010 |  | MEPF Rough-In (Pre-Pour) | 5d | 2026-03-25 | 2026-03-31 | FS-LVL3-1000 | 0d |  |
| FS-LVL3-1020 |  | FRP Metal Deck Slab (Pour A1) | 5d | 2026-04-01 | 2026-04-07 | FS-LVL3-1010 | 0d |  |
| FS-LVL3-1030 |  | FRP Metal Deck Slab (Pour A2) | 3d | 2026-04-08 | 2026-04-10 | FS-LVL3-1020 | 0d |  |
| FS-LVL3-1040 |  | Layout & Erect Load Bearing Framing | 10d | 2026-04-13 | 2026-04-24 | FS-LVL3-1030 | 0d |  |
|  | 5 | **Level 4** |  | 2026-04-21 | 2026-05-28 |  |  |  |
| FS-LVL4-1000 |  | Install Metal Decking | 4d | 2026-04-21 | 2026-04-24 | FS-LVL3-1040 FF | 0d |  |
| FS-LVL4-1010 |  | MEPF Rough-In (Pre-Pour) | 5d | 2026-04-27 | 2026-05-01 | FS-LVL4-1000 | 0d |  |
| FS-LVL4-1020 |  | FRP Metal Deck Slab (Pour A1) | 5d | 2026-05-04 | 2026-05-08 | FS-LVL4-1010 | 0d |  |
| FS-LVL4-1030 |  | FRP Metal Deck Slab (Pour A2) | 3d | 2026-05-11 | 2026-05-13 | FS-LVL4-1020 | 0d |  |
| FS-LVL4-1040 |  | Layout & Erect Load Bearing Framing | 10d | 2026-05-14 | 2026-05-28 | FS-LVL4-1030 | 0d |  |

| ID | WBS | Activity | Duration | Start | Finish | Predecessors | Total float | Free float |
| --- | --- | --- | --- | --- | --- | --- | --- | --- |
|  | 4 | **Roof** |  | 2026-05-22 | 2026-06-05 |  |  |  |
| FS-ROOF-1000 |  | Install Metal Decking | 4d | 2026-05-22 | 2026-05-28 | FS-LVL4-1040 FF | 0d |  |
| FS-ROOF-1010 |  | MEPF Rough-In (Stubups) | 3d | 2026-05-29 | 2026-06-02 | FS-ROOF-1000 | 0d |  |
| FS-ROOF-1020 |  | Layout & Frame Parapets | 3d | 2026-06-03 | 2026-06-05 | FS-ROOF-1010 | 0d |  |
|  | 2 | **Envelope & Exterior** |  | 2026-05-14 | 2026-10-19 |  |  |  |
|  | 0 | **North Elevation** |  | 2026-05-14 | 2026-09-03 |  |  |  |
| EE-NRTH-1000 |  | Layout & Exterior Framing (Level 1) | 5d | 2026-05-14 | 2026-05-20 | FS-LVL4-1030 | 10d | 0d |
| EE-NRTH-1010 |  | City Inspection (Rough Framing) | 1d | 2026-05-21 | 2026-05-21 | EE-NRTH-1000 | 10d |  |
| EE-NRTH-1020 |  | Electrical Rough-In | 5d | 2026-06-08 | 2026-06-12 | EE-NRTH-1010, FS-ROOF-1020 | 0d |  |
| EE-NRTH-1030 |  | City Inspection (Electrical) | 1d | 2026-06-15 | 2026-06-15 | EE-NRTH-1020 | 7d | 0d |
| EE-NRTH-1040 |  | Install Exterior Sheathing | 5d | 2026-06-16 | 2026-06-22 | EE-NRTH-1030 | 7d | 0d |
| EE-NRTH-1050 |  | City Inspection (Screw Inspection) | 1d | 2026-06-23 | 2026-06-23 | EE-NRTH-1040 | 7d | 0d |
| EE-NRTH-1060 |  | Weather Barrier & Flashing | 5d | 2026-06-24 | 2026-06-30 | EE-NRTH-1050 | 7d | 0d |
| EE-NRTH-1070 |  | Install Rigid Insulation | 5d | 2026-07-01 | 2026-07-08 | EE-NRTH-1060 | 7d | 0d |
| EE-NRTH-1080 |  | Storefront, Windows & Metals | 3d | 2026-07-09 | 2026-07-13 | EE-NRTH-1070 | 7d | 0d |
| EE-NRTH-1090 |  | Install Brick Veneer | 15d | 2026-07-14 | 2026-08-03 | EE-NRTH-1080 | 7d | 0d |
| EE-NRTH-1100 |  | Install Canopies & Trim | 3d | 2026-08-04 | 2026-08-06 | EE-NRTH-1090 | 38d | 0d |
| EE-NRTH-1110 |  | Install Lighting Fixtures | 3d | 2026-08-07 | 2026-08-11 | EE-NRTH-1100 | 38d | 0d |
| EE-NRTH-1120 |  | Install Signage | 1d | 2026-08-12 | 2026-08-12 | EE-NRTH-1110 | 38d | 0d |
| EE-NRTH-1130 |  | Install Doors & Hardware | 2d | 2026-08-13 | 2026-08-14 | EE-NRTH-1120 | 38d | 0d |
| EE-NRTH-1140 |  | Install Downspouts | 1d | 2026-08-17 | 2026-08-17 | EE-NRTH-1130 | 38d | 0d |
| EE-NRTH-1150 |  | Final Paint | 3d | 2026-08-18 | 2026-08-20 | EE-NRTH-1140 | 38d | 0d |
| EE-NRTH-1160 |  | Punch List & Corrections | 5d | 2026-08-21 | 2026-08-27 | EE-NRTH-1150 | 38d | 0d |
| EE-NRTH-1170 |  | Final Owner Walk (Punch List & Corrections) | 5d | 2026-08-28 | 2026-09-03 | EE-NRTH-1160 | 38d |  |

| ID | WBS | Activity | Duration | Start | Finish | Predecessors | Total float | Free float |
| --- | --- | --- | --- | --- | --- | --- | --- | --- |
|  | 2 | **East Elevation** |  | 2026-05-21 | 2026-09-09 |  |  |  |
| EE-EAST-1000 |  | Layout & Exterior Framing (Level 1) | 5d | 2026-05-21 | 2026-05-28 | EE-NRTH-1000 | 10d | 0d |
| EE-EAST-1010 |  | City Inspection (Rough Framing) | 1d | 2026-05-29 | 2026-05-29 | EE-EAST-1000 | 10d |  |
| EE-EAST-1020 |  | Electrical Rough-In | 5d | 2026-06-15 | 2026-06-19 | EE-EAST-1010, EE-NRTH-1020 | 0d |  |
| EE-EAST-1030 |  | City Inspection (Electrical) | 1d | 2026-06-22 | 2026-06-22 | EE-EAST-1020 | 17d | 0d |
| EE-EAST-1040 |  | Install Exterior Sheathing | 5d | 2026-06-23 | 2026-06-29 | EE-EAST-1030 | 17d | 0d |
| EE-EAST-1050 |  | City Inspection (Screw Inspection) | 1d | 2026-06-30 | 2026-06-30 | EE-EAST-1040 | 17d | 0d |
| EE-EAST-1060 |  | Weather Barrier & Flashing | 5d | 2026-07-01 | 2026-07-08 | EE-EAST-1050 | 17d | 0d |
| EE-EAST-1070 |  | Install Rigid Insulation | 5d | 2026-07-09 | 2026-07-15 | EE-EAST-1060 | 17d | 0d |
| EE-EAST-1080 |  | Install Windows & Metals | 3d | 2026-07-16 | 2026-07-20 | EE-EAST-1070 | 17d | 10d |
| EE-EAST-1090 |  | Install Brick Veneer | 15d | 2026-08-04 | 2026-08-24 | EE-EAST-1080, EE-NRTH-1090 | 7d | 0d |
| EE-EAST-1100 |  | Install Signage | 1d | 2026-08-25 | 2026-08-25 | EE-EAST-1090 | 35d | 0d |
| EE-EAST-1110 |  | Punch List & Corrections | 5d | 2026-08-26 | 2026-09-01 | EE-EAST-1100 | 35d | 0d |
| EE-EAST-1120 |  | Final Owner Walk (Punch List & Corrections) | 5d | 2026-09-02 | 2026-09-09 | EE-EAST-1110 | 35d |  |
|  | 5 | **South Elevation** |  | 2026-05-29 | 2026-10-07 |  |  |  |
| EE-SOTH-1000 |  | Layout & Exterior Framing (Level 1) | 5d | 2026-05-29 | 2026-06-04 | EE-EAST-1000 | 10d | 0d |
| EE-SOTH-1010 |  | City Inspection (Rough Framing) | 1d | 2026-06-05 | 2026-06-05 | EE-SOTH-1000 | 10d |  |
| EE-SOTH-1020 |  | Electrical Rough-In | 5d | 2026-06-22 | 2026-06-26 | EE-SOTH-1010, EE-EAST-1020 | 0d |  |
| EE-SOTH-1030 |  | City Inspection (Electrical) | 1d | 2026-06-29 | 2026-06-29 | EE-SOTH-1020 | 30d | 0d |
| EE-SOTH-1040 |  | Install Exterior Sheathing | 5d | 2026-06-30 | 2026-07-07 | EE-SOTH-1030 | 30d | 0d |
| EE-SOTH-1050 |  | City Inspection (Screw Inspection) | 1d | 2026-07-08 | 2026-07-08 | EE-SOTH-1040 | 30d | 0d |
| EE-SOTH-1060 |  | Weather Barrier & Flashing | 5d | 2026-07-09 | 2026-07-15 | EE-SOTH-1050 | 30d | 0d |
| EE-SOTH-1070 |  | Install Rigid Insulation | 5d | 2026-07-16 | 2026-07-22 | EE-SOTH-1060 | 30d | 23d |
| EE-SOTH-1080 |  | Install Brick Veneer | 15d | 2026-08-25 | 2026-09-15 | EE-SOTH-1070, EE-EAST-1090 | 7d | 0d |
| EE-SOTH-1090 |  | Install Signage | 1d | 2026-09-16 | 2026-09-16 | EE-SOTH-1080 | 15d | 0d |
| EE-SOTH-1100 |  | Install Doors & Hardware | 1d | 2026-09-17 | 2026-09-17 | EE-SOTH-1090 | 15d | 0d |
| EE-SOTH-1110 |  | Install Downspouts | 2d | 2026-09-18 | 2026-09-21 | EE-SOTH-1100 | 15d | 0d |
| EE-SOTH-1120 |  | Final Paint | 2d | 2026-09-22 | 2026-09-23 | EE-SOTH-1110 | 15d | 0d |
| EE-SOTH-1130 |  | Punch List & Corrections | 5d | 2026-09-24 | 2026-09-30 | EE-SOTH-1120 | 15d | 0d |
| EE-SOTH-1140 |  | Final Owner Walk (Punch List & Corrections) | 5d | 2026-10-01 | 2026-10-07 | EE-SOTH-1130 | 15d |  |

| ID | WBS | Activity | Duration | Start | Finish | Predecessors | Total float | Free float |
| --- | --- | --- | --- | --- | --- | --- | --- | --- |
|  | 1 | **West Elevation** |  | 2026-06-05 | 2026-10-19 |  |  |  |
| EE-WEST-1000 |  | Layout & Exterior Framing (Level 1) | 5d | 2026-06-05 | 2026-06-11 | EE-SOTH-1000 | 10d | 0d |
| EE-WEST-1010 |  | City Inspection (Rough Framing) | 1d | 2026-06-12 | 2026-06-12 | EE-WEST-1000 | 10d |  |
| EE-WEST-1020 |  | Electrical Rough-In | 5d | 2026-06-29 | 2026-07-06 | EE-WEST-1010, EE-SOTH-1020 | 0d |  |
| EE-WEST-1030 |  | City Inspection (Electrical) | 1d | 2026-07-07 | 2026-07-07 | EE-WEST-1020 | 0d |  |
| EE-WEST-1040 |  | Install Exterior Sheathing | 5d | 2026-07-08 | 2026-07-14 | EE-WEST-1030 | 0d |  |
| EE-WEST-1050 |  | City Inspection (Screw Inspection) | 1d | 2026-07-15 | 2026-07-15 | EE-WEST-1040 | 0d |  |
| EE-WEST-1060 |  | Weather Barrier & Flashing | 5d | 2026-07-16 | 2026-07-22 | EE-WEST-1050 | 0d |  |
| EE-WEST-1070 |  | Install Rigid Insulation | 5d | 2026-07-23 | 2026-07-29 | EE-WEST-1060 | 0d |  |
| EE-WEST-1080 |  | Install Windows & Metals | 3d | 2026-07-30 | 2026-08-03 | EE-WEST-1070 | 0d |  |
| EE-WEST-1090 |  | Install Brick Veneer | 15d | 2026-09-16 | 2026-10-06 | EE-WEST-1080, EE-SOTH-1080 | 7d | 0d |
| EE-WEST-1100 |  | Install Signage | 1d | 2026-10-07 | 2026-10-07 | EE-WEST-1090 | 7d | 0d |
| EE-WEST-1110 |  | Punch List & Corrections | 5d | 2026-10-08 | 2026-10-14 | EE-WEST-1100 | 7d | 0d |
| EE-WEST-1120 |  | Final Owner Walk (Punch List & Corrections) | 3d | 2026-10-15 | 2026-10-19 | EE-WEST-1110 | 7d |  |
|  | 3 | **Roof** |  | 2026-06-08 | 2026-09-17 |  |  |  |
| EE-ROOF-1000 |  | Clean & Prep Metal Deck | 2d | 2026-06-08 | 2026-06-09 | FS-ROOF-1020 | 5d | 0d |
| EE-ROOF-1010 |  | Stage Materials & Solar Rails (Crane) | 1d | 2026-06-10 | 2026-06-10 | EE-ROOF-1000 | 5d | 0d |
| EE-ROOF-1020 |  | Layout for Penetrations, Curb Blocking, Edge Metal | 2d | 2026-06-11 | 2026-06-12 | EE-ROOF-1010 | 5d | 0d |
| EE-ROOF-1030 |  | Install Blocking & Equipment Curbs | 3d | 2026-06-15 | 2026-06-17 | EE-ROOF-1020 | 5d | 0d |
| EE-ROOF-1040 |  | Install Rigid Insulation | 4d | 2026-06-18 | 2026-06-23 | EE-ROOF-1030 | 5d | 0d |
| EE-ROOF-1050 |  | Install Cover Board | 4d | 2026-06-24 | 2026-06-29 | EE-ROOF-1040 | 5d | 0d |
| EE-ROOF-1060 |  | Install TPO Roofing System (incl. boots, termination bars) | 10d | 2026-06-30 | 2026-07-14 | EE-ROOF-1050 | 5d | 0d |
| EE-ROOF-1070 |  | Install Edge Metal, Coping, Trim | 5d | 2026-07-15 | 2026-07-21 | EE-ROOF-1060 | 29d | 0d |
| EE-ROOF-1080 |  | Install Roof Drains, Vents, Mechanical Curbs | 5d | 2026-07-22 | 2026-07-28 | EE-ROOF-1070 | 29d | 0d |
| EE-ROOF-1090 |  | Install Electrical Conduit & Roof Mounted Boxes | 5d | 2026-07-29 | 2026-08-04 | EE-ROOF-1080 | 29d | 0d |
| EE-ROOF-1140 |  | Set Rooftop Units (RTU's & Splits) | 1d | 2026-07-29 | 2026-07-29 | EE-ROOF-1080 | 50d | 0d |
| EE-ROOF-1150 |  | Install Duct/Condensate/Vent Tie-Ins & Flashing | 3d | 2026-07-30 | 2026-08-03 | EE-ROOF-1140 | 50d | 0d |
| EE-ROOF-1160 |  | Startup/Controls/Balancing Prep | 3d | 2026-08-04 | 2026-08-06 | EE-ROOF-1150 | 50d | 0d |
| EE-ROOF-1100 |  | Install Solar Mounting Rails & Racking | 3d | 2026-08-05 | 2026-08-07 | EE-ROOF-1090 | 29d | 0d |
| EE-ROOF-1170 |  | Water Test / Leak Test | 1d | 2026-08-07 | 2026-08-07 | EE-ROOF-1160 | 50d | 0d |
| EE-ROOF-1110 |  | Mount Solar Panels | 15d | 2026-08-10 | 2026-08-28 | EE-ROOF-1100 | 29d | 0d |
| EE-ROOF-1180 |  | Roof Patches (If Any) | 1d | 2026-08-10 | 2026-08-10 | EE-ROOF-1170 | 50d | 0d |
| EE-ROOF-1190 |  | Punch List & Corrections | 3d | 2026-08-11 | 2026-08-13 | EE-ROOF-1180 | 50d | 21d |
| EE-ROOF-1120 |  | Run Electrical Conduit & Inverters to Roof | 5d | 2026-08-31 | 2026-09-04 | EE-ROOF-1110 | 29d | 0d |
| EE-ROOF-1130 |  | Final Electrical Tie-In (Solar Panels) | 5d | 2026-09-08 | 2026-09-14 | EE-ROOF-1120 | 29d | 0d |
| EE-ROOF-1200 |  | Final Owner Walk (Punch List & Corrections) | 3d | 2026-09-15 | 2026-09-17 | EE-ROOF-1190, EE-ROOF-1130 | 29d |  |

| ID | WBS | Activity | Duration | Start | Finish | Predecessors | Total float | Free float |
| --- | --- | --- | --- | --- | --- | --- | --- | --- |
|  | 3 | **Interior Build-Out** |  | 2026-03-10 | 2026-10-21 |  |  |  |
|  | Level 1 Interior | **Level 1 Interior** |  | 2026-07-15 | 2026-09-03 |  |  |  |
| IB-L1IN-1000 |  | Layout & Framing (incl. backing, door frames) | 5d | 2026-07-15 | 2026-07-21 | EE-ROOF-1060 | 29d | 0d |
| IB-L1IN-1010 |  | Electrical Rough-In | 5d | 2026-07-22 | 2026-07-28 | IB-L1IN-1000 | 41d | 0d |
| IB-L1IN-1020 |  | Mechanical Rough-In | 5d | 2026-07-22 | 2026-07-28 | IB-L1IN-1010 SS | 41d | 0d |
| IB-L1IN-1030 |  | Plumbing Rough-In | 5d | 2026-07-22 | 2026-07-28 | IB-L1IN-1020 SS | 41d | 0d |
| IB-L1IN-1040 |  | Fire Supression Rough-In | 5d | 2026-07-22 | 2026-07-28 | IB-L1IN-1030 SS | 41d | 0d |
| IB-L1IN-1050 |  | Install Insulation | 2d | 2026-07-29 | 2026-07-30 | IB-L1IN-1040, EE-ROOF-1060 | 41d | 0d |
| IB-L1IN-1060 |  | Install Drywall | 4d | 2026-07-31 | 2026-08-05 | IB-L1IN-1050 | 41d | 0d |
| IB-L1IN-1070 |  | Tape & Mud Drywall | 5d | 2026-08-06 | 2026-08-12 | IB-L1IN-1060 | 41d | 0d |
| IB-L1IN-1080 |  | Prep & Paint | 3d | 2026-08-13 | 2026-08-17 | IB-L1IN-1070 | 41d | 0d |
| IB-L1IN-1090 |  | MEPF Trim-Out | 5d | 2026-08-18 | 2026-08-24 | IB-L1IN-1080 | 41d | 0d |
| IB-L1IN-1100 |  | Install Storage Doors & Hardware | 5d | 2026-08-25 | 2026-08-31 | IB-L1IN-1090 | 41d |  |
|  | 1 | **Restrooms (Mens & Womens)** |  | 2026-07-22 | 2026-08-20 |  |  |  |
| IB-L1RR-1000 |  | Framing (Metal Studs, Blocking) | 3d | 2026-07-22 | 2026-07-24 | IB-L1IN-1000 | 29d | 0d |
| IB-L1RR-1010 |  | MEPF Rough-In | 3d | 2026-07-27 | 2026-07-29 | IB-L1RR-1000 | 48d | 0d |
| IB-L1RR-1020 |  | City Inspection (Framing & MEPF Rough) | 1d | 2026-07-30 | 2026-07-30 | IB-L1RR-1010 | 48d | 0d |
| IB-L1RR-1030 |  | Install Insulation | 1d | 2026-07-31 | 2026-07-31 | IB-L1RR-1020 | 48d | 0d |
| IB-L1RR-1040 |  | Install Drywall | 2d | 2026-08-03 | 2026-08-04 | IB-L1RR-1030 | 48d | 0d |
| IB-L1RR-1050 |  | Tape & Mud Drywall | 3d | 2026-08-05 | 2026-08-07 | IB-L1RR-1040 | 48d | 0d |
| IB-L1RR-1060 |  | Painting | 2d | 2026-08-10 | 2026-08-11 | IB-L1RR-1050 | 48d | 0d |
| IB-L1RR-1070 |  | Install Restroom Fixtures & Partitions | 2d | 2026-08-12 | 2026-08-13 | IB-L1RR-1060 | 48d | 0d |
| IB-L1RR-1080 |  | Install Accessories (Grab Bars, Mirrors, Signs) | 2d | 2026-08-14 | 2026-08-17 | IB-L1RR-1070 | 48d | 0d |
| IB-L1RR-1090 |  | Final MEP Trim-Out | 2d | 2026-08-18 | 2026-08-19 | IB-L1RR-1080 | 48d | 0d |
| IB-L1RR-1100 |  | Final Clean | 1d | 2026-08-20 | 2026-08-20 | IB-L1RR-1090 | 48d |  |

| ID | WBS | Activity | Duration | Start | Finish | Predecessors | Total float | Free float |
| --- | --- | --- | --- | --- | --- | --- | --- | --- |
|  | 2 | **Management Spaces (Rental Office, Storage, Break Room)** |  | 2026-07-27 | 2026-09-03 |  |  |  |
| IB-L1M\S-1000 |  | Layout & Framing (incl. backing, door frames) | 3d | 2026-07-27 | 2026-07-29 | IB-L1RR-1000 | 29d | 0d |
| IB-L1M\S-1010 |  | MEPF Rough-In | 3d | 2026-07-30 | 2026-08-03 | IB-L1M\S-1000 | 35d | 0d |
| IB-L1M\S-1020 |  | City Inspection (Framing & MEPF) | 1d | 2026-08-04 | 2026-08-04 | IB-L1M\S-1010 | 35d | 0d |
| IB-L1M\S-1030 |  | Install Insulation | 2d | 2026-08-05 | 2026-08-06 | IB-L1M\S-1020 | 35d | 0d |
| IB-L1M\S-1040 |  | Install Drywall | 2d | 2026-08-07 | 2026-08-10 | IB-L1M\S-1030 | 35d | 0d |
| IB-L1M\S-1050 |  | Tape & Mud Drywall | 3d | 2026-08-11 | 2026-08-13 | IB-L1M\S-1040 | 35d | 0d |
| IB-L1M\S-1060 |  | Painting | 3d | 2026-08-14 | 2026-08-18 | IB-L1M\S-1050 | 35d | 0d |
| IB-L1M\S-1070 |  | Install Ceiling Grid (Break Room) | 1d | 2026-08-19 | 2026-08-19 | IB-L1M\S-1060 | 38d | 0d |
| IB-L1M\S-1080 |  | Install Base Trim | 1d | 2026-08-20 | 2026-08-20 | IB-L1M\S-1070 | 38d | 0d |
| IB-L1M\S-1090 |  | Install Cabinets & Countertops (Break Room & Office) | 3d | 2026-08-21 | 2026-08-25 | IB-L1M\S-1080 | 38d | 0d |
| IB-L1M\S-1100 |  | Install Sink & Faucests (Break Room) | 1d | 2026-08-26 | 2026-08-26 | IB-L1M\S-1090 | 38d | 0d |
| IB-L1M\S-1110 |  | Appliances (Microwave & Fridge) | 1d | 2026-08-27 | 2026-08-27 | IB-L1M\S-1100 | 38d | 0d |
| IB-L1M\S-1120 |  | Interior Signage | 1d | 2026-08-28 | 2026-08-28 | IB-L1M\S-1110 | 38d | 0d |
| IB-L1M\S-1130 |  | MEPF Trim-Out | 3d | 2026-08-31 | 2026-09-02 | IB-L1M\S-1120 | 38d | 0d |
| IB-L1M\S-1140 |  | Final Clean | 1d | 2026-09-03 | 2026-09-03 | IB-L1M\S-1130 | 38d |  |
|  | Level 2 Interior | **Level 2 Interior** |  | 2026-07-15 | 2026-08-31 |  |  |  |
| IB-L2IN-1000 |  | Layout & Framing (incl. backing, door frames) | 5d | 2026-07-15 | 2026-07-21 | FS-LVL3-1030, EE-ROOF-1060 | 5d | 0d |
| IB-L2IN-1010 |  | Electrical Rough-In | 5d | 2026-07-22 | 2026-07-28 | IB-L2IN-1000 | 5d | 0d |
| IB-L2IN-1020 |  | Mechanical Rough-In | 5d | 2026-07-22 | 2026-07-28 | IB-L2IN-1010 SS | 5d | 0d |
| IB-L2IN-1030 |  | Plumbing Rough-In | 5d | 2026-07-22 | 2026-07-28 | IB-L2IN-1020 SS | 5d | 0d |
| IB-L2IN-1040 |  | Fire Supression Rough-In | 5d | 2026-07-22 | 2026-07-28 | IB-L2IN-1030 SS | 5d | 0d |
| IB-L2IN-1050 |  | Install Insulation | 2d | 2026-07-29 | 2026-07-30 | IB-L2IN-1040, EE-ROOF-1060 | 41d | 0d |
| IB-L2IN-1060 |  | Install Drywall | 4d | 2026-07-31 | 2026-08-05 | IB-L2IN-1050 | 41d | 0d |
| IB-L2IN-1070 |  | Tape & Mud Drywall | 5d | 2026-08-06 | 2026-08-12 | IB-L2IN-1060 | 41d | 0d |
| IB-L2IN-1080 |  | Prep & Paint | 3d | 2026-08-13 | 2026-08-17 | IB-L2IN-1070 | 41d | 0d |
| IB-L2IN-1090 |  | MEPF Trim-Out | 5d | 2026-08-18 | 2026-08-24 | IB-L2IN-1080 | 41d | 0d |
| IB-L2IN-1100 |  | Install Storage Doors & Hardware | 5d | 2026-08-25 | 2026-08-31 | IB-L2IN-1090 | 41d |  |

| ID | WBS | Activity | Duration | Start | Finish | Predecessors | Total float | Free float |
| --- | --- | --- | --- | --- | --- | --- | --- | --- |
|  | 3 | **Level 3 Interior** |  | 2026-07-22 | 2026-09-08 |  |  |  |
| IB-L3IN-1000 |  | Layout & Framing (incl. backing, door frames) | 5d | 2026-07-22 | 2026-07-28 | IB-L2IN-1000, FS-LVL4-1030 | 36d | 0d |
| IB-L3IN-1010 |  | Electrical Rough-In | 5d | 2026-07-29 | 2026-08-04 | IB-L3IN-1000 | 36d | 0d |
| IB-L3IN-1020 |  | Mechanical Rough-In | 5d | 2026-07-29 | 2026-08-04 | IB-L3IN-1010 SS | 36d | 0d |
| IB-L3IN-1030 |  | Plumbing Rough-In | 5d | 2026-07-29 | 2026-08-04 | IB-L3IN-1020 SS | 36d | 0d |
| IB-L3IN-1040 |  | Fire Supression Rough-In | 5d | 2026-07-29 | 2026-08-04 | IB-L3IN-1030 SS | 36d | 0d |
| IB-L3IN-1050 |  | Install Insulation | 2d | 2026-08-05 | 2026-08-06 | IB-L3IN-1040, EE-ROOF-1060 | 36d | 0d |
| IB-L3IN-1060 |  | Install Drywall | 4d | 2026-08-07 | 2026-08-12 | IB-L3IN-1050 | 36d | 0d |
| IB-L3IN-1070 |  | Tape & Mud Drywall | 5d | 2026-08-13 | 2026-08-19 | IB-L3IN-1060 | 36d | 0d |
| IB-L3IN-1080 |  | Prep & Paint | 3d | 2026-08-20 | 2026-08-24 | IB-L3IN-1070 | 36d | 0d |
| IB-L3IN-1090 |  | MEPF Trim-Out | 5d | 2026-08-25 | 2026-08-31 | IB-L3IN-1080 | 36d | 0d |
| IB-L3IN-1100 |  | Install Storage Doors & Hardware | 5d | 2026-09-01 | 2026-09-08 | IB-L3IN-1090 | 36d |  |
|  | 1 | **Unisex Restroom** |  | 2026-07-29 | 2026-08-27 |  |  |  |
| IB-L3UN-1000 |  | Framing (Metal Studs, Blocking) | 3d | 2026-07-29 | 2026-07-31 | IB-L3IN-1000 | 43d | 0d |
| IB-L3UN-1010 |  | MEPF Rough-In | 3d | 2026-08-03 | 2026-08-05 | IB-L3UN-1000 | 43d | 0d |
| IB-L3UN-1020 |  | City Inspection (Framing & MEPF Rough) | 1d | 2026-08-06 | 2026-08-06 | IB-L3UN-1010 | 43d | 0d |
| IB-L3UN-1030 |  | Install Insulation | 1d | 2026-08-07 | 2026-08-07 | IB-L3UN-1020 | 43d | 0d |
| IB-L3UN-1040 |  | Install Drywall | 2d | 2026-08-10 | 2026-08-11 | IB-L3UN-1030 | 43d | 0d |
| IB-L3UN-1050 |  | Tape & Mud Drywall | 3d | 2026-08-12 | 2026-08-14 | IB-L3UN-1040 | 43d | 0d |
| IB-L3UN-1060 |  | Painting | 2d | 2026-08-17 | 2026-08-18 | IB-L3UN-1050 | 43d | 0d |
| IB-L3UN-1070 |  | Install Restroom Fixtures & Partitions | 2d | 2026-08-19 | 2026-08-20 | IB-L3UN-1060 | 43d | 0d |
| IB-L3UN-1080 |  | Install Accessories (Grab Bars, Mirrors, Signs) | 2d | 2026-08-21 | 2026-08-24 | IB-L3UN-1070 | 43d | 0d |
| IB-L3UN-1090 |  | Final MEP Trim-Out | 2d | 2026-08-25 | 2026-08-26 | IB-L3UN-1080 | 43d | 0d |
| IB-L3UN-1100 |  | Final Clean | 1d | 2026-08-27 | 2026-08-27 | IB-L3UN-1090 | 43d |  |

| ID | WBS | Activity | Duration | Start | Finish | Predecessors | Total float | Free float |
| --- | --- | --- | --- | --- | --- | --- | --- | --- |
|  | 5 | **Level 4 Interior** |  | 2026-05-29 | 2026-08-17 |  |  |  |
| IB-L4IN-1000 |  | Layout & Framing (incl. backing, door frames) | 5d | 2026-05-29 | 2026-06-04 | FS-ROOF-1000 | 68d | 0d |
| IB-L4IN-1010 |  | Electrical Rough-In | 5d | 2026-06-05 | 2026-06-11 | IB-L4IN-1000 | 68d | 0d |
| IB-L4IN-1020 |  | Mechanical Rough-In | 5d | 2026-06-05 | 2026-06-11 | IB-L4IN-1010 SS | 68d | 0d |
| IB-L4IN-1030 |  | Plumbing Rough-In | 5d | 2026-06-05 | 2026-06-11 | IB-L4IN-1020 SS | 68d | 0d |
| IB-L4IN-1040 |  | Fire Supression Rough-In | 5d | 2026-06-05 | 2026-06-11 | IB-L4IN-1030 SS | 68d | 0d |
| IB-L4IN-1050 |  | Install Insulation | 2d | 2026-07-15 | 2026-07-16 | IB-L4IN-1040, EE-ROOF-1060 | 46d | 0d |
| IB-L4IN-1060 |  | Install Drywall | 4d | 2026-07-17 | 2026-07-22 | IB-L4IN-1050 | 46d | 0d |
| IB-L4IN-1070 |  | Tape & Mud Drywall | 5d | 2026-07-23 | 2026-07-29 | IB-L4IN-1060 | 46d | 0d |
| IB-L4IN-1080 |  | Prep & Paint | 3d | 2026-07-30 | 2026-08-03 | IB-L4IN-1070 | 46d | 0d |
| IB-L4IN-1090 |  | MEPF Trim-Out | 5d | 2026-08-04 | 2026-08-10 | IB-L4IN-1080 | 46d | 0d |
| IB-L4IN-1100 |  | Install Storage Doors & Hardware | 5d | 2026-08-11 | 2026-08-17 | IB-L4IN-1090 | 51d |  |
|  | 1 | **Janus Scope** |  | 2026-07-29 | 2026-10-21 |  |  |  |
| IB-JNUS-1000 |  | Level 2 Install (Diamond Plate, Turkey Wire, Misc.) | 15d | 2026-07-29 | 2026-08-18 | IB-L2IN-1000, IB-L2IN-1040 | 5d | 0d |
| IB-JNUS-1010 |  | Level 3 Install (Diamond Plate, Turkey Wire, Misc.) | 15d | 2026-08-19 | 2026-09-09 | IB-JNUS-1000 | 5d | 0d |
| IB-JNUS-1020 |  | Level 4 Install (Diamond Plate, Turkey Wire, Misc.) | 15d | 2026-09-10 | 2026-09-30 | IB-JNUS-1010 | 5d | 0d |
| IB-JNUS-1030 |  | Level 1 Install (Diamond Plate, Turkey Wire, Misc.) | 15d | 2026-10-01 | 2026-10-21 | IB-L1M\S-1060, IB-JNUS-1020 | 5d |  |
|  | 2 | **Elevator Installation** |  | 2026-07-30 | 2026-09-17 |  |  |  |
| EL-INST-1000 |  | Evelvator Installation (incl. Equipment Room Buildout) | 35d | 2026-07-30 | 2026-09-17 | IB-L1M\S-1000 | 29d |  |
|  | 4 | **Stairwells** |  | 2026-03-10 | 2026-03-30 |  |  |  |
| IB-STAR-1000 |  | Install Stairs & Railings | 10d | 2026-03-10 | 2026-03-23 | FS-LVL1-1020 | 149d | 0d |
| IB-STAR-1010 |  | Install Signage & Lighting | 3d | 2026-03-24 | 2026-03-26 | IB-STAR-1000 | 149d | 0d |
| IB-STAR-1020 |  | Install Doors & Hardware | 2d | 2026-03-27 | 2026-03-30 | IB-STAR-1010 | 149d |  |
|  | 4 | **Offsite** |  | 2026-08-04 | 2026-10-28 |  |  |  |
|  | 2 | **Sitework Finishes** |  | 2026-08-04 | 2026-10-28 |  |  |  |
| SW-FIN-1040 |  | Finish Grade Site (incl. bio ponds) | 5d | 2026-08-04 | 2026-08-10 | EE-WEST-1000, EE-WEST-1080 | 0d |  |
| SW-FIN-1050 |  | Install Irrigation Sleeves (inc. bio ponds) | 2d | 2026-08-11 | 2026-08-12 | SW-FIN-1040, SW-FIN-1040 FF | 0d |  |
| SW-FIN-1060 |  | Electrical Rough (Light Poles) | 5d | 2026-08-13 | 2026-08-19 | SW-FIN-1050, SW-FIN-1050 FF | 0d |  |
| SW-FIN-1100 |  | Install Bollards (including footings) | 5d | 2026-08-20 | 2026-08-26 | SW-FIN-1060 | 0d |  |
| SW-FIN-1130 |  | FRP Concrete (Hardscape & Sidewalks) | 7d | 2026-08-27 | 2026-09-04 | SW-FIN-1100 | 0d |  |
| SW-FIN-1140 |  | Install Irrigation | 10d | 2026-09-08 | 2026-09-21 | SW-FIN-1130, SW-FIN-1130 FF | 0d |  |
| SW-FIN-1150 |  | Install Asphalt (Final Coat) | 1d | 2026-09-22 | 2026-09-22 | SW-FIN-1140 | 0d |  |
| SW-FIN-1170 |  | Planting | 10d | 2026-09-23 | 2026-10-06 | SW-FIN-1150 | 0d |  |
| SW-FIN-1171 |  | FRP Dumpster Enclosure | 7d | 2026-10-07 | 2026-10-15 | SW-FIN-1130, SW-FIN-1170 | 0d |  |
| SW-FIN-1180 |  | Site Furnishings & Signage | 5d | 2026-10-16 | 2026-10-22 | SW-FIN-1170, SW-FIN-1171 | 0d |  |
| SW-FIN-1190 |  | Final Clean | 1d | 2026-10-23 | 2026-10-23 | SW-FIN-1180 | 0d |  |
| SW-FIN-1200 |  | Punch List | 3d | 2026-10-26 | 2026-10-28 | SW-FIN-1190 | 0d |  |

| ID | WBS | Activity | Duration | Start | Finish | Predecessors | Total float | Free float |
| --- | --- | --- | --- | --- | --- | --- | --- | --- |
|  | 1 | **Rutland Drive Improvements** |  | 2026-08-04 | 2026-10-26 |  |  |  |
| SW-RTLN-1000 |  | EPSC Install (Silt Fence, Inlet Protection) | 3d | 2026-08-04 | 2026-08-06 | SW-FIN-1040 SS | 2d | 0d |
| SW-RTLN-1010 |  | Sawcut Asphalt & Demo Existing Curb | 3d | 2026-08-07 | 2026-08-11 | SW-RTLN-1000 | 2d | 0d |
| SW-RTLN-1020 |  | Temp Traffic Control Setup | 3d | 2026-08-12 | 2026-08-14 | SW-RTLN-1010 | 2d | 0d |
| SW-RTLN-1030 |  | Relocate Mailbox / Signs / Remove Conflicts | 2d | 2026-08-17 | 2026-08-18 | SW-RTLN-1020 | 2d | 0d |
| SW-RTLN-1040 |  | Trench & Install Storm Pipe | 8d | 2026-08-19 | 2026-08-28 | SW-RTLN-1030 | 2d | 0d |
| SW-RTLN-1050 |  | Set Curb Inlets, Junction Boxes, Headwalls | 6d | 2026-08-31 | 2026-09-08 | SW-RTLN-1040 | 2d | 0d |
| SW-RTLN-1060 |  | Backfill / Compact Drain Trenches | 3d | 2026-09-09 | 2026-09-11 | SW-RTLN-1050 | 2d | 0d |
| SW-RTLN-1070 |  | Subgrade Proofrool & Undercut / Backfill (if needed) | 3d | 2026-09-14 | 2026-09-16 | SW-RTLN-1060 | 2d | 0d |
| SW-RTLN-1080 |  | Place Aggregate Base | 4d | 2026-09-17 | 2026-09-22 | SW-RTLN-1070 | 2d | 0d |
| SW-RTLN-1090 |  | City Inspections (Proofrool, Storm, Curbs) | 2d | 2026-09-23 | 2026-09-24 | SW-RTLN-1080 | 2d | 0d |
| SW-RTLN-1100 |  | Install Curb & Gutter | 5d | 2026-09-25 | 2026-10-01 | SW-RTLN-1090 | 2d | 0d |
| SW-RTLN-1110 |  | Sidewalks & ADA Ramps | 4d | 2026-10-02 | 2026-10-07 | SW-RTLN-1100 | 2d | 0d |
| SW-RTLN-1120 |  | First Lift Asphalt (Binder Course) | 2d | 2026-10-08 | 2026-10-09 | SW-RTLN-1110 | 2d | 0d |
| SW-RTLN-1130 |  | Final Grading | 2d | 2026-10-12 | 2026-10-13 | SW-RTLN-1120 | 2d | 0d |
| SW-RTLN-1140 |  | Final Asphalt Surface Course | 1d | 2026-10-14 | 2026-10-14 | SW-RTLN-1130 | 2d | 0d |
| SW-RTLN-1150 |  | Permanent Signs & Striping | 2d | 2026-10-15 | 2026-10-16 | SW-RTLN-1140 | 2d | 0d |
| SW-RTLN-1160 |  | Site Cleanup & Final EPSC Removal | 2d | 2026-10-19 | 2026-10-20 | SW-RTLN-1150 | 2d | 0d |
| SW-RTLN-1170 |  | Punch List & Corrections | 2d | 2026-10-21 | 2026-10-22 | SW-RTLN-1160 | 2d | 0d |
| SW-RTLN-1180 |  | Final Owner Punch List | 2d | 2026-10-23 | 2026-10-26 | SW-RTLN-1170 | 2d |  |
|  | Closeout | **Closeout** |  | 2026-06-12 | 2026-10-29 |  |  |  |
|  | Commisioning | **Commissioning** |  | 2026-08-11 | 2026-08-17 |  |  |  |
| CO-CM-1000 |  | Start-Up & Testing | 5d | 2026-08-11 | 2026-08-17 | IB-L4IN-1090 | 46d | 0d |
|  | Building Finals | **Building Finals** |  | 2026-06-12 | 2026-10-29 |  |  |  |
| CO-BF-1000 |  | Rough Fire Sprinkler Inspection | 1d | 2026-06-12 | 2026-06-12 | IB-L4IN-1040 | 91d | 45d |
| CO-BF-1010 |  | Final Fire Sprinkler Inspection | 1d | 2026-08-18 | 2026-08-18 | CO-CM-1000, CO-BF-1000 | 46d | 0d |
| CO-BF-1020 |  | Electrical Final | 1d | 2026-08-19 | 2026-08-19 | CO-BF-1010, IB-L4IN-1090 | 46d | 0d |
| CO-BF-1030 |  | Plumbing Final | 1d | 2026-08-20 | 2026-08-20 | CO-BF-1020 | 46d | 0d |
| CO-BF-1040 |  | Mechanical Final | 1d | 2026-08-21 | 2026-08-21 | CO-BF-1030 | 46d | 0d |
| CO-BF-1050 |  | Fire Alarm Final | 1d | 2026-08-24 | 2026-08-24 | CO-BF-1040 | 46d |  |
| CO-BF-1060 |  | Building Final | 1d | 2026-10-29 | 2026-10-29 | CO-BF-1050, SW-RTLN-1160, SW-FIN-1180, IB-L4IN-1100, EE-ROOF-1200, IB-JNUS-1030, PS-CMIL-1010, EL-INST-1000, IB-L2IN-1100, IB-L3IN-1100, IB-L1IN-1100, FS-LVL1-1060, PS-PROC-1030 | 0d |  |

| ID | WBS | Activity | Duration | Start | Finish | Predecessors | Total float |
| --- | --- | --- | --- | --- | --- | --- | --- |
|  | 2 | **Warranty Work** |  | 2026-10-30 | 2027-10-14 |  |  |
| WW-WARR-1000 |  | 1st Quarter HVAC Maintenance | 60d | 2026-10-30 | 2027-02-01 | CO-BF-1060 | 0d |
| WW-WARR-1010 |  | 1st Quarter Landscape Maintenance | 60d | 2026-10-30 | 2027-02-01 | CO-BF-1060 | 0d |
| WW-WARR-1020 |  | 11-Month Warranty Walk | 220d | 2026-10-30 | 2027-09-16 | CO-BF-1060 | 20d |
| WW-WARR-1030 |  | 2nd Quarter HVAC Maintenance | 60d | 2027-02-02 | 2027-04-26 | WW-WARR-1000 | 0d |
| WW-WARR-1040 |  | 2nd Quarter Landscape Maintenance | 60d | 2027-02-02 | 2027-04-26 | WW-WARR-1010 | 0d |
| WW-WARR-1050 |  | 3rd Quarter HVAC Maintenance | 60d | 2027-04-27 | 2027-07-21 | WW-WARR-1030 | 0d |
| WW-WARR-1060 |  | 3rd Quarter Landscape Maintenance | 60d | 2027-04-27 | 2027-07-21 | WW-WARR-1040 | 0d |
| WW-WARR-1070 |  | 4th Quarter HVAC Maintenance | 60d | 2027-07-22 | 2027-10-14 | WW-WARR-1050 | 0d |
| WW-WARR-1080 |  | 4th Quarter Landscape Maintenance | 60d | 2027-07-22 | 2027-10-14 | WW-WARR-1060 | 0d |
|  | 5 | **Weather Impacts** |  | 2026-10-30 | 2026-11-30 |  |  |
| WI-WTHR-1000 |  | Rain Days | 20d | 2026-10-30 | 2026-11-30 | PS-CMIL-1160 SS | 220d |
