# Public Storage - Mt. Juliet (Golden Bear Place)

Schedule from Primavera P6, 2025-07-02 to 2027-11-15, data date 2026-01-31, A marks actual dates.

## Calendars

- **CA - 5 Day Wk w/ Holidays 2050 - Modified 2025: Mon-Fri 08:00-12:00, 13:00-17:00; Sat-Sun off. Exceptions (off unless hours are given): 2025-07-04, 2025-09-01, 2025-11-27 to 2025-11-28, 2025-12-24 to 2025-12-25, 2025-12-31 to 2026-01-01, 2026-01-19, 2026-05-25, 2026-07-03, 2026-09-07, 2026-11-26 to 2026-11-27, 2026-12-24 to 2026-12-25, 2026-12-31 to 2027-01-01, 2027-01-18, 2027-05-31, 2027-07-05, 2027-09-06.
- Standard 5 Day Workweek w/ Basic Holidays: Mon-Fri 08:00-12:00, 13:00-17:00; Sat-Sun off.

## Schedule

| ID | WBS | Activity | Type | Duration | Start | Finish | Predecessors | Complete | Remaining | Planned start | Planned finish | Total float | Free float | Calendar |
| --- | --- | --- | --- | --- | --- | --- | --- | --- | --- | --- | --- | --- | --- | --- |
|  | 3 | **Project Summary** |  |  | 2025-07-02 | 2026-12-07 |  |  |  |  |  |  |  |  |
|  | 1 | **Contract Milestones** |  |  | 2025-07-02 | 2026-12-07 |  |  |  |  |  |  |  |  |
| PS-CMIL-1000 |  | Proposals/Bids Due | milestone | 0d | 2025-07-02 A | 2025-07-02 A |  | 100% |  |  |  |  |  |  |
| PS-CMIL-1020 |  | Interviews | milestone | 0d | 2025-07-10 A | 2025-07-10 A | PS-CMIL-1000 SS+5d | 100% |  |  |  |  |  |  |
| PS-CMIL-1030 |  | Award Contract | milestone | 0d | 2025-09-04 A | 2025-09-04 A | PS-CMIL-1020 SS+7d | 100% |  | 2025-07-21 | 2025-07-21 |  |  |  |
| PS-CMIL-1040 |  | Notice to Proceed | milestone | 0d | 2025-09-11 A | 2025-09-11 A | PS-CMIL-1030 SS+3d | 100% |  | 2025-07-24 | 2025-07-24 |  |  |  |
| PS-CMIL-1050 |  | Operational Setup |  | 18d | 2025-09-11 A | 2025-09-25 A | PS-CMIL-1040 SS | 100% |  | 2025-07-24 | 2025-08-18 |  |  |  |
| PS-CMIL-1010 |  | Project Substantial Completion | milestone | 0d | 2026-11-13 | 2026-11-13 | CO-BF-1060 FF |  |  |  |  | 0d |  |  |
| PS-CMIL-1160 |  | Remaining Weather Allowance (Originally 20 Days) |  | 11d | 2026-11-16 | 2026-12-02 | PS-CMIL-1010 |  |  |  |  | 0d |  |  |
| PS-CMIL-1170 |  | Project Substantial Completion with Weather Projection | milestone | 0d | 2026-12-02 | 2026-12-02 | PS-CMIL-1160 FF |  |  |  |  | 0d |  |  |
| PS-CMIL-1190 |  | Public Storage Final Acceptance | milestone | 0d | 2026-12-02 | 2026-12-02 | PS-CMIL-1010, SW-RTLN-1180, SW-FIN-1200, PS-CMIL-1170 FF, IB-STAR-1050 FF, EE-WEST-1120 FF, EE-SOTH-1140 FF, EE-EAST-1120 FF, EE-NRTH-1170 FF, IB-L1IN-1120 FF, IB-L4IN-1120 FF, IB-L3UN-1110 FF, IB-L3IN-1120 FF, IB-L2IN-1120 FF |  |  |  |  | 35d |  | Standard 5 Day Workweek w/ Basic Holidays |
| PS-CMIL-1150 |  | Contractual Substantial Completion Date | milestone | 0d | 2026-12-07 | 2026-12-07 | PS-CMIL-1040 SF+311d |  |  |  |  | 237d |  |  |
|  | 2 | **Construction Milestones** |  |  | 2025-09-26 | 2026-10-22 |  |  |  |  |  |  |  |  |
| PS-CMIL-1070 |  | Start Construction | milestone | 0d | 2025-09-26 A | 2025-09-26 A | CN-MOBL-1000 SS | 100% |  | 2025-09-25 | 2025-09-25 |  |  |  |
| PS-CMIL-1180 |  | Building Permit Approval |  | 5d | 2025-10-23 A | 2025-11-07 A | PS-CMIL-1040 SS | 100% |  | 2025-10-31 | 2025-11-06 |  |  | Standard 5 Day Workweek w/ Basic Holidays |
| PS-CMIL-1060 |  | Permit Approved | milestone | 0d | 2025-11-07 A | 2025-11-07 A | PS-CMIL-1180 FF | 100% |  | 2025-12-05 | 2025-12-05 |  |  |  |
| PS-CMIL-1080 |  | Start of Foundations | milestone | 0d | 2025-12-17 A | 2025-12-17 A | FS-LVL1-1000 SS | 100% |  | 2025-12-29 | 2025-12-29 |  |  |  |
| PS-CMIL-1090 |  | Start of Elevated Structure | milestone | 0d | 2026-02-16 | 2026-02-16 | FS-LVL1-1050 SS, PS-CMIL-1080 SS |  |  |  |  | 191d | 10d |  |
| PS-CMIL-1100 |  | Stair & Elevator Cores Complete to Roof | milestone | 0d | 2026-02-27 | 2026-02-27 | FS-LVL1-1020 FF, PS-CMIL-1090 |  |  |  |  | 181d | 67d |  |
| PS-CMIL-1120 |  | Structure Complete | milestone | 0d | 2026-06-03 | 2026-06-03 | FS-ROOF-1020 FF, PS-CMIL-1100 FF |  |  |  |  | 114d | 27d |  |
| PS-CMIL-1130 |  | Building Dry In | milestone | 0d | 2026-07-13 | 2026-07-13 | EE-ROOF-1060 FF, PS-CMIL-1120 FF |  |  |  |  | 87d | 59d |  |
| PS-CMIL-1110 |  | Exterior Work Complete | milestone | 0d | 2026-10-05 | 2026-10-05 | EE-WEST-1100 FF, PS-CMIL-1130 FF |  |  |  |  | 28d | 13d |  |
| PS-CMIL-1140 |  | Landscape & Hardscape Complete | milestone | 0d | 2026-10-22 | 2026-10-22 | SW-FIN-1190 FF, PS-CMIL-1110 FF |  |  |  |  | 15d |  |  |
|  | 4 | **Pre-Construction** |  |  | 2025-09-19 | 2026-06-19 |  |  |  |  |  |  |  |  |
|  | 1 | **Procurement** |  |  | 2025-09-19 | 2026-06-19 |  |  |  |  |  |  |  |  |
| PS-PROC-1000 |  | Award Contractors |  | 10d | 2025-09-19 A | 2025-10-02 A | PS-CMIL-1030 SS | 100% |  |  |  |  |  |  |
| PS-PROC-1040 |  | Submit and Approve Site Utilities |  | 5d | 2025-10-17 A | 2025-10-31 A | PS-PROC-1000 | 100% |  | 2026-02-02 | 2026-02-06 |  |  | Standard 5 Day Workweek w/ Basic Holidays |
| PS-PROC-1200 |  | Procure Site Utility Materials |  | 5d | 2025-10-31 A | 2025-11-07 A | PS-PROC-1040 | 100% |  | 2026-02-02 | 2026-02-06 |  |  | Standard 5 Day Workweek w/ Basic Holidays |
| PS-PROC-1010 |  | Submit and Approve Concrete Submittals |  | 5d | 2025-11-17 A | 2025-12-05 A | PS-PROC-1000 | 100% |  | 2026-02-02 | 2026-02-06 |  |  |  |
| PS-PROC-1060 |  | Submit and Approve Electrical |  | 5d | 2025-12-05 A | 2026-01-19 A | PS-PROC-1000 | 100% |  | 2026-02-02 | 2026-02-06 |  |  | Standard 5 Day Workweek w/ Basic Holidays |
| PS-PROC-1210 |  | Procure Concrete Rebar |  | 5d | 2025-12-08 A | 2025-12-16 A | PS-PROC-1010 | 100% |  | 2026-02-02 | 2026-02-06 |  |  | Standard 5 Day Workweek w/ Basic Holidays |
| PS-PROC-1080 |  | Submit and Approve Plumbing Fixtures |  | 15d | 2025-12-12 A | 2026-02-13 | PS-PROC-1000 | 33% | 10d | 2026-02-02 | 2026-02-20 | 161d | 0d | Standard 5 Day Workweek w/ Basic Holidays |
| PS-PROC-1050 |  | Submit and Approve Steel |  | 5d | 2025-12-15 A | 2026-01-09 A | PS-PROC-1000 | 100% |  | 2026-02-02 | 2026-02-06 |  |  | Standard 5 Day Workweek w/ Basic Holidays |
| PS-PROC-1100 |  | Submit and Approve Masonry |  | 15d | 2025-12-15 A | 2026-01-07 A | PS-PROC-1000 | 100% |  | 2026-02-02 | 2026-02-20 |  |  | Standard 5 Day Workweek w/ Basic Holidays |
| PS-PROC-1030 |  | Procure Structural Steel |  | 5d | 2026-01-12 A | 2026-02-02 A | PS-PROC-1050 | 100% |  | 2026-02-02 | 2026-02-06 |  |  | Standard 5 Day Workweek w/ Basic Holidays |
| PS-PROC-1240 |  | Procure CMU Block |  | 25d | 2026-01-12 A | 2026-01-30 A | PS-PROC-1100 | 100% |  | 2026-02-02 | 2026-03-06 |  |  | Standard 5 Day Workweek w/ Basic Holidays |
| PS-PROC-1300 |  | Submit and Approve Brick Veneer |  | 20d | 2026-01-12 A | 2026-02-27 | PS-PROC-1000 |  | 20d | 2026-02-02 | 2026-02-27 | 37d | 0d | Standard 5 Day Workweek w/ Basic Holidays |
| PS-PROC-1180 |  | Submit and Approve Fireproofing |  | 15d | 2026-01-16 A | 2026-02-24 | PS-PROC-1000 |  | 17d | 2026-02-02 | 2026-02-20 | 122d | 0d | Standard 5 Day Workweek w/ Basic Holidays |
| PS-PROC-1250 |  | Procure CFMF |  | 20d | 2026-01-16 A | 2026-02-17 | PS-PROC-1050 | 40% | 12d | 2026-02-02 | 2026-02-27 | 11d |  | Standard 5 Day Workweek w/ Basic Holidays |
| PS-PROC-1070 |  | Submit and Approve HVAC |  | 20d | 2026-01-26 A | 2026-02-13 | PS-PROC-1000 | 50% | 10d | 2026-02-02 | 2026-02-27 | 73d | 0d | Standard 5 Day Workweek w/ Basic Holidays |
| PS-PROC-1220 |  | Procure Light Fixtures |  | 60d | 2026-01-30 A | 2026-04-10 | PS-PROC-1060 | 17% | 50d | 2026-02-02 | 2026-04-24 | 139d | 90d | Standard 5 Day Workweek w/ Basic Holidays |
| PS-PROC-1110 |  | Submit and Approve Drywall / Ceilings |  | 15d | 2026-02-02 A | 2026-02-20 | PS-PROC-1000 |  | 15d |  |  | 151d | 0d | Standard 5 Day Workweek w/ Basic Holidays |
| PS-PROC-1140 |  | Submit and Approve Glazing |  | 20d | 2026-02-02 A | 2026-02-13 | PS-PROC-1000 | 50% | 10d | 2026-02-02 | 2026-02-27 | 84d | 0d | Standard 5 Day Workweek w/ Basic Holidays |
| PS-PROC-1150 |  | Submit and Approve D/F/HW |  | 15d | 2026-02-10 | 2026-03-02 | PS-PROC-1000 FS+85d |  |  |  |  | 82d | 0d | Standard 5 Day Workweek w/ Basic Holidays |
| PS-PROC-1130 |  | Submit and Approve Roofing |  | 15d | 2026-02-11 | 2026-03-03 | PS-PROC-1000 FS+86d |  |  |  |  | 82d | 0d | Standard 5 Day Workweek w/ Basic Holidays |
| PS-PROC-1230 |  | Procure HVAC Equipment and Fab Ductwork |  | 55d | 2026-02-16 | 2026-05-01 | PS-PROC-1070 |  |  |  |  | 73d | 56d | Standard 5 Day Workweek w/ Basic Holidays |
| PS-PROC-1270 |  | Procure Storefront / Glazing |  | 40d | 2026-02-16 | 2026-04-10 | PS-PROC-1140 |  |  |  |  | 84d | 61d | Standard 5 Day Workweek w/ Basic Holidays |
| PS-PROC-1350 |  | Procure Plumbing Fixtures |  | 25d | 2026-02-16 | 2026-03-20 | PS-PROC-1080 |  |  |  |  | 161d | 106d | Standard 5 Day Workweek w/ Basic Holidays |
| PS-PROC-1120 |  | Submit and Approve Floor Finishes |  | 15d | 2026-02-17 | 2026-03-09 | PS-PROC-1000 FS+90d |  |  |  |  | 141d | 0d | Standard 5 Day Workweek w/ Basic Holidays |
| PS-PROC-1360 |  | Procure Ceilings |  | 25d | 2026-02-23 | 2026-03-27 | PS-PROC-1110 |  |  |  |  | 151d | 117d | Standard 5 Day Workweek w/ Basic Holidays |
| PS-PROC-1340 |  | Procure Fireproofing / Intumescent |  | 15d | 2026-02-25 | 2026-03-17 | PS-PROC-1180 |  |  |  |  | 122d | 0d | Standard 5 Day Workweek w/ Basic Holidays |
| PS-PROC-1370 |  | Procure Brick Veneer |  | 80d | 2026-03-02 | 2026-06-19 | PS-PROC-1300 |  |  |  |  | 37d | 14d | Standard 5 Day Workweek w/ Basic Holidays |
| PS-PROC-1020 |  | Procure Electric Room MDP |  | 40d | 2026-03-03 | 2026-04-27 | PS-PROC-1000 FS+100d, PS-PROC-1060 |  |  |  |  | 105d | 79d |  |
| PS-PROC-1160 |  | Submit and Approve Toilet Accessories |  | 15d | 2026-03-03 | 2026-03-23 | PS-PROC-1000 FS+100d |  |  |  |  | 142d | 0d | Standard 5 Day Workweek w/ Basic Holidays |
| PS-PROC-1170 |  | Submit and Approve Specialties |  | 15d | 2026-03-03 | 2026-03-23 | PS-PROC-1000 FS+100d |  |  |  |  | 142d | 0d | Standard 5 Day Workweek w/ Basic Holidays |
| PS-PROC-1280 |  | Procure D/F/HW |  | 30d | 2026-03-03 | 2026-04-13 | PS-PROC-1150 |  |  |  |  | 82d | 65d | Standard 5 Day Workweek w/ Basic Holidays |
| PS-PROC-1260 |  | Procure Roofing |  | 15d | 2026-03-04 | 2026-03-24 | PS-PROC-1130 |  |  |  |  | 82d | 64d | Standard 5 Day Workweek w/ Basic Holidays |
| PS-PROC-1290 |  | Procure Finishes |  | 25d | 2026-03-10 | 2026-04-13 | PS-PROC-1120 |  |  |  |  | 141d | 98d | Standard 5 Day Workweek w/ Basic Holidays |
| PS-PROC-1190 |  | Submit and Approve Appliances |  | 15d | 2026-03-17 | 2026-04-06 | PS-PROC-1000 FS+110d |  |  |  |  | 131d | 0d | Standard 5 Day Workweek w/ Basic Holidays |
| PS-PROC-1310 |  | Procure Toilet Accessories |  | 20d | 2026-03-24 | 2026-04-20 | PS-PROC-1160 |  |  |  |  | 142d | 87d | Standard 5 Day Workweek w/ Basic Holidays |
| PS-PROC-1320 |  | Procure Specialties |  | 20d | 2026-03-24 | 2026-04-20 | PS-PROC-1170 |  |  |  |  | 142d | 97d | Standard 5 Day Workweek w/ Basic Holidays |
| PS-PROC-1330 |  | Procure Appliances |  | 20d | 2026-04-07 | 2026-05-04 | PS-PROC-1190 |  |  |  |  | 131d | 97d | Standard 5 Day Workweek w/ Basic Holidays |

| ID | WBS | Activity | Duration | Start | Finish | Predecessors | Complete | Planned start | Planned finish | Total float | Free float | Calendar |
| --- | --- | --- | --- | --- | --- | --- | --- | --- | --- | --- | --- | --- |
|  | 1 | **Construction** |  | 2025-09-26 | 2026-11-23 |  |  |  |  |  |  |  |
|  | MOB | **Mobilization** |  | 2025-09-26 | 2026-01-05 |  |  |  |  |  |  |  |
| CN-MOBL-1000 |  | Survey Project Limits | 1d | 2025-09-26 A | 2025-09-26 A | PS-CMIL-1050 | 100% | 2025-09-25 | 2025-09-25 |  |  |  |
| CN-MOBL-1020 |  | Install SWPPs | 2d | 2025-09-26 A | 2025-09-29 A | CN-MOBL-1000 SS | 100% | 2025-09-30 | 2025-10-01 |  |  |  |
| CN-MOBL-1030 |  | Set Stabilized Entrance | 1d | 2025-09-30 A | 2025-09-30 A | CN-MOBL-1020 FF | 100% | 2025-10-01 | 2025-10-01 |  |  |  |
| CN-MOBL-1050 |  | Set Field Office | 1d | 2025-10-22 A | 2025-10-22 A | CN-MOBL-1030 | 100% | 2025-11-04 | 2025-11-04 |  |  |  |
| CN-MOBL-1070 |  | Install Temp Toilets, Waste & Hand Wash Stations | 1d | 2025-10-22 A | 2025-10-22 A | CN-MOBL-1050 SS | 100% | 2025-11-07 | 2025-11-07 |  |  |  |
| CN-MOBL-1040 |  | Install Temp Power | 2d | 2025-12-08 A | 2025-12-09 A | CN-MOBL-1070 | 100% | 2025-12-03 | 2025-12-04 |  |  |  |
| CN-MOBL-1010 |  | Install Temp Fencing | 2d | 2025-12-18 A | 2025-12-19 A | SU-STWK-1010, *SU-STWK-1120 | 100% | 2025-12-01 | 2025-12-02 |  |  |  |
| CN-MOBL-1060 |  | Field Office MEP Hook-Up | 2d | 2026-01-02 A | 2026-01-05 A | CN-MOBL-1040, CN-MOBL-1010 | 100% |  |  |  |  |  |
|  | Sitework | **Sitework & Utilities** |  | 2025-10-01 | 2026-03-20 |  |  |  |  |  |  |  |
|  | SW | **Sitework** |  | 2025-10-01 | 2026-03-20 |  |  |  |  |  |  |  |
| SU-STWK-1010 |  | Mass Excavation & Rock Removal | 20d | 2025-10-01 A | 2025-10-28 A | CN-MOBL-1030 | 100% | 2025-10-07 | 2025-11-03 |  |  |  |
| SU-STWK-1000 |  | Clear & Grub | 3d | 2025-10-24 A | 2025-10-28 A | SU-STWK-1010 FF | 100% | 2025-10-31 | 2025-11-04 |  |  |  |
| *SU-STWK-1110 |  | MTE Power Pole Relocation | 5d | 2025-10-28 A | 2025-11-11 A | SU-STWK-1010 | 100% | 2025-10-31 | 2025-11-06 |  |  | Standard 5 Day Workweek w/ Basic Holidays |
| SU-STWK-1020 |  | Building Pad Prep & Grading | 5d | 2025-10-30 A | 2025-11-14 A | SU-STWK-1010, SU-STWK-1000, x.WI-WTHR-1010 | 100% | 2025-11-20 | 2025-11-26 |  |  |  |
| *SU-STWK-1120 |  | Remaining Rock Removal & Building Pad Prep | 4d | 2025-11-12 A | 2025-11-21 A | *SU-STWK-1110 | 100% | 2025-11-11 | 2025-11-14 |  |  | Standard 5 Day Workweek w/ Basic Holidays |
| SU-STWK-1030 |  | Building Layout & Staking | 1d | 2025-11-26 A | 2025-11-26 A | SU-STWK-1020, *SU-STWK-1120, x.WI-WTHR-1020 | 100% | 2025-11-24 | 2025-11-24 |  |  |  |
| SU-STWK-1040 |  | Compact Subgrade | 3d | 2025-11-26 A | 2025-11-28 A | SU-STWK-1030 | 100% | 2025-11-25 | 2025-12-01 |  |  |  |
| SU-STWK-1050 |  | Install Site Stone Base | 6d | 2026-02-19 | 2026-02-26 | SU-STWK-1040, SU-SUTL-1050, SU-SUTL-1010 |  |  |  | 92d | 0d |  |
| SU-STWK-1060 |  | Install Prime Coat, Binder, & Tack Coat | 3d | 2026-02-27 | 2026-03-03 | SU-STWK-1050 |  |  |  | 92d | 0d |  |
| SU-STWK-1070 |  | Install Asphalt (Wearing Course) | 1d | 2026-03-04 | 2026-03-04 | SU-STWK-1060 |  |  |  | 92d | 0d |  |
| SU-STWK-1080 |  | Form & Reinforce Curb & Gutter | 5d | 2026-03-05 | 2026-03-11 | SU-STWK-1070 |  |  |  | 92d | 0d |  |
| SU-STWK-1090 |  | Pour Curb & Gutter | 2d | 2026-03-12 | 2026-03-13 | SU-STWK-1080 |  |  |  | 92d | 0d |  |
| SU-STWK-1100 |  | Rough Grade Site | 5d | 2026-03-16 | 2026-03-20 | SU-STWK-1000, SU-STWK-1090, CN-MOBL-1060 |  |  |  | 92d |  |  |

| ID | WBS | Activity | Duration | Start | Finish | Predecessors | Complete | Remaining | Planned start | Planned finish | Total float | Free float |
| --- | --- | --- | --- | --- | --- | --- | --- | --- | --- | --- | --- | --- |
|  | SIte | **Site Utilities** |  | 2025-12-01 | 2026-02-18 |  |  |  |  |  |  |  |
| SU-SUTL-1000 |  | Cut, Cap, and Relocate Existing Utilities | 5d | 2025-12-01 A | 2025-12-05 A | SU-STWK-1040 | 100% |  | 2025-12-02 | 2025-12-08 |  |  |
| SU-SUTL-1020 |  | Install U.G. Sewer | 10d | 2025-12-01 A | 2025-12-04 A | SU-SUTL-1000, PS-PROC-1200 | 100% |  | 2026-01-08 | 2026-01-22 |  |  |
| SU-SUTL-1030 |  | Install U.G. Storm Drain | 10d | 2025-12-03 A | 2026-01-05 A | SU-SUTL-1020 SS | 100% |  | 2026-01-08 | 2026-01-22 |  |  |
| SU-SUTL-1040 |  | Install U.G. Electrical Duct Banks | 10d | 2026-01-06 A | 2026-01-23 A | SU-SUTL-1030 SS | 100% |  | 2026-01-08 | 2026-01-22 |  |  |
| SU-SUTL-1050 |  | Install U.G. Fire Water & Domestic | 10d | 2026-02-02 | 2026-02-13 | SU-SUTL-1040 |  |  |  |  | 92d | 0d |
| SU-SUTL-1010 |  | Install Irrigation Sleeves | 3d | 2026-02-16 | 2026-02-18 | SU-SUTL-1050 |  |  |  |  | 92d | 0d |
|  | 1 | **Foundation & Structural** |  | 2025-12-17 | 2026-06-03 |  |  |  |  |  |  |  |
|  | 1 | **Level 1** |  | 2025-12-17 | 2026-03-20 |  |  |  |  |  |  |  |
| FS-LVL1-1000 |  | Footings & Foundation CIP Walls (includes elevator pit) | 25d | 2025-12-17 A | 2026-02-17 | PS-CMIL-1060, SU-STWK-1040, x.WI-WTHR-1030, x.WI-WTHR-1040, x.WI-WTHR-1050, PS-PROC-1210 | 52% | 12d | 2026-02-03 | 2026-03-09 | 0d |  |
| FS-LVL1-1010 |  | Underground MEPF Install (Pre-Pour) | 5d | 2026-01-06 A | 2026-02-04 | FS-LVL1-1000 SS+5d, x.WI-WTHR-1040, x.WI-WTHR-1050 | 40% | 3d | 2026-01-02 | 2026-01-08 | 0d |  |
| FS-LVL1-1030 |  | Slab Prep & Pour (Pour A1) | 8d | 2026-02-02 | 2026-02-11 | FS-LVL1-1010 SS, FS-LVL1-1000 SS |  |  |  |  | 0d |  |
| FS-LVL1-1020 |  | Erect Stairs & Elevator Shafts (CMU Cores) | 15d | 2026-02-09 | 2026-02-27 | FS-LVL1-1030 SS+5d |  |  |  |  | 91d | 0d |
| FS-LVL1-1040 |  | Slab Prep & Pour (Pour A2) | 3d | 2026-02-12 | 2026-02-16 | FS-LVL1-1030 |  |  |  |  | 0d |  |
| FS-LVL1-1050 |  | Steel Erection (Columns & Beams) | 10d | 2026-02-16 | 2026-02-27 | FS-LVL1-1040 FS-1d, FS-LVL1-1030, PS-PROC-1030 |  |  |  |  | 0d |  |
| FS-LVL1-1060 |  | Fireproofing | 3d | 2026-03-18 | 2026-03-20 | FS-LVL1-1050, FS-LVL2-1000, PS-PROC-1340 |  |  |  |  | 120d | 94d |
|  | 2 | **Level 2** |  | 2026-02-24 | 2026-03-30 |  |  |  |  |  |  |  |
| FS-LVL2-1000 |  | Install Metal Decking | 4d | 2026-02-24 | 2026-02-27 | FS-LVL1-1050 FF |  |  |  |  | 0d |  |
| FS-LVL2-1010 |  | MEPF Rough-In (Pre-Pour) | 5d | 2026-02-26 | 2026-03-04 | FS-LVL2-1000 SS+2d |  |  |  |  | 0d |  |
| FS-LVL2-1020 |  | FRP Metal Deck Slab (Pour A1) | 5d | 2026-03-05 | 2026-03-11 | FS-LVL2-1010, PS-PROC-1250 |  |  |  |  | 0d |  |
| FS-LVL2-1030 |  | FRP Metal Deck Slab (Pour A2) | 3d | 2026-03-12 | 2026-03-16 | FS-LVL2-1020 |  |  |  |  | 0d |  |
| FS-LVL2-1040 |  | Layout & Erect Load Bearing Framing | 10d | 2026-03-17 | 2026-03-30 | FS-LVL2-1030 |  |  |  |  | 0d |  |
|  | 3 | **Level 3** |  | 2026-03-25 | 2026-04-28 |  |  |  |  |  |  |  |
| FS-LVL3-1000 |  | Install Metal Decking | 4d | 2026-03-25 | 2026-03-30 | FS-LVL2-1040 FF |  |  |  |  | 0d |  |
| FS-LVL3-1010 |  | MEPF Rough-In (Pre-Pour) | 5d | 2026-03-27 | 2026-04-02 | FS-LVL3-1000 SS+2d |  |  |  |  | 0d |  |
| FS-LVL3-1020 |  | FRP Metal Deck Slab (Pour A1) | 5d | 2026-04-03 | 2026-04-09 | FS-LVL3-1010 |  |  |  |  | 0d |  |
| FS-LVL3-1030 |  | FRP Metal Deck Slab (Pour A2) | 3d | 2026-04-10 | 2026-04-14 | FS-LVL3-1020 |  |  |  |  | 0d |  |
| FS-LVL3-1040 |  | Layout & Erect Load Bearing Framing | 10d | 2026-04-15 | 2026-04-28 | FS-LVL3-1030 |  |  |  |  | 0d |  |

| ID | WBS | Activity | Duration | Start | Finish | Predecessors | Total float | Free float |
| --- | --- | --- | --- | --- | --- | --- | --- | --- |
|  | 5 | **Level 4** |  | 2026-04-23 | 2026-05-28 |  |  |  |
| FS-LVL4-1000 |  | Install Metal Decking | 4d | 2026-04-23 | 2026-04-28 | FS-LVL3-1040 FF | 0d |  |
| FS-LVL4-1010 |  | MEPF Rough-In (Pre-Pour) | 5d | 2026-04-27 | 2026-05-01 | FS-LVL4-1000 SS+2d | 0d |  |
| FS-LVL4-1020 |  | FRP Metal Deck Slab (Pour A1) | 5d | 2026-05-04 | 2026-05-08 | FS-LVL4-1010 | 0d |  |
| FS-LVL4-1030 |  | FRP Metal Deck Slab (Pour A2) | 3d | 2026-05-11 | 2026-05-13 | FS-LVL4-1020 | 0d |  |
| FS-LVL4-1040 |  | Layout & Erect Load Bearing Framing | 10d | 2026-05-14 | 2026-05-28 | FS-LVL4-1030 | 0d |  |
|  | 4 | **Roof** |  | 2026-05-22 | 2026-06-03 |  |  |  |
| FS-ROOF-1000 |  | Install Metal Decking | 4d | 2026-05-22 | 2026-05-28 | FS-LVL4-1040 FF | 0d |  |
| FS-ROOF-1010 |  | MEPF Rough-In (Stubups) | 3d | 2026-05-27 | 2026-05-29 | FS-ROOF-1000 SS+2d | 0d |  |
| FS-ROOF-1020 |  | Layout & Frame Parapets | 3d | 2026-06-01 | 2026-06-03 | FS-ROOF-1010 | 0d |  |
|  | 2 | **Envelope & Exterior** |  | 2026-05-14 | 2026-10-15 |  |  |  |
|  | 0 | **North Elevation** |  | 2026-05-14 | 2026-09-01 |  |  |  |
| EE-NRTH-1000 |  | Layout & Exterior Framing (Level 1) | 5d | 2026-05-14 | 2026-05-20 | FS-LVL4-1030 | 8d | 0d |
| EE-NRTH-1010 |  | City Inspection (Rough Framing) | 1d | 2026-05-21 | 2026-05-21 | EE-NRTH-1000 | 8d |  |
| EE-NRTH-1020 |  | Electrical Rough-In | 5d | 2026-06-04 | 2026-06-10 | EE-NRTH-1010, FS-ROOF-1020 | 0d |  |
| EE-NRTH-1030 |  | City Inspection (Electrical) | 1d | 2026-06-11 | 2026-06-11 | EE-NRTH-1020 | 23d | 0d |
| EE-NRTH-1040 |  | Install Exterior Sheathing | 5d | 2026-06-12 | 2026-06-18 | EE-NRTH-1030 | 23d | 0d |
| EE-NRTH-1050 |  | City Inspection (Screw Inspection) | 1d | 2026-06-19 | 2026-06-19 | EE-NRTH-1040 | 23d | 0d |
| EE-NRTH-1060 |  | Weather Barrier & Flashing | 5d | 2026-06-22 | 2026-06-26 | EE-NRTH-1050 | 23d | 0d |
| EE-NRTH-1070 |  | Install Rigid Insulation | 5d | 2026-06-29 | 2026-07-06 | EE-NRTH-1060 | 23d | 0d |
| EE-NRTH-1080 |  | Storefront, Windows & Metals | 3d | 2026-07-07 | 2026-07-09 | EE-NRTH-1070, PS-PROC-1270 | 23d | 0d |
| EE-NRTH-1090 |  | Install Brick Veneer | 15d | 2026-07-10 | 2026-07-30 | EE-NRTH-1080, PS-PROC-1240, PS-PROC-1370 | 23d | 0d |
| EE-NRTH-1100 |  | Install Canopies & Trim | 3d | 2026-07-31 | 2026-08-04 | EE-NRTH-1090 | 56d | 0d |
| EE-NRTH-1110 |  | Install Lighting Fixtures | 3d | 2026-08-05 | 2026-08-07 | EE-NRTH-1100 | 56d | 0d |
| EE-NRTH-1120 |  | Install Signage | 1d | 2026-08-10 | 2026-08-10 | EE-NRTH-1110 | 56d | 0d |
| EE-NRTH-1130 |  | Install Doors & Hardware | 2d | 2026-08-11 | 2026-08-12 | EE-NRTH-1120 | 56d | 0d |
| EE-NRTH-1140 |  | Install Downspouts | 1d | 2026-08-13 | 2026-08-13 | EE-NRTH-1130 | 56d | 0d |
| EE-NRTH-1150 |  | Final Paint | 3d | 2026-08-14 | 2026-08-18 | EE-NRTH-1140 | 56d | 0d |
| EE-NRTH-1160 |  | Punch List & Corrections | 5d | 2026-08-19 | 2026-08-25 | EE-NRTH-1150 | 56d | 0d |
| EE-NRTH-1170 |  | Final Owner Walk (Punch List & Corrections) | 5d | 2026-08-26 | 2026-09-01 | EE-NRTH-1160 | 93d | 63d |

| ID | WBS | Activity | Duration | Start | Finish | Predecessors | Total float | Free float |
| --- | --- | --- | --- | --- | --- | --- | --- | --- |
|  | 2 | **East Elevation** |  | 2026-05-21 | 2026-09-04 |  |  |  |
| EE-EAST-1000 |  | Layout & Exterior Framing (Level 1) | 5d | 2026-05-21 | 2026-05-28 | EE-NRTH-1000 | 8d | 0d |
| EE-EAST-1010 |  | City Inspection (Rough Framing) | 1d | 2026-05-29 | 2026-05-29 | EE-EAST-1000 | 8d |  |
| EE-EAST-1020 |  | Electrical Rough-In | 5d | 2026-06-11 | 2026-06-17 | EE-EAST-1010, EE-NRTH-1020 | 0d |  |
| EE-EAST-1030 |  | City Inspection (Electrical) | 1d | 2026-06-18 | 2026-06-18 | EE-EAST-1020 | 33d | 0d |
| EE-EAST-1040 |  | Install Exterior Sheathing | 5d | 2026-06-19 | 2026-06-25 | EE-EAST-1030 | 33d | 0d |
| EE-EAST-1050 |  | City Inspection (Screw Inspection) | 1d | 2026-06-26 | 2026-06-26 | EE-EAST-1040 | 33d | 0d |
| EE-EAST-1060 |  | Weather Barrier & Flashing | 5d | 2026-06-29 | 2026-07-06 | EE-EAST-1050 | 33d | 0d |
| EE-EAST-1070 |  | Install Rigid Insulation | 5d | 2026-07-07 | 2026-07-13 | EE-EAST-1060 | 33d | 0d |
| EE-EAST-1080 |  | Install Windows & Metals | 3d | 2026-07-14 | 2026-07-16 | EE-EAST-1070 | 33d | 10d |
| EE-EAST-1090 |  | Install Brick Veneer | 15d | 2026-07-31 | 2026-08-20 | EE-EAST-1080, EE-NRTH-1090 | 23d | 0d |
| EE-EAST-1100 |  | Install Signage | 1d | 2026-08-21 | 2026-08-21 | EE-EAST-1090 | 53d | 0d |
| EE-EAST-1110 |  | Punch List & Corrections | 5d | 2026-08-24 | 2026-08-28 | EE-EAST-1100 | 53d | 0d |
| EE-EAST-1120 |  | Final Owner Walk (Punch List & Corrections) | 5d | 2026-08-31 | 2026-09-04 | EE-EAST-1110 | 90d | 60d |
|  | 5 | **South Elevation** |  | 2026-05-29 | 2026-10-05 |  |  |  |
| EE-SOTH-1000 |  | Layout & Exterior Framing (Level 1) | 5d | 2026-05-29 | 2026-06-04 | EE-EAST-1000 | 8d | 0d |
| EE-SOTH-1010 |  | City Inspection (Rough Framing) | 1d | 2026-06-05 | 2026-06-05 | EE-SOTH-1000 | 8d |  |
| EE-SOTH-1020 |  | Electrical Rough-In | 5d | 2026-06-18 | 2026-06-24 | EE-SOTH-1010, EE-EAST-1020 | 0d |  |
| EE-SOTH-1030 |  | City Inspection (Electrical) | 1d | 2026-06-25 | 2026-06-25 | EE-SOTH-1020 | 46d | 0d |
| EE-SOTH-1040 |  | Install Exterior Sheathing | 5d | 2026-06-26 | 2026-07-02 | EE-SOTH-1030 | 46d | 0d |
| EE-SOTH-1050 |  | City Inspection (Screw Inspection) | 1d | 2026-07-06 | 2026-07-06 | EE-SOTH-1040 | 46d | 0d |
| EE-SOTH-1060 |  | Weather Barrier & Flashing | 5d | 2026-07-07 | 2026-07-13 | EE-SOTH-1050 | 46d | 0d |
| EE-SOTH-1070 |  | Install Rigid Insulation | 5d | 2026-07-14 | 2026-07-20 | EE-SOTH-1060 | 46d | 23d |
| EE-SOTH-1080 |  | Install Brick Veneer | 15d | 2026-08-21 | 2026-09-11 | EE-SOTH-1070, EE-EAST-1090 | 23d | 0d |
| EE-SOTH-1090 |  | Install Signage | 1d | 2026-09-14 | 2026-09-14 | EE-SOTH-1080 | 33d | 0d |
| EE-SOTH-1100 |  | Install Doors & Hardware | 1d | 2026-09-15 | 2026-09-15 | EE-SOTH-1090 | 33d | 0d |
| EE-SOTH-1110 |  | Install Downspouts | 2d | 2026-09-16 | 2026-09-17 | EE-SOTH-1100 | 33d | 0d |
| EE-SOTH-1120 |  | Final Paint | 2d | 2026-09-18 | 2026-09-21 | EE-SOTH-1110 | 33d | 0d |
| EE-SOTH-1130 |  | Punch List & Corrections | 5d | 2026-09-22 | 2026-09-28 | EE-SOTH-1120 | 33d | 0d |
| EE-SOTH-1140 |  | Final Owner Walk (Punch List & Corrections) | 5d | 2026-09-29 | 2026-10-05 | EE-SOTH-1130 | 70d | 40d |

| ID | WBS | Activity | Duration | Start | Finish | Predecessors | Total float | Free float |
| --- | --- | --- | --- | --- | --- | --- | --- | --- |
|  | 1 | **West Elevation** |  | 2026-06-05 | 2026-10-15 |  |  |  |
| EE-WEST-1000 |  | Layout & Exterior Framing (Level 1) | 5d | 2026-06-05 | 2026-06-11 | EE-SOTH-1000 | 8d | 0d |
| EE-WEST-1010 |  | City Inspection (Rough Framing) | 1d | 2026-06-12 | 2026-06-12 | EE-WEST-1000 | 8d |  |
| EE-WEST-1020 |  | Electrical Rough-In | 5d | 2026-06-25 | 2026-07-01 | EE-WEST-1010, EE-SOTH-1020 | 0d |  |
| EE-WEST-1030 |  | City Inspection (Electrical) | 1d | 2026-07-02 | 2026-07-02 | EE-WEST-1020 | 0d |  |
| EE-WEST-1040 |  | Install Exterior Sheathing | 5d | 2026-07-06 | 2026-07-10 | EE-WEST-1030 | 0d |  |
| EE-WEST-1050 |  | City Inspection (Screw Inspection) | 1d | 2026-07-13 | 2026-07-13 | EE-WEST-1040 | 0d |  |
| EE-WEST-1060 |  | Weather Barrier & Flashing | 5d | 2026-07-14 | 2026-07-20 | EE-WEST-1050 | 0d |  |
| EE-WEST-1070 |  | Install Rigid Insulation | 5d | 2026-07-21 | 2026-07-27 | EE-WEST-1060 | 0d |  |
| EE-WEST-1080 |  | Install Windows & Metals | 3d | 2026-07-28 | 2026-07-30 | EE-WEST-1070 | 0d |  |
| EE-WEST-1090 |  | Install Brick Veneer | 15d | 2026-09-14 | 2026-10-02 | EE-WEST-1080, EE-SOTH-1080 | 23d | 0d |
| EE-WEST-1100 |  | Install Signage | 1d | 2026-10-05 | 2026-10-05 | EE-WEST-1090 | 23d | 0d |
| EE-WEST-1110 |  | Punch List & Corrections | 5d | 2026-10-06 | 2026-10-12 | EE-WEST-1100 | 23d | 0d |
| EE-WEST-1120 |  | Final Owner Walk (Punch List & Corrections) | 3d | 2026-10-13 | 2026-10-15 | EE-WEST-1110 | 62d | 32d |
|  | 3 | **Roof** |  | 2026-06-04 | 2026-09-25 |  |  |  |
| EE-ROOF-1000 |  | Clean & Prep Metal Deck | 2d | 2026-06-04 | 2026-06-05 | FS-ROOF-1020 | 17d | 0d |
| EE-ROOF-1010 |  | Stage Materials & Solar Rails (Crane) | 2d | 2026-06-08 | 2026-06-09 | EE-ROOF-1000 | 17d | 0d |
| EE-ROOF-1020 |  | Layout for Penetrations, Curb Blocking, Edge Metal | 2d | 2026-06-10 | 2026-06-11 | EE-ROOF-1010 | 17d | 0d |
| EE-ROOF-1030 |  | Install Blocking & Equipment Curbs | 3d | 2026-06-12 | 2026-06-16 | EE-ROOF-1020 | 17d | 0d |
| EE-ROOF-1040 |  | Install Rigid Insulation | 4d | 2026-06-17 | 2026-06-22 | EE-ROOF-1030 | 17d | 0d |
| EE-ROOF-1050 |  | Install Cover Board | 4d | 2026-06-23 | 2026-06-26 | EE-ROOF-1040, PS-PROC-1260 | 17d | 0d |
| EE-ROOF-1060 |  | Install TPO Roofing System (incl. boots, termination bars) | 10d | 2026-06-29 | 2026-07-13 | EE-ROOF-1050 | 17d | 0d |
| EE-ROOF-1070 |  | Install Edge Metal, Coping, Trim | 5d | 2026-07-14 | 2026-07-20 | EE-ROOF-1060 | 34d | 0d |
| EE-ROOF-1080 |  | Install Roof Drains, Vents, Mechanical Curbs | 5d | 2026-07-21 | 2026-07-27 | EE-ROOF-1070 | 34d | 0d |
| EE-ROOF-1090 |  | Install Electrical Conduit & Roof Mounted Boxes | 5d | 2026-07-28 | 2026-08-03 | EE-ROOF-1080 | 34d | 0d |
| EE-ROOF-1140 |  | Set Rooftop Units (RTU's & Splits) | 1d | 2026-07-28 | 2026-07-28 | EE-ROOF-1080, PS-PROC-1230 | 55d | 0d |
| EE-ROOF-1150 |  | Install Duct/Condensate/Vent Tie-Ins & Flashing | 3d | 2026-07-29 | 2026-07-31 | EE-ROOF-1140 | 55d | 0d |
| EE-ROOF-1160 |  | Startup/Controls/Balancing Prep | 3d | 2026-08-03 | 2026-08-05 | EE-ROOF-1150 | 55d | 0d |
| EE-ROOF-1100 |  | Install Solar Mounting Rails & Racking | 3d | 2026-08-04 | 2026-08-06 | EE-ROOF-1090 | 34d | 0d |
| EE-ROOF-1170 |  | Water Test / Leak Test | 1d | 2026-08-06 | 2026-08-06 | EE-ROOF-1160 | 55d | 0d |
| EE-ROOF-1110 |  | Mount Solar Panels | 15d | 2026-08-07 | 2026-08-27 | EE-ROOF-1100 | 34d | 0d |
| EE-ROOF-1180 |  | Roof Patches (If Any) | 1d | 2026-08-07 | 2026-08-07 | EE-ROOF-1170 | 55d | 0d |
| EE-ROOF-1190 |  | Punch List & Corrections | 3d | 2026-08-10 | 2026-08-12 | EE-ROOF-1180 | 55d | 21d |
| EE-ROOF-1120 |  | Run Electrical Conduit & Inverters to Roof | 5d | 2026-08-28 | 2026-09-03 | EE-ROOF-1110 | 34d | 0d |
| EE-ROOF-1130 |  | Final Electrical Tie-In (Solar Panels) | 5d | 2026-09-04 | 2026-09-11 | EE-ROOF-1120 | 34d | 0d |
| EE-ROOF-1200 |  | Final Owner Walk (Punch List & Corrections) | 10d | 2026-09-14 | 2026-09-25 | EE-ROOF-1190, EE-ROOF-1130 | 34d |  |

| ID | WBS | Activity | Duration | Start | Finish | Predecessors | Total float | Free float | Calendar |
| --- | --- | --- | --- | --- | --- | --- | --- | --- | --- |
|  | 3 | **Interior Build-Out** |  | 2026-03-02 | 2026-10-20 |  |  |  |  |
|  | Level 2 Interior | **Level 2 Interior** |  | 2026-07-14 | 2026-09-11 |  |  |  |  |
| IB-L2IN-1000 |  | Layout & Framing (incl. backing, door frames) | 5d | 2026-07-14 | 2026-07-20 | FS-LVL3-1030, EE-ROOF-1060, IB-STAR-1000, PS-PROC-1280 | 17d | 0d |  |
| IB-L2IN-1010 |  | Electrical Rough-In | 5d | 2026-07-21 | 2026-07-27 | IB-L2IN-1000 | 17d | 0d |  |
| IB-L2IN-1020 |  | Mechanical Rough-In | 5d | 2026-07-21 | 2026-07-27 | IB-L2IN-1010 SS, PS-PROC-1230 | 17d | 0d |  |
| IB-L2IN-1030 |  | Plumbing Rough-In | 5d | 2026-07-21 | 2026-07-27 | IB-L2IN-1020 SS | 17d | 0d |  |
| IB-L2IN-1040 |  | Fire Supression Rough-In | 5d | 2026-07-21 | 2026-07-27 | IB-L2IN-1030 SS | 17d | 0d |  |
| IB-L2IN-1050 |  | Install Insulation | 2d | 2026-07-28 | 2026-07-29 | IB-L2IN-1040, EE-ROOF-1060 | 48d | 0d |  |
| IB-L2IN-1060 |  | Install Drywall | 4d | 2026-07-30 | 2026-08-04 | IB-L2IN-1050 | 48d | 0d |  |
| IB-L2IN-1070 |  | Tape & Mud Drywall | 5d | 2026-08-05 | 2026-08-11 | IB-L2IN-1060 | 48d | 0d |  |
| IB-L2IN-1080 |  | Prep & Paint | 3d | 2026-08-12 | 2026-08-14 | IB-L2IN-1070 | 48d | 0d |  |
| IB-L2IN-1090 |  | MEPF Trim-Out | 5d | 2026-08-17 | 2026-08-21 | IB-L2IN-1080, PS-PROC-1220 | 48d | 0d |  |
| IB-L2IN-1100 |  | Install Storage Doors & Hardware | 5d | 2026-08-24 | 2026-08-28 | IB-L2IN-1090 | 48d | 0d |  |
| IB-L2IN-1110 |  | Final Clean and Punchlist | 5d | 2026-08-31 | 2026-09-04 | IB-L2IN-1100 | 49d | 0d | Standard 5 Day Workweek w/ Basic Holidays |
| IB-L2IN-1120 |  | Punchlist Completion and Signoff | 5d | 2026-09-07 | 2026-09-11 | IB-L2IN-1110 | 93d | 58d | Standard 5 Day Workweek w/ Basic Holidays |
|  | 3 | **Level 3 Interior** |  | 2026-07-21 | 2026-09-15 |  |  |  |  |
| IB-L3IN-1000 |  | Layout & Framing (incl. backing, door frames) | 5d | 2026-07-21 | 2026-07-27 | IB-L2IN-1000, FS-LVL4-1030 | 26d | 0d |  |
| IB-L3IN-1010 |  | Electrical Rough-In | 5d | 2026-07-28 | 2026-08-03 | IB-L3IN-1000 | 46d | 0d |  |
| IB-L3IN-1020 |  | Mechanical Rough-In | 5d | 2026-07-28 | 2026-08-03 | IB-L3IN-1010 SS | 46d | 0d |  |
| IB-L3IN-1030 |  | Plumbing Rough-In | 5d | 2026-07-28 | 2026-08-03 | IB-L3IN-1020 SS | 46d | 0d |  |
| IB-L3IN-1040 |  | Fire Supression Rough-In | 5d | 2026-07-28 | 2026-08-03 | IB-L3IN-1030 SS | 46d | 0d |  |
| IB-L3IN-1050 |  | Install Insulation | 2d | 2026-08-04 | 2026-08-05 | IB-L3IN-1040, EE-ROOF-1060 | 46d | 0d |  |
| IB-L3IN-1060 |  | Install Drywall | 4d | 2026-08-06 | 2026-08-11 | IB-L3IN-1050 | 46d | 0d |  |
| IB-L3IN-1070 |  | Tape & Mud Drywall | 5d | 2026-08-12 | 2026-08-18 | IB-L3IN-1060 | 46d | 0d |  |
| IB-L3IN-1080 |  | Prep & Paint | 3d | 2026-08-19 | 2026-08-21 | IB-L3IN-1070 | 46d | 0d |  |
| IB-L3IN-1090 |  | MEPF Trim-Out | 5d | 2026-08-24 | 2026-08-28 | IB-L3IN-1080 | 46d | 0d |  |
| IB-L3IN-1100 |  | Install Storage Doors & Hardware | 5d | 2026-08-31 | 2026-09-04 | IB-L3IN-1090 | 46d | 0d |  |
| IB-L3IN-1110 |  | Final Clean and Punchlist | 2d | 2026-09-07 | 2026-09-08 | IB-L3IN-1100 | 47d | 0d | Standard 5 Day Workweek w/ Basic Holidays |
| IB-L3IN-1120 |  | Punchlist Completion and Signoff | 5d | 2026-09-09 | 2026-09-15 | IB-L3IN-1110 | 91d | 56d | Standard 5 Day Workweek w/ Basic Holidays |

| ID | WBS | Activity | Duration | Start | Finish | Predecessors | Total float | Free float | Calendar |
| --- | --- | --- | --- | --- | --- | --- | --- | --- | --- |
|  | 1 | **Unisex Restroom** |  | 2026-07-28 | 2026-09-03 |  |  |  |  |
| IB-L3UN-1000 |  | Framing (Metal Studs, Blocking) | 3d | 2026-07-28 | 2026-07-30 | IB-L3IN-1000 | 33d | 0d |  |
| IB-L3UN-1010 |  | MEPF Rough-In | 3d | 2026-07-31 | 2026-08-04 | IB-L3UN-1000 | 51d | 0d |  |
| IB-L3UN-1020 |  | City Inspection (Framing & MEPF Rough) | 1d | 2026-08-05 | 2026-08-05 | IB-L3UN-1010 | 52d | 0d |  |
| IB-L3UN-1030 |  | Install Insulation | 1d | 2026-08-06 | 2026-08-06 | IB-L3UN-1020 | 52d | 0d |  |
| IB-L3UN-1040 |  | Install Drywall | 2d | 2026-08-07 | 2026-08-10 | IB-L3UN-1030 | 52d | 0d |  |
| IB-L3UN-1050 |  | Tape & Mud Drywall | 3d | 2026-08-11 | 2026-08-13 | IB-L3UN-1040 | 54d | 0d |  |
| IB-L3UN-1060 |  | Painting | 2d | 2026-08-14 | 2026-08-17 | IB-L3UN-1050 | 54d | 0d |  |
| IB-L3UN-1070 |  | Install Restroom Fixtures & Partitions | 2d | 2026-08-18 | 2026-08-19 | IB-L3UN-1060, PS-PROC-1350 | 54d | 0d |  |
| IB-L3UN-1080 |  | Install Accessories (Grab Bars, Mirrors, Signs) | 2d | 2026-08-20 | 2026-08-21 | IB-L3UN-1070, PS-PROC-1310 | 54d | 0d |  |
| IB-L3UN-1090 |  | Final MEP Trim-Out | 2d | 2026-08-24 | 2026-08-25 | IB-L3UN-1080 | 54d | 0d |  |
| IB-L3UN-1100 |  | Final Clean and Punchlist | 2d | 2026-08-26 | 2026-08-27 | IB-L3UN-1090 | 54d | 0d |  |
| IB-L3UN-1110 |  | Punchlist Completion and Signoff | 5d | 2026-08-28 | 2026-09-03 | IB-L3UN-1100 | 99d | 64d | Standard 5 Day Workweek w/ Basic Holidays |
|  | 5 | **Level 4 Interior** |  | 2026-07-28 | 2026-09-23 |  |  |  |  |
| IB-L4IN-1000 |  | Layout & Framing (incl. backing, door frames) | 5d | 2026-07-28 | 2026-08-03 | FS-ROOF-1000, IB-L3IN-1000 | 26d | 0d |  |
| IB-L4IN-1010 |  | Electrical Rough-In | 5d | 2026-08-04 | 2026-08-10 | IB-L4IN-1000 | 33d | 0d |  |
| IB-L4IN-1020 |  | Mechanical Rough-In | 5d | 2026-08-04 | 2026-08-10 | IB-L4IN-1010 SS | 33d | 0d |  |
| IB-L4IN-1030 |  | Plumbing Rough-In | 5d | 2026-08-04 | 2026-08-10 | IB-L4IN-1020 SS | 33d | 0d |  |
| IB-L4IN-1040 |  | Fire Supression Rough-In | 5d | 2026-08-04 | 2026-08-10 | IB-L4IN-1030 SS | 33d | 0d |  |
| IB-L4IN-1050 |  | Install Insulation | 2d | 2026-08-11 | 2026-08-12 | IB-L4IN-1040, EE-ROOF-1060 | 33d | 0d |  |
| IB-L4IN-1060 |  | Install Drywall | 4d | 2026-08-13 | 2026-08-18 | IB-L4IN-1050 | 33d | 0d |  |
| IB-L4IN-1070 |  | Tape & Mud Drywall | 5d | 2026-08-19 | 2026-08-25 | IB-L4IN-1060 | 33d | 0d |  |
| IB-L4IN-1080 |  | Prep & Paint | 3d | 2026-08-26 | 2026-08-28 | IB-L4IN-1070 | 33d | 0d |  |
| IB-L4IN-1090 |  | MEPF Trim-Out | 5d | 2026-08-31 | 2026-09-04 | IB-L4IN-1080 | 33d | 0d |  |
| IB-L4IN-1100 |  | Install Storage Doors & Hardware | 5d | 2026-09-08 | 2026-09-14 | IB-L4IN-1090 | 41d | 0d |  |
| IB-L4IN-1110 |  | Final Clean and Punchlist | 2d | 2026-09-15 | 2026-09-16 | IB-L4IN-1100 | 41d | 0d | Standard 5 Day Workweek w/ Basic Holidays |
| IB-L4IN-1120 |  | Punchlist Completion and Signoff | 5d | 2026-09-17 | 2026-09-23 | IB-L4IN-1110 | 85d | 50d | Standard 5 Day Workweek w/ Basic Holidays |

| ID | WBS | Activity | Duration | Start | Finish | Predecessors | Total float | Free float | Calendar |
| --- | --- | --- | --- | --- | --- | --- | --- | --- | --- |
|  | Level 1 Interior | **Level 1 Interior** |  | 2026-08-04 | 2026-10-02 |  |  |  |  |
| IB-L1IN-1000 |  | Layout & Framing (incl. backing, door frames) | 5d | 2026-08-04 | 2026-08-10 | EE-ROOF-1060, IB-L4IN-1000, FS-LVL1-1060 | 26d | 0d |  |
| IB-L1IN-1010 |  | Electrical Rough-In | 5d | 2026-08-11 | 2026-08-17 | IB-L1IN-1000 | 36d | 0d |  |
| IB-L1IN-1020 |  | Mechanical Rough-In | 5d | 2026-08-11 | 2026-08-17 | IB-L1IN-1010 SS | 36d | 0d |  |
| IB-L1IN-1030 |  | Plumbing Rough-In | 5d | 2026-08-11 | 2026-08-17 | IB-L1IN-1020 SS | 36d | 0d |  |
| IB-L1IN-1040 |  | Fire Supression Rough-In | 5d | 2026-08-11 | 2026-08-17 | IB-L1IN-1030 SS | 36d | 0d |  |
| IB-L1IN-1050 |  | Install Insulation | 2d | 2026-08-18 | 2026-08-19 | IB-L1IN-1040, EE-ROOF-1060 | 36d | 0d |  |
| IB-L1IN-1060 |  | Install Drywall | 4d | 2026-08-20 | 2026-08-25 | IB-L1IN-1050 | 36d | 0d |  |
| IB-L1IN-1070 |  | Tape & Mud Drywall | 5d | 2026-08-26 | 2026-09-01 | IB-L1IN-1060 | 36d | 0d |  |
| IB-L1IN-1080 |  | Prep & Paint | 3d | 2026-09-02 | 2026-09-04 | IB-L1IN-1070 | 36d | 0d |  |
| IB-L1IN-1090 |  | MEPF Trim-Out | 5d | 2026-09-08 | 2026-09-14 | IB-L1IN-1080 | 36d | 0d |  |
| IB-L1IN-1100 |  | Install Storage Doors & Hardware | 5d | 2026-09-15 | 2026-09-21 | IB-L1IN-1090 | 36d | 0d |  |
| IB-L1IN-1110 |  | Final Clean and Punchlist | 2d | 2026-09-22 | 2026-09-23 | IB-L1IN-1100 | 36d | 0d | Standard 5 Day Workweek w/ Basic Holidays |
| IB-L1IN-1120 |  | Punchlist Completion and Signoff | 5d | 2026-09-24 | 2026-09-30 | IB-L1IN-1110 | 80d | 45d | Standard 5 Day Workweek w/ Basic Holidays |
|  | 1 | **Restrooms (Mens & Womens)** |  | 2026-08-11 | 2026-09-18 |  |  |  |  |
| IB-L1RR-1000 |  | Framing (Metal Studs, Blocking) | 3d | 2026-08-11 | 2026-08-13 | IB-L1IN-1000, IB-L3UN-1000 | 26d | 0d |  |
| IB-L1RR-1010 |  | MEPF Rough-In | 3d | 2026-08-14 | 2026-08-18 | IB-L1RR-1000, IB-L3UN-1010 | 44d | 0d |  |
| IB-L1RR-1020 |  | City Inspection (Framing & MEPF Rough) | 1d | 2026-08-19 | 2026-08-19 | IB-L1RR-1010, IB-L3UN-1020 SS | 44d | 0d |  |
| IB-L1RR-1030 |  | Install Insulation | 1d | 2026-08-20 | 2026-08-20 | IB-L1RR-1020 | 44d | 0d |  |
| IB-L1RR-1040 |  | Install Drywall | 2d | 2026-08-21 | 2026-08-24 | IB-L1RR-1030, IB-L3UN-1040 | 44d | 0d |  |
| IB-L1RR-1050 |  | Tape & Mud Drywall | 3d | 2026-08-25 | 2026-08-27 | IB-L1RR-1040 | 44d | 0d |  |
| IB-L1RR-1060 |  | Painting | 2d | 2026-08-28 | 2026-08-31 | IB-L1RR-1050, PS-PROC-1290 | 44d | 0d |  |
| IB-L1RR-1070 |  | Install Restroom Fixtures & Partitions | 2d | 2026-09-01 | 2026-09-02 | IB-L1RR-1060 | 44d | 0d |  |
| IB-L1RR-1080 |  | Install Accessories (Grab Bars, Mirrors, Signs) | 2d | 2026-09-03 | 2026-09-04 | IB-L1RR-1070, PS-PROC-1320 | 44d | 0d |  |
| IB-L1RR-1090 |  | Final MEP Trim-Out | 2d | 2026-09-08 | 2026-09-09 | IB-L1RR-1080 | 44d | 0d |  |
| IB-L1RR-1100 |  | Final Clean and Punclist | 2d | 2026-09-10 | 2026-09-11 | IB-L1RR-1090 | 44d | 0d |  |
| IB-L1RR-1110 |  | Punchlist Completion and Signoff | 5d | 2026-09-14 | 2026-09-18 | IB-L1RR-1100 | 301d |  | Standard 5 Day Workweek w/ Basic Holidays |

| ID | WBS | Activity | Duration | Start | Finish | Predecessors | Total float | Free float | Calendar |
| --- | --- | --- | --- | --- | --- | --- | --- | --- | --- |
|  | 2 | **Management Spaces (Rental Office, Storage, Break Room)** |  | 2026-08-14 | 2026-10-02 |  |  |  |  |
| IB-L1M\S-1000 |  | Layout & Framing (incl. backing, door frames) | 3d | 2026-08-14 | 2026-08-18 | IB-L1RR-1000 | 26d | 0d |  |
| IB-L1M\S-1010 |  | MEPF Rough-In | 3d | 2026-08-19 | 2026-08-21 | IB-L1M\S-1000 | 32d | 0d |  |
| IB-L1M\S-1020 |  | City Inspection (Framing & MEPF) | 1d | 2026-08-24 | 2026-08-24 | IB-L1M\S-1010 | 32d | 0d |  |
| IB-L1M\S-1030 |  | Install Insulation | 2d | 2026-08-25 | 2026-08-26 | IB-L1M\S-1020 | 32d | 0d |  |
| IB-L1M\S-1040 |  | Install Drywall | 2d | 2026-08-27 | 2026-08-28 | IB-L1M\S-1030 | 32d | 0d |  |
| IB-L1M\S-1050 |  | Tape & Mud Drywall | 3d | 2026-08-31 | 2026-09-02 | IB-L1M\S-1040 | 32d | 0d |  |
| IB-L1M\S-1060 |  | Painting | 3d | 2026-09-03 | 2026-09-08 | IB-L1M\S-1050 | 32d | 0d |  |
| IB-L1M\S-1070 |  | Install Ceiling Grid (Break Room) | 1d | 2026-09-09 | 2026-09-09 | IB-L1M\S-1060, PS-PROC-1360 | 34d | 0d |  |
| IB-L1M\S-1080 |  | Install Base Trim | 1d | 2026-09-10 | 2026-09-10 | IB-L1M\S-1070, PS-PROC-1290 | 34d | 0d |  |
| IB-L1M\S-1090 |  | Install Cabinets & Countertops (Break Room & Office) | 3d | 2026-09-11 | 2026-09-15 | IB-L1M\S-1080 | 34d | 0d |  |
| IB-L1M\S-1100 |  | Install Sink & Faucests (Break Room) | 1d | 2026-09-16 | 2026-09-16 | IB-L1M\S-1090 | 34d | 0d |  |
| IB-L1M\S-1110 |  | Appliances (Microwave & Fridge) | 1d | 2026-09-17 | 2026-09-17 | IB-L1M\S-1100, PS-PROC-1330 | 34d | 0d |  |
| IB-L1M\S-1120 |  | Interior Signage | 1d | 2026-09-18 | 2026-09-18 | IB-L1M\S-1110 | 34d | 0d |  |
| IB-L1M\S-1130 |  | MEPF Trim-Out | 3d | 2026-09-21 | 2026-09-23 | IB-L1M\S-1120 | 34d | 0d |  |
| IB-L1M\S-1140 |  | Final Clean and Punchlist | 2d | 2026-09-24 | 2026-09-25 | IB-L1M\S-1130 | 34d | 0d |  |
| IB-L1M\S-1150 |  | Punchlist Completion and Signoff | 5d | 2026-09-28 | 2026-10-02 | IB-L1M\S-1140 | 291d |  | Standard 5 Day Workweek w/ Basic Holidays |
|  | 1 | **Janus Scope** |  | 2026-07-28 | 2026-10-20 |  |  |  |  |
| IB-JNUS-1000 |  | Level 2 Install (Diamond Plate, Turkey Wire, Misc.) | 15d | 2026-07-28 | 2026-08-17 | IB-L2IN-1000, IB-L2IN-1040 | 17d | 0d |  |
| IB-JNUS-1010 |  | Level 3 Install (Diamond Plate, Turkey Wire, Misc.) | 15d | 2026-08-18 | 2026-09-08 | IB-JNUS-1000 | 17d | 0d |  |
| IB-JNUS-1020 |  | Level 4 Install (Diamond Plate, Turkey Wire, Misc.) | 15d | 2026-09-09 | 2026-09-29 | IB-JNUS-1010 | 17d | 0d |  |
| IB-JNUS-1030 |  | Level 1 Install (Diamond Plate, Turkey Wire, Misc.) | 15d | 2026-09-30 | 2026-10-20 | IB-L1M\S-1060, IB-JNUS-1020 | 17d |  |  |
|  | 2 | **Elevator Installation** |  | 2026-08-19 | 2026-10-07 |  |  |  |  |
| EL-INST-1000 |  | Evelvator Installation (incl. Equipment Room Buildout) | 35d | 2026-08-19 | 2026-10-07 | IB-L1M\S-1000, PS-PROC-1020 | 26d |  |  |

| ID | WBS | Activity | Duration | Start | Finish | Predecessors | Total float | Free float | Calendar |
| --- | --- | --- | --- | --- | --- | --- | --- | --- | --- |
|  | 4 | **Stairwells** |  | 2026-03-02 | 2026-05-04 |  |  |  |  |
| IB-STAR-1000 |  | Install Stairs & Railings | 20d | 2026-03-02 | 2026-03-27 | FS-LVL1-1020 | 91d | 0d |  |
| IB-STAR-1010 |  | Install Signage & Lighting | 7d | 2026-03-30 | 2026-04-07 | IB-STAR-1000 | 140d | 0d |  |
| IB-STAR-1020 |  | Install Doors & Hardware | 4d | 2026-04-08 | 2026-04-13 | IB-STAR-1010 | 140d | 0d |  |
| IB-STAR-1030 |  | Paint Stairs and Railings | 5d | 2026-04-14 | 2026-04-20 | IB-STAR-1020 | 143d | 0d | Standard 5 Day Workweek w/ Basic Holidays |
| IB-STAR-1040 |  | Clean Stairwells and Punchlist | 5d | 2026-04-21 | 2026-04-27 | IB-STAR-1030 | 143d | 0d | Standard 5 Day Workweek w/ Basic Holidays |
| IB-STAR-1050 |  | Punchlist and Signoff on Stairwells | 5d | 2026-04-28 | 2026-05-04 | IB-STAR-1040 | 187d | 152d | Standard 5 Day Workweek w/ Basic Holidays |
|  | 4 | **Outside Primary Footprint** |  | 2026-07-31 | 2026-11-23 |  |  |  |  |
|  | 2 | **Sitework Finishes** |  | 2026-07-31 | 2026-10-27 |  |  |  |  |
| SW-FIN-1040 |  | Finish Grade Site (incl. bio ponds) | 5d | 2026-07-31 | 2026-08-06 | EE-WEST-1000, EE-WEST-1080, SU-STWK-1100 | 0d |  |  |
| SW-FIN-1050 |  | Install Irrigation Sleeves (inc. bio ponds) | 2d | 2026-08-07 | 2026-08-10 | SW-FIN-1040, SW-FIN-1040 FF | 0d |  |  |
| SW-FIN-1060 |  | Electrical Rough (Light Poles) | 5d | 2026-08-11 | 2026-08-17 | SW-FIN-1050, SW-FIN-1050 FF | 0d |  |  |
| SW-FIN-1100 |  | Install Bollards (including footings) | 5d | 2026-08-18 | 2026-08-24 | SW-FIN-1060 | 0d |  |  |
| SW-FIN-1130 |  | FRP Concrete (Hardscape & Sidewalks) | 7d | 2026-08-25 | 2026-09-02 | SW-FIN-1100 | 0d |  |  |
| SW-FIN-1140 |  | Install Irrigation | 10d | 2026-09-03 | 2026-09-17 | SW-FIN-1130, SW-FIN-1130 FF | 15d | 0d |  |
| SW-FIN-1150 |  | Install Asphalt (Final Coat) | 1d | 2026-09-18 | 2026-09-18 | SW-FIN-1140 | 15d | 0d |  |
| SW-FIN-1170 |  | Planting | 10d | 2026-09-21 | 2026-10-02 | SW-FIN-1150 | 15d | 0d |  |
| SW-FIN-1171 |  | FRP Dumpster Enclosure | 7d | 2026-10-05 | 2026-10-13 | SW-FIN-1130, SW-FIN-1170 | 15d | 0d |  |
| SW-FIN-1180 |  | Site Furnishings & Signage | 5d | 2026-10-14 | 2026-10-20 | SW-FIN-1170, SW-FIN-1171 | 15d | 0d |  |
| SW-FIN-1190 |  | Final Clean and Punchlist Sitework | 2d | 2026-10-21 | 2026-10-22 | SW-FIN-1180 | 15d | 0d |  |
| SW-FIN-1200 |  | Punch List Completion and Signoff | 3d | 2026-10-23 | 2026-10-27 | SW-FIN-1190 | 54d | 24d |  |
|  | 1 | **Rutland Drive Improvements** |  | 2026-08-27 | 2026-11-23 |  |  |  |  |
| SW-RTLN-1000 |  | EPSC Install (Silt Fence, Inlet Protection) | 3d | 2026-08-27 | 2026-08-31 | SW-FIN-1040, SW-FIN-1130 SS+2d | 0d |  |  |
| SW-RTLN-1010 |  | Sawcut Asphalt & Demo Existing Curb | 3d | 2026-09-01 | 2026-09-03 | SW-RTLN-1000 | 0d |  |  |
| SW-RTLN-1020 |  | Temp Traffic Control Setup | 3d | 2026-09-04 | 2026-09-09 | SW-RTLN-1010 | 0d |  |  |
| SW-RTLN-1030 |  | Relocate Mailbox / Signs / Remove Conflicts | 2d | 2026-09-10 | 2026-09-11 | SW-RTLN-1020 | 0d |  |  |
| SW-RTLN-1040 |  | Trench & Install Storm Pipe | 8d | 2026-09-14 | 2026-09-23 | SW-RTLN-1030 | 0d |  |  |
| SW-RTLN-1050 |  | Set Curb Inlets, Junction Boxes, Headwalls | 6d | 2026-09-24 | 2026-10-01 | SW-RTLN-1040 | 0d |  |  |
| SW-RTLN-1060 |  | Backfill / Compact Drain Trenches | 3d | 2026-10-02 | 2026-10-06 | SW-RTLN-1050 | 0d |  |  |
| SW-RTLN-1070 |  | Subgrade Proofrool & Undercut / Backfill (if needed) | 3d | 2026-10-07 | 2026-10-09 | SW-RTLN-1060 | 0d |  |  |
| SW-RTLN-1080 |  | Place Aggregate Base | 4d | 2026-10-12 | 2026-10-15 | SW-RTLN-1070 | 0d |  |  |
| SW-RTLN-1090 |  | City Inspections (Proofrool, Storm, Curbs) | 2d | 2026-10-16 | 2026-10-19 | SW-RTLN-1080 | 0d |  |  |
| SW-RTLN-1100 |  | Install Curb & Gutter | 5d | 2026-10-20 | 2026-10-26 | SW-RTLN-1090 | 0d |  |  |
| SW-RTLN-1110 |  | Sidewalks & ADA Ramps | 4d | 2026-10-27 | 2026-10-30 | SW-RTLN-1100 | 0d |  |  |
| SW-RTLN-1120 |  | First Lift Asphalt (Binder Course) | 2d | 2026-11-02 | 2026-11-03 | SW-RTLN-1110 | 0d |  |  |
| SW-RTLN-1130 |  | Final Grading | 2d | 2026-11-04 | 2026-11-05 | SW-RTLN-1120 | 0d |  |  |
| SW-RTLN-1140 |  | Final Asphalt Surface Course | 1d | 2026-11-06 | 2026-11-06 | SW-RTLN-1130 | 0d |  |  |
| SW-RTLN-1150 |  | Permanent Signs & Striping | 2d | 2026-11-09 | 2026-11-10 | SW-RTLN-1140 | 0d |  |  |
| SW-RTLN-1160 |  | Site Cleanup & Final EPSC Removal | 2d | 2026-11-11 | 2026-11-12 | SW-RTLN-1150 | 0d |  |  |
| SW-RTLN-1170 |  | Rutland Drive Punchlist Walk | 2d | 2026-11-13 | 2026-11-16 | SW-RTLN-1160 | 35d | 0d |  |
| SW-RTLN-1180 |  | Rutland Drive Punchlist Completion and Signoff | 5d | 2026-11-17 | 2026-11-23 | SW-RTLN-1170 | 35d | 5d |  |

| ID | WBS | Activity | Duration | Start | Finish | Predecessors | Complete | Planned start | Planned finish | Total float | Free float |
| --- | --- | --- | --- | --- | --- | --- | --- | --- | --- | --- | --- |
|  | Closeout | **Closeout** |  | 2026-08-11 | 2026-11-13 |  |  |  |  |  |  |
|  | Commisioning | **Commissioning** |  | 2026-09-08 | 2026-09-21 |  |  |  |  |  |  |
| CO-CM-1000 |  | Start-Up & Testing | 10d | 2026-09-08 | 2026-09-21 | IB-L4IN-1090 |  |  |  | 33d | 0d |
|  | Building Finals | **Building Finals** |  | 2026-08-11 | 2026-11-13 |  |  |  |  |  |  |
| CO-BF-1000 |  | Rough Fire Sprinkler Inspection | 1d | 2026-08-11 | 2026-08-11 | IB-L4IN-1040 |  |  |  | 61d | 28d |
| CO-BF-1010 |  | Final Fire Sprinkler Inspection | 1d | 2026-09-22 | 2026-09-22 | CO-CM-1000, CO-BF-1000 |  |  |  | 33d | 0d |
| CO-BF-1020 |  | Electrical Final Inspection | 1d | 2026-09-23 | 2026-09-23 | CO-BF-1010, IB-L4IN-1090 |  |  |  | 33d | 0d |
| CO-BF-1030 |  | Plumbing Final Inspection | 1d | 2026-09-24 | 2026-09-24 | CO-BF-1020 |  |  |  | 33d | 0d |
| CO-BF-1040 |  | Mechanical Final Inspection | 1d | 2026-09-25 | 2026-09-25 | CO-BF-1030 |  |  |  | 33d | 0d |
| CO-BF-1050 |  | Fire Alarm Final Inspection | 1d | 2026-09-28 | 2026-09-28 | CO-BF-1040 |  |  |  | 33d |  |
| CO-BF-1060 |  | Building Final Occupancy Inspection (Substantial Completion) | 1d | 2026-11-13 | 2026-11-13 | CO-BF-1050, SW-RTLN-1160, SW-FIN-1180, IB-L4IN-1100, EE-ROOF-1200, IB-JNUS-1030, EL-INST-1000, PS-CMIL-1140, IB-L1M\S-1140, IB-L1RR-1100, IB-L3UN-1100, IB-STAR-1020, IB-STAR-1040, SW-FIN-1190, IB-JNUS-1000, IB-JNUS-1010, IB-JNUS-1020, IB-L1IN-1110, IB-L4IN-1110, IB-L3IN-1110, IB-L2IN-1110, EE-SOTH-1130, EE-EAST-1110, EE-NRTH-1160, EE-WEST-1110 |  |  |  | 0d |  |
|  | 2 | **Warranty Work** |  | 2026-12-03 | 2027-11-15 |  |  |  |  |  |  |
| WW-WARR-1000 |  | 1st Quarter HVAC Maintenance | 60d | 2026-12-03 | 2027-03-03 | CO-BF-1060, PS-CMIL-1190 FF+30d, PS-CMIL-1170 |  |  |  | 0d |  |
| WW-WARR-1010 |  | 1st Quarter Landscape Maintenance | 60d | 2026-12-03 | 2027-03-03 | CO-BF-1060, PS-CMIL-1190 FF+30d, PS-CMIL-1170 |  |  |  | 0d |  |
| WW-WARR-1030 |  | 2nd Quarter HVAC Maintenance | 60d | 2027-03-04 | 2027-05-26 | WW-WARR-1000 |  |  |  | 0d |  |
| WW-WARR-1040 |  | 2nd Quarter Landscape Maintenance | 60d | 2027-03-04 | 2027-05-26 | WW-WARR-1010 |  |  |  | 0d |  |
| WW-WARR-1050 |  | 3rd Quarter HVAC Maintenance | 60d | 2027-05-27 | 2027-08-20 | WW-WARR-1030 |  |  |  | 0d |  |
| WW-WARR-1060 |  | 3rd Quarter Landscape Maintenance | 60d | 2027-05-27 | 2027-08-20 | WW-WARR-1040 |  |  |  | 0d |  |
| WW-WARR-1070 |  | 4th Quarter HVAC Maintenance | 60d | 2027-08-23 | 2027-11-15 | WW-WARR-1050 |  |  |  | 0d |  |
| WW-WARR-1080 |  | 4th Quarter Landscape Maintenance | 60d | 2027-08-23 | 2027-11-15 | WW-WARR-1060 |  |  |  | 0d |  |
| WW-WARR-1020 |  | 11-Month Warranty Walk | 5d | 2027-10-04 | 2027-10-08 | CO-BF-1060 FS+220d |  |  |  | 26d |  |
|  | 5 | **Weather Impacts & Delays** |  | 2025-10-29 | 2026-01-30 |  |  |  |  |  |  |
| x.WI-WTHR-1010 |  | Weather Impact No. 01 - Rain Delay (1 Work Day) | 1d | 2025-10-29 A | 2025-10-29 A |  | 100% | 2026-02-02 | 2026-02-02 |  |  |
| x.WI-WTHR-1020 |  | Weather Impact No. 02 - Rain Delay (1 Work Day) | 5d | 2025-11-25 A | 2025-11-25 A | *SU-STWK-1120 | 100% | 2026-02-02 | 2026-02-06 |  |  |
| x.WI-WTHR-1030 |  | Weather Impact No. 03 - Rain Delay (1 Work Day) | 5d | 2025-12-18 A | 2025-12-18 A | SU-SUTL-1030 | 100% | 2026-02-02 | 2026-02-06 |  |  |
| x.WI-WTHR-1040 |  | Weather Impact No. 04 - Rain Delay (1 Work Day) | 5d | 2026-01-09 A | 2026-01-09 A | SU-SUTL-1040 | 100% | 2026-02-02 | 2026-02-06 |  |  |
| x.WI-WTHR-1050 |  | Weather Impact No. 05 - Snow & Ice Delay (5 Work Days) | 5d | 2026-01-26 A | 2026-01-30 A |  | 100% | 2026-02-02 | 2026-02-06 |  |  |
