# PS Willis - Preliminary Schedule - 01.05.26

Schedule from MS Project, 2025-09-25 to 2026-07-31, status date 2026-01-05.

## Calendars

- Standard: Mon-Fri 08:00-12:00, 13:00-17:00; Sat-Sun off.

## Schedule

| ID | WBS | Task | Duration | Start | Finish | Predecessors | Total slack | Free slack | Constraint |
| --- | --- | --- | --- | --- | --- | --- | --- | --- | --- |
| 1 | 1 | **Public Storage Willis - TX 24198** | 207d | 2025-09-25 | 2026-07-10 |  | 15d |  |  |
| 2 | 1.1 | **Pre-Construction** | 133d | 2025-09-25 | 2026-03-30 |  | 77d |  |  |
| 3 | 1.1.1 | Contract Signed | 1d | 2025-09-25 | 2025-09-25 |  | 219d |  | start no earlier than 2025-09-25 |
| 4 | 1.1.2 | Building Permit | 1d | 2026-01-09 | 2026-01-09 |  | 143d |  | start no earlier than 2026-01-09 |
| 5 | 1.1.3 | Fire Tank Permit | 1d | 2026-03-30 | 2026-03-30 |  | 58d | 40d | start no earlier than 2026-03-30 |
| 6 | 1.1.4 | NTP - From PS | 1d | 2026-01-12 | 2026-01-12 |  | 0d |  | start no earlier than 2026-01-12 |
| 7 | 1.1.5 | Approval to go Vertical by AHJ | 1d | 2026-03-04 | 2026-03-04 | 23 | 107d |  |  |
| 8 | 1.2 | **Procurament** | 70d | 2026-02-17 | 2026-05-25 |  | 49d |  |  |
| 9 | 1.2.1 | Building Structure | 2d | 2026-02-17 | 2026-02-19 | 51SF-5d | 117d |  |  |
| 10 | 1.2.2 | Hallway System | 2d | 2026-05-19 | 2026-05-21 | 68SF-5d | 52d |  |  |
| 11 | 1.2.3 | Fire Tank Delivery | 1d | 2026-05-25 | 2026-05-25 |  | 18d | 0d | start no earlier than 2026-05-25 |
| 12 | 1.3 | **Site Work** | 100d | 2026-01-13 | 2026-06-01 |  | 0d |  |  |
| 13 | 1.3.1 | **Earthwork** | 17d | 2026-01-13 | 2026-02-04 |  | 0d |  |  |
| 14 | 1.3.1.1 | Erosion Control / BMPs | 3d | 2026-01-13 | 2026-01-15 | 6 | 0d |  |  |
| 15 | 1.3.1.2 | Demolition & Haul Off - For Bldg Pad | 4d | 2026-01-16 | 2026-01-21 | 14 | 0d |  |  |
| 16 | 1.3.1.3 | Grading / Cut & Fill | 5d | 2026-01-22 | 2026-01-28 | 15 | 0d |  |  |
| 17 | 1.3.1.4 | Bulding Pad Preparation | 5d | 2026-01-29 | 2026-02-04 | 16 | 0d |  |  |
| 18 | 1.3.2 | **Site Utilities** | 93d | 2026-01-22 | 2026-06-01 |  | 44d |  |  |
| 19 | 1.3.2.1 | Re-adjust existing storm | 3d | 2026-01-22 | 2026-01-26 | 15 | 132d |  |  |
| 20 | 1.3.2.2 | Storm Sewer | 5d | 2026-02-05 | 2026-02-11 | 17 | 86d | 0d |  |
| 21 | 1.3.2.3 | Sanitary Sewer | 6d | 2026-02-12 | 2026-02-19 | 20 | 86d | 0d |  |
| 22 | 1.3.2.4 | Water Line | 6d | 2026-02-20 | 2026-02-27 | 21 | 86d | 0d |  |
| 23 | 1.3.2.5 | Utility Approval by AHJ | 2d | 2026-03-02 | 2026-03-03 | 22 | 105d | 0d |  |
| 24 | 1.3.2.6 | **Fire Tank (By Others)** | 5d | 2026-05-26 | 2026-06-01 |  | 20d |  |  |
| 25 | 1.3.2.6.1 | Fire Tank Installation | 5d | 2026-05-26 | 2026-06-01 | 11, 5 | 18d | 0d |  |

| ID | WBS | Task | Duration | Start | Finish | Predecessors | Total slack | Free slack |
| --- | --- | --- | --- | --- | --- | --- | --- | --- |
| 26 | 1.3.3 | **Exterior Improvements** | 66d | 2026-03-02 | 2026-06-01 |  | 44d |  |
| 27 | 1.3.3.1 | **Site Paving** | 22d | 2026-03-02 | 2026-03-31 |  | 88d |  |
| 28 | 1.3.3.1.1 | Paving Subgrade Prep | 8d | 2026-03-02 | 2026-03-11 | 22 | 86d | 0d |
| 29 | 1.3.3.1.2 | Fire Lane Concrete Paving | 8d | 2026-03-12 | 2026-03-23 | 28 | 86d | 0d |
| 30 | 1.3.3.1.3 | Light Duty Concrete Paving | 6d | 2026-03-24 | 2026-03-31 | 29 | 86d |  |
| 31 | 1.3.3.2 | **Detention Pond Work** | 9d | 2026-03-12 | 2026-03-24 |  | 93d |  |
| 32 | 1.3.3.2.1 | Grading / Cut | 5d | 2026-03-12 | 2026-03-18 | 28 | 91d | 0d |
| 33 | 1.3.3.2.2 | Storm Sewer | 4d | 2026-03-19 | 2026-03-24 | 32 | 91d |  |
| 34 | 1.3.3.3 | **Landscape & Irrigation** | 11d | 2026-05-11 | 2026-05-25 |  | 44d |  |
| 35 | 1.3.3.3.1 | Irrigation Installation | 6d | 2026-05-11 | 2026-05-18 | 78 | 44d | 0d |
| 36 | 1.3.3.3.2 | Landscape Installation | 5d | 2026-05-19 | 2026-05-25 | 35 | 44d | 0d |
| 37 | 1.3.3.4 | **Gates & Fences** | 5d | 2026-05-26 | 2026-06-01 |  | 44d |  |
| 38 | 1.3.3.4.1 | Chain Link Fence | 3d | 2026-05-26 | 2026-05-28 | 36 | 44d | 0d |
| 39 | 1.3.3.4.2 | Double Swing Gate | 2d | 2026-05-29 | 2026-06-01 | 38 | 44d |  |
| 40 | 1.4 | **Building Work** | 107d | 2026-02-05 | 2026-07-03 |  | 0d |  |
| 41 | 1.4.1 | **SOG / Foundation** | 12d | 2026-02-05 | 2026-02-20 |  | 0d |  |
| 42 | 1.4.1.1 | Form Board | 1d | 2026-02-05 | 2026-02-05 | 17 | 0d |  |
| 43 | 1.4.1.2 | Plumbing UG Rough-In | 1d | 2026-02-06 | 2026-02-06 | 42 | 0d |  |
| 44 | 1.4.1.3 | Electrical UFER & Service | 1d | 2026-02-09 | 2026-02-09 | 43 | 0d |  |
| 45 | 1.4.1.4 | Grade Beam Excavation | 3d | 2026-02-10 | 2026-02-12 | 44 | 0d |  |
| 46 | 1.4.1.5 | Set Poly & Termite Control | 1d | 2026-02-13 | 2026-02-13 | 45 | 0d |  |
| 47 | 1.4.1.6 | Set Rebar for GB & SOG | 2d | 2026-02-16 | 2026-02-17 | 46 | 0d |  |
| 48 | 1.4.1.7 | Pour & Finish SOG | 2d | 2026-02-18 | 2026-02-19 | 47 | 0d |  |
| 49 | 1.4.1.8 | Joint Control Saw Cutting | 1d | 2026-02-20 | 2026-02-20 | 48 | 0d |  |

| ID | WBS | Task | Duration | Start | Finish | Predecessors | Total slack | Free slack |
| --- | --- | --- | --- | --- | --- | --- | --- | --- |
| 50 | 1.4.2 | **Steel Structure (By Others)** | 38d | 2026-02-26 | 2026-04-20 |  | 0d |  |
| 51 | 1.4.2.1 | Framing & Interior Partitions | 12d | 2026-02-26 | 2026-03-13 | 49FS+3d | 0d |  |
| 52 | 1.4.2.2 | Standing Seam Metal Roofing System | 10d | 2026-03-16 | 2026-03-27 | 51 | 0d |  |
| 53 | 1.4.2.3 | Exterior Wall Assembly | 10d | 2026-03-30 | 2026-04-10 | 52 | 74d | 0d |
| 54 | 1.4.2.4 | Gutter, Coping & Downpsouts | 6d | 2026-04-13 | 2026-04-20 | 53 | 74d |  |
| 55 | 1.4.3 | **Masonry** | 4d | 2026-04-13 | 2026-04-16 |  | 76d |  |
| 56 | 1.4.3.1 | Fire Pump Room | 4d | 2026-04-13 | 2026-04-16 | 53 | 76d |  |
| 57 | 1.4.4 | **Fire Sprinkler System** | 45d | 2026-04-06 | 2026-06-05 |  | 0d |  |
| 58 | 1.4.4.1 | Sprinkler Installation | 12d | 2026-04-06 | 2026-04-21 | 52FS+5d | 0d |  |
| 59 | 1.4.4.2 | Final Adjustment and Testing | 4d | 2026-06-02 | 2026-06-05 | 58, 25 | 18d |  |
| 60 | 1.4.5 | **Fire Alarm** | 19d | 2026-04-22 | 2026-05-18 |  | 34d |  |
| 61 | 1.4.5.1 | Fire Alarm Installation | 15d | 2026-04-22 | 2026-05-12 | 58 | 34d | 0d |
| 62 | 1.4.5.2 | Final Adjustment & Testing | 4d | 2026-05-13 | 2026-05-18 | 61 | 34d |  |
| 63 | 1.4.6 | **ERCCS - TBD subject to AHJ Review** | 17d | 2026-06-11 | 2026-07-03 |  | 0d |  |
| 64 | 1.4.6.1 | ERCCS Testing | 2d | 2026-06-11 | 2026-06-12 | 68, 83 | 0d |  |
| 65 | 1.4.6.2 | Submittal and Approval by AHJ | 10d | 2026-06-15 | 2026-06-26 | 64 | 0d |  |
| 66 | 1.4.6.3 | ERCCS Installation | 5d | 2026-06-29 | 2026-07-03 | 65 | 0d |  |
| 67 | 1.4.7 | **Hallway System (By Others)** | 15d | 2026-05-28 | 2026-06-17 |  | 0d |  |
| 68 | 1.4.7.1 | Hallway System & Roll Up Doors | 10d | 2026-05-28 | 2026-06-10 | 70, 75, 80 | 0d |  |
| 69 | 1.4.7.2 | Wire Mesh | 5d | 2026-06-11 | 2026-06-17 | 58, 61, 72, 68 | 18d |  |
| 70 | 1.4.8 | **Mechanical** | 26d | 2026-04-22 | 2026-05-27 |  | 0d |  |
| 71 | 1.4.8.1 | Line Sets & Rough In | 8d | 2026-04-22 | 2026-05-01 | 58 | 0d |  |
| 72 | 1.4.8.2 | AHUs & Duct Work | 10d | 2026-05-04 | 2026-05-15 | 71 | 0d |  |
| 73 | 1.4.8.3 | Dehumidifiers | 3d | 2026-05-18 | 2026-05-20 | 72 | 0d |  |
| 74 | 1.4.8.4 | Condensers & Final Connection | 5d | 2026-05-21 | 2026-05-27 | 73 | 0d |  |

| ID | WBS | Task | Duration | Start | Finish | Predecessors | Total slack | Free slack |
| --- | --- | --- | --- | --- | --- | --- | --- | --- |
| 75 | 1.4.9 | **Electrical** | 38d | 2026-03-30 | 2026-05-20 |  | 5d |  |
| 76 | 1.4.9.1 | Conduit, Wire | 3d | 2026-03-30 | 2026-04-01 | 52 | 5d | 0d |
| 77 | 1.4.9.2 | Light Installation | 15d | 2026-04-02 | 2026-04-22 | 76 | 5d | 0d |
| 78 | 1.4.9.3 | Gear & Riser Room Assembly | 12d | 2026-04-23 | 2026-05-08 | 77 | 5d | 0d |
| 79 | 1.4.9.4 | Wall Packs | 8d | 2026-05-11 | 2026-05-20 | 78 | 5d |  |
| 80 | 1.4.10 | **Plumbing** | 5d | 2026-05-18 | 2026-05-22 |  | 3d |  |
| 81 | 1.4.10.1 | Condensate Drain & Vents | 5d | 2026-05-18 | 2026-05-22 | 72 | 3d |  |
| 82 | 1.4.11 | **Openings** | 18d | 2026-03-23 | 2026-04-15 |  | 55d |  |
| 83 | 1.4.11.1 | HM Frames | 3d | 2026-03-23 | 2026-03-25 | 52SS+5d | 55d | 0d |
| 84 | 1.4.11.2 | HM Doors & Hardware | 3d | 2026-04-13 | 2026-04-15 | 53 | 77d |  |
| 85 | 1.4.12 | **Finish-Out** | 68d | 2026-03-26 | 2026-06-29 |  | 24d |  |
| 86 | 1.4.12.1 | Light Gauge Framing / Electrical, Riser | 5d | 2026-03-26 | 2026-04-01 | 83 | 83d | 27d |
| 87 | 1.4.12.2 | Drywall Assembly | 4d | 2026-05-11 | 2026-05-14 | 86, 78 | 56d |  |
| 88 | 1.4.12.3 | Seal Concrete in Corridors | 8d | 2026-06-18 | 2026-06-29 | 67, 70, 75 | 18d | 0d |
| 89 | 1.5 | **Post-Construction** | 9d | 2026-06-30 | 2026-07-10 |  | 4d |  |
| 90 | 1.5.1 | Final Clean-Up | 5d | 2026-06-30 | 2026-07-06 | 88 | 18d | 0d |
| 91 | 1.5.2 | Punch List - TBD - Proposed Date | 1d | 2026-07-07 | 2026-07-07 | 90 | 18d |  |
| 92 | 1.5.3 | Final Inspections | 3d | 2026-07-06 | 2026-07-08 | 57, 60, 63, 70, 75, 80 | 0d |  |
| 93 | 1.5.4 | CO/TCO | 1d | 2026-07-09 | 2026-07-09 | 92 | 0d |  |
| 94 | 1.5.5 | Substantial Completion | 1d | 2026-07-10 | 2026-07-10 | 93 | 0d |  |
| 96 | 2 | 15 Weather Days in Contract | 15d | 2026-07-13 | 2026-07-31 | 94 | 0d |  |
