# PS Willis - Preliminary Schedule - 01.05.26

Schedule from MS Project, 2025-09-25 to 2026-08-03, A marks actual dates.

## Calendars

- Standard: Mon-Fri 08:00-12:00, 13:00-17:00; Sat-Sun off.

## Schedule

| ID | WBS | Task | Duration | Start | Finish | Predecessors | Complete | Remaining | Total slack | Free slack | Constraint |
| --- | --- | --- | --- | --- | --- | --- | --- | --- | --- | --- | --- |
| 1 | 1 | **Public Storage Willis - TX 24198** | 223d | 2025-09-25 A | 2026-08-03 |  | 2% | 218.88d | 0d |  |  |
| 2 | 1.1 | **Pre-Construction** | 133d | 2025-09-25 A | 2026-03-30 |  | 60% | 53.2d | 90d |  |  |
| 3 | 1.1.1 | Contract Signed | 1d | 2025-09-25 A | 2025-09-25 A |  | 100% |  |  |  | start no earlier than 2025-09-25 |
| 4 | 1.1.2 | Building Permit | 1d | 2026-01-09 A | 2026-01-09 A |  | 100% |  |  |  | start no earlier than 2026-01-09 |
| 5 | 1.1.3 | Fire Tank Permit | 1d | 2026-03-30 | 2026-03-30 |  |  |  | 76d | 40d | start no earlier than 2026-03-30 |
| 6 | 1.1.4 | NTP - From PS | 1d | 2026-01-12 A | 2026-01-12 A |  | 100% |  |  |  | start no earlier than 2026-01-12 |
| 7 | 1.1.5 | Approval to go Vertical by AHJ | 1d | 2026-03-26 | 2026-03-26 | 23 |  |  | 92d |  |  |
| 8 | 1.2 | **Procurament** | 67d | 2026-03-11 | 2026-06-12 |  |  |  | 37d |  |  |
| 9 | 1.2.1 | Building Structure | 2d | 2026-03-11 | 2026-03-13 | 51SF-5d |  |  | 102d |  |  |
| 10 | 1.2.2 | Hallway System | 2d | 2026-06-10 | 2026-06-12 | 68SF-5d |  |  | 37d |  |  |
| 11 | 1.2.3 | Fire Tank Delivery | 1d | 2026-05-25 | 2026-05-25 |  |  |  | 36d | 0d | start no earlier than 2026-05-25 |
| 12 | 1.3 | **Site Work** | 102d | 2026-02-02 A | 2026-06-23 |  | 3% | 98.64d | 29d |  |  |
| 13 | 1.3.1 | **Earthwork** | 19d | 2026-02-02 A | 2026-02-26 |  | 18% | 15.65d | 0d |  |  |
| 14 | 1.3.1.1 | Erosion Control / BMPs | 3d | 2026-02-02 A | 2026-02-04 A | 6 | 100% |  |  |  | start no earlier than 2026-02-02 |
| 15 | 1.3.1.2 | Demolition & Haul Off - For Bldg Pad | 4d | 2026-02-09 | 2026-02-12 | 14 |  |  | 0d |  | start no earlier than 2026-02-09 |
| 16 | 1.3.1.3 | Grading / Cut & Fill | 5d | 2026-02-13 | 2026-02-19 | 15 |  |  | 0d |  |  |
| 17 | 1.3.1.4 | Bulding Pad Preparation | 5d | 2026-02-20 | 2026-02-26 | 16 |  |  | 0d |  |  |
| 18 | 1.3.2 | **Site Utilities** | 77d | 2026-02-13 | 2026-06-01 |  |  |  | 45d |  |  |
| 19 | 1.3.2.1 | Re-adjust existing storm | 3d | 2026-02-13 | 2026-02-17 | 15 |  |  | 119d |  |  |
| 20 | 1.3.2.2 | Storm Sewer | 5d | 2026-02-27 | 2026-03-05 | 17 |  |  | 73d | 0d |  |
| 21 | 1.3.2.3 | Sanitary Sewer | 6d | 2026-03-06 | 2026-03-13 | 20 |  |  | 73d | 0d |  |
| 22 | 1.3.2.4 | Water Line | 6d | 2026-03-16 | 2026-03-23 | 21 |  |  | 73d | 0d |  |
| 23 | 1.3.2.5 | Utility Approval by AHJ | 2d | 2026-03-24 | 2026-03-25 | 22 |  |  | 92d | 0d |  |
| 24 | 1.3.2.6 | **Fire Tank (By Others)** | 5d | 2026-05-26 | 2026-06-01 |  |  |  | 36d |  |  |
| 25 | 1.3.2.6.1 | Fire Tank Installation | 5d | 2026-05-26 | 2026-06-01 | 11, 5 |  |  | 36d | 0d |  |

| ID | WBS | Task | Duration | Start | Finish | Predecessors | Total slack | Free slack |
| --- | --- | --- | --- | --- | --- | --- | --- | --- |
| 26 | 1.3.3 | **Exterior Improvements** | 66d | 2026-03-24 | 2026-06-23 |  | 29d |  |
| 27 | 1.3.3.1 | **Site Paving** | 22d | 2026-03-24 | 2026-04-22 |  | 73d |  |
| 28 | 1.3.3.1.1 | Paving Subgrade Prep | 8d | 2026-03-24 | 2026-04-02 | 22 | 73d | 0d |
| 29 | 1.3.3.1.2 | Fire Lane Concrete Paving | 8d | 2026-04-03 | 2026-04-14 | 28 | 73d | 0d |
| 30 | 1.3.3.1.3 | Light Duty Concrete Paving | 6d | 2026-04-15 | 2026-04-22 | 29 | 73d |  |
| 31 | 1.3.3.2 | **Detention Pond Work** | 9d | 2026-04-03 | 2026-04-15 |  | 78d |  |
| 32 | 1.3.3.2.1 | Grading / Cut | 5d | 2026-04-03 | 2026-04-09 | 28 | 78d | 0d |
| 33 | 1.3.3.2.2 | Storm Sewer | 4d | 2026-04-10 | 2026-04-15 | 32 | 78d |  |
| 34 | 1.3.3.3 | **Landscape & Irrigation** | 11d | 2026-06-02 | 2026-06-16 |  | 29d |  |
| 35 | 1.3.3.3.1 | Irrigation Installation | 6d | 2026-06-02 | 2026-06-09 | 78 | 29d | 0d |
| 36 | 1.3.3.3.2 | Landscape Installation | 5d | 2026-06-10 | 2026-06-16 | 35 | 29d | 0d |
| 37 | 1.3.3.4 | **Gates & Fences** | 5d | 2026-06-17 | 2026-06-23 |  | 29d |  |
| 38 | 1.3.3.4.1 | Chain Link Fence | 3d | 2026-06-17 | 2026-06-19 | 36 | 29d | 0d |
| 39 | 1.3.3.4.2 | Double Swing Gate | 2d | 2026-06-22 | 2026-06-23 | 38 | 29d |  |
| 40 | 1.4 | **Building Work** | 107d | 2026-02-27 | 2026-07-27 |  | 0d |  |
| 41 | 1.4.1 | **SOG / Foundation** | 12d | 2026-02-27 | 2026-03-16 |  | 0d |  |
| 42 | 1.4.1.1 | Form Board | 1d | 2026-02-27 | 2026-02-27 | 17 | 0d |  |
| 43 | 1.4.1.2 | Plumbing UG Rough-In | 1d | 2026-03-02 | 2026-03-02 | 42 | 0d |  |
| 44 | 1.4.1.3 | Electrical UFER & Service | 1d | 2026-03-03 | 2026-03-03 | 43 | 0d |  |
| 45 | 1.4.1.4 | Grade Beam Excavation | 3d | 2026-03-04 | 2026-03-06 | 44 | 0d |  |
| 46 | 1.4.1.5 | Set Poly & Termite Control | 1d | 2026-03-09 | 2026-03-09 | 45 | 0d |  |
| 47 | 1.4.1.6 | Set Rebar for GB & SOG | 2d | 2026-03-10 | 2026-03-11 | 46 | 0d |  |
| 48 | 1.4.1.7 | Pour & Finish SOG | 2d | 2026-03-12 | 2026-03-13 | 47 | 0d |  |
| 49 | 1.4.1.8 | Joint Control Saw Cutting | 1d | 2026-03-16 | 2026-03-16 | 48 | 0d |  |

| ID | WBS | Task | Duration | Start | Finish | Predecessors | Total slack | Free slack |
| --- | --- | --- | --- | --- | --- | --- | --- | --- |
| 50 | 1.4.2 | **Steel Structure (Betco/Janus)** | 38d | 2026-03-20 | 2026-05-12 |  | 0d |  |
| 51 | 1.4.2.1 | Framing & Interior Partitions | 12d | 2026-03-20 | 2026-04-06 | 49FS+3d | 0d |  |
| 52 | 1.4.2.2 | Standing Seam Metal Roofing System | 10d | 2026-04-07 | 2026-04-20 | 51 | 0d |  |
| 53 | 1.4.2.3 | Exterior Wall Assembly | 10d | 2026-04-21 | 2026-05-04 | 52 | 59d | 0d |
| 54 | 1.4.2.4 | Gutter, Coping & Downpsouts | 6d | 2026-05-05 | 2026-05-12 | 53 | 59d |  |
| 55 | 1.4.3 | **Masonry** | 4d | 2026-05-05 | 2026-05-08 |  | 61d |  |
| 56 | 1.4.3.1 | Fire Pump Room | 4d | 2026-05-05 | 2026-05-08 | 53 | 61d |  |
| 57 | 1.4.4 | **Fire Sprinkler System** | 29d | 2026-04-28 | 2026-06-05 |  | 0d |  |
| 58 | 1.4.4.1 | Sprinkler Installation | 12d | 2026-04-28 | 2026-05-13 | 52FS+5d | 0d |  |
| 59 | 1.4.4.2 | Final Adjustment and Testing | 4d | 2026-06-02 | 2026-06-05 | 58, 25 | 36d |  |
| 60 | 1.4.5 | **Fire Alarm** | 19d | 2026-05-14 | 2026-06-09 |  | 24d |  |
| 61 | 1.4.5.1 | Fire Alarm Installation | 15d | 2026-05-14 | 2026-06-03 | 58 | 24d | 0d |
| 62 | 1.4.5.2 | Final Adjustment & Testing | 4d | 2026-06-04 | 2026-06-09 | 61 | 34d |  |
| 63 | 1.4.6 | **ERCCS - TBD subject to AHJ Review** | 17d | 2026-07-03 | 2026-07-27 |  | 0d |  |
| 64 | 1.4.6.1 | ERCCS Testing | 2d | 2026-07-03 | 2026-07-06 | 68, 83 | 0d |  |
| 65 | 1.4.6.2 | Submittal and Approval by AHJ | 10d | 2026-07-07 | 2026-07-20 | 64 | 0d |  |
| 66 | 1.4.6.3 | ERCCS Installation | 5d | 2026-07-21 | 2026-07-27 | 65 | 0d |  |
| 67 | 1.4.7 | **Hallway System (Betco/Janus)** | 15d | 2026-06-19 | 2026-07-09 |  | 0d |  |
| 68 | 1.4.7.1 | Hallway System & Roll Up Doors | 10d | 2026-06-19 | 2026-07-02 | 70, 75, 80 | 0d |  |
| 69 | 1.4.7.2 | Wire Mesh | 5d | 2026-07-03 | 2026-07-09 | 58, 61, 72, 68 | 3d |  |
| 70 | 1.4.8 | **Mechanical** | 26d | 2026-05-14 | 2026-06-18 |  | 0d |  |
| 71 | 1.4.8.1 | Line Sets & Rough In | 8d | 2026-05-14 | 2026-05-25 | 58 | 0d |  |
| 72 | 1.4.8.2 | AHUs & Duct Work | 10d | 2026-05-26 | 2026-06-08 | 71 | 0d |  |
| 73 | 1.4.8.3 | Dehumidifiers | 3d | 2026-06-09 | 2026-06-11 | 72 | 0d |  |
| 74 | 1.4.8.4 | Condensers & Final Connection | 5d | 2026-06-12 | 2026-06-18 | 73 | 0d |  |

| ID | WBS | Task | Duration | Start | Finish | Predecessors | Total slack | Free slack |
| --- | --- | --- | --- | --- | --- | --- | --- | --- |
| 75 | 1.4.9 | **Electrical** | 38d | 2026-04-21 | 2026-06-11 |  | 5d |  |
| 76 | 1.4.9.1 | Conduit, Wire | 3d | 2026-04-21 | 2026-04-23 | 52 | 5d | 0d |
| 77 | 1.4.9.2 | Light Installation | 15d | 2026-04-24 | 2026-05-14 | 76 | 5d | 0d |
| 78 | 1.4.9.3 | Gear & Riser Room Assembly | 12d | 2026-05-15 | 2026-06-01 | 77 | 5d | 0d |
| 79 | 1.4.9.4 | Wall Packs | 8d | 2026-06-02 | 2026-06-11 | 78 | 5d |  |
| 80 | 1.4.10 | **Plumbing** | 5d | 2026-06-09 | 2026-06-15 |  | 3d |  |
| 81 | 1.4.10.1 | Condensate Drain & Vents | 5d | 2026-06-09 | 2026-06-15 | 72 | 3d |  |
| 82 | 1.4.11 | **Openings (Betco/Janus)** | 18d | 2026-04-14 | 2026-05-07 |  | 55d |  |
| 83 | 1.4.11.1 | HM Frames | 3d | 2026-04-14 | 2026-04-16 | 52SS+5d | 55d | 0d |
| 84 | 1.4.11.2 | HM Doors & Hardware | 3d | 2026-05-05 | 2026-05-07 | 53 | 62d |  |
| 85 | 1.4.12 | **Finish-Out** | 68d | 2026-04-17 | 2026-07-21 |  | 9d |  |
| 86 | 1.4.12.1 | Light Gauge Framing / Electrical, Riser | 5d | 2026-04-17 | 2026-04-23 | 83 | 68d | 27d |
| 87 | 1.4.12.2 | Drywall Assembly | 4d | 2026-06-02 | 2026-06-05 | 86, 78 | 41d |  |
| 88 | 1.4.12.3 | Seal Concrete in Corridors | 8d | 2026-07-10 | 2026-07-21 | 67, 70, 75 | 3d | 0d |
| 89 | 1.5 | **Post-Construction** | 9d | 2026-07-22 | 2026-08-03 |  | 0d |  |
| 90 | 1.5.1 | Final Clean-Up | 5d | 2026-07-22 | 2026-07-28 | 88 | 3d | 0d |
| 91 | 1.5.2 | Punch List - TBD - Proposed Date | 1d | 2026-07-29 | 2026-07-29 | 90 | 3d |  |
| 92 | 1.5.3 | Final Inspections | 3d | 2026-07-28 | 2026-07-30 | 57, 60, 63, 70, 75, 80 | 0d |  |
| 93 | 1.5.4 | CO/TCO | 1d | 2026-07-31 | 2026-07-31 | 92 | 0d |  |
| 94 | 1.5.5 | Substantial Completion | 1d | 2026-08-03 | 2026-08-03 | 93 | 0d |  |
