# Four Corners - 102425

Schedule from MS Project, 2025-09-26 to 2026-11-20.

## Calendars

- Standard: Mon-Fri 08:00-12:00, 13:00-17:00; Sat-Sun off.

## Schedule

| ID | WBS | Task | Type | Duration | Start | Finish | Predecessors | Total slack | Free slack | Constraint |
| --- | --- | --- | --- | --- | --- | --- | --- | --- | --- | --- |
| 1 | 1 | **Four Corners** |  | 300d | 2025-09-26 | 2026-11-20 |  | 0d |  |  |
| 2 | 1.1 | **Land Acquisition** |  | 0d | 2025-10-07 | 2025-10-07 |  | 294d |  |  |
| 3 | 1.1.1 | Purchase Property | milestone | 0d | 2025-10-07 | 2025-10-07 |  | 294d |  | start no earlier than 2025-10-07 |
| 4 | 1.2 | **Design Documents** |  | 64d | 2025-09-26 | 2025-12-25 |  | 12d |  |  |
| 5 | 1.2.1 | **Civil** |  | 12d | 2025-09-26 | 2025-10-15 |  | 12d |  |  |
| 6 | 1.2.1.1 | 60% CDs - Civil | milestone | 0d | 2025-09-26 | 2025-09-26 |  | 300d |  | finish no earlier than 2025-09-26 |
| 7 | 1.2.1.2 | 90% CDs - Civil | milestone | 0d | 2025-10-15 | 2025-10-15 |  | 0d |  | start no earlier than 2025-10-15 |
| 8 | 1.2.2 | **Architecture** |  | 45d | 2025-10-24 | 2025-12-25 |  | 236d |  |  |
| 9 | 1.2.2.1 | Kick off Meeting - Architecture | milestone | 0d | 2025-10-24 | 2025-10-24 |  | 236d | 0d |  |
| 10 | 1.2.2.2 | 35% CDs - Architecture |  | 15d | 2025-10-24 | 2025-11-13 | 9 | 236d | 0d |  |
| 11 | 1.2.2.3 | 90% CDs - Architecture |  | 30d | 2025-11-14 | 2025-12-25 | 10 | 236d | 0d |  |
| 12 | 1.2.2.4 | 90% CDs - Architecture Complete | milestone | 0d | 2025-12-25 | 2025-12-25 | 11 | 236d |  |  |
| 13 | 1.3 | **Permitting** |  | 288d | 2025-10-15 | 2026-11-20 |  | 0d |  |  |
| 14 | 1.3.1 | **Lake County Site Plan Review** |  | 148d | 2025-10-15 | 2026-05-08 |  | 0d |  |  |
| 15 | 1.3.1.1 | 1st Submittal/Sufficency Review |  | 18d | 2025-10-15 | 2025-11-07 | 7 | 0d |  |  |
| 16 | 1.3.1.2 | 1st Review |  | 30d | 2025-11-10 | 2025-12-19 | 15 | 0d |  |  |
| 17 | 1.3.1.3 | 1st Round Plan Revisions |  | 20d | 2025-12-22 | 2026-01-16 | 16 | 0d |  |  |
| 18 | 1.3.1.4 | 2nd Submittal | milestone | 0d | 2026-01-16 | 2026-01-16 | 17 | 0d |  |  |
| 19 | 1.3.1.5 | 2nd Review |  | 30d | 2026-01-19 | 2026-02-27 | 18 | 0d |  |  |
| 20 | 1.3.1.6 | 2nd Round Plan Revisions |  | 15d | 2026-03-02 | 2026-03-20 | 19 | 0d |  |  |
| 21 | 1.3.1.7 | 3rd Submittal | milestone | 0d | 2026-03-20 | 2026-03-20 | 20 | 0d |  |  |
| 22 | 1.3.1.8 | 3rd Review & Approval |  | 20d | 2026-03-23 | 2026-04-17 | 21 | 0d |  |  |
| 23 | 1.3.1.9 | Site Placard Issued |  | 15d | 2026-04-20 | 2026-05-08 | 22 | 140d |  |  |
| 24 | 1.3.2 | **SWFWMD Storm Water Review** |  | 75d | 2025-10-15 | 2026-01-27 |  | 213d |  |  |
| 25 | 1.3.2.1 | 1st Submittal |  | 5d | 2025-10-15 | 2025-10-21 | 7 | 213d | 0d |  |
| 26 | 1.3.2.2 | 1st Review |  | 30d | 2025-10-22 | 2025-12-02 | 25 | 213d | 0d |  |
| 27 | 1.3.2.3 | 1st Round Plan Revisions |  | 15d | 2025-12-03 | 2025-12-23 | 26 | 213d | 0d |  |
| 28 | 1.3.2.4 | 2nd Review / Approval |  | 25d | 2025-12-24 | 2026-01-27 | 27 | 213d |  |  |

| ID | WBS | Task | Type | Duration | Start | Finish | Predecessors | Total slack | Free slack |
| --- | --- | --- | --- | --- | --- | --- | --- | --- | --- |
| 29 | 1.3.3 | **Building Permit** |  | 155d | 2026-04-20 | 2026-11-20 |  | 0d |  |
| 30 | 1.3.3.1 | Building Permit Review - 1st Round |  | 45d | 2026-04-20 | 2026-06-19 | 22 | 0d |  |
| 31 | 1.3.3.2 | Revise Plans per AHJ & Peer Review Comments |  | 10d | 2026-06-22 | 2026-07-03 | 30 | 0d |  |
| 32 | 1.3.3.3 | Building Permit Review - 2nd Round |  | 45d | 2026-07-06 | 2026-09-04 | 31 | 0d |  |
| 33 | 1.3.3.4 | Revise Plans per AHJ Comments |  | 10d | 2026-09-07 | 2026-09-18 | 32 | 0d |  |
| 34 | 1.3.3.5 | Building Permit Review - 3rd Round |  | 45d | 2026-09-21 | 2026-11-20 | 33 | 0d |  |
| 35 | 1.3.3.6 | Building Permit Approval | milestone | 0d | 2026-11-20 | 2026-11-20 | 34 | 0d |  |
| 36 | 1.3.4 | **GC Selection Process** |  | 61d | 2026-07-06 | 2026-09-28 |  | 39d |  |
| 37 | 1.3.4.1 | Compile Bid Set |  | 1d | 2026-07-06 | 2026-07-06 | 31 | 39d | 0d |
| 38 | 1.3.4.2 | Issue RFP |  | 1w | 2026-07-07 | 2026-07-13 | 37 | 39d | 0d |
| 39 | 1.3.4.3 | GC Bid Period |  | 4w | 2026-07-14 | 2026-08-10 | 38 | 39d | 0d |
| 40 | 1.3.4.4 | Bid Walk | milestone | 0d | 2026-08-10 | 2026-08-10 | 39 | 39d | 0d |
| 41 | 1.3.4.5 | Compile REIC 3 Package |  | 2w | 2026-08-11 | 2026-08-24 | 40 | 39d | 0d |
| 42 | 1.3.4.6 | REIC 3 Memo Approval |  | 5d | 2026-08-25 | 2026-08-31 | 41 | 39d | 0d |
| 43 | 1.3.4.7 | eBuilder Budget Approval |  | 10d | 2026-09-01 | 2026-09-14 | 42 | 39d | 0d |
| 44 | 1.3.4.8 | GC Contract Issuance |  | 2w | 2026-09-15 | 2026-09-28 | 43 | 39d |  |
