# Johnson Dev. Hawiian Park Self Storage

Schedule from MS Project XML, 2025-09-08 to 2026-11-06.

## Calendars

- Standard: Mon-Fri 08:00-12:00, 13:00-17:00; Sat-Sun off. Exceptions (off unless hours are given): 2025-11-27 to 2025-11-28, 2025-12-25 to 2025-12-26, 2026-01-01, 2026-02-16, 2026-05-25, 2026-07-03 to 2026-07-06, 2026-09-07.

## Schedule

| ID | WBS | Task | Type | Duration | Start | Finish | Predecessors | Total slack | Free slack | Constraint |
| --- | --- | --- | --- | --- | --- | --- | --- | --- | --- | --- |
| 1 | 1 | **Grading & Building Slab Construction** |  | 295d | 2025-09-08 | 2026-11-06 |  | 0d |  |  |
| 2 | 1.1 | Commencement Date 9/8/2025 |  | 1d | 2025-09-08 | 2025-09-08 |  | 0d |  | start no earlier than 2025-09-08 |
| 3 | 1.2 | HBI Mobilization |  | 8d | 2025-09-09 | 2025-09-18 | 2 | 0d |  |  |
| 4 | 1.3 | Install Temp Fencing & BMP's |  | 3d | 2025-09-19 | 2025-09-23 | 3 | 0d |  |  |
| 5 | 1.4 | Identify & Cap Existing Utilities to Limits |  | 3d | 2025-09-19 | 2025-09-23 | 3 | 7d |  |  |
| 6 | 1.5 | Install Fire line Modifications |  | 7d | 2025-09-24 | 2025-10-02 | 4 | 0d |  |  |
| 7 | 1.6 | Surface Demo Existing Phase II areas |  | 12d | 2025-10-03 | 2025-10-20 | 5, 6 | 0d |  |  |
| 8 | 1.7 | O/X & Grading for Bldg pad |  | 12d | 2025-10-21 | 2025-11-05 | 3, 6, 7 | 0d |  |  |
| 9 | 1.8 | Certify Pad / Pad Delivery Date |  | 2d | 2025-11-06 | 2025-11-07 | 8 | 0d |  |  |
| 10 | 1.9 | Building Permit required | milestone | 0d | 2025-11-07 | 2025-11-07 | 9 | 250d |  |  |
| 11 | 1.10 | Underslab Electrical & Plumbing |  | 6d | 2025-11-10 | 2025-11-17 | 9 | 0d |  |  |
| 12 | 1.11 | Building Foundations & Pre-lim CMU/Forms |  | 10d | 2025-11-10 | 2025-11-21 | 11SS | 0d |  |  |
| 13 | 1.12 | Elevator Pit Form & Pour |  | 10d | 2025-11-10 | 2025-11-21 | 9 | 3d |  |  |
| 14 | 1.13 | Slab Base Material Import & Grading |  | 5d | 2025-11-24 | 2025-12-02 | 12, 13FS-3d | 0d |  |  |
| 15 | 1.14 | Slab Vapor Barrier & Reinforcing |  | 10d | 2025-12-01 | 2025-12-12 | 14FS-2d | 0d |  |  |
| 16 | 1.15 | Slab on Grade Pour North |  | 4d | 2025-12-09 | 2025-12-12 | 15FS-4d | 0d |  |  |
| 17 | 1.16 | Slab on Grade Pour South |  | 4d | 2025-12-15 | 2025-12-18 | 15, 16 | 11d |  |  |
| 18 | 1.17 | **Site Wet Utilities** |  | 21d | 2025-11-10 | 2025-12-10 |  | 181d |  |  |
| 19 | 1.17.1 | Storm Drain Piping & Catch Basins from Phase 1 Stubs |  | 6d | 2025-11-10 | 2025-11-17 | 9 | 181d | 0d |  |
| 20 | 1.17.2 | Extend Sewer Laterals to building |  | 5d | 2025-11-18 | 2025-11-24 | 19 | 181d | 0d |  |
| 21 | 1.17.3 | Extend Fire / Domestic Water Service to Building |  | 10d | 2025-11-25 | 2025-12-10 | 20 | 181d | 0d |  |
| 22 | 1.17.4 | Domestic & Fire Water Services Completion | milestone | 0d | 2025-12-10 | 2025-12-10 | 21 | 181d | 0d |  |
| 23 | 1.18 | **Site Dry Utilities** |  | 8d | 2025-11-18 | 2025-12-01 |  | 236d |  |  |
| 24 | 1.18.1 | Extend Power & Lov Voltage conduits to Bldg from Stubs |  | 5d | 2025-11-18 | 2025-11-24 | 19 | 236d | 0d |  |
| 25 | 1.18.2 | Install Generac & Site lighting Conduits |  | 3d | 2025-11-25 | 2025-12-01 | 24 | 236d |  |  |

| ID | WBS | Task | Type | Duration | Start | Finish | Predecessors | Total slack | Free slack |
| --- | --- | --- | --- | --- | --- | --- | --- | --- | --- |
| 26 | 1.19 | **Onsite improvements For Early Base Pave** |  | 22d | 2025-12-11 | 2026-01-14 |  | 181d |  |
| 27 | 1.19.1 | Grade for Curb & Gutter |  | 4d | 2025-12-11 | 2025-12-16 | 22 | 181d | 0d |
| 28 | 1.19.2 | Install Irrigation Sleeves |  | 1d | 2025-12-17 | 2025-12-17 | 27 | 181d | 0d |
| 29 | 1.19.3 | Place Curb & Gutter |  | 4d | 2025-12-18 | 2025-12-23 | 27, 28 | 181d | 0d |
| 30 | 1.19.4 | Grade & Pour Walks |  | 5d | 2025-12-22 | 2025-12-30 | 29FS-2d | 181d | 0d |
| 31 | 1.19.5 | Agg Base Import & AC Base Paving |  | 10d | 2025-12-31 | 2026-01-14 | 30 | 181d |  |
| 32 | 1.20 | **Vertical Building Construction** |  | 211d | 2025-12-15 | 2026-10-15 |  | 0d |  |
| 33 | 1.20.1 | CMU Walls to 14'-8" North |  | 15d | 2025-12-15 | 2026-01-07 | 16 | 0d |  |
| 34 | 1.20.2 | CMU Walls to 14'-8" South |  | 15d | 2026-01-08 | 2026-01-28 | 17, 33 | 0d |  |
| 35 | 1.20.3 | Structural Steel Framing & Metal Deck to 2nd floor N. |  | 7d | 2026-01-08 | 2026-01-16 | 33 | 1d | 0d |
| 36 | 1.20.4 | Structural Steel Framing & Metal Deck to 2nd floor S. |  | 7d | 2026-01-23 | 2026-02-02 | 35, 34FS-4d | 0d |  |
| 37 | 1.20.5 | Rebar, Hangars & Deck2 Pour North |  | 7d | 2026-01-19 | 2026-01-27 | 35 | 1d | 0d |
| 38 | 1.20.6 | Rebar, Hangars & Deck2 Pour South |  | 7d | 2026-02-03 | 2026-02-11 | 36 | 0d |  |
| 39 | 1.20.7 | CMU Walls to 25'-4" North |  | 10d | 2026-01-29 | 2026-02-11 | 37, 34 | 0d |  |
| 40 | 1.20.8 | CMU Walls to 25'-4" South |  | 10d | 2026-02-12 | 2026-02-26 | 39, 17, 38 | 0d |  |
| 41 | 1.20.9 | 2nd floor Shear walls North @ 15k/week |  | 12d | 2026-01-29 | 2026-02-13 | 39SS | 0d |  |
| 42 | 1.20.10 | 3rd Floor Decking North @ 5k/day |  | 7d | 2026-02-10 | 2026-02-19 | 41FS-4d | 0d |  |
| 43 | 1.20.11 | Rebar, Hangars & Deck Pour3 North |  | 5d | 2026-02-20 | 2026-02-26 | 42 | 0d |  |
| 44 | 1.20.12 | 2nd floor Shear walls South @ 15k/week |  | 12d | 2026-02-12 | 2026-03-02 | 40SS | 0d |  |
| 45 | 1.20.13 | 3rd Floor Decking South@ 5k/day |  | 7d | 2026-02-26 | 2026-03-06 | 44FS-3d | 0d |  |
| 46 | 1.20.14 | Rebar, Hangars & Deck3 Pour South |  | 5d | 2026-03-09 | 2026-03-13 | 45 | 0d |  |
| 47 | 1.20.15 | CMU Walls to 36' North |  | 10d | 2026-02-27 | 2026-03-12 | 43, 40 | 0d |  |
| 48 | 1.20.16 | CMU Walls to 36' South |  | 10d | 2026-03-16 | 2026-03-27 | 47, 46 | 0d |  |
| 49 | 1.20.17 | 3rd floor Shear walls North @ 15k/week |  | 12d | 2026-02-27 | 2026-03-16 | 47SS | 1d |  |
| 50 | 1.20.18 | 4th Floor Decking North @ 5k/day |  | 7d | 2026-03-13 | 2026-03-23 | 49FS-3d, 47 | 0d |  |
| 51 | 1.20.19 | Rebar, Hangars & Deck Pour4 North |  | 5d | 2026-03-24 | 2026-03-30 | 50 | 0d |  |
| 52 | 1.20.20 | 3rd floor Shear walls South @ 15k/week |  | 12d | 2026-03-16 | 2026-03-31 | 48SS | 0d |  |
| 53 | 1.20.21 | 4th Floor Decking South@ 5k/day |  | 7d | 2026-03-27 | 2026-04-06 | 52FS-3d | 0d |  |
| 54 | 1.20.22 | Rebar, Hangars & Deck4 Pour South |  | 5d | 2026-04-07 | 2026-04-13 | 53 | 0d |  |
| 55 | 1.20.23 | CMU Walls to 46'-8" North |  | 10d | 2026-03-31 | 2026-04-13 | 51, 48 | 0d |  |
| 56 | 1.20.24 | CMU Walls to 46'-8" South |  | 10d | 2026-04-14 | 2026-04-27 | 55, 54 | 0d |  |
| 57 | 1.20.25 | 4th floor Shear walls North @ 15k/week |  | 12d | 2026-03-31 | 2026-04-15 | 55SS | 0d |  |
| 58 | 1.20.26 | 5th Floor Decking North @ 5k/day |  | 7d | 2026-04-13 | 2026-04-21 | 57FS-3d | 0d |  |
| 59 | 1.20.27 | Rebar, Hangars & Deck Pour5 North |  | 5d | 2026-04-22 | 2026-04-28 | 58 | 0d |  |
| 60 | 1.20.28 | 4th floor Shear walls South @ 15k/week |  | 12d | 2026-04-14 | 2026-04-29 | 56SS | 0d |  |
| 61 | 1.20.29 | 5th Floor Decking South@ 5k/day |  | 7d | 2026-04-27 | 2026-05-05 | 60FS-3d | 0d |  |
| 62 | 1.20.30 | Rebar, Hangars & Deck5 Pour South |  | 7d | 2026-05-06 | 2026-05-14 | 61 | 0d |  |
| 63 | 1.20.31 | CMU Walls to 57'-4" North |  | 10d | 2026-04-29 | 2026-05-12 | 51, 59, 56 | 0d |  |
| 64 | 1.20.32 | CMU Walls to 57'-4" South |  | 10d | 2026-05-15 | 2026-05-29 | 63, 54, 62 | 0d |  |
| 65 | 1.20.33 | 5th floor Shear walls North @ 15k/week |  | 14d | 2026-04-29 | 2026-05-18 | 63SS | 0d |  |
| 66 | 1.20.34 | Roof Equipment Structural |  | 3d | 2026-05-14 | 2026-05-18 | 65FF | 0d |  |
| 67 | 1.20.35 | Roof Decking North @ 5k/day |  | 7d | 2026-05-19 | 2026-05-28 | 65FS-3d, 66 | 0d |  |
| 68 | 1.20.36 | Roof Drains, Screens & Curbs |  | 10d | 2026-05-29 | 2026-06-11 | 67 | 0d |  |
| 69 | 1.20.37 | 5th floor Shear walls South @ 15k/week |  | 12d | 2026-05-15 | 2026-06-02 | 64SS | 0d |  |
| 70 | 1.20.38 | Roof Equipment Structural |  | 3d | 2026-05-29 | 2026-06-02 | 69FF | 0d |  |
| 71 | 1.20.39 | Roof Decking South@ 5k/day |  | 7d | 2026-06-03 | 2026-06-11 | 69FS-3d, 70 | 0d |  |
| 72 | 1.20.40 | Roof insulation Crickets & TPO |  | 7d | 2026-06-12 | 2026-06-22 | 71, 68 | 0d |  |
| 73 | 1.20.41 | Building Temporarily Water Tight | milestone | 0d | 2026-06-22 | 2026-06-22 | 72 | 0d |  |
| 74 | 1.20.42 | Set rooftop Equipment & hook up |  | 3d | 2026-06-23 | 2026-06-25 | 72 | 36d | 17d |
| 75 | 1.20.43 | Elevator Construction Car #1 |  | 20d | 2026-06-23 | 2026-07-22 | 73 | 0d |  |
| 76 | 1.20.44 | CMU infill @ Elevator Openings |  | 10d | 2026-07-09 | 2026-07-22 | 75FS-10d | 60d | 58d |
| 77 | 1.20.45 | Elevator Construction Car #2 |  | 20d | 2026-07-23 | 2026-08-19 | 75 | 0d |  |
| 78 | 1.20.46 | CMU infill @ Elevator Openings |  | 10d | 2026-08-06 | 2026-08-19 | 77FS-10d | 40d | 38d |
| 79 | 1.20.47 | Elevator Construction Car #3 |  | 20d | 2026-08-20 | 2026-09-17 | 77 | 0d |  |
| 80 | 1.20.48 | CMU infill @ Elevator Openings |  | 10d | 2026-09-03 | 2026-09-17 | 79FS-10d | 0d |  |
| 81 | 1.20.49 | State Elevator inspection Lead Time & Approval |  | 20d | 2026-09-18 | 2026-10-15 | 80 | 0d |  |
| 82 | 1.20.50 | Remove Man Lift |  | 2d | 2026-09-18 | 2026-09-21 | 81SS | 4d | 0d |
| 83 | 1.20.51 | Infill Framing @ Manlift Landings |  | 7d | 2026-09-21 | 2026-09-29 | 82FS-1d | 4d | 0d |
| 84 | 1.20.52 | Sheathing Lift Leave Out Area |  | 5d | 2026-09-28 | 2026-10-02 | 83FS-2d | 4d | 0d |
| 85 | 1.20.53 | Finishes @ Infilled Landings |  | 5d | 2026-10-05 | 2026-10-09 | 84 | 4d |  |

| ID | WBS | Task | Type | Duration | Start | Finish | Predecessors | Total slack | Free slack |
| --- | --- | --- | --- | --- | --- | --- | --- | --- | --- |
| 86 | 1.21 | **Building Interior** |  | 194d | 2026-01-28 | 2026-11-02 |  | 4d |  |
| 87 | 1.21.1 | Layout & Install Overhead Hangars 1st fl |  | 2d | 2026-01-28 | 2026-01-29 | 37 | 5d | 0d |
| 88 | 1.21.2 | Spray Applied Fireproofing - 1st Floor |  | 10d | 2026-01-30 | 2026-02-12 | 87 | 5d | 0d |
| 89 | 1.21.3 | Overhead P, M, & E 1st fl |  | 15d | 2026-02-10 | 2026-03-03 | 87, 88FS-3d | 5d | 0d |
| 90 | 1.21.4 | Unit Partitions / Hallway System & Doors 1st floor |  | 25d | 2026-02-25 | 2026-03-31 | 88, 89FS-5d | 5d | 0d |
| 91 | 1.21.5 | Finish Electrical 1st Fl |  | 10d | 2026-04-01 | 2026-04-14 | 90, 89 | 109d | 0d |
| 92 | 1.21.6 | Instal Generator and Related Systems |  | 35d | 2026-04-15 | 2026-06-03 | 91 | 109d |  |
| 93 | 1.21.7 | Overhead M/E/P 2nd Fl |  | 15d | 2026-03-16 | 2026-04-03 | 89, 46 | 2d | 0d |
| 94 | 1.21.8 | Unit Partitions / Hallway System & Doors 2nd Floor |  | 20d | 2026-04-06 | 2026-05-01 | 90, 93 | 2d | 0d |
| 95 | 1.21.9 | Finish Electrical 2nd Fl |  | 10d | 2026-05-04 | 2026-05-15 | 94, 93 | 121d |  |
| 96 | 1.21.10 | Overhead M/E/P 3rd Fl |  | 15d | 2026-04-06 | 2026-04-24 | 51, 93 | 17d | 2d |
| 97 | 1.21.11 | Unit partitions /Hallway System & Doors 3rd Floor |  | 20d | 2026-05-04 | 2026-06-01 | 94 | 2d | 0d |
| 98 | 1.21.12 | Finish Electrical 3rd Fl |  | 10d | 2026-06-02 | 2026-06-15 | 97, 96 | 101d |  |
| 99 | 1.21.13 | Overhead M/E/P 4th Fl |  | 15d | 2026-04-29 | 2026-05-19 | 59, 96 | 15d | 6d |
| 100 | 1.21.14 | Unit Partitions /Hallway System & Doors 4th Floor |  | 20d | 2026-06-02 | 2026-06-29 | 97 | 2d | 0d |
| 101 | 1.21.15 | Finish Electrical 4th Fl |  | 5d | 2026-06-30 | 2026-07-08 | 100, 99 | 86d |  |
| 102 | 1.21.16 | Overhead M/E/P 5th Fl |  | 15d | 2026-05-29 | 2026-06-18 | 67, 99 | 9d | 7d |
| 103 | 1.21.17 | Unit Partitions & Hallway System & Doors 5th Floor |  | 20d | 2026-06-30 | 2026-07-29 | 102, 100 | 2d | 0d |
| 104 | 1.21.18 | Hallway Systems after Scaffold Removal |  | 5d | 2026-07-30 | 2026-08-05 | 103 | 66d |  |
| 105 | 1.21.19 | Finish Electrical 5th Fl & Roof Equipment |  | 11d | 2026-07-23 | 2026-08-06 | 103FS-5d, 74, 102 | 19d | 17d |
| 106 | 1.21.20 | Overhead Doors, Liner & Demising Panels Comp. | milestone | 0d | 2026-07-29 | 2026-07-29 | 103 | 2d | 0d |
| 107 | 1.21.21 | Elev. Lobby Framing |  | 5d | 2026-07-30 | 2026-08-05 | 106 | 2d | 0d |
| 108 | 1.21.22 | Elev. Lobby M/E/P Rough in |  | 5d | 2026-08-04 | 2026-08-10 | 107FS-2d | 2d | 0d |
| 109 | 1.21.23 | Elev. Lobby Drywall |  | 10d | 2026-08-11 | 2026-08-24 | 108 | 2d | 0d |
| 110 | 1.21.24 | Install HM Doors & Hardware |  | 5d | 2026-08-25 | 2026-08-31 | 109 | 2d | 0d |
| 111 | 1.21.25 | Lobby Fixtures & Finishes |  | 10d | 2026-08-25 | 2026-09-08 | 109 | 41d |  |
| 112 | 1.21.26 | Finish Painting in Storage areas |  | 10d | 2026-09-01 | 2026-09-15 | 105, 110 | 2d | 0d |
| 113 | 1.21.27 | Building Signage per plan |  | 5d | 2026-09-16 | 2026-09-22 | 112 | 2d | 0d |
| 114 | 1.21.28 | Final Clean up & Seal floors |  | 20d | 2026-09-23 | 2026-10-20 | 112, 113, 80FS-15d, 78FS-15d, 76FS-15d | 2d | 0d |
| 115 | 1.21.29 | Owner Arch. Punch list & Completion |  | 14d | 2026-10-14 | 2026-11-02 | 114FS-5d, 130 | 2d |  |

| ID | WBS | Task | Type | Duration | Start | Finish | Predecessors | Total slack | Free slack | Constraint |
| --- | --- | --- | --- | --- | --- | --- | --- | --- | --- | --- |
| 116 | 1.22 | **Building Exterior** |  | 76d | 2026-06-01 | 2026-09-17 |  | 0d |  |  |
| 117 | 1.22.1 | Install Scaffolding at Building Perimeter |  | 3d | 2026-06-01 | 2026-06-03 | 64 | 0d |  |  |
| 118 | 1.22.2 | Exterior Metal Frame Sheathing & WRB @ Tower |  | 10d | 2026-06-04 | 2026-06-17 | 117 | 64d | 0d |  |
| 119 | 1.22.3 | Metal Panel Siding @ Tower |  | 5d | 2026-06-18 | 2026-06-24 | 118 | 64d | 0d |  |
| 120 | 1.22.4 | Storefront/Curtainwall |  | 5d | 2026-06-25 | 2026-07-01 | 119 | 64d | 0d |  |
| 121 | 1.22.5 | Glass Lead Time |  | 10d | 2026-07-02 | 2026-07-17 | 120 | 64d | 0d |  |
| 122 | 1.22.6 | Install Glass |  | 5d | 2026-07-20 | 2026-07-24 | 121 | 64d | 28d |  |
| 123 | 1.22.7 | Install Auto Sliders & Mapes Canopy |  | 10d | 2026-09-03 | 2026-09-17 | 120, 126, 122 | 36d |  |  |
| 124 | 1.22.8 | EIFS WRB, Foam/Brown & Finish |  | 50d | 2026-06-04 | 2026-08-14 | 117 | 0d |  |  |
| 125 | 1.22.9 | Exterior Sheet metal, Sealants, & Painting |  | 10d | 2026-08-17 | 2026-08-28 | 124 | 0d |  |  |
| 126 | 1.22.10 | Remove Scaffolding |  | 3d | 2026-08-31 | 2026-09-02 | 125 | 0d |  |  |
| 127 | 1.23 | **Onsite improvements** |  | 26d | 2026-09-03 | 2026-10-09 |  | 0d |  |  |
| 128 | 1.23.1 | Grade & Pour Walks |  | 5d | 2026-09-03 | 2026-09-10 | 126 | 0d |  |  |
| 129 | 1.23.2 | Site Fencing & Gates |  | 5d | 2026-09-11 | 2026-09-17 | 128 | 0d |  |  |
| 130 | 1.23.3 | Landscape Irrigation and Planting |  | 10d | 2026-09-18 | 2026-10-01 | 128, 30, 31FF, 129 | 0d |  |  |
| 131 | 1.23.4 | Striping & Signage |  | 3d | 2026-09-30 | 2026-10-02 | 130FS-2d | 0d |  |  |
| 132 | 1.23.5 | Owner Civil Punch list & Completion |  | 5d | 2026-10-05 | 2026-10-09 | 131 | 0d |  |  |
| 133 | 1.24 | **Accumulative Inspections & C of O** |  | 20d | 2026-10-12 | 2026-11-06 |  | 0d |  |  |
| 134 | 1.24.1 | Final Grading Inspections |  | 2d | 2026-10-12 | 2026-10-13 | 132 | 0d |  |  |
| 135 | 1.24.2 | Final Public Works Inspections |  | 2d | 2026-10-14 | 2026-10-15 | 134 | 0d |  |  |
| 136 | 1.24.3 | Life Safety Inspection |  | 2d | 2026-10-16 | 2026-10-19 | 81 | 0d |  |  |
| 137 | 1.24.4 | MEP Final Inspections |  | 2d | 2026-10-16 | 2026-10-19 | 81 | 0d |  |  |
| 138 | 1.24.5 | Final Planning & Zoning Inspection |  | 2d | 2026-10-16 | 2026-10-19 | 85, 135 | 0d |  |  |
| 139 | 1.24.6 | Building Final Inspection |  | 2d | 2026-10-20 | 2026-10-21 | 136, 137, 134, 135, 138 | 0d |  |  |
| 140 | 1.24.7 | Rain Days Included |  | 10d | 2026-10-22 | 2026-11-04 | 139 | 0d |  |  |
| 141 | 1.24.8 | Certificate Of Occupancy |  | 2d | 2026-11-05 | 2026-11-06 | 131, 111, 77, 81, 139, 132, 79, 138, 115, 140 | 0d |  |  |
| 142 | 1.24.9 | Open Date | milestone | 0d | 2026-11-06 | 2026-11-06 | 141 | 0d |  | start no earlier than 2022-06-25 |
