# Johnson Dev. Hawiian Park Self Storage

Schedule from MS Project, 2025-09-08 to 2027-01-11, A marks actual dates.

## Calendars

- Standard: Mon-Fri 08:00-12:00, 13:00-17:00; Sat-Sun off. Exceptions (off unless hours are given): 2025-11-27 to 2025-11-28, 2025-12-25 to 2025-12-26, 2026-01-01, 2026-02-16, 2026-05-25, 2026-07-03 to 2026-07-06, 2026-09-07, 2026-11-26 to 2026-11-27, 2026-12-24 to 2026-12-25, 2027-01-01.

## Schedule

| ID | WBS | Task | Type | Duration | Start | Finish | Predecessors | Complete | Remaining | Total slack | Free slack | Constraint |
| --- | --- | --- | --- | --- | --- | --- | --- | --- | --- | --- | --- | --- |
| 1 | 1 | **Grading & Building Slab Construction** |  | 336d | 2025-09-08 A | 2027-01-11 |  | 8% | 307.88d | 0d |  |  |
| 2 | 1.1 | Commencement Date 9/8/2025 |  | 1d | 2025-09-08 A | 2025-09-08 A |  | 100% |  |  |  | start no earlier than 2025-09-08 |
| 3 | 1.2 | HBI Mobilization |  | 8d | 2025-09-09 A | 2025-09-18 A | 2 | 100% |  |  |  |  |
| 4 | 1.3 | Install Temp Fencing & BMP's |  | 3d | 2025-09-19 A | 2025-09-23 A | 3 | 100% |  |  |  |  |
| 5 | 1.4 | Move Existing Rolling Gate |  | 5d | 2025-09-22 A | 2025-09-26 A | 4FS-2d | 100% |  |  |  |  |
| 6 | 1.5 | Surface Demo Existing Phase II areas |  | 16d | 2025-09-29 A | 2025-10-20 A | 5 | 100% |  |  |  |  |
| 7 | 1.6 | AQMD Notification for Transite Fire Water |  | 10d | 2025-10-16 A | 2025-10-29 A |  | 100% |  |  |  | start no earlier than 2025-10-16 |
| 8 | 1.7 | Identify & Cap Existing Utilities to Limits |  | 3d | 2025-10-16 A | 2025-10-20 A | 6FS-3d | 100% |  |  |  |  |
| 9 | 1.8 | Abate Fire Water Lines per Change Order #2 |  | 5d | 2025-10-30 A | 2025-11-05 A | 7 | 100% |  |  |  |  |
| 10 | 1.9 | Grading Permit Needed | milestone | 0d | 2025-10-20 A | 2025-10-20 A | 6 | 100% |  |  |  |  |
| 11 | 1.10 | Grading Permit Delay - Actual |  | 17d | 2025-10-21 A | 2025-11-12 A | 10 | 100% |  |  |  |  |
| 12 | 1.11 | Pre-Grade Meeting w/ City |  | 1d | 2025-11-13 A | 2025-11-13 A | 10, 11 | 100% |  |  |  |  |
| 13 | 1.12 | Rain and Mud Delay - Taken from item 147 below |  | 6d | 2025-11-14 A | 2025-11-21 A | 12 | 100% |  |  |  |  |
| 14 | 1.13 | O/X & Grading for Bldg pad |  | 8d | 2025-11-24 A | 2025-12-05 A | 3, 6, 9, 12, 13 | 100% |  |  |  |  |
| 15 | 1.14 | Certify Pad / Pad Delivery Date |  | 2d | 2025-12-08 A | 2025-12-09 A | 14 | 100% |  |  |  |  |
| 16 | 1.15 | Building Permit required | milestone | 0d | 2025-12-09 A | 2025-12-09 A | 15 | 100% |  |  |  |  |
| 17 | 1.16 | Building Permit Delay |  | 13d | 2025-12-10 A | 2025-12-30 A | 16 | 100% |  |  |  |  |
| 18 | 1.17 | Building Permit Received 12.30.25 | milestone | 0d | 2025-12-30 A | 2025-12-30 A | 17 | 100% |  |  |  | start no earlier than 2025-12-30 |
| 19 | 1.18 | Rain Delay 1/2-1.9/9 Inc. Pad Dry Out - Part from task 147 |  | 6d | 2026-01-02 A | 2026-01-09 | 18FS+1d | 50% | 3d | 0d |  |  |
| 20 | 1.19 | Install Fire line Modifications |  | 7d | 2026-01-12 | 2026-01-20 | 18, 19 |  |  | 19d | 0d |  |
| 21 | 1.20 | Underslab Electrical & Plumbing |  | 6d | 2026-01-12 | 2026-01-19 | 18, 19 |  |  | 245d |  |  |
| 22 | 1.21 | Building Foundations & Pre-lim CMU/Forms |  | 10d | 2026-01-12 | 2026-01-23 | 18, 19 |  |  | 0d |  |  |
| 23 | 1.22 | Elevator Pit Form & Pour |  | 10d | 2026-01-26 | 2026-02-06 | 22 |  |  | 0d |  |  |
| 24 | 1.23 | Slab Base Material Import & Grading |  | 5d | 2026-02-04 | 2026-02-10 | 22, 23FS-3d |  |  | 0d |  |  |
| 25 | 1.24 | Slab Vapor Barrier & Reinforcing |  | 10d | 2026-02-09 | 2026-02-23 | 24FS-2d |  |  | 0d |  |  |
| 26 | 1.25 | Slab on Grade Pour North |  | 4d | 2026-02-18 | 2026-02-23 | 25FS-4d, 20 |  |  | 0d |  |  |
| 27 | 1.26 | Slab on Grade Pour South |  | 4d | 2026-02-24 | 2026-02-27 | 25, 26 |  |  | 11d |  |  |

| ID | WBS | Task | Type | Duration | Start | Finish | Predecessors | Total slack | Free slack |
| --- | --- | --- | --- | --- | --- | --- | --- | --- | --- |
| 28 | 1.27 | **Site Wet Utilities** |  | 21d | 2026-01-21 | 2026-02-19 |  | 185d |  |
| 29 | 1.27.1 | Storm Drain Piping & Catch Basins from Phase 1 Stubs |  | 6d | 2026-01-21 | 2026-01-28 | 15, 20 | 185d | 0d |
| 30 | 1.27.2 | Extend Sewer Laterals to building |  | 5d | 2026-01-29 | 2026-02-04 | 29 | 185d | 0d |
| 31 | 1.27.3 | Extend Fire / Domestic Water Service to Building |  | 10d | 2026-02-05 | 2026-02-19 | 30 | 185d | 0d |
| 32 | 1.27.4 | Domestic & Fire Water Services Completion | milestone | 0d | 2026-02-19 | 2026-02-19 | 31 | 185d | 0d |
| 33 | 1.28 | **Site Dry Utilities** |  | 8d | 2026-01-29 | 2026-02-09 |  | 230d |  |
| 34 | 1.28.1 | Extend Power & Lov Voltage conduits to Bldg from Stubs |  | 5d | 2026-01-29 | 2026-02-04 | 29 | 230d | 0d |
| 35 | 1.28.2 | Install Generac & Site lighting Conduits |  | 3d | 2026-02-05 | 2026-02-09 | 34 | 230d |  |
| 36 | 1.29 | **Onsite improvements For Early Base Pave** |  | 22d | 2026-02-20 | 2026-03-23 |  | 185d |  |
| 37 | 1.29.1 | Grade for Curb & Gutter |  | 4d | 2026-02-20 | 2026-02-25 | 32 | 185d | 0d |
| 38 | 1.29.2 | Install Irrigation Sleeves |  | 1d | 2026-02-26 | 2026-02-26 | 37 | 185d | 0d |
| 39 | 1.29.3 | Place Curb & Gutter |  | 4d | 2026-02-27 | 2026-03-04 | 37, 38 | 185d | 0d |
| 40 | 1.29.4 | Grade & Pour Walks |  | 5d | 2026-03-03 | 2026-03-09 | 39FS-2d | 185d | 0d |
| 41 | 1.29.5 | Agg Base Import & AC Base Paving |  | 10d | 2026-03-10 | 2026-03-23 | 40 | 185d |  |
| 42 | 1.30 | **Vertical Building Construction** |  | 215d | 2026-02-24 | 2026-12-31 |  | 0d |  |
| 43 | 1.30.1 | CMU Walls to 14'-8" North |  | 15d | 2026-02-24 | 2026-03-16 | 26 | 0d |  |
| 44 | 1.30.2 | CMU Walls to 14'-8" South |  | 15d | 2026-03-17 | 2026-04-06 | 27, 43 | 0d |  |
| 45 | 1.30.3 | Structural Steel Framing & Metal Deck to 2nd floor N. |  | 7d | 2026-03-17 | 2026-03-25 | 43 | 1d | 0d |
| 46 | 1.30.4 | Structural Steel Framing & Metal Deck to 2nd floor S. |  | 7d | 2026-04-01 | 2026-04-09 | 45, 44FS-4d | 2d | 0d |
| 47 | 1.30.5 | Rebar, Hangars & Deck2 Pour North |  | 7d | 2026-03-26 | 2026-04-03 | 45 | 1d | 0d |
| 48 | 1.30.6 | Rebar, Hangars & Deck2 Pour South |  | 7d | 2026-04-10 | 2026-04-20 | 46 | 2d |  |
| 49 | 1.30.7 | CMU Walls to 25'-4" North |  | 12d | 2026-04-07 | 2026-04-22 | 47, 44 | 0d |  |
| 50 | 1.30.8 | CMU Walls to 25'-4" South |  | 12d | 2026-04-23 | 2026-05-08 | 49, 27, 48 | 0d |  |
| 51 | 1.30.9 | 2nd floor Shear walls North @ 15k/week |  | 12d | 2026-04-07 | 2026-04-22 | 49SS | 4d | 0d |
| 52 | 1.30.10 | 3rd Floor Decking North @ 5k/day |  | 7d | 2026-04-17 | 2026-04-27 | 51FS-4d | 4d | 0d |
| 53 | 1.30.11 | Rebar, Hangars & Deck Pour3 North |  | 5d | 2026-04-28 | 2026-05-04 | 52 | 4d |  |
| 54 | 1.30.12 | 2nd floor Shear walls South @ 15k/week |  | 12d | 2026-04-23 | 2026-05-08 | 50SS | 2d | 0d |
| 55 | 1.30.13 | 3rd Floor Decking South@ 5k/day |  | 7d | 2026-05-06 | 2026-05-14 | 54FS-3d | 2d | 0d |
| 56 | 1.30.14 | Rebar, Hangars & Deck3 Pour South |  | 5d | 2026-05-15 | 2026-05-21 | 55 | 2d | 0d |
| 57 | 1.30.15 | CMU Walls to 36' North |  | 10d | 2026-05-11 | 2026-05-22 | 53, 50 | 0d |  |
| 58 | 1.30.16 | CMU Walls to 36' South |  | 10d | 2026-05-26 | 2026-06-08 | 57, 56 | 1d | 0d |
| 59 | 1.30.17 | 3rd floor Shear walls North @ 15k/week |  | 12d | 2026-05-11 | 2026-05-27 | 57SS | 1d |  |
| 60 | 1.30.18 | 4th Floor Decking North @ 5k/day |  | 7d | 2026-05-26 | 2026-06-03 | 59FS-3d, 57 | 0d |  |
| 61 | 1.30.19 | Rebar, Hangars & Deck Pour4 North |  | 5d | 2026-06-04 | 2026-06-10 | 60 | 0d |  |
| 62 | 1.30.20 | 3rd floor Shear walls South @ 15k/week |  | 12d | 2026-05-26 | 2026-06-10 | 58SS | 1d | 0d |
| 63 | 1.30.21 | 4th Floor Decking South@ 5k/day |  | 7d | 2026-06-08 | 2026-06-16 | 62FS-3d | 1d | 0d |
| 64 | 1.30.22 | Rebar, Hangars & Deck4 Pour South |  | 5d | 2026-06-17 | 2026-06-23 | 63 | 1d |  |
| 65 | 1.30.23 | CMU Walls to 46'-8" North |  | 10d | 2026-06-11 | 2026-06-24 | 61, 58 | 0d |  |
| 66 | 1.30.24 | CMU Walls to 46'-8" South |  | 10d | 2026-06-25 | 2026-07-10 | 65, 64 | 0d |  |
| 67 | 1.30.25 | 4th floor Shear walls North @ 15k/week |  | 12d | 2026-06-11 | 2026-06-26 | 65SS | 0d |  |
| 68 | 1.30.26 | 5th Floor Decking North @ 5k/day |  | 7d | 2026-06-24 | 2026-07-02 | 67FS-3d | 0d |  |
| 69 | 1.30.27 | Rebar, Hangars & Deck Pour5 North |  | 5d | 2026-07-07 | 2026-07-13 | 68 | 0d |  |
| 70 | 1.30.28 | 4th floor Shear walls South @ 15k/week |  | 12d | 2026-06-25 | 2026-07-14 | 66SS | 0d |  |
| 71 | 1.30.29 | 5th Floor Decking South@ 5k/day |  | 7d | 2026-07-10 | 2026-07-20 | 70FS-3d | 0d |  |
| 72 | 1.30.30 | Rebar, Hangars & Deck5 Pour South |  | 7d | 2026-07-21 | 2026-07-29 | 71 | 0d |  |
| 73 | 1.30.31 | CMU Walls to 57'-4" North |  | 10d | 2026-07-14 | 2026-07-27 | 61, 69, 66 | 0d |  |
| 74 | 1.30.32 | CMU Walls to 57'-4" South |  | 10d | 2026-07-30 | 2026-08-12 | 73, 64, 72 | 0d |  |
| 75 | 1.30.33 | 5th floor Shear walls North @ 15k/week |  | 14d | 2026-07-14 | 2026-07-31 | 73SS | 0d |  |
| 76 | 1.30.34 | Roof Equipment Structural |  | 3d | 2026-07-29 | 2026-07-31 | 75FF | 0d |  |
| 77 | 1.30.35 | Roof Decking North @ 5k/day |  | 7d | 2026-08-03 | 2026-08-11 | 75FS-3d, 76 | 0d |  |
| 78 | 1.30.36 | Roof Drains, Screens & Curbs |  | 10d | 2026-08-12 | 2026-08-25 | 77 | 0d |  |
| 79 | 1.30.37 | 5th floor Shear walls South @ 15k/week |  | 12d | 2026-07-30 | 2026-08-14 | 74SS | 0d |  |
| 80 | 1.30.38 | Roof Equipment Structural |  | 3d | 2026-08-12 | 2026-08-14 | 79FF | 0d |  |
| 81 | 1.30.39 | Roof Decking South@ 5k/day |  | 7d | 2026-08-17 | 2026-08-25 | 79FS-3d, 80 | 0d |  |
| 82 | 1.30.40 | Roof insulation Crickets & TPO |  | 7d | 2026-08-26 | 2026-09-03 | 81, 78 | 0d |  |
| 83 | 1.30.41 | Building Temporarily Water Tight | milestone | 0d | 2026-09-03 | 2026-09-03 | 82 | 0d |  |
| 84 | 1.30.42 | Set rooftop Equipment & hook up |  | 3d | 2026-09-04 | 2026-09-09 | 82 | 30d | 15d |
| 85 | 1.30.43 | Elevator Construction Car #1 |  | 20d | 2026-09-04 | 2026-10-02 | 83 | 0d |  |
| 86 | 1.30.44 | CMU infill @ Elevator Openings |  | 10d | 2026-09-21 | 2026-10-02 | 85FS-10d | 54d | 40d |
| 87 | 1.30.45 | Elevator Construction Car #2 |  | 20d | 2026-10-05 | 2026-10-30 | 85 | 0d |  |
| 88 | 1.30.46 | CMU infill @ Elevator Openings |  | 10d | 2026-10-19 | 2026-10-30 | 87FS-10d | 34d | 20d |
| 89 | 1.30.47 | Elevator Construction Car #3 |  | 20d | 2026-11-02 | 2026-12-01 | 87 | 0d |  |
| 90 | 1.30.48 | CMU infill @ Elevator Openings |  | 10d | 2026-11-16 | 2026-12-01 | 89FS-10d | 0d |  |
| 91 | 1.30.49 | State Elevator inspection Lead Time & Approval |  | 20d | 2026-12-02 | 2026-12-31 | 90 | 0d |  |
| 92 | 1.30.50 | Remove Man Lift |  | 2d | 2026-12-02 | 2026-12-03 | 91SS | 4d | 0d |
| 93 | 1.30.51 | Infill Framing @ Manlift Landings |  | 7d | 2026-12-03 | 2026-12-11 | 92FS-1d | 4d | 0d |
| 94 | 1.30.52 | Sheathing Lift Leave Out Area |  | 5d | 2026-12-10 | 2026-12-16 | 93FS-2d | 4d | 0d |
| 95 | 1.30.53 | Finishes @ Infilled Landings |  | 5d | 2026-12-17 | 2026-12-23 | 94 | 4d |  |

| ID | WBS | Task | Type | Duration | Start | Finish | Predecessors | Total slack | Free slack |
| --- | --- | --- | --- | --- | --- | --- | --- | --- | --- |
| 96 | 1.31 | **Building Interior** |  | 186d | 2026-04-06 | 2026-12-31 |  | 6d |  |
| 97 | 1.31.1 | Layout & Install Overhead Hangars 1st fl |  | 2d | 2026-04-06 | 2026-04-07 | 47 | 20d | 0d |
| 98 | 1.31.2 | Spray Applied Fireproofing - 1st Floor |  | 10d | 2026-04-08 | 2026-04-21 | 97 | 20d | 0d |
| 99 | 1.31.3 | Overhead P, M, & E 1st fl |  | 15d | 2026-04-17 | 2026-05-07 | 97, 98FS-3d | 20d | 0d |
| 100 | 1.31.4 | Unit Partitions / Hallway System & Doors 1st floor |  | 25d | 2026-05-01 | 2026-06-05 | 98, 99FS-5d | 20d | 0d |
| 101 | 1.31.5 | Finish Electrical 1st Fl |  | 10d | 2026-06-08 | 2026-06-19 | 100, 99 | 60d | 0d |
| 102 | 1.31.6 | Instal Generator and Related Systems |  | 35d | 2026-06-22 | 2026-08-11 | 101 | 103d |  |
| 103 | 1.31.7 | Overhead M/E/P 2nd Fl |  | 15d | 2026-05-22 | 2026-06-12 | 99, 56 | 15d | 0d |
| 104 | 1.31.8 | Unit Partitions / Hallway System & Doors 2nd Floor |  | 20d | 2026-06-15 | 2026-07-14 | 100, 103 | 15d | 0d |
| 105 | 1.31.9 | Finish Electrical 2nd Fl |  | 10d | 2026-07-15 | 2026-07-28 | 104, 103, 101 | 45d | 10d |
| 106 | 1.31.10 | Overhead M/E/P 3rd Fl |  | 15d | 2026-06-15 | 2026-07-07 | 61, 103 | 30d | 4d |
| 107 | 1.31.11 | Unit partitions /Hallway System & Doors 3rd Floor |  | 20d | 2026-07-15 | 2026-08-11 | 104 | 15d | 0d |
| 108 | 1.31.12 | Finish Electrical 3rd Fl |  | 10d | 2026-08-12 | 2026-08-25 | 107, 106, 105 | 35d | 10d |
| 109 | 1.31.13 | Overhead M/E/P 4th Fl |  | 15d | 2026-07-14 | 2026-08-03 | 69, 106 | 26d | 6d |
| 110 | 1.31.14 | Unit Partitions /Hallway System & Doors 4th Floor |  | 20d | 2026-08-12 | 2026-09-09 | 107 | 15d | 0d |
| 111 | 1.31.15 | Finish Electrical 4th Fl |  | 5d | 2026-09-10 | 2026-09-16 | 110, 109, 108 | 25d | 10d |
| 112 | 1.31.16 | Overhead M/E/P 5th Fl |  | 15d | 2026-08-12 | 2026-09-01 | 77, 109 | 20d | 5d |
| 113 | 1.31.17 | Unit Partitions & Hallway System & Doors 5th Floor |  | 20d | 2026-09-10 | 2026-10-07 | 112, 110 | 15d | 0d |
| 114 | 1.31.18 | Hallway Systems after Scaffold Removal |  | 5d | 2026-10-08 | 2026-10-14 | 113 | 58d |  |
| 115 | 1.31.19 | Finish Electrical 5th Fl & Roof Equipment |  | 11d | 2026-10-01 | 2026-10-15 | 113FS-5d, 84, 112, 111 | 15d | 0d |
| 116 | 1.31.20 | Overhead Doors, Liner & Demising Panels Comp. | milestone | 0d | 2026-10-07 | 2026-10-07 | 113 | 63d |  |
| 117 | 1.31.21 | Elev. Lobby Framing |  | 5d | 2026-05-08 | 2026-05-14 | 99 | 103d | 0d |
| 118 | 1.31.22 | Elev. Lobby M/E/P Rough in |  | 5d | 2026-05-13 | 2026-05-19 | 117FS-2d | 103d | 0d |
| 119 | 1.31.23 | Elev. Lobby Drywall |  | 10d | 2026-05-20 | 2026-06-03 | 118 | 103d | 0d |
| 120 | 1.31.24 | Install HM Doors & Hardware |  | 5d | 2026-06-08 | 2026-06-12 | 119, 100 | 101d | 86d |
| 121 | 1.31.25 | Lobby Fixtures & Finishes |  | 10d | 2026-06-04 | 2026-06-17 | 119 | 138d |  |
| 122 | 1.31.26 | Finish Painting in Storage areas |  | 10d | 2026-10-16 | 2026-10-29 | 115, 120 | 15d | 0d |
| 123 | 1.31.27 | Building Signage per plan |  | 5d | 2026-10-30 | 2026-11-05 | 122 | 15d | 1d |
| 124 | 1.31.28 | Final Clean up & Seal floors |  | 20d | 2026-11-09 | 2026-12-08 | 122, 123, 90FS-15d, 88FS-15d, 86FS-15d | 14d | 10d |
| 125 | 1.31.29 | Owner Arch. Punch list & Completion |  | 10d | 2026-12-16 | 2026-12-31 | 124FS-5d, 144 | 4d |  |

| ID | WBS | Task | Type | Duration | Start | Finish | Predecessors | Total slack | Free slack | Constraint |
| --- | --- | --- | --- | --- | --- | --- | --- | --- | --- | --- |
| 126 | 1.32 | **Building Exterior** |  | 76d | 2026-08-13 | 2026-12-01 |  | 0d |  |  |
| 127 | 1.32.1 | Install Scaffolding at Building Perimeter |  | 3d | 2026-08-13 | 2026-08-17 | 74 | 0d |  |  |
| 128 | 1.32.2 | Exterior Metal Frame Sheathing & WRB @ Tower |  | 10d | 2026-08-18 | 2026-08-31 | 127 | 54d | 0d |  |
| 129 | 1.32.3 | Metal Panel Siding @ Tower |  | 5d | 2026-09-01 | 2026-09-08 | 128 | 54d | 0d |  |
| 130 | 1.32.4 | Storefront/Curtainwall |  | 5d | 2026-09-09 | 2026-09-15 | 129 | 54d | 0d |  |
| 131 | 1.32.5 | Glass Lead Time |  | 10d | 2026-09-16 | 2026-09-29 | 130 | 54d | 0d |  |
| 132 | 1.32.6 | Install Glass |  | 5d | 2026-09-30 | 2026-10-06 | 131 | 54d | 28d |  |
| 133 | 1.32.7 | Install Auto Sliders & Mapes Canopy |  | 10d | 2026-11-16 | 2026-12-01 | 130, 140, 132 | 26d |  |  |
| 134 | 1.32.8 | **EIFS WRB, Foam/Brown & Finish** |  | 50d | 2026-08-18 | 2026-10-27 | 127 | 0d |  |  |
| 135 | 1.32.8.1 | Waterproof Membrane |  | 10d | 2026-08-18 | 2026-08-31 | 127 | 0d |  |  |
| 136 | 1.32.8.2 | EIFS Foam |  | 15d | 2026-09-01 | 2026-09-22 | 135 | 0d |  |  |
| 137 | 1.32.8.3 | EIFS Mesh Coat |  | 15d | 2026-09-23 | 2026-10-13 | 136 | 0d |  |  |
| 138 | 1.32.8.4 | EIFS Top Coat |  | 10d | 2026-10-14 | 2026-10-27 | 137 | 0d |  |  |
| 139 | 1.32.9 | Exterior Sheet metal, Sealants, & Painting |  | 10d | 2026-10-28 | 2026-11-10 | 134, 138 | 0d |  |  |
| 140 | 1.32.10 | Remove Scaffolding |  | 3d | 2026-11-11 | 2026-11-13 | 139 | 0d |  |  |
| 141 | 1.33 | **Onsite improvements** |  | 26d | 2026-11-16 | 2026-12-23 |  | 0d |  |  |
| 142 | 1.33.1 | Grade & Pour Walks |  | 5d | 2026-11-16 | 2026-11-20 | 140 | 0d |  |  |
| 143 | 1.33.2 | Site Fencing & Gates |  | 5d | 2026-11-23 | 2026-12-01 | 142 | 0d |  |  |
| 144 | 1.33.3 | Landscape Irrigation and Planting |  | 10d | 2026-12-02 | 2026-12-15 | 142, 40, 41FF, 143 | 0d |  |  |
| 145 | 1.33.4 | Striping & Signage |  | 3d | 2026-12-14 | 2026-12-16 | 144FS-2d | 0d |  |  |
| 146 | 1.33.5 | Owner Civil Punch list & Completion |  | 5d | 2026-12-17 | 2026-12-23 | 145 | 0d |  |  |
| 147 | 1.34 | **Accumulative Inspections & C of O** |  | 42d | 2026-11-06 | 2027-01-11 |  | 0d |  |  |
| 148 | 1.34.1 | Final Grading Inspections |  | 2d | 2026-12-28 | 2026-12-29 | 146 | 0d |  |  |
| 149 | 1.34.2 | Final Public Works Inspections |  | 2d | 2026-12-30 | 2026-12-31 | 148 | 0d |  |  |
| 150 | 1.34.3 | Life Safety Inspection |  | 2d | 2027-01-04 | 2027-01-05 | 91 | 0d |  |  |
| 151 | 1.34.4 | MEP Final Inspections |  | 2d | 2027-01-04 | 2027-01-05 | 91 | 0d |  |  |
| 152 | 1.34.5 | Final Planning & Zoning Inspection |  | 2d | 2027-01-04 | 2027-01-05 | 95, 149 | 0d |  |  |
| 153 | 1.34.6 | Building Final Inspection |  | 2d | 2027-01-06 | 2027-01-07 | 150, 151, 148, 149, 152 | 0d |  |  |
| 154 | 1.34.7 | Rain Days Included - Used as of 1/6/26 | milestone | 0d | 2027-01-07 | 2027-01-07 | 153 | 0d |  |  |
| 155 | 1.34.8 | Certificate Of Occupancy |  | 2d | 2027-01-08 | 2027-01-11 | 145, 121, 87, 91, 153, 146, 89, 152, 125, 154 | 0d |  |  |
| 156 | 1.34.9 | Open Date | milestone | 0d | 2027-01-11 | 2027-01-11 | 155 | 0d |  | start no earlier than 2022-06-25 |
| 157 | 1.34.10 | Original Contracted Open Date | milestone, manual | 0d | 2026-11-06 | 2026-11-06 |  |  |  |  |
