# Johnson Dev. Hawiian Park Self Storage

Schedule from MS Project, 2025-09-08 to 2026-12-28, A marks actual dates.

## Calendars

- Standard: Mon-Fri 08:00-12:00, 13:00-17:00; Sat-Sun off. Exceptions (off unless hours are given): 2025-11-27 to 2025-11-28, 2025-12-25 to 2025-12-26, 2026-01-01, 2026-02-16, 2026-05-25, 2026-07-03 to 2026-07-06, 2026-09-07, 2026-11-26 to 2026-11-27, 2026-12-24 to 2026-12-25.

## Schedule

| ID | WBS | Task | Type | Duration | Start | Finish | Predecessors | Complete | Remaining | Total slack | Constraint |
| --- | --- | --- | --- | --- | --- | --- | --- | --- | --- | --- | --- |
| 1 | 1 | **Grading & Building Slab Construction** |  | 327d | 2025-09-08 A | 2026-12-28 |  | 17% | 270.67d | 0d |  |
| 2 | 1.1 | Commencement Date 9/8/2025 |  | 1d | 2025-09-08 A | 2025-09-08 A |  | 100% |  |  | start no earlier than 2025-09-08 |
| 3 | 1.2 | HBI Mobilization |  | 8d | 2025-09-09 A | 2025-09-18 A | 2 | 100% |  |  |  |
| 4 | 1.3 | Install Temp Fencing & BMP's |  | 3d | 2025-09-19 A | 2025-09-23 A | 3 | 100% |  |  |  |
| 5 | 1.4 | Move Existing Rolling Gate |  | 5d | 2025-09-22 A | 2025-09-26 A | 4FS-2d | 100% |  |  |  |
| 6 | 1.5 | Surface Demo Existing Phase II areas |  | 16d | 2025-09-29 A | 2025-10-20 A | 5 | 100% |  |  |  |
| 7 | 1.6 | AQMD Notification for Transite Fire Water |  | 10d | 2025-10-16 A | 2025-10-29 A |  | 100% |  |  | start no earlier than 2025-10-16 |
| 8 | 1.7 | Identify & Cap Existing Utilities to Limits |  | 3d | 2025-10-16 A | 2025-10-20 A | 6FS-3d | 100% |  |  |  |
| 9 | 1.8 | Abate Fire Water Lines per Change Order #2 |  | 5d | 2025-10-30 A | 2025-11-05 A | 7 | 100% |  |  |  |
| 10 | 1.9 | Grading Permit Needed | milestone | 0d | 2025-10-20 A | 2025-10-20 A | 6 | 100% |  |  |  |
| 11 | 1.10 | Grading Permit Delay - Actual |  | 17d | 2025-10-21 A | 2025-11-12 A | 10 | 100% |  |  |  |
| 12 | 1.11 | Pre-Grade Meeting w/ City |  | 1d | 2025-11-13 A | 2025-11-13 A | 10, 11 | 100% |  |  |  |
| 13 | 1.12 | Rain and Mud Delay - Taken from item 147 below |  | 6d | 2025-11-14 A | 2025-11-21 A | 12 | 100% |  |  |  |
| 14 | 1.13 | O/X & Grading for Bldg pad |  | 8d | 2025-11-24 A | 2025-12-05 A | 3, 6, 9, 12, 13 | 100% |  |  |  |
| 15 | 1.14 | Certify Pad / Pad Delivery Date |  | 2d | 2025-12-08 A | 2025-12-09 A | 14 | 100% |  |  |  |
| 16 | 1.15 | Building Permit required | milestone | 0d | 2025-12-09 A | 2025-12-09 A | 15 | 100% |  |  |  |
| 17 | 1.16 | Building Permit Delay - Finish after 2026 holidays, added Cal. Days |  | 13d | 2025-12-10 | 2025-12-30 | 16 |  |  | 249d |  |
| 18 | 1.17 | Building Permit Received 12.30.25 | milestone | 0d | 2025-12-30 A | 2025-12-30 A | 17 | 100% |  |  | start no earlier than 2025-12-30 |
| 19 | 1.18 | Rain Delay 1/2-1.9/9 Inc. Pad Dry Out - Part from task 147 |  | 3d | 2026-01-02 A | 2026-01-06 A | 18FS+1d | 100% |  |  |  |
| 20 | 1.19 | Pad Elevation Impact |  | 8d | 2026-01-07 A | 2026-01-16 A | 19 | 100% |  |  |  |
| 21 | 1.20 | Install Fire line Modifications |  | 7d | 2026-01-19 A | 2026-01-27 A | 18, 19, 20 | 100% |  |  |  |
| 22 | 1.21 | Underslab Electrical & Plumbing |  | 6d | 2026-01-19 A | 2026-01-26 A | 18, 19, 20 | 100% |  |  |  |
| 23 | 1.22 | Building Foundations & Pre-lim CMU/Forms |  | 10d | 2026-01-19 A | 2026-01-30 A | 18, 19, 20 | 100% |  |  |  |
| 24 | 1.23 | Elevator Pit Form & Pour |  | 10d | 2026-01-19 A | 2026-01-30 A | 19, 18, 20 | 100% |  |  |  |
| 25 | 1.24 | Slab Base Material Import & Grading |  | 5d | 2026-02-02 A | 2026-02-06 A | 23, 24FS-3d | 100% |  |  |  |
| 26 | 1.25 | Slab Vapor Barrier & Reinforcing |  | 10d | 2026-02-05 A | 2026-02-19 A | 25FS-2d | 100% |  |  |  |
| 27 | 1.26 | Slab on Grade Pour North |  | 4d | 2026-02-13 A | 2026-02-19 A | 26FS-4d, 21 | 100% |  |  |  |
| 28 | 1.27 | Slab on Grade Pour South |  | 4d | 2026-02-20 A | 2026-02-25 A | 26, 27 | 100% |  |  |  |

| ID | WBS | Task | Type | Duration | Start | Finish | Predecessors | Complete | Remaining | Total slack | Free slack |
| --- | --- | --- | --- | --- | --- | --- | --- | --- | --- | --- | --- |
| 29 | 1.28 | **Site Wet Utilities** |  | 21d | 2026-01-28 A | 2026-02-26 |  | 90% | 2.1d | 170d |  |
| 30 | 1.28.1 | Storm Drain Piping & Catch Basins from Phase 1 Stubs |  | 6d | 2026-01-28 A | 2026-02-04 | 15, 21 | 90% | 0.6d | 4.5d | 0d |
| 31 | 1.28.2 | Extend Sewer Laterals to building |  | 5d | 2026-02-05 A | 2026-02-11 | 30 | 90% | 0.5d | 9d | 0d |
| 32 | 1.28.3 | Extend Fire / Domestic Water Service to Building |  | 10d | 2026-02-12 A | 2026-02-26 | 31 | 90% | 1d | 170d | 0d |
| 33 | 1.28.4 | Domestic & Fire Water Services Completion | milestone | 0d | 2026-02-26 | 2026-02-26 | 32 |  |  | 170d | 0d |
| 34 | 1.29 | **Site Dry Utilities** |  | 8d | 2026-02-05 A | 2026-02-17 |  | 78% | 1.75d | 216d |  |
| 35 | 1.29.1 | Extend Power & Lov Voltage conduits to Bldg from Stubs |  | 5d | 2026-02-05 A | 2026-02-11 | 30 | 95% | 0.25d | 1.5d | 0d |
| 36 | 1.29.2 | Install Generac & Site lighting Conduits |  | 3d | 2026-02-12 A | 2026-02-17 | 35 | 50% | 1.5d | 216d |  |
| 37 | 1.30 | **Onsite improvements For Early Base Pave** |  | 22d | 2026-02-27 | 2026-03-30 |  |  |  | 170d |  |
| 38 | 1.30.1 | Grade for Curb & Gutter |  | 4d | 2026-02-27 | 2026-03-04 | 33 |  |  | 170d | 0d |
| 39 | 1.30.2 | Install Irrigation Sleeves |  | 1d | 2026-03-05 | 2026-03-05 | 38 |  |  | 170d | 0d |
| 40 | 1.30.3 | Place Curb & Gutter |  | 4d | 2026-03-06 | 2026-03-11 | 38, 39 |  |  | 170d | 0d |
| 41 | 1.30.4 | Grade & Pour Walks |  | 5d | 2026-03-10 | 2026-03-16 | 40FS-2d |  |  | 170d | 0d |
| 42 | 1.30.5 | Agg Base Import & AC Base Paving |  | 10d | 2026-03-17 | 2026-03-30 | 41 |  |  | 170d |  |
| 43 | 1.31 | **Vertical Building Construction** |  | 210d | 2026-02-17 A | 2026-12-15 |  | 7% | 196.17d | 0d |  |
| 44 | 1.31.1 | CMU Walls to 14'-8" North |  | 15d | 2026-02-17 A | 2026-03-09 | 27FS-3d | 85% | 2.25d | 6.3d | 0d |
| 45 | 1.31.2 | CMU Walls to 14'-8" South |  | 15d | 2026-03-03 A | 2026-03-23 | 28, 44FS-5d | 85% | 2.25d | 0d |  |
| 46 | 1.31.3 | Structural Steel Framing & Metal Deck to 2nd floor N. |  | 7d | 2026-03-03 A | 2026-03-11 | 44FS-5d | 90% | 0.7d | 1d | 0d |
| 47 | 1.31.4 | Structural Steel Framing & Metal Deck to 2nd floor S. |  | 7d | 2026-03-18 | 2026-03-26 | 46, 45FS-4d |  |  | 2d | 0d |
| 48 | 1.31.5 | Rebar, Hangars & Deck2 Pour North |  | 7d | 2026-03-12 | 2026-03-20 | 46 |  |  | 1d | 0d |
| 49 | 1.31.6 | Rebar, Hangars & Deck2 Pour South |  | 7d | 2026-03-27 | 2026-04-06 | 47 |  |  | 2d |  |
| 50 | 1.31.7 | CMU Walls to 25'-4" North |  | 12d | 2026-03-24 | 2026-04-08 | 48, 45 |  |  | 0d |  |
| 51 | 1.31.8 | CMU Walls to 25'-4" South |  | 12d | 2026-04-09 | 2026-04-24 | 50, 28, 49 |  |  | 0d |  |
| 52 | 1.31.9 | 2nd floor Shear walls North @ 15k/week |  | 12d | 2026-03-24 | 2026-04-08 | 50SS |  |  | 4d | 0d |
| 53 | 1.31.10 | 3rd Floor Decking North @ 5k/day |  | 7d | 2026-04-03 | 2026-04-13 | 52FS-4d |  |  | 4d | 0d |
| 54 | 1.31.11 | Rebar, Hangars & Deck Pour3 North |  | 5d | 2026-04-14 | 2026-04-20 | 53 |  |  | 4d |  |
| 55 | 1.31.12 | 2nd floor Shear walls South @ 15k/week |  | 12d | 2026-04-09 | 2026-04-24 | 51SS |  |  | 2d | 0d |
| 56 | 1.31.13 | 3rd Floor Decking South@ 5k/day |  | 7d | 2026-04-22 | 2026-04-30 | 55FS-3d |  |  | 2d | 0d |
| 57 | 1.31.14 | Rebar, Hangars & Deck3 Pour South |  | 5d | 2026-05-01 | 2026-05-07 | 56 |  |  | 2d | 0d |
| 58 | 1.31.15 | CMU Walls to 36' North |  | 10d | 2026-04-27 | 2026-05-08 | 54, 51 |  |  | 0d |  |
| 59 | 1.31.16 | CMU Walls to 36' South |  | 10d | 2026-05-11 | 2026-05-22 | 58, 57 |  |  | 1d | 0d |
| 60 | 1.31.17 | 3rd floor Shear walls North @ 15k/week |  | 12d | 2026-04-27 | 2026-05-12 | 58SS |  |  | 1d |  |
| 61 | 1.31.18 | 4th Floor Decking North @ 5k/day |  | 7d | 2026-05-11 | 2026-05-19 | 60FS-3d, 58 |  |  | 0d |  |
| 62 | 1.31.19 | Rebar, Hangars & Deck Pour4 North |  | 5d | 2026-05-20 | 2026-05-27 | 61 |  |  | 0d |  |
| 63 | 1.31.20 | 3rd floor Shear walls South @ 15k/week |  | 12d | 2026-05-11 | 2026-05-27 | 59SS |  |  | 1d | 0d |
| 64 | 1.31.21 | 4th Floor Decking South@ 5k/day |  | 7d | 2026-05-22 | 2026-06-02 | 63FS-3d |  |  | 1d | 0d |
| 65 | 1.31.22 | Rebar, Hangars & Deck4 Pour South |  | 5d | 2026-06-03 | 2026-06-09 | 64 |  |  | 1d |  |
| 66 | 1.31.23 | CMU Walls to 46'-8" North |  | 10d | 2026-05-28 | 2026-06-10 | 62, 59 |  |  | 0d |  |
| 67 | 1.31.24 | CMU Walls to 46'-8" South |  | 10d | 2026-06-11 | 2026-06-24 | 66, 65 |  |  | 0d |  |
| 68 | 1.31.25 | 4th floor Shear walls North @ 15k/week |  | 12d | 2026-05-28 | 2026-06-12 | 66SS |  |  | 0d |  |
| 69 | 1.31.26 | 5th Floor Decking North @ 5k/day |  | 7d | 2026-06-10 | 2026-06-18 | 68FS-3d |  |  | 0d |  |
| 70 | 1.31.27 | Rebar, Hangars & Deck Pour5 North |  | 5d | 2026-06-19 | 2026-06-25 | 69 |  |  | 0d |  |
| 71 | 1.31.28 | 4th floor Shear walls South @ 15k/week |  | 12d | 2026-06-11 | 2026-06-26 | 67SS |  |  | 0d |  |
| 72 | 1.31.29 | 5th Floor Decking South@ 5k/day |  | 7d | 2026-06-24 | 2026-07-02 | 71FS-3d |  |  | 0d |  |
| 73 | 1.31.30 | Rebar, Hangars & Deck5 Pour South |  | 7d | 2026-07-07 | 2026-07-15 | 72 |  |  | 0d |  |
| 74 | 1.31.31 | CMU Walls to 57'-4" North |  | 10d | 2026-06-26 | 2026-07-13 | 62, 70, 67 |  |  | 0d |  |
| 75 | 1.31.32 | CMU Walls to 57'-4" South |  | 10d | 2026-07-16 | 2026-07-29 | 74, 65, 73 |  |  | 0d |  |
| 76 | 1.31.33 | 5th floor Shear walls North @ 15k/week |  | 14d | 2026-06-26 | 2026-07-17 | 74SS |  |  | 0d |  |
| 77 | 1.31.34 | Roof Equipment Structural |  | 3d | 2026-07-15 | 2026-07-17 | 76FF |  |  | 0d |  |
| 78 | 1.31.35 | Roof Decking North @ 5k/day |  | 7d | 2026-07-20 | 2026-07-28 | 76FS-3d, 77 |  |  | 0d |  |
| 79 | 1.31.36 | Roof Drains, Screens & Curbs |  | 10d | 2026-07-29 | 2026-08-11 | 78 |  |  | 0d |  |
| 80 | 1.31.37 | 5th floor Shear walls South @ 15k/week |  | 12d | 2026-07-16 | 2026-07-31 | 75SS |  |  | 0d |  |
| 81 | 1.31.38 | Roof Equipment Structural |  | 3d | 2026-07-29 | 2026-07-31 | 80FF |  |  | 0d |  |
| 82 | 1.31.39 | Roof Decking South@ 5k/day |  | 7d | 2026-08-03 | 2026-08-11 | 80FS-3d, 81 |  |  | 0d |  |
| 83 | 1.31.40 | Roof insulation Crickets & TPO |  | 7d | 2026-08-12 | 2026-08-20 | 82, 79 |  |  | 0d |  |
| 84 | 1.31.41 | Building Temporarily Water Tight | milestone | 0d | 2026-08-20 | 2026-08-20 | 83 |  |  | 0d |  |
| 85 | 1.31.42 | Set rooftop Equipment & hook up |  | 3d | 2026-08-21 | 2026-08-25 | 83 |  |  | 31d | 15d |
| 86 | 1.31.43 | Elevator Construction Car #1 |  | 20d | 2026-08-21 | 2026-09-18 | 84 |  |  | 0d |  |
| 87 | 1.31.44 | CMU infill @ Elevator Openings |  | 10d | 2026-09-04 | 2026-09-18 | 86FS-10d |  |  | 55d | 40d |
| 88 | 1.31.45 | Elevator Construction Car #2 |  | 20d | 2026-09-21 | 2026-10-16 | 86 |  |  | 0d |  |
| 89 | 1.31.46 | CMU infill @ Elevator Openings |  | 10d | 2026-10-05 | 2026-10-16 | 88FS-10d |  |  | 35d | 20d |
| 90 | 1.31.47 | Elevator Construction Car #3 |  | 20d | 2026-10-19 | 2026-11-13 | 88 |  |  | 0d |  |
| 91 | 1.31.48 | CMU infill @ Elevator Openings |  | 10d | 2026-11-02 | 2026-11-13 | 90FS-10d |  |  | 0d |  |
| 92 | 1.31.49 | State Elevator inspection Lead Time & Approval |  | 20d | 2026-11-16 | 2026-12-15 | 91 |  |  | 0d |  |
| 93 | 1.31.50 | Remove Man Lift |  | 2d | 2026-11-16 | 2026-11-17 | 92SS |  |  | 4d | 0d |
| 94 | 1.31.51 | Infill Framing @ Manlift Landings |  | 7d | 2026-11-17 | 2026-11-25 | 93FS-1d |  |  | 4d | 0d |
| 95 | 1.31.52 | Sheathing Lift Leave Out Area |  | 5d | 2026-11-24 | 2026-12-02 | 94FS-2d |  |  | 4d | 0d |
| 96 | 1.31.53 | Finishes @ Infilled Landings |  | 5d | 2026-12-03 | 2026-12-09 | 95 |  |  | 4d |  |

| ID | WBS | Task | Type | Duration | Start | Finish | Predecessors | Total slack | Free slack |
| --- | --- | --- | --- | --- | --- | --- | --- | --- | --- |
| 97 | 1.32 | **Building Interior** |  | 186d | 2026-03-23 | 2026-12-15 |  | 7d |  |
| 98 | 1.32.1 | Layout & Install Overhead Hangars 1st fl |  | 2d | 2026-03-23 | 2026-03-24 | 48 | 21d | 0d |
| 99 | 1.32.2 | Spray Applied Fireproofing - 1st Floor |  | 10d | 2026-03-25 | 2026-04-07 | 98 | 21d | 0d |
| 100 | 1.32.3 | Overhead P, M, & E 1st fl |  | 15d | 2026-04-03 | 2026-04-23 | 98, 99FS-3d | 21d | 0d |
| 101 | 1.32.4 | Unit Partitions / Hallway System & Doors 1st floor |  | 25d | 2026-04-17 | 2026-05-21 | 99, 100FS-5d | 21d | 0d |
| 102 | 1.32.5 | Finish Electrical 1st Fl |  | 10d | 2026-05-22 | 2026-06-05 | 101, 100 | 61d | 0d |
| 103 | 1.32.6 | Instal Generator and Related Systems |  | 35d | 2026-06-08 | 2026-07-28 | 102 | 104d |  |
| 104 | 1.32.7 | Overhead M/E/P 2nd Fl |  | 15d | 2026-05-08 | 2026-05-29 | 100, 57 | 16d | 0d |
| 105 | 1.32.8 | Unit Partitions / Hallway System & Doors 2nd Floor |  | 20d | 2026-06-01 | 2026-06-26 | 101, 104 | 16d | 0d |
| 106 | 1.32.9 | Finish Electrical 2nd Fl |  | 10d | 2026-06-29 | 2026-07-14 | 105, 104, 102 | 46d | 10d |
| 107 | 1.32.10 | Overhead M/E/P 3rd Fl |  | 15d | 2026-06-01 | 2026-06-19 | 62, 104 | 31d | 4d |
| 108 | 1.32.11 | Unit partitions /Hallway System & Doors 3rd Floor |  | 20d | 2026-06-29 | 2026-07-28 | 105 | 16d | 0d |
| 109 | 1.32.12 | Finish Electrical 3rd Fl |  | 10d | 2026-07-29 | 2026-08-11 | 108, 107, 106 | 36d | 10d |
| 110 | 1.32.13 | Overhead M/E/P 4th Fl |  | 15d | 2026-06-26 | 2026-07-20 | 70, 107 | 27d | 6d |
| 111 | 1.32.14 | Unit Partitions /Hallway System & Doors 4th Floor |  | 20d | 2026-07-29 | 2026-08-25 | 108 | 16d | 0d |
| 112 | 1.32.15 | Finish Electrical 4th Fl |  | 5d | 2026-08-26 | 2026-09-01 | 111, 110, 109 | 26d | 10d |
| 113 | 1.32.16 | Overhead M/E/P 5th Fl |  | 15d | 2026-07-29 | 2026-08-18 | 78, 110 | 21d | 5d |
| 114 | 1.32.17 | Unit Partitions & Hallway System & Doors 5th Floor |  | 20d | 2026-08-26 | 2026-09-23 | 113, 111 | 16d | 0d |
| 115 | 1.32.18 | Hallway Systems after Scaffold Removal |  | 5d | 2026-09-24 | 2026-09-30 | 114 | 59d |  |
| 116 | 1.32.19 | Finish Electrical 5th Fl & Roof Equipment |  | 11d | 2026-09-17 | 2026-10-01 | 114FS-5d, 85, 113, 112 | 16d | 0d |
| 117 | 1.32.20 | Overhead Doors, Liner & Demising Panels Comp. | milestone | 0d | 2026-09-23 | 2026-09-23 | 114 | 64d |  |
| 118 | 1.32.21 | Elev. Lobby Framing |  | 5d | 2026-04-24 | 2026-04-30 | 100 | 104d | 0d |
| 119 | 1.32.22 | Elev. Lobby M/E/P Rough in |  | 5d | 2026-04-29 | 2026-05-05 | 118FS-2d | 104d | 0d |
| 120 | 1.32.23 | Elev. Lobby Drywall |  | 10d | 2026-05-06 | 2026-05-19 | 119 | 104d | 0d |
| 121 | 1.32.24 | Install HM Doors & Hardware |  | 5d | 2026-05-22 | 2026-05-29 | 120, 101 | 102d | 86d |
| 122 | 1.32.25 | Lobby Fixtures & Finishes |  | 10d | 2026-05-20 | 2026-06-03 | 120 | 139d |  |
| 123 | 1.32.26 | Finish Painting in Storage areas |  | 10d | 2026-10-02 | 2026-10-15 | 116, 121 | 16d | 0d |
| 124 | 1.32.27 | Building Signage per plan |  | 5d | 2026-10-16 | 2026-10-22 | 123 | 16d | 1d |
| 125 | 1.32.28 | Final Clean up & Seal floors |  | 20d | 2026-10-26 | 2026-11-20 | 123, 124, 91FS-15d, 89FS-15d, 87FS-15d | 15d | 10d |
| 126 | 1.32.29 | Owner Arch. Punch list & Completion |  | 10d | 2026-12-02 | 2026-12-15 | 125FS-5d, 145 | 5d |  |

| ID | WBS | Task | Type | Duration | Start | Finish | Predecessors | Total slack | Free slack | Constraint |
| --- | --- | --- | --- | --- | --- | --- | --- | --- | --- | --- |
| 127 | 1.33 | **Building Exterior** |  | 76d | 2026-07-30 | 2026-11-13 |  | 0d |  |  |
| 128 | 1.33.1 | Install Scaffolding at Building Perimeter |  | 3d | 2026-07-30 | 2026-08-03 | 75 | 0d |  |  |
| 129 | 1.33.2 | Exterior Metal Frame Sheathing & WRB @ Tower |  | 10d | 2026-08-04 | 2026-08-17 | 128 | 55d | 0d |  |
| 130 | 1.33.3 | Metal Panel Siding @ Tower |  | 5d | 2026-08-18 | 2026-08-24 | 129 | 55d | 0d |  |
| 131 | 1.33.4 | Storefront/Curtainwall |  | 5d | 2026-08-25 | 2026-08-31 | 130 | 55d | 0d |  |
| 132 | 1.33.5 | Glass Lead Time |  | 10d | 2026-09-01 | 2026-09-15 | 131 | 55d | 0d |  |
| 133 | 1.33.6 | Install Glass |  | 5d | 2026-09-16 | 2026-09-22 | 132 | 55d | 28d |  |
| 134 | 1.33.7 | Install Auto Sliders & Mapes Canopy |  | 10d | 2026-11-02 | 2026-11-13 | 131, 141, 133 | 27d |  |  |
| 135 | 1.33.8 | **EIFS WRB, Foam/Brown & Finish** |  | 50d | 2026-08-04 | 2026-10-13 | 128 | 0d |  |  |
| 136 | 1.33.8.1 | Waterproof Membrane |  | 10d | 2026-08-04 | 2026-08-17 | 128 | 0d |  |  |
| 137 | 1.33.8.2 | EIFS Foam |  | 15d | 2026-08-18 | 2026-09-08 | 136 | 0d |  |  |
| 138 | 1.33.8.3 | EIFS Mesh Coat |  | 15d | 2026-09-09 | 2026-09-29 | 137 | 0d |  |  |
| 139 | 1.33.8.4 | EIFS Top Coat |  | 10d | 2026-09-30 | 2026-10-13 | 138 | 0d |  |  |
| 140 | 1.33.9 | Exterior Sheet metal, Sealants, & Painting |  | 10d | 2026-10-14 | 2026-10-27 | 135, 139 | 0d |  |  |
| 141 | 1.33.10 | Remove Scaffolding |  | 3d | 2026-10-28 | 2026-10-30 | 140 | 0d |  |  |
| 142 | 1.34 | **Onsite improvements** |  | 26d | 2026-11-02 | 2026-12-09 |  | 0d |  |  |
| 143 | 1.34.1 | Grade & Pour Walks |  | 5d | 2026-11-02 | 2026-11-06 | 141 | 0d |  |  |
| 144 | 1.34.2 | Site Fencing & Gates |  | 5d | 2026-11-09 | 2026-11-13 | 143 | 0d |  |  |
| 145 | 1.34.3 | Landscape Irrigation and Planting |  | 10d | 2026-11-16 | 2026-12-01 | 143, 41, 42FF, 144 | 0d |  |  |
| 146 | 1.34.4 | Striping & Signage |  | 3d | 2026-11-30 | 2026-12-02 | 145FS-2d | 0d |  |  |
| 147 | 1.34.5 | Owner Civil Punch list & Completion |  | 5d | 2026-12-03 | 2026-12-09 | 146 | 0d |  |  |
| 148 | 1.35 | **Accumulative Inspections & C of O** |  | 33d | 2026-11-06 | 2026-12-28 |  | 0d |  |  |
| 149 | 1.35.1 | Final Grading Inspections |  | 2d | 2026-12-10 | 2026-12-11 | 147 | 0d |  |  |
| 150 | 1.35.2 | Final Public Works Inspections |  | 2d | 2026-12-14 | 2026-12-15 | 149 | 0d |  |  |
| 151 | 1.35.3 | Life Safety Inspection |  | 2d | 2026-12-16 | 2026-12-17 | 92 | 0d |  |  |
| 152 | 1.35.4 | MEP Final Inspections |  | 2d | 2026-12-16 | 2026-12-17 | 92 | 0d |  |  |
| 153 | 1.35.5 | Final Planning & Zoning Inspection |  | 2d | 2026-12-16 | 2026-12-17 | 96, 150 | 0d |  |  |
| 154 | 1.35.6 | Building Final Inspection |  | 2d | 2026-12-18 | 2026-12-21 | 151, 152, 149, 150, 153 | 0d |  |  |
| 155 | 1.35.7 | Rain Days Included - Used as of 1/6/26 |  | 1d | 2026-12-22 | 2026-12-22 | 154 | 0d |  |  |
| 156 | 1.35.8 | Certificate Of Occupancy |  | 2d | 2026-12-23 | 2026-12-28 | 146, 122, 88, 92, 154, 147, 90, 153, 126, 155 | 0d |  |  |
| 157 | 1.35.9 | Open Date - Approved with Delay #2 | milestone, manual | 0d | 2026-12-28 | 2026-12-28 | 156 |  |  | start no earlier than 2026-12-28 |
| 158 | 1.35.10 | Original Contracted Open Date | milestone, manual | 0d | 2026-11-06 | 2026-11-06 |  |  |  |  |
