# Frisco Master Schedule 11-5-25

Schedule from MS Project XML, 2025-09-08 to 2026-06-09, status date 2025-11-05, A marks actual dates.

## Calendars

- Standard: Mon-Fri 08:00-12:00, 13:00-17:00; Sat-Sun off.

## Schedule

| ID | WBS | Task | Duration | Start | Finish | Predecessors | Complete | Remaining | Baseline start | Baseline finish | Baseline duration | Total slack | Free slack | Constraint |
| --- | --- | --- | --- | --- | --- | --- | --- | --- | --- | --- | --- | --- | --- | --- |
| 1 | 1 | **Frisco Office TI** | 197d | 2025-09-08 A | 2026-06-09 |  | 5% | 186.94d | 2025-09-08 | 2026-06-16 | 202d | 0d |  |  |
| 2 | 1.1 | **Construction Documents** | 136d | 2025-09-08 A | 2026-03-16 |  | 7% | 126.1d | 2025-09-08 | 2025-11-14 | 50d | 45d |  |  |
| 3 | 1.1.1 | CD Kick off and Start | 34d | 2025-09-08 A | 2025-10-23 |  | 91% | 3d | 2025-09-08 | 2025-10-23 | 34d | 1d | 0d |  |
| 4 | 1.1.2 | 65% progress set | 1d | 2025-10-24 | 2025-10-24 | 3 |  |  | 2025-10-24 | 2025-10-24 | 1d | 1d | 0d |  |
| 5 | 1.1.3 | Owner Drawing review of 65% set | 5d | 2025-10-27 | 2025-10-31 | 4 |  |  | 2025-10-27 | 2025-10-31 | 5d | 1d | 0d |  |
| 6 | 1.1.4 | Completon of Bid, Demo and Permit Submital set | 10d | 2025-11-03 | 2025-11-14 | 5 |  |  | 2025-11-18 | 2025-11-25 | 6d | 1d | 0d |  |
| 7 | 1.1.5 | **Plan Check** | 31d | 2025-11-17 | 2025-12-29 |  |  |  |  |  |  | 5d |  |  |
| 8 | 1.1.5.1 | **Issue for Interiors Permit (Plan Check)** | 31d | 2025-11-17 | 2025-12-29 | 6 |  |  | 2025-11-03 | 2025-11-03 | 1d | 5d |  |  |
| 9 | 1.1.5.1.1 | City Permit Review | 15d | 2025-11-17 | 2025-12-05 |  |  |  | 2025-11-17 | 2025-12-29 | 31d | 5d | 0d |  |
| 10 | 1.1.5.1.2 | Drawing Coordination/City Comments | 15d | 2025-12-08 | 2025-12-26 | 9 |  |  | 2025-12-30 | 2026-01-13 | 11d | 5d | 0d |  |
| 11 | 1.1.5.1.3 | Receive Interior TI Building Permit | 1d | 2025-12-29 | 2025-12-29 | 10 |  |  | 2026-01-14 | 2026-01-14 | 1d | 5d | 4d |  |
| 12 | 1.1.5.2 | **Issue for Demo Permit** | 16d | 2025-11-17 | 2025-12-08 | 6 |  |  |  |  |  | 5d |  |  |
| 13 | 1.1.5.2.1 | Demo Permit Review | 15d | 2025-11-17 | 2025-12-05 |  |  |  |  |  |  | 5d | 0d |  |
| 14 | 1.1.5.2.2 | Receive Demo Permit | 1d | 2025-12-08 | 2025-12-08 | 13 |  |  |  |  |  | 5d | 4d | start no earlier than 2025-09-01 |
| 15 | 1.1.6 | **Bidding** | 20d | 2025-11-17 | 2025-12-12 |  |  |  | 2025-11-17 | 2025-12-19 | 25d | 1d |  |  |
| 16 | 1.1.6.1 | Bidding for TI GCs | 15d | 2025-11-17 | 2025-12-05 | 6 |  |  | 2025-11-17 | 2025-12-05 | 15d | 1d | 0d |  |
| 17 | 1.1.6.2 | Award GC Contract | 5d | 2025-12-08 | 2025-12-12 | 16 |  |  | 2025-12-08 | 2025-12-19 | 10d | 1d | 0d |  |
| 18 | 1.1.7 | **Procurement of Direct FBO items** | 136d | 2025-09-08 | 2026-03-16 |  |  |  | 2025-10-27 | 2026-03-16 | 101d | 35d |  |  |
| 19 | 1.1.7.1 | **Furniture** | 97d | 2025-10-31 | 2026-03-16 |  |  |  | 2025-10-31 | 2026-03-16 | 97d | 35d |  |  |
| 20 | 1.1.7.1.1 | Select Furniture Vendor | 1d | 2025-10-31 | 2025-10-31 |  |  |  | 2025-10-31 | 2025-10-31 | 1d | 35d | 0d | start no earlier than 2025-10-31 |
| 21 | 1.1.7.1.2 | Review and finalize details for furniture | 15d | 2025-11-03 | 2025-11-21 | 20 |  |  | 2025-11-03 | 2025-11-21 | 15d | 35d | 0d |  |
| 22 | 1.1.7.1.3 | Furniture Order Due | 1d | 2025-11-24 | 2025-11-24 | 21 |  |  | 2025-11-24 | 2025-11-24 | 1d | 35d | 0d |  |
| 23 | 1.1.7.1.4 | Furniture Lead Time | 80d | 2025-11-25 | 2026-03-16 | 22 |  |  | 2025-11-25 | 2026-03-16 | 80d | 35d |  |  |
| 24 | 1.1.7.2 | **HVAC Equipment** | 71d | 2025-10-27 | 2026-02-02 |  |  |  | 2025-10-27 | 2026-02-02 | 71d | 0d |  |  |
| 25 | 1.1.7.2.1 | Order Roof Top HVAC equipment | 1d | 2025-10-27 | 2025-10-27 |  |  |  | 2025-10-27 | 2025-10-27 | 1d | 0d |  | start no earlier than 2025-10-27 |
| 26 | 1.1.7.2.2 | HVAC Equipment Lead Time | 70d | 2025-10-28 | 2026-02-02 | 25 |  |  | 2025-10-28 | 2026-02-02 | 70d | 0d |  |  |

| ID | WBS | Task | Duration | Start | Finish | Predecessors | Baseline start | Baseline finish | Baseline duration | Total slack | Free slack |
| --- | --- | --- | --- | --- | --- | --- | --- | --- | --- | --- | --- |
| 27 | 1.1.7.3 | **Elevator Modernization** | 126d | 2025-09-08 | 2026-03-02 |  | 2025-10-27 | 2026-03-16 | 101d | 55d |  |
| 28 | 1.1.7.3.1 | Contract for Elevator Modernization | 1d | 2025-09-08 | 2025-09-08 |  | 2025-10-27 | 2025-10-27 | 1d | 55d | 0d |
| 29 | 1.1.7.3.2 | Elevator Equipment Lead Time | 100d | 2025-09-09 | 2026-01-26 | 28 | 2025-10-28 | 2026-03-16 | 100d | 55d | 0d |
| 30 | 1.1.7.3.3 | Elevator Modernization | 25d | 2026-01-27 | 2026-03-02 | 29 | 2026-03-17 | 2026-04-20 | 25d | 55d |  |
| 31 | 1.1.7.4 | **Demolition** | 15d | 2025-12-15 | 2026-01-02 |  |  |  |  | 1d |  |
| 32 | 1.1.7.4.1 | Demo of finishes/Existing | 15d | 2025-12-15 | 2026-01-02 | 17, 14 | 2026-01-16 | 2026-02-12 | 20d | 1d | 0d |
| 33 | 1.2 | **Construction** | 112d | 2026-01-05 | 2026-06-09 |  | 2026-01-15 | 2026-06-16 | 109d | 0d |  |
| 34 | 1.2.1 | Overhead MEP installation | 15d | 2026-01-05 | 2026-01-23 | 32, 11 | 2026-02-13 | 2026-03-12 | 20d | 1d | 0d |
| 35 | 1.2.2 | Installation of Roof Top HVAC | 10d | 2026-02-03 | 2026-02-16 | 25, 26 | 2026-02-03 | 2026-02-16 | 10d | 0d |  |
| 36 | 1.2.3 | Installation of VAV boxes HVAC rework | 10d | 2026-02-03 | 2026-02-16 | 26 |  |  |  | 35d |  |
| 37 | 1.2.4 | Framing one side drywall | 15d | 2026-01-26 | 2026-02-13 | 34 | 2026-02-13 | 2026-03-12 | 20d | 1d |  |
| 38 | 1.2.5 | MEP Rough in Walls and Floors | 15d | 2026-02-17 | 2026-03-09 | 37, 35 | 2026-03-13 | 2026-04-02 | 15d | 0d |  |
| 39 | 1.2.6 | Data and Wiring Low Voltage | 10d | 2026-03-03 | 2026-03-16 | 38SS+10d | 2026-04-03 | 2026-04-16 | 10d | 0d |  |
| 40 | 1.2.7 | Wall Taping finish | 15d | 2026-03-17 | 2026-04-06 | 39 | 2026-04-03 | 2026-04-30 | 20d | 0d |  |
| 41 | 1.2.8 | Grid install rework | 10d | 2026-04-07 | 2026-04-20 | 40, 36 | 2026-03-13 | 2026-04-09 | 20d | 0d |  |
| 42 | 1.2.9 | Light fixtures install | 10d | 2026-04-14 | 2026-04-27 | 41SS+5d | 2026-04-10 | 2026-04-23 | 10d | 0d |  |
| 43 | 1.2.10 | Ceiling tile installation | 10d | 2026-04-28 | 2026-05-11 | 42, 46 | 2026-04-24 | 2026-05-07 | 10d | 0d |  |
| 44 | 1.2.11 | Millwork and fixtures | 15d | 2026-04-07 | 2026-04-27 | 40 | 2026-05-01 | 2026-05-21 | 15d | 15d |  |
| 45 | 1.2.12 | AV Equipment Installation | 10d | 2026-04-07 | 2026-04-20 | 38, 39, 40 | 2026-05-01 | 2026-05-14 | 10d | 20d |  |
| 46 | 1.2.13 | Security Systems Equipment Installation | 10d | 2026-04-07 | 2026-04-20 | 38, 39, 40 | 2026-05-01 | 2026-05-14 | 10d | 5d |  |
| 47 | 1.2.14 | Furniture systems installation | 10d | 2026-05-05 | 2026-05-18 | 23, 38, 43SS+5d | 2026-04-03 | 2026-04-30 | 20d | 0d |  |
| 48 | 1.2.15 | Inspections and Commissioning | 10d | 2026-05-19 | 2026-06-01 | 47, 45, 44, 43, 46, 30 | 2026-05-26 | 2026-06-08 | 10d | 0d |  |
| 49 | 1.2.16 | Final Clean | 5d | 2026-06-02 | 2026-06-08 | 48 | 2026-06-09 | 2026-06-15 | 5d | 0d |  |
| 50 | 1.2.17 | Move in | 1d | 2026-06-09 | 2026-06-09 | 49 | 2026-06-16 | 2026-06-16 | 1d | 0d |  |
