# Public Storage HQ

Schedule from MS Project XML, 2025-09-08 to 2026-06-01, status date 2025-12-10.

## Calendars

- Standard: Mon-Fri 08:00-12:00, 13:00-17:00; Sat-Sun off. Exceptions (off unless hours are given): 2025-12-25 to 2025-12-26 (Christmas), 2025-12-31 to 2026-01-01 (New Years).

## Schedule

| ID | WBS | Task | Type | Duration | Start | Finish | Predecessors | Total slack | Free slack | Constraint |
| --- | --- | --- | --- | --- | --- | --- | --- | --- | --- | --- |
| 1 | 1 | **Construction Documents** |  | 50d | 2025-09-08 | 2025-11-14 |  | 0d |  |  |
| 2 | 1.1 | CD Kick off and Start | manual | 34d | 2025-09-08 | 2025-10-23 |  |  |  | start no earlier than 2025-09-08 |
| 3 | 1.2 | 65% progress set |  | 1d | 2025-10-24 | 2025-10-24 | 2 | 6d | 0d |  |
| 4 | 1.3 | Owner Drawing review Of 65% set |  | 5d | 2025-10-27 | 2025-10-31 | 3 | 6d | 0d |  |
| 5 | 1.4 | Completon of Bid, Demo and Permit Submital set |  | 10d | 2025-11-03 | 2025-11-14 | 4 | 6d | 0d |  |
| 6 | 2 | **Plan Check** |  | 29d | 2025-11-17 | 2025-12-29 |  | 6d |  |  |
| 7 | 2.1 | **Issue for Interiors Permit (Plan Check)** |  | 29d | 2025-11-17 | 2025-12-29 |  | 6d |  |  |
| 8 | 2.1.1 | City Permit Review |  | 15d | 2025-11-17 | 2025-12-05 | 5 | 6d | 0d |  |
| 9 | 2.1.2 | Drawing Coordination/City Comments |  | 13d | 2025-12-08 | 2025-12-24 | 8 | 6d | 0d |  |
| 10 | 2.1.3 | Receive interior Tl Building Permit |  | 1d | 2025-12-29 | 2025-12-29 | 9 | 6d |  |  |
| 11 | 2.2 | **Issue for Demo Permit** |  | 16d | 2025-11-17 | 2025-12-08 |  | 121d |  |  |
| 12 | 2.2.1 | Demo Permit Review |  | 15d | 2025-11-17 | 2025-12-05 | 5 | 121d | 0d |  |
| 13 | 2.2.2 | Receive Demo Permit |  | 1d | 2025-12-08 | 2025-12-08 | 12 | 121d |  |  |
| 14 | 3 | **Bidding** |  | 19d | 2025-11-17 | 2025-12-11 |  | 0d |  |  |
| 15 | 3.1 | Bidding for Tl GCs | manual | 15d | 2025-11-17 | 2025-12-05 |  |  |  | start no earlier than 2025-11-17 |
| 16 | 3.2 | Award GC Contract |  | 4d | 2025-12-08 | 2025-12-11 | 15 | 0d |  |  |
| 17 | 4 | **Contracting** |  | 16d | 2025-12-12 | 2026-01-08 |  | 0d |  |  |
| 18 | 4.1 | Execute Demo LOA |  | 1d | 2025-12-12 | 2025-12-12 | 16 | 0d |  |  |
| 19 | 4.2 | Contract Preparation |  | 5d | 2025-12-15 | 2025-12-19 | 18 | 0d |  |  |
| 20 | 4.3 | Contract Negotiation |  | 5d | 2025-12-22 | 2025-12-30 | 19 | 0d |  |  |
| 21 | 4.4 | Contract Execution |  | 5d | 2026-01-02 | 2026-01-08 | 20 | 0d |  |  |
| 22 | 5 | **ARCO Procurement** |  | 69d | 2026-01-09 | 2026-04-15 |  | 33d |  |  |
| 23 | 5.1 | Submittal Approval |  | 2w | 2026-01-09 | 2026-01-22 | 21 | 42d | 0d |  |
| 24 | 5.2 | Light Fixtures |  | 8w | 2026-01-23 | 2026-03-19 | 23 | 52d |  |  |
| 25 | 5.3 | Millwork Shop Drawings |  | 2.2w | 2026-01-23 | 2026-02-06 | 23 | 46d | 18d |  |
| 26 | 5.4 | Millwork Field Measure and Fab |  | 6w | 2026-03-05 | 2026-04-15 | 56, 25 | 28d | 0d |  |
| 27 | 5.5 | Flooring - Tile and Carpet |  | 6w | 2026-01-23 | 2026-03-05 | 23 | 62d |  |  |
| 28 | 5.6 | Frames |  | 6w | 2026-01-23 | 2026-03-05 | 23 | 62d |  |  |
| 29 | 5.7 | Doors, Hardware |  | 8w | 2026-01-23 | 2026-03-19 | 23 | 52d |  |  |
| 30 | 5.8 | Appliances |  | 8w | 2026-01-23 | 2026-03-19 | 23 | 52d |  |  |
| 31 | 5.9 | Ceiling Baffles |  | 10w | 2026-01-23 | 2026-04-02 | 23 | 42d |  |  |

| ID | WBS | Task | Type | Duration | Start | Finish | Predecessors | Total slack | Free slack | Constraint |
| --- | --- | --- | --- | --- | --- | --- | --- | --- | --- | --- |
| 32 | 6 | **Procurement Of Direct FBO items** |  | 136d | 2025-09-08 | 2026-03-20 |  | 0d |  |  |
| 33 | 6.1 | **Furniture** |  | 97d | 2025-10-31 | 2026-03-20 |  | 0d |  |  |
| 34 | 6.1.1 | Select Furniture Vendor | manual | 1d | 2025-10-31 | 2025-10-31 |  |  |  | start no earlier than 2025-10-31 |
| 35 | 6.1.2 | Review and finalize details for furniture |  | 15d | 2025-11-03 | 2025-11-21 | 34 | 51d | 0d |  |
| 36 | 6.1.3 | Furniture Order Due |  | 1d | 2025-11-24 | 2025-11-24 | 35 | 51d | 0d |  |
| 37 | 6.1.4 | Furniture Lead Time |  | 80d | 2025-11-25 | 2026-03-20 | 36 | 51d |  |  |
| 38 | 6.2 | **HVAC Equipment** |  | 71d | 2025-10-27 | 2026-02-06 |  | 0d |  |  |
| 39 | 6.2.1 | Order Roof Top HVAC equipment | manual | 1d | 2025-10-27 | 2025-10-27 |  |  |  | start no earlier than 2025-10-27 |
| 40 | 6.2.2 | HVAC Equipment Lead Time |  | 70d | 2025-10-28 | 2026-02-06 | 39 | 66d | 9d |  |
| 41 | 6.3 | **Elevator Modernization** |  | 123d | 2025-09-08 | 2026-03-03 |  | 0d |  |  |
| 42 | 6.3.1 | Contract for Elevator Modernization | manual | 1d | 2025-09-08 | 2025-09-08 |  |  |  | start no earlier than 2025-09-08 |
| 43 | 6.3.2 | Elevator Equipment Lead Time |  | 97d | 2025-09-09 | 2026-01-27 | 42 | 64d | 0d |  |
| 44 | 6.3.3 | Elevator Modernization |  | 25d | 2026-01-28 | 2026-03-03 | 43 | 64d |  |  |
| 45 | 6.4 | **Demolition** |  | 25d | 2025-12-15 | 2026-01-22 |  | 89d |  |  |
| 46 | 6.4.1 | MEP/F Make Safe |  | 3w | 2025-12-15 | 2026-01-08 | 18 | 102d |  |  |
| 47 | 6.4.2 | Demolition |  | 5w | 2025-12-15 | 2026-01-22 | 18 | 89d | 0d |  |
| 48 | 6.4.3 | Slab Demo and Coring - Level 2 North |  | 3d | 2026-01-20 | 2026-01-22 | 47FF | 92d |  |  |
| 49 | 7 | **Construction** |  | 101d | 2026-01-09 | 2026-05-29 |  | 0d |  |  |
| 50 | 7.1 | Overhead MEP Rough In |  | 30d | 2026-01-09 | 2026-02-19 | 21, 10 | 0d |  |  |
| 51 | 7.2 | Low Voltage Bulk Cabling |  | 20d | 2026-01-30 | 2026-02-26 | 50SS+3w | 67d |  |  |
| 52 | 7.3 | Walls - Studs and Track |  | 15d | 2026-01-23 | 2026-02-12 | 50SS+2w | 0d |  |  |
| 53 | 7.4 | Underslab MEP |  | 3d | 2026-01-23 | 2026-01-27 | 47 | 89d |  |  |
| 54 | 7.5 | MEP Rough-in Walls |  | 15d | 2026-02-06 | 2026-02-26 | 52SS+2w | 67d |  |  |
| 55 | 7.6 | Single Side Drywall |  | 7d | 2026-02-13 | 2026-02-23 | 52 | 0d |  |  |
| 56 | 7.7 | Second Side Drywall - Level 2 North |  | 7d | 2026-02-24 | 2026-03-04 | 55 | 0d |  |  |
| 57 | 7.8 | Wall Tape and Bed |  | 12d | 2026-03-05 | 2026-03-20 | 56 | 0d |  |  |
| 58 | 7.9 | Grid Install Rework |  | 10d | 2026-03-16 | 2026-03-27 | 57FS-1w | 3d | 0d |  |
| 59 | 7.10 | Light Fixture Install and Ceiling MEP Finishes |  | 12d | 2026-03-23 | 2026-04-07 | 58FS-1w | 3d | 0d |  |
| 60 | 7.11 | Ceiling Tile Installation - Level 2 North |  | 10d | 2026-04-08 | 2026-04-21 | 59 | 3d |  |  |
| 61 | 7.12 | Restroom Renovations |  | 25d | 2026-02-16 | 2026-03-23 | 62SF | 51d |  |  |
| 62 | 7.13 | Carpet and Tile Prep and Install |  | 20d | 2026-03-23 | 2026-04-17 | 57 | 31d | 0d |  |
| 63 | 7.14 | Painting |  | 20d | 2026-03-23 | 2026-04-17 | 57 | 0d |  |  |
| 64 | 7.15 | MEP Trimout - Level 2 North |  | 15d | 2026-04-06 | 2026-04-24 | 63SS+2w | 0d |  |  |
| 65 | 7.16 | Millwork Install |  | 5d | 2026-04-16 | 2026-04-22 | 26 | 28d |  |  |
| 66 | 7.17 | Inspections and Commissioning |  | 10d | 2026-05-11 | 2026-05-22 | 75 | 0d |  |  |
| 67 | 7.18 | Punch Walk and Corrections |  | 5d | 2026-05-11 | 2026-05-15 | 75 | 11d |  |  |
| 68 | 7.19 | Final Clean |  | 5d | 2026-05-25 | 2026-05-29 | 66 | 0d |  |  |

| ID | WBS | Task | Type | Duration | Start | Finish | Predecessors | Total slack |
| --- | --- | --- | --- | --- | --- | --- | --- | --- |
| 69 | 7.20 | **Install of Owner Provided Equipment/Vendors** |  | 56d | 2026-02-20 | 2026-05-08 |  | 6d |
| 70 | 7.20.1 | Confirm Weather For RTU Replacements | manual | 1d | 2026-03-02 | 2026-03-02 |  |  |
| 71 | 7.20.2 | RTU Replacement |  | 3d | 2026-03-03 | 2026-03-05 | 70 | 62d |
| 72 | 7.20.3 | VAV Replacements - Level 2 North |  | 15d | 2026-02-20 | 2026-03-12 | 40, 50 | 57d |
| 73 | 7.20.4 | AV Equipment Installation |  | 10d | 2026-03-23 | 2026-04-03 | 57 | 41d |
| 74 | 7.20.5 | Security Systems Equipment Installation |  | 10d | 2026-03-23 | 2026-04-03 | 57 | 41d |
| 75 | 7.20.6 | Furniture Systems Installation |  | 10d | 2026-04-27 | 2026-05-08 | 60, 64 | 0d |
| 76 | 8 | Move in |  | 1d | 2026-06-01 | 2026-06-01 | 68 | 0d |
