# Public Storage HQ

Schedule from MS Project, 2025-09-08 to 2026-06-02.

## Calendars

- Standard: Mon-Fri 08:00-12:00, 13:00-17:00; Sat-Sun off. Exceptions (off unless hours are given): 2025-12-25 to 2025-12-26 (Christmas), 2025-12-31 to 2026-01-01 (New Years).

## Schedule

| ID | WBS | Task | Type | Duration | Start | Finish | Predecessors | Total slack | Free slack | Constraint |
| --- | --- | --- | --- | --- | --- | --- | --- | --- | --- | --- |
| 1 | 1 | **Construction Documents** |  | 50d | 2025-09-08 | 2025-11-14 |  | 0d |  |  |
| 2 | 1.1 | CD Kick off and Start | manual | 34d | 2025-09-08 | 2025-10-23 |  |  |  | start no earlier than 2025-09-08 |
| 3 | 1.2 | 65% progress set |  | 1d | 2025-10-24 | 2025-10-24 | 2 | 12d | 0d |  |
| 4 | 1.3 | Owner Drawing review Of 65% set |  | 5d | 2025-10-27 | 2025-10-31 | 3 | 12d | 0d |  |
| 5 | 1.4 | Completon of Bid, Demo and Permit Submital set |  | 10d | 2025-11-03 | 2025-11-14 | 4 | 12d | 0d |  |
| 6 | 2 | **Plan Check** |  | 36d | 2025-11-17 | 2026-01-09 |  | 12d |  |  |
| 7 | 2.1 | **Issue for Interiors Permit (Plan Check)** |  | 36d | 2025-11-17 | 2026-01-09 |  | 12d |  |  |
| 8 | 2.1.1 | City Permit Review |  | 15d | 2025-11-17 | 2025-12-05 | 5 | 12d | 0d |  |
| 9 | 2.1.2 | Drawing Coordination/City Comments |  | 20d | 2025-12-08 | 2026-01-08 | 8 | 12d | 0d |  |
| 10 | 2.1.3 | Receive interior Tl Building Permit |  | 1d | 2026-01-09 | 2026-01-09 | 9 | 12d | 0d |  |
| 11 | 2.2 | **Issue for Demo Permit** |  | 16d | 2025-11-17 | 2025-12-08 |  | 122d |  |  |
| 12 | 2.2.1 | Demo Permit Review |  | 15d | 2025-11-17 | 2025-12-05 | 5 | 122d | 0d |  |
| 13 | 2.2.2 | Receive Demo Permit |  | 1d | 2025-12-08 | 2025-12-08 | 12 | 122d |  |  |
| 14 | 3 | **Bidding** |  | 19d | 2025-11-17 | 2025-12-11 |  | 0d |  |  |
| 15 | 3.1 | Bidding for Tl GCs | manual | 15d | 2025-11-17 | 2025-12-05 |  |  |  | start no earlier than 2025-11-17 |
| 16 | 3.2 | Award GC Contract |  | 4d | 2025-12-08 | 2025-12-11 | 15 | 0d |  |  |
| 17 | 4 | **Contracting** |  | 16d | 2025-12-12 | 2026-01-08 |  | 0d |  |  |
| 18 | 4.1 | Execute Demo LOA |  | 1d | 2025-12-12 | 2025-12-12 | 16 | 0d |  |  |
| 19 | 4.2 | Contract Preparation |  | 5d | 2025-12-15 | 2025-12-19 | 18 | 0d |  |  |
| 20 | 4.3 | Contract Negotiation |  | 5d | 2025-12-22 | 2025-12-30 | 19 | 0d |  |  |
| 21 | 4.4 | Contract Execution |  | 5d | 2026-01-02 | 2026-01-08 | 20 | 0d |  |  |
| 22 | 5 | **ARCO Procurement** |  | 79d | 2026-01-09 | 2026-04-29 |  | 0d |  |  |
| 23 | 5.1 | Submittal Approval - MEPs |  | 2w | 2026-01-09 | 2026-01-22 | 21 | 0d |  |  |
| 24 | 5.2 | Light Fixtures |  | 9w | 2026-01-23 | 2026-03-26 | 23 | 0d |  |  |
| 25 | 5.3 | Millwork Shop Drawings |  | 2w | 2026-01-23 | 2026-02-05 | 23 | 33d | 6d | finish no earlier than 2026-02-02 |
| 26 | 5.4 | Millwork Field Measure and Fab - Level 1 South |  | 6w | 2026-02-16 | 2026-03-27 | 92, 25 | 27d | 0d |  |
| 27 | 5.5 | Millwork Field Measure and Fab - Level 1 North |  | 6w | 2026-03-19 | 2026-04-29 | 25, 115 | 4d | 0d |  |
| 28 | 5.6 | Millwork Field Measure and Fab - Level 2 South |  | 6w | 2026-03-09 | 2026-04-17 | 25, 137 | 12d | 8d |  |
| 29 | 5.7 | Millwork Field Measure and Fab - Level 2 North |  | 6w | 2026-03-13 | 2026-04-23 | 25, 159 | 8d | 4d |  |
| 30 | 5.8 | Flooring - FC1 Submittal Approval |  | 3w | 2026-01-09 | 2026-01-29 | 21 | 23d | 0d |  |
| 31 | 5.9 | Flooring - FC2 - Submittal Approval |  | 3w | 2026-01-09 | 2026-01-29 | 21 | 23d | 0d |  |
| 32 | 5.10 | Flooring - FC3 - Submittal Approval |  | 3w | 2026-01-09 | 2026-01-29 | 21 | 23d | 0d |  |
| 33 | 5.11 | Flooring - FC4 -Submittal Approval |  | 3w | 2026-01-09 | 2026-01-29 | 21 | 23d | 0d |  |
| 34 | 5.12 | Flooring - FC5 - Submittal Approval |  | 3w | 2026-01-09 | 2026-01-29 | 21 | 23d | 0d |  |
| 35 | 5.13 | Flooring - FC7 - Submittal Approval |  | 3w | 2026-01-09 | 2026-01-29 | 21 | 23d | 0d |  |
| 36 | 5.14 | Flooring - LVT1 - Submittal Approval |  | 3w | 2026-01-09 | 2026-01-29 | 21 | 23d | 0d |  |
| 37 | 5.15 | Flooring - VCT1 - Submittal Approval |  | 3w | 2026-01-09 | 2026-01-29 | 21 | 23d | 0d |  |
| 38 | 5.16 | Flooring - FT1 - Submittal Approval |  | 3w | 2026-01-09 | 2026-01-29 | 21 | 38d | 0d |  |
| 39 | 5.17 | Flooring - FT2 - Submittal Approval |  | 3w | 2026-01-09 | 2026-01-29 | 21 | 23d | 0d |  |
| 40 | 5.18 | Wall Tile - WT1 - Submittal Approval |  | 3w | 2026-01-09 | 2026-01-29 | 21 | 43d | 0d |  |
| 41 | 5.19 | Wall Tile - WT2 - Submittal Approval |  | 3w | 2026-01-09 | 2026-01-29 | 21 | 43d | 0d |  |
| 42 | 5.20 | Wall Tile - WT3 - Submittal Approval |  | 3w | 2026-01-09 | 2026-01-29 | 21 | 33d | 0d |  |
| 43 | 5.21 | Wall Tile - WT4 - Submittal Approval |  | 3w | 2026-01-09 | 2026-01-29 | 21 | 43d | 0d |  |
| 44 | 5.22 | Flooring - FC1 |  | 6w | 2026-01-30 | 2026-03-12 | 30 | 23d | 0d |  |
| 45 | 5.23 | Flooring - FC2 |  | 6w | 2026-01-30 | 2026-03-12 | 31 | 23d | 0d |  |
| 46 | 5.24 | Flooring - FC3 |  | 6w | 2026-01-30 | 2026-03-12 | 32 | 23d | 0d |  |
| 47 | 5.25 | Flooring - FC4 |  | 6w | 2026-01-30 | 2026-03-12 | 33 | 23d | 0d |  |
| 48 | 5.26 | Flooring - FC5 |  | 6w | 2026-01-30 | 2026-03-12 | 34 | 23d | 0d |  |
| 49 | 5.27 | Flooring - FC7 |  | 6w | 2026-01-30 | 2026-03-12 | 35 | 23d | 0d |  |
| 50 | 5.28 | Flooring - LVT1 |  | 6w | 2026-01-30 | 2026-03-12 | 36 | 23d | 0d |  |
| 51 | 5.29 | Flooring - VCT1 |  | 6w | 2026-01-30 | 2026-03-12 | 37 | 23d | 0d |  |
| 52 | 5.30 | Flooring - FT1 |  | 3w | 2026-01-30 | 2026-02-19 | 38 | 38d | 15d |  |
| 53 | 5.31 | Flooring - FT2 |  | 6w | 2026-01-30 | 2026-03-12 | 39 | 23d | 0d |  |
| 54 | 5.32 | Wall Tile - WT1 |  | 2w | 2026-01-30 | 2026-02-12 | 40 | 43d | 20d |  |
| 55 | 5.33 | Wall Tile - WT2 |  | 2w | 2026-01-30 | 2026-02-12 | 41 | 43d | 20d |  |
| 56 | 5.34 | Wall Tile - WT3 |  | 4w | 2026-01-30 | 2026-02-26 | 42 | 33d | 10d |  |
| 57 | 5.35 | Wall Tile - WT4 |  | 2w | 2026-01-30 | 2026-02-12 | 43 | 43d | 20d |  |
| 58 | 5.36 | Door Frames |  | 6w | 2026-01-23 | 2026-03-05 | 23 | 14d | 1d |  |
| 59 | 5.37 | Doors, Hardware |  | 8w | 2026-01-23 | 2026-03-19 | 23 | 38d |  |  |
| 60 | 5.38 | Appliances |  | 8w | 2026-01-23 | 2026-03-19 | 23 | 38d |  |  |
| 61 | 5.39 | Ceiling Baffles - Breakroom |  | 10w | 2026-01-23 | 2026-04-02 | 23 | 43d |  |  |

| ID | WBS | Task | Type | Duration | Start | Finish | Predecessors | Total slack | Free slack | Constraint |
| --- | --- | --- | --- | --- | --- | --- | --- | --- | --- | --- |
| 62 | 6 | **Procurement Of Direct FBO items** |  | 103d | 2025-10-31 | 2026-03-30 |  | 0d |  |  |
| 63 | 6.1 | **Furniture** |  | 97d | 2025-10-31 | 2026-03-20 |  | 0d |  |  |
| 64 | 6.1.1 | Select Furniture Vendor | manual | 1d | 2025-10-31 | 2025-10-31 |  |  |  | start no earlier than 2025-10-31 |
| 65 | 6.1.2 | Review and finalize details for furniture |  | 15d | 2025-11-03 | 2025-11-21 | 64 | 27d | 0d |  |
| 66 | 6.1.3 | Furniture Order Due |  | 1d | 2025-11-24 | 2025-11-24 | 65 | 27d | 0d |  |
| 67 | 6.1.4 | Furniture Lead Time |  | 80d | 2025-11-25 | 2026-03-20 | 66 | 27d |  |  |
| 68 | 6.2 | **HVAC Equipment** |  | 58d | 2025-12-08 | 2026-03-03 |  | 0d |  |  |
| 69 | 6.2.1 | Order Roof Top HVAC equipment | manual | 1d | 2025-12-08 | 2025-12-08 |  |  |  | start no earlier than 2025-12-08 |
| 70 | 6.2.2 | HVAC Equipment Lead Time - RTUs |  | 50d | 2025-12-17 | 2026-03-02 | 69 | 63d | 0d | finish no earlier than 2026-03-02 |
| 71 | 6.2.3 | HVAC Equipment Lead Time - VAVs |  | 57d | 2025-12-09 | 2026-03-03 | 69 | 10d | 0d |  |
| 72 | 6.3 | **Elevator Modernization** |  | 56d | 2026-01-12 | 2026-03-30 |  | 0d |  |  |
| 73 | 6.3.1 | Contract for Elevator Modernization | manual | 1d | 2026-01-12 | 2026-01-12 |  |  |  | start no earlier than 2026-01-12 |
| 74 | 6.3.2 | Elevator Equipment Lead Time |  | 30d | 2026-01-13 | 2026-02-23 | 73 | 31d | 0d |  |
| 75 | 6.3.3 | Elevator Modernization |  | 25d | 2026-02-24 | 2026-03-30 | 74 | 31d |  |  |
| 76 | 6.4 | **Demolition** |  | 29d | 2025-12-15 | 2026-01-28 |  | 89d |  |  |
| 77 | 6.4.1 | MEP/F Make Safe |  | 3w | 2025-12-15 | 2026-01-08 | 18 | 103d |  |  |
| 78 | 6.4.2 | Demolition |  | 5w | 2025-12-19 | 2026-01-28 | 18 | 89d | 18d | finish no earlier than 2026-01-28 |
| 79 | 7 | **Construction** |  | 101d | 2026-01-12 | 2026-06-01 |  | 1d |  |  |
| 80 | 7.1 | **Level 1 South** |  | 70d | 2026-01-12 | 2026-04-17 |  | 12d |  |  |
| 81 | 7.1.1 | Overhead MEP Rough In |  | 30d | 2026-01-12 | 2026-02-20 | 21, 10 | 12d | 0d |  |
| 82 | 7.1.2 | Low Voltage Bulk Cabling |  | 20d | 2026-02-02 | 2026-02-27 | 81SS+3w | 57d | 19d |  |
| 83 | 7.1.3 | Slab Demo and Coring |  | 4d | 2026-01-20 | 2026-01-23 | 78SS | 25d | 0d | start no earlier than 2026-01-20 |
| 84 | 7.1.4 | Walls - Studs and Track |  | 4d | 2026-01-22 | 2026-01-27 | 81SS | 4d | 0d | start no earlier than 2026-01-22 |
| 85 | 7.1.5 | Underslab MEP |  | 6d | 2026-01-26 | 2026-02-02 | 83 | 50d | 0d |  |
| 86 | 7.1.6 | Underslab MEP Inspection |  | 1d | 2026-02-03 | 2026-02-03 | 85 | 50d | 0d | start no earlier than 2026-01-12 |
| 87 | 7.1.7 | Concrete Slab Pourback |  | 2d | 2026-02-04 | 2026-02-05 | 86 | 50d | 25d | start no earlier than 2026-01-12 |
| 88 | 7.1.8 | Fire Alarm Rough-in |  | 2d | 2026-01-28 | 2026-01-29 | 84 | 73d |  | start no earlier than 2026-01-23 |
| 89 | 7.1.9 | MEP Rough-in Walls |  | 10d | 2026-01-23 | 2026-02-05 | 84SS+1d | 27d | 0d |  |
| 90 | 7.1.10 | MEP Rough-in Inspection |  | 1d | 2026-02-06 | 2026-02-06 | 89 | 27d | 0d | start no earlier than 2026-01-23 |
| 91 | 7.1.11 | Single Side Drywall |  | 5d | 2026-01-28 | 2026-02-03 | 84 | 30d | 3d |  |
| 92 | 7.1.12 | Second Side Drywall |  | 5d | 2026-02-09 | 2026-02-13 | 91, 89FF, 90 | 27d | 0d |  |
| 93 | 7.1.13 | Wall Tape and Bed |  | 6d | 2026-02-11 | 2026-02-18 | 92SS+2d | 34d | 0d |  |
| 94 | 7.1.14 | Grid Install Rework |  | 6d | 2026-03-11 | 2026-03-18 | 93FS-1w, 176 | 15d | 11d |  |
| 95 | 7.1.15 | Light Fixture Install and Ceiling MEP Finishes |  | 8d | 2026-03-27 | 2026-04-07 | 94FS-1w, 24 | 4d | 0d |  |
| 96 | 7.1.16 | Ceiling Cover Inspection |  | 1d | 2026-04-08 | 2026-04-08 | 95 | 11d | 4d | start no earlier than 2026-01-23 |
| 97 | 7.1.17 | Ceiling Tile Installation |  | 3d | 2026-04-15 | 2026-04-17 | 96, 119, 141, 163 | 7d |  |  |
| 98 | 7.1.18 | Restroom Renovations |  | 10d | 2026-02-27 | 2026-03-13 | 99SF, 56FF, 57FF | 42d | 0d |  |
| 99 | 7.1.19 | Carpet and Tile Prep and Install |  | 8d | 2026-03-13 | 2026-03-24 | 93, 44, 45, 46, 47, 48, 49, 50, 51, 52, 53, 54, 55, 56, 57, 87 | 25d | 0d |  |
| 100 | 7.1.20 | Painting |  | 10d | 2026-02-19 | 2026-03-04 | 93 | 48d | 6d |  |
| 101 | 7.1.21 | MEP Trimout |  | 10d | 2026-03-13 | 2026-03-26 | 100SS+2w, 98 | 42d |  |  |
| 102 | 7.1.22 | Millwork Install |  | 5d | 2026-03-30 | 2026-04-03 | 26 | 42d |  |  |

| ID | WBS | Task | Duration | Start | Finish | Predecessors | Total slack | Free slack | Constraint |
| --- | --- | --- | --- | --- | --- | --- | --- | --- | --- |
| 103 | 7.2 | **Level 1 North** | 83d | 2026-01-12 | 2026-05-06 |  | 13d |  |  |
| 104 | 7.2.1 | Overhead MEP Rough In | 30d | 2026-01-12 | 2026-02-20 | 21, 10 | 20d | 0d |  |
| 105 | 7.2.2 | Low Voltage Bulk Cabling | 20d | 2026-02-02 | 2026-02-27 | 104SS+3w | 57d | 19d |  |
| 106 | 7.2.3 | Slab Demo and Coring | 3d | 2026-01-26 | 2026-01-28 | 83 | 25d | 0d | start no earlier than 2026-01-20 |
| 107 | 7.2.4 | Walls - Studs and Track | 3d | 2026-02-09 | 2026-02-11 | 152 | 4d | 0d |  |
| 108 | 7.2.5 | Underslab MEP | 3d | 2026-01-29 | 2026-02-02 | 106 | 48d | 0d |  |
| 109 | 7.2.6 | Underslab MEP Inspection | 1d | 2026-02-03 | 2026-02-03 | 108 | 48d | 0d | start no earlier than 2026-01-12 |
| 110 | 7.2.7 | Concrete Slab Pourback | 4d | 2026-02-04 | 2026-02-09 | 109 | 48d | 33d | start no earlier than 2026-01-12 |
| 111 | 7.2.8 | Fire Alarm Rough-in | 2d | 2026-02-12 | 2026-02-13 | 107 | 62d |  | start no earlier than 2026-01-23 |
| 112 | 7.2.9 | MEP Rough-in Walls | 10d | 2026-02-23 | 2026-03-06 | 107SS+2w | 4d | 0d |  |
| 113 | 7.2.10 | MEP Rough-in Inspection | 1d | 2026-03-09 | 2026-03-09 | 112 | 4d | 0d | start no earlier than 2026-01-23 |
| 114 | 7.2.11 | Single Side Drywall | 7d | 2026-02-12 | 2026-02-20 | 107 | 15d | 11d |  |
| 115 | 7.2.12 | Second Side Drywall | 7d | 2026-03-10 | 2026-03-18 | 112FF, 114, 113 | 4d | 0d |  |
| 116 | 7.2.13 | Wall Tape and Bed | 6d | 2026-03-19 | 2026-03-26 | 115, 58 | 6d | 0d |  |
| 117 | 7.2.14 | Grid Install Rework | 4d | 2026-03-20 | 2026-03-25 | 116FS-1w, 177 | 6d |  |  |
| 118 | 7.2.15 | Light Fixture Install and Ceiling MEP Finishes | 12d | 2026-03-27 | 2026-04-13 | 117FS-1w, 24 | 0d |  |  |
| 119 | 7.2.16 | Ceiling Cover Inspection | 1d | 2026-04-14 | 2026-04-14 | 95, 118 | 0d |  | start no earlier than 2026-01-23 |
| 120 | 7.2.17 | Ceiling Tile Installation | 10d | 2026-04-15 | 2026-04-28 | 119 | 0d |  |  |
| 121 | 7.2.18 | Restroom Renovations | 10d | 2026-03-13 | 2026-03-27 | 122SF, 56FF, 57FF | 32d | 10d |  |
| 122 | 7.2.19 | Carpet and Tile Prep and Install | 8d | 2026-03-27 | 2026-04-07 | 116, 44, 45, 46, 47, 48, 49, 50, 51, 52, 53, 54, 55, 56, 57, 110 | 15d | 0d |  |
| 123 | 7.2.20 | Painting | 10d | 2026-03-27 | 2026-04-09 | 116 | 22d | 0d |  |
| 124 | 7.2.21 | MEP Trimout | 10d | 2026-04-10 | 2026-04-23 | 121, 123SS+2w | 22d |  |  |
| 125 | 7.2.22 | Millwork Install | 5d | 2026-04-30 | 2026-05-06 | 26, 27, 28, 29 | 4d |  |  |
| 126 | 7.3 | **Level 2 South** | 83d | 2026-01-12 | 2026-05-06 |  | 13d |  |  |
| 127 | 7.3.1 | Overhead MEP Rough In | 30d | 2026-01-12 | 2026-02-20 | 21, 10 | 19d | 0d |  |
| 128 | 7.3.2 | Low Voltage Bulk Cabling | 20d | 2026-02-02 | 2026-02-27 | 127SS+3w | 57d | 19d |  |
| 129 | 7.3.3 | Slab Demo and Coring | 2d | 2026-01-29 | 2026-01-30 | 106 | 25d | 0d | start no earlier than 2026-01-20 |
| 130 | 7.3.4 | Walls - Studs and Track | 4d | 2026-01-28 | 2026-02-02 | 84 | 4d | 0d |  |
| 131 | 7.3.5 | Underslab MEP | 3d | 2026-02-02 | 2026-02-04 | 129 | 25d | 0d |  |
| 132 | 7.3.6 | Underslab MEP Inspection | 1d | 2026-02-05 | 2026-02-05 | 131 | 25d | 13d | start no earlier than 2026-01-12 |
| 133 | 7.3.7 | Fire Alarm Rough-in | 2d | 2026-02-03 | 2026-02-04 | 130 | 69d |  | start no earlier than 2026-01-23 |
| 134 | 7.3.8 | MEP Rough-in Walls | 10d | 2026-02-11 | 2026-02-24 | 130SS+2w | 12d | 0d |  |
| 135 | 7.3.9 | MEP Rough-in Inspection | 1d | 2026-02-25 | 2026-02-25 | 134, 132 | 12d | 0d | start no earlier than 2026-01-23 |
| 136 | 7.3.10 | Single Side Drywall | 7d | 2026-02-03 | 2026-02-11 | 130 | 22d | 10d |  |
| 137 | 7.3.11 | Second Side Drywall | 7d | 2026-02-26 | 2026-03-06 | 134FF, 136, 135 | 12d | 0d |  |
| 138 | 7.3.12 | Wall Tape and Bed | 5d | 2026-03-09 | 2026-03-13 | 137, 58 | 14d | 0d |  |
| 139 | 7.3.13 | Grid Install Rework | 5d | 2026-03-11 | 2026-03-17 | 138FS-1w, 178 | 12d |  |  |
| 140 | 7.3.14 | Light Fixture Install and Ceiling MEP Finishes | 12d | 2026-03-27 | 2026-04-13 | 139FS-1w, 24 | 0d |  |  |
| 141 | 7.3.15 | Ceiling Cover Inspection | 1d | 2026-04-14 | 2026-04-14 | 95, 140 | 0d |  | start no earlier than 2026-01-23 |
| 142 | 7.3.16 | Ceiling Tile Installation | 10d | 2026-04-15 | 2026-04-28 | 141 | 0d |  |  |
| 143 | 7.3.17 | Restroom Renovations | 10d | 2026-03-02 | 2026-03-16 | 144SF, 56FF, 57FF | 41d | 10d |  |
| 144 | 7.3.18 | Carpet and Tile Prep and Install | 10d | 2026-03-16 | 2026-03-27 | 138, 44, 45, 46, 47, 48, 49, 50, 51, 52, 53, 54, 55, 56, 57 | 22d | 0d |  |
| 145 | 7.3.19 | Painting | 10d | 2026-03-16 | 2026-03-27 | 138 | 31d | 0d |  |
| 146 | 7.3.20 | MEP Trimout | 10d | 2026-03-30 | 2026-04-10 | 143, 145SS+2w | 31d |  |  |
| 147 | 7.3.21 | Millwork Install | 5d | 2026-04-30 | 2026-05-06 | 26, 27, 28, 29 | 4d |  |  |

| ID | WBS | Task | Duration | Start | Finish | Predecessors | Total slack | Free slack | Constraint |
| --- | --- | --- | --- | --- | --- | --- | --- | --- | --- |
| 148 | 7.4 | **Level 2 North** | 83d | 2026-01-12 | 2026-05-06 |  | 13d |  |  |
| 149 | 7.4.1 | Overhead MEP Rough In | 30d | 2026-01-12 | 2026-02-20 | 21, 10 | 17d | 0d |  |
| 150 | 7.4.2 | Low Voltage Bulk Cabling | 20d | 2026-02-02 | 2026-02-27 | 149SS+3w | 57d | 19d |  |
| 151 | 7.4.3 | Slab Demo and Coring - Level 2 North | 3d | 2026-02-02 | 2026-02-04 | 129 | 45d | 0d | start no earlier than 2026-01-20 |
| 152 | 7.4.4 | Walls - Studs and Track | 4d | 2026-02-03 | 2026-02-06 | 130 | 4d | 0d |  |
| 153 | 7.4.5 | Underslab MEP | 3d | 2026-02-05 | 2026-02-09 | 151 | 45d | 0d |  |
| 154 | 7.4.6 | Underslab MEP Inspection | 1d | 2026-02-10 | 2026-02-10 | 153 | 45d | 28d | start no earlier than 2026-01-12 |
| 155 | 7.4.7 | Fire Alarm Rough-in | 2d | 2026-02-09 | 2026-02-10 | 152 | 65d |  | start no earlier than 2026-01-23 |
| 156 | 7.4.8 | MEP Rough-in Walls | 10d | 2026-02-17 | 2026-03-02 | 152SS+2w | 8d | 0d |  |
| 157 | 7.4.9 | MEP Rough-in Inspection | 1d | 2026-03-03 | 2026-03-03 | 156 | 8d | 0d | start no earlier than 2026-01-23 |
| 158 | 7.4.10 | Single Side Drywall | 7d | 2026-02-09 | 2026-02-17 | 152 | 18d | 10d |  |
| 159 | 7.4.11 | Second Side Drywall - Level 2 North | 7d | 2026-03-04 | 2026-03-12 | 156FF, 158, 157 | 8d | 0d |  |
| 160 | 7.4.12 | Wall Tape and Bed | 6d | 2026-03-13 | 2026-03-20 | 159, 58 | 9d | 0d |  |
| 161 | 7.4.13 | Grid Install Rework | 5d | 2026-03-16 | 2026-03-20 | 160FS-1w, 179 | 9d |  |  |
| 162 | 7.4.14 | Light Fixture Install and Ceiling MEP Finishes | 12d | 2026-03-27 | 2026-04-13 | 161FS-1w, 24 | 0d |  |  |
| 163 | 7.4.15 | Ceiling Cover Inspection | 1d | 2026-04-14 | 2026-04-14 | 95, 162 | 0d |  | start no earlier than 2026-01-23 |
| 164 | 7.4.16 | Ceiling Tile Installation - Level 2 North | 10d | 2026-04-15 | 2026-04-28 | 163 | 0d |  |  |
| 165 | 7.4.17 | Restroom Renovations | 10d | 2026-03-09 | 2026-03-23 | 166SF, 56FF, 57FF | 36d | 10d |  |
| 166 | 7.4.18 | Carpet and Tile Prep and Install | 10d | 2026-03-23 | 2026-04-03 | 160, 44, 45, 46, 47, 48, 49, 50, 51, 52, 53, 54, 55, 56, 57, 154 | 17d | 0d |  |
| 167 | 7.4.19 | Painting | 10d | 2026-03-23 | 2026-04-03 | 160 | 26d | 0d |  |
| 168 | 7.4.20 | MEP Trimout - Level 2 North | 10d | 2026-04-06 | 2026-04-17 | 165, 167SS+2w | 26d |  |  |
| 169 | 7.4.21 | Millwork Install | 5d | 2026-04-30 | 2026-05-06 | 26, 27, 28, 29 | 4d |  |  |
| 170 | 7.5 | Inspections and Commissioning | 9d | 2026-05-13 | 2026-05-25 | 182, 59, 60, 75, 125, 147, 169, 88, 111, 133, 155 | 0d |  |  |
| 171 | 7.6 | Punch Walk and Corrections | 5d | 2026-05-13 | 2026-05-19 | 182 | 4d |  |  |
| 172 | 7.7 | Final Clean | 5d | 2026-05-26 | 2026-06-01 | 170, 171, 124, 101, 146, 168 | 0d |  |  |

| ID | WBS | Task | Type | Duration | Start | Finish | Predecessors | Total slack | Free slack |
| --- | --- | --- | --- | --- | --- | --- | --- | --- | --- |
| 173 | 7.8 | **Install of Owner Provided Equipment/Vendors** |  | 52d | 2026-03-02 | 2026-05-12 |  | 0d |  |
| 174 | 7.8.1 | Confirm Weather For RTU Replacements | manual | 1d | 2026-03-02 | 2026-03-02 |  |  |  |
| 175 | 7.8.2 | RTU Replacement |  | 3d | 2026-03-03 | 2026-03-05 | 174, 70 | 63d |  |
| 176 | 7.8.3 | VAV Replacements - Level 1 South |  | 5d | 2026-03-04 | 2026-03-10 | 71, 81 | 15d | 0d |
| 177 | 7.8.4 | VAV Replacements - Level 1 North |  | 5d | 2026-03-04 | 2026-03-10 | 71, 104 | 13d | 7d |
| 178 | 7.8.5 | VAV Replacements - Level 2 South |  | 5d | 2026-03-04 | 2026-03-10 | 71, 127 | 12d | 0d |
| 179 | 7.8.6 | VAV Replacements - Level 2 North |  | 7d | 2026-03-04 | 2026-03-12 | 71, 149 | 10d | 1d |
| 180 | 7.8.7 | AV Equipment Installation |  | 10d | 2026-03-27 | 2026-04-09 | 93, 82, 105, 116, 128, 138, 150, 160 | 38d |  |
| 181 | 7.8.8 | Security Systems Equipment Installation |  | 10d | 2026-03-27 | 2026-04-09 | 93, 82, 105, 116, 128, 138, 150, 160 | 38d |  |
| 182 | 7.8.9 | Furniture Systems Installation |  | 10d | 2026-04-29 | 2026-05-12 | 97, 67, 99, 120, 122, 142, 144, 164, 166 | 0d |  |
| 183 | 8 | Move in |  | 1d | 2026-06-02 | 2026-06-02 | 172 | 0d |  |
