# Public Storage HQ

Schedule from MS Project, 2025-09-08 to 2026-06-04, status date 2026-03-04, A marks actual dates.

## Calendars

- Standard: Mon-Fri 08:00-12:00, 13:00-17:00; Sat-Sun off. Exceptions (off unless hours are given): 2025-12-25 to 2025-12-26 (Christmas), 2025-12-31 to 2026-01-01 (New Years), 2026-05-25 to 2030-05-27 (Memorial Day Thru 2030, recurring).

## Schedule

| ID | WBS | Task | Duration | Start | Finish | Predecessors | Complete | Remaining | Total slack | Free slack | Constraint |
| --- | --- | --- | --- | --- | --- | --- | --- | --- | --- | --- | --- |
| 1 | 1 | **Construction Documents** | 50d | 2025-09-08 A | 2025-11-14 A |  | 100% |  |  |  |  |
| 2 | 1.1 | CD Kick off and Start | 34d | 2025-09-08 A | 2025-10-23 A |  | 100% |  |  |  | start no earlier than 2025-09-08 |
| 3 | 1.2 | 65% progress set | 1d | 2025-10-24 A | 2025-10-24 A | 2 | 100% |  |  |  |  |
| 4 | 1.3 | Owner Drawing review Of 65% set | 5d | 2025-10-27 A | 2025-10-31 A | 3 | 100% |  |  |  |  |
| 5 | 1.4 | Completon of Bid, Demo and Permit Submital set | 10d | 2025-11-03 A | 2025-11-14 A | 4 | 100% |  |  |  |  |
| 6 | 2 | **Plan Check** | 36d | 2025-11-17 A | 2026-01-09 A |  | 100% |  |  |  |  |
| 7 | 2.1 | **Issue for Interiors Permit (Plan Check)** | 36d | 2025-11-17 A | 2026-01-09 A |  | 100% |  |  |  |  |
| 8 | 2.1.1 | City Permit Review | 15d | 2025-11-17 A | 2025-12-05 A | 5 | 100% |  |  |  |  |
| 9 | 2.1.2 | Drawing Coordination/City Comments | 20d | 2025-12-08 A | 2026-01-08 A | 8 | 100% |  |  |  |  |
| 10 | 2.1.3 | Receive interior Tl Building Permit | 1d | 2026-01-09 A | 2026-01-09 A | 9 | 100% |  |  |  |  |
| 11 | 2.2 | **Issue for Demo Permit** | 16d | 2025-11-17 A | 2025-12-08 A |  | 100% |  |  |  |  |
| 12 | 2.2.1 | Demo Permit Review | 15d | 2025-11-17 A | 2025-12-05 A | 5 | 100% |  |  |  |  |
| 13 | 2.2.2 | Receive Demo Permit | 1d | 2025-12-08 A | 2025-12-08 A | 12 | 100% |  |  |  |  |
| 14 | 3 | **Bidding** | 19d | 2025-11-17 A | 2025-12-11 A |  | 100% |  |  |  |  |
| 15 | 3.1 | Bidding for Tl GCs | 15d | 2025-11-17 A | 2025-12-05 A |  | 100% |  |  |  | start no earlier than 2025-11-17 |
| 16 | 3.2 | Award GC Contract | 4d | 2025-12-08 A | 2025-12-11 A | 15 | 100% |  |  |  |  |
| 17 | 4 | **Contracting** | 16d | 2025-12-12 A | 2026-01-08 A |  | 100% |  |  |  |  |
| 18 | 4.1 | Execute Demo LOA | 1d | 2025-12-12 A | 2025-12-12 A | 16 | 100% |  |  |  |  |
| 19 | 4.2 | Contract Preparation | 5d | 2025-12-15 A | 2025-12-19 A | 18 | 100% |  |  |  |  |
| 20 | 4.3 | Contract Negotiation | 5d | 2025-12-22 A | 2025-12-30 A | 19 | 100% |  |  |  |  |
| 21 | 4.4 | Contract Execution | 5d | 2026-01-02 A | 2026-01-08 A | 20 | 100% |  |  |  |  |
| 22 | 5 | **ARCO Procurement** | 84d | 2026-01-09 A | 2026-05-06 |  | 46% | 45.71d | 20d |  |  |
| 23 | 5.1 | Submittal Approval - MEPs | 2.2w | 2026-01-09 A | 2026-01-23 A | 21 | 100% |  |  |  |  |
| 24 | 5.2 | Regular Light Fixture Submittal Approval (Architect) | 9d | 2026-01-28 A | 2026-02-09 A | 21 | 100% |  |  |  | start no earlier than 2026-01-28 |
| 25 | 5.3 | Specialty Light Fixture Submittal Approval (Architect) | 7d | 2026-02-09 A | 2026-02-17 A | 21, 24 | 100% |  |  |  |  |
| 26 | 5.4 | Light Fixtures - Regular Fixtures | 8w | 2026-02-10 A | 2026-04-06 | 24 | 43% | 4.6w | 24d | 0d |  |
| 27 | 5.5 | Light Fixtures - Specialty Fixtures | 9.5w | 2026-02-18 A | 2026-04-24 | 23, 25 | 23% | 7.3w | 11.5d | 0d |  |
| 28 | 5.6 | Millwork Shop Drawings | 2w | 2026-01-23 A | 2026-02-05 A | 23 | 100% |  |  |  |  |
| 29 | 5.7 | Millwork Drawing Review Approval | 3d | 2026-02-06 A | 2026-02-10 A | 28 | 100% |  |  |  |  |
| 30 | 5.8 | Millwork Field Measure and Fab - Level 1 South | 5w | 2026-03-05 | 2026-04-08 | 95, 29 |  |  | 26d | 0d |  |
| 31 | 5.9 | Millwork Field Measure and Fab - Level 1 North | 5w | 2026-03-17 | 2026-04-20 | 28, 119, 29 |  |  | 18d | 0d |  |
| 32 | 5.10 | Millwork Field Measure and Fab - Level 2 South | 5w | 2026-03-02 A | 2026-04-03 | 28, 140, 29 | 12% | 4.4w | 29d | 11d |  |
| 33 | 5.11 | Millwork Field Measure and Fab - Level 2 North | 5w | 2026-03-13 | 2026-04-16 | 28, 161, 29 |  |  | 20d | 2d |  |
| 34 | 5.12 | Flooring - FC1 Submittal Approval | 1.4w | 2026-02-04 A | 2026-02-12 A | 21 | 100% |  |  |  |  |
| 35 | 5.13 | Flooring - FC2 - Submittal Approval | 1.4w | 2026-02-04 A | 2026-02-12 A | 21 | 100% |  |  |  |  |
| 36 | 5.14 | Flooring - FC3 - Submittal Approval | 1.4w | 2026-02-04 A | 2026-02-12 A | 21 | 100% |  |  |  |  |
| 37 | 5.15 | Flooring - FC4 -Submittal Approval | 1.4w | 2026-02-04 A | 2026-02-12 A | 21 | 100% |  |  |  |  |
| 38 | 5.16 | Flooring - LVT1 - Submittal Approval | 1.4w | 2026-02-04 A | 2026-02-12 A | 21 | 100% |  |  |  |  |
| 39 | 5.17 | Flooring - VCT1 - Submittal Approval | 1.4w | 2026-02-04 A | 2026-02-12 A | 21 | 100% |  |  |  |  |
| 40 | 5.18 | Flooring - FT1 - Submittal Approval | 1w | 2026-02-04 A | 2026-02-10 A | 21 | 100% |  |  |  |  |
| 41 | 5.19 | Flooring - FT2 - Submittal Approval | 1w | 2026-02-04 A | 2026-02-10 A | 21 | 100% |  |  |  |  |
| 42 | 5.20 | Wall Tile - WT1 - Submittal Approval | 1w | 2026-02-04 A | 2026-02-10 A | 21 | 100% |  |  |  |  |
| 43 | 5.21 | Wall Tile - WT2 - Submittal Approval | 1w | 2026-02-04 A | 2026-02-10 A | 21 | 100% |  |  |  |  |
| 44 | 5.22 | Wall Tile - WT3 - Submittal Approval | 1w | 2026-02-04 A | 2026-02-10 A | 21 | 100% |  |  |  |  |
| 45 | 5.23 | Wall Tile - WT4 - Submittal Approval | 1w | 2026-02-04 A | 2026-02-10 A | 21 | 100% |  |  |  |  |
| 46 | 5.24 | Flooring - FC1 | 7.8w | 2026-02-13 A | 2026-04-08 | 34 | 36% | 5w | 3d | 0d |  |
| 47 | 5.25 | Flooring - FC2 | 7.8w | 2026-02-13 A | 2026-04-08 | 35 | 36% | 5w | 3d | 0d |  |
| 48 | 5.26 | Flooring - FC3 | 6w | 2026-02-13 A | 2026-03-26 | 36 | 47% | 3.2w | 12d | 9d |  |
| 49 | 5.27 | Flooring - FC4 | 6w | 2026-02-13 A | 2026-03-26 | 37 | 47% | 3.2w | 12d | 9d |  |
| 50 | 5.28 | Flooring - LVT1 | 8.8w | 2026-02-13 A | 2026-04-15 | 38 | 32% | 6w | 35d |  |  |
| 51 | 5.29 | Flooring - VCT1 | 6w | 2026-02-13 A | 2026-03-26 | 39 | 47% | 3.2w | 12d | 9d |  |
| 52 | 5.30 | Flooring - FT1 | 4.4w | 2026-02-11 A | 2026-03-12 | 40 | 73% | 1.2w | 22d | 19d |  |
| 53 | 5.31 | Flooring - FT2 | 6.6w | 2026-02-11 A | 2026-03-27 | 41 | 48% | 3.4w | 11d | 8d | finish no earlier than 2026-03-27 |
| 54 | 5.32 | Wall Tile - WT1 | 2w | 2026-02-11 A | 2026-02-24 A | 42 | 100% |  |  |  |  |
| 55 | 5.33 | Wall Tile - WT2 | 2w | 2026-02-11 A | 2026-02-24 A | 43 | 100% |  |  |  |  |
| 56 | 5.34 | Wall Tile - WT3 | 7.8w | 2026-02-11 A | 2026-04-06 | 44 | 41% | 4.6w | 5d | 2d | finish no earlier than 2026-04-06 |
| 57 | 5.35 | Wall Tile - WT4 | 3.6w | 2026-02-11 A | 2026-03-06 | 45 | 89% | 0.4w | 26d | 23d | finish no earlier than 2026-03-06 |
| 58 | 5.36 | Doors, Frames, and Hardware Submittal Review | 5d | 2026-02-16 A | 2026-02-20 A | 21 | 100% |  |  |  |  |
| 59 | 5.37 | Door Frames | 5w | 2026-02-25 A | 2026-03-31 | 58 | 24% | 3.8w | 14d | 0d |  |
| 60 | 5.38 | Doors, Hardware | 8w | 2026-02-23 A | 2026-04-17 | 58 | 20% | 6.4w | 24d |  |  |
| 61 | 5.39 | Appliances | 8w | 2026-01-26 A | 2026-03-20 | 23 | 70% | 2.4w | 44d |  |  |
| 62 | 5.40 | Breakroom Ceiling Baffle Product Selection (by others) | 6d | 2026-02-19 A | 2026-02-26 A | 21 | 100% |  |  |  | start no earlier than 2026-02-18 |
| 63 | 5.41 | Ceiling Baffles - Breakroom | 10w | 2026-02-26 A | 2026-05-06 | 23, 62 | 10% | 9w | 11d |  |  |

| ID | WBS | Task | Duration | Start | Finish | Predecessors | Complete | Remaining | Total slack | Free slack | Constraint |
| --- | --- | --- | --- | --- | --- | --- | --- | --- | --- | --- | --- |
| 64 | 6 | **Procurement Of Direct FBO items** | 116d | 2025-11-03 A | 2026-04-17 |  | 77% | 26.5d | 24d |  |  |
| 65 | 6.1 | **Furniture** | 116d | 2025-11-03 A | 2026-04-17 |  | 67% | 38.27d | 0d |  |  |
| 66 | 6.1.1 | Select Furniture Vendor | 1d | 2026-02-19 A | 2026-02-19 A |  | 100% |  |  |  | start no earlier than 2026-02-18 |
| 67 | 6.1.2 | Review and finalize details for furniture | 15d | 2025-11-03 A | 2025-11-21 A | 66 | 100% |  |  |  |  |
| 68 | 6.1.3 | Furniture Order Due | 1d | 2025-11-24 A | 2025-11-24 A | 67 | 100% |  |  |  |  |
| 69 | 6.1.4 | Furniture Lead Time | 80d | 2025-12-23 A | 2026-04-17 | 68 | 60% | 32d | 0d |  | finish no earlier than 2026-04-17 |
| 70 | 6.2 | **HVAC Equipment** | 80d | 2025-12-09 A | 2026-04-03 |  | 85% | 11.81d | 22d |  |  |
| 71 | 6.2.1 | Order Roof Top HVAC equipment | 1d | 2025-12-09 A | 2025-12-09 A |  | 100% |  |  |  | start no earlier than 2026-02-18 |
| 72 | 6.2.2 | HVAC Equipment Lead Time - RTUs | 58d | 2025-12-09 A | 2026-03-04 A | 71 | 100% |  |  |  | finish no earlier than 2026-03-02 |
| 73 | 6.2.3 | HVAC Equipment Lead Time - VAVs (Round 1) | 58d | 2025-12-09 A | 2026-03-04 A | 71 | 100% |  |  |  |  |
| 74 | 6.2.4 | HVAC Equipment Lead Time - VAVs (Round 2) | 32d | 2026-02-19 A | 2026-04-03 |  | 31% | 22d | 22d | 0d | start no earlier than 2026-02-18 |
| 75 | 6.3 | **Elevator Modernization** | 60d | 2026-01-13 A | 2026-04-06 |  | 62% | 22.62d | 33d |  |  |
| 76 | 6.3.1 | Contract for Elevator Modernization | 1d | 2026-02-19 A | 2026-02-19 A |  | 100% |  |  |  | start no earlier than 2026-02-18 |
| 77 | 6.3.2 | Elevator Equipment Lead Time | 35d | 2026-01-13 A | 2026-03-02 A | 76 | 100% |  |  |  |  |
| 78 | 6.3.3 | Elevator Modernization | 25d | 2026-03-03 A | 2026-04-06 | 77 | 8% | 23d | 33d |  |  |
| 79 | 6.4 | **Demolition** | 34d | 2025-12-15 A | 2026-02-04 A |  | 100% |  |  |  |  |
| 80 | 6.4.1 | MEP/F Make Safe | 3w | 2025-12-15 A | 2026-01-08 A | 18 | 100% |  |  |  |  |
| 81 | 6.4.2 | Demolition | 3w | 2026-01-15 A | 2026-02-04 A | 18 | 100% |  |  |  | finish no earlier than 2026-01-28 |
| 82 | 7 | **Construction** | 102d | 2026-01-12 A | 2026-06-03 |  | 42% | 59.62d | 1d |  |  |
| 83 | 7.1 | **Level 1 South** | 82.5d | 2026-01-12 A | 2026-05-06 |  | 57% | 35.51d | 20.5d |  |  |
| 84 | 7.1.1 | Overhead MEP Rough In | 20d | 2026-01-12 A | 2026-02-06 A | 21, 10 | 100% |  |  |  |  |
| 85 | 7.1.2 | Low Voltage Bulk Cabling | 10d | 2026-02-19 A | 2026-03-04 A | 84SS+3w | 100% |  |  |  | start no earlier than 2026-02-18 |
| 86 | 7.1.3 | Slab Demo and Coring | 4d | 2026-01-20 A | 2026-01-23 A | 81SS | 100% |  |  |  | start no earlier than 2026-01-20 |
| 87 | 7.1.4 | Walls - Studs and Track | 4d | 2026-01-22 A | 2026-01-27 A | 84SS | 100% |  |  |  | start no earlier than 2026-01-22 |
| 88 | 7.1.5 | Underslab MEP | 6d | 2026-01-26 A | 2026-02-02 A | 86 | 100% |  |  |  |  |
| 89 | 7.1.6 | Underslab MEP Inspection | 1d | 2026-02-19 A | 2026-02-19 A | 88 | 100% |  |  |  | start no earlier than 2026-02-18 |
| 90 | 7.1.7 | Concrete Slab Pourback | 2d | 2026-02-20 A | 2026-02-23 A | 89 | 100% |  |  |  | start no earlier than 2026-02-18 |
| 91 | 7.1.8 | Fire Alarm Rough-in | 2d | 2026-02-19 A | 2026-02-20 A | 87 | 100% |  |  |  | start no earlier than 2026-02-18 |
| 92 | 7.1.9 | MEP Rough-in Walls | 10d | 2026-01-23 A | 2026-02-05 A | 87SS+1d | 100% |  |  |  |  |
| 93 | 7.1.10 | MEP Rough-in Inspection | 5d | 2026-02-06 A | 2026-02-12 A | 92 | 100% |  |  |  | start no earlier than 2026-01-23 |
| 94 | 7.1.11 | Single Side Drywall | 5d | 2026-02-19 A | 2026-02-25 A | 87 | 100% |  |  |  | start no earlier than 2026-02-18 |
| 95 | 7.1.12 | Second Side Drywall | 5d | 2026-02-26 A | 2026-03-04 A | 94, 92FF, 93 | 100% |  |  |  | start no earlier than 2026-02-18 |
| 96 | 7.1.13 | Wall Tape and Bed | 13d | 2026-02-17 A | 2026-03-05 | 95SS+2d | 92% | 1d | 27d | 0d |  |
| 97 | 7.1.14 | Grid Install Rework | 5d | 2026-03-12 | 2026-03-18 | 96FS-1w, 178 |  |  | 43d | 18d |  |
| 98 | 7.1.15 | Light Fixture Install (Regular) and Ceiling MEP Finishes | 8d | 2026-04-07 | 2026-04-16 | 97FS-1w, 26 |  |  | 30d | 0d |  |
| 99 | 7.1.16 | Light Fixture Install (Specialty) | 8d | 2026-04-24 | 2026-05-06 | 97FS-1w, 27 |  |  | 11.5d |  |  |
| 100 | 7.1.17 | Ceiling Cover Inspection | 1d | 2026-04-17 | 2026-04-17 | 98 |  |  | 30d | 4d | start no earlier than 2026-01-23 |
| 101 | 7.1.18 | Ceiling Tile Installation | 3d | 2026-04-24 | 2026-04-28 | 100, 123, 144, 165 |  |  | 26d |  |  |
| 102 | 7.1.19 | Restroom Renovations | 10d | 2026-03-27 | 2026-04-10 | 103SF |  |  | 24d | 0d |  |
| 103 | 7.1.20 | Carpet and Tile Prep and Install | 6d | 2026-04-10 | 2026-04-17 | 96, 46, 47, 48, 49, 51, 52, 53, 54, 55, 56, 57, 90 |  |  | 2d | 0d | start no earlier than 2026-04-10 |
| 104 | 7.1.21 | Painting | 10d | 2026-03-06 | 2026-03-19 | 96 |  |  | 39d | 15d |  |
| 105 | 7.1.22 | MEP Trimout | 8d | 2026-04-10 | 2026-04-21 | 104SS+2w, 102 |  |  | 24d | 22d |  |
| 106 | 7.1.23 | Millwork Install | 5d | 2026-04-09 | 2026-04-15 | 30 |  |  | 35d |  |  |

| ID | WBS | Task | Duration | Start | Finish | Predecessors | Complete | Remaining | Total slack | Free slack | Constraint |
| --- | --- | --- | --- | --- | --- | --- | --- | --- | --- | --- | --- |
| 107 | 7.2 | **Level 1 North** | 81d | 2026-01-12 A | 2026-05-04 |  | 41% | 47.55d | 22d |  |  |
| 108 | 7.2.1 | Overhead MEP Rough In | 20d | 2026-01-12 A | 2026-02-06 A | 21, 10 | 100% |  |  |  |  |
| 109 | 7.2.2 | Low Voltage Bulk Cabling | 10d | 2026-02-19 A | 2026-03-04 A | 108SS+3w | 100% |  |  |  | start no earlier than 2026-02-18 |
| 110 | 7.2.3 | Slab Demo and Coring | 3d | 2026-01-26 A | 2026-01-28 A | 86 | 100% |  |  |  | start no earlier than 2026-01-20 |
| 111 | 7.2.4 | Walls - Studs and Track | 3d | 2026-02-09 A | 2026-02-11 A | 155 | 100% |  |  |  |  |
| 112 | 7.2.5 | Underslab MEP | 3d | 2026-01-29 A | 2026-02-02 A | 110 | 100% |  |  |  |  |
| 113 | 7.2.6 | Underslab MEP Inspection | 1d | 2026-02-19 A | 2026-02-19 A | 112 | 100% |  |  |  | start no earlier than 2026-02-18 |
| 114 | 7.2.7 | Concrete Slab Pourback | 4d | 2026-02-20 A | 2026-02-25 A | 113 | 100% |  |  |  | start no earlier than 2026-02-18 |
| 115 | 7.2.8 | Fire Alarm Rough-in | 2d | 2026-02-19 A | 2026-02-20 A | 111 | 100% |  |  |  | start no earlier than 2026-02-18 |
| 116 | 7.2.9 | MEP Rough-in Walls | 10d | 2026-02-23 A | 2026-03-06 | 111SS+2w | 80% | 2d | 18d | 0d |  |
| 117 | 7.2.10 | MEP Rough-in Inspection | 1d | 2026-03-09 | 2026-03-09 | 116 |  |  | 18d | 0d | start no earlier than 2026-01-23 |
| 118 | 7.2.11 | Single Side Drywall | 5d | 2026-02-19 A | 2026-02-25 | 111 | 35% | 3.25d | 26d | 8d | start no earlier than 2026-02-18 |
| 119 | 7.2.12 | Second Side Drywall | 5d | 2026-03-10 | 2026-03-16 | 116FF, 118, 117 |  |  | 18d | 0d |  |
| 120 | 7.2.13 | Wall Tape and Bed | 6d | 2026-04-01 | 2026-04-08 | 119, 59 |  |  | 14d | 0d |  |
| 121 | 7.2.14 | Grid Install Rework | 4d | 2026-04-02 | 2026-04-07 | 120FS-1w, 180 |  |  | 28d | 4d |  |
| 122 | 7.2.15 | Light Fixture Install (Regular) and Ceiling MEP Finishes | 12d | 2026-04-07 | 2026-04-22 | 121FS-1w, 26 |  |  | 24d | 0d |  |
| 123 | 7.2.16 | Ceiling Cover Inspection | 1d | 2026-04-23 | 2026-04-23 | 122 |  |  | 24d | 0d | start no earlier than 2026-01-23 |
| 124 | 7.2.17 | Ceiling Tile Installation | 5d | 2026-04-24 | 2026-04-30 | 123 |  |  | 24d |  |  |
| 125 | 7.2.18 | Restroom Renovations | 10d | 2026-03-26 | 2026-04-09 | 126SF |  |  | 25d | 10d |  |
| 126 | 7.2.19 | Carpet and Tile Prep and Install | 7d | 2026-04-09 | 2026-04-17 | 120, 46, 47, 48, 49, 51, 52, 53, 54, 55, 56, 57, 114 |  |  | 25d | 0d |  |
| 127 | 7.2.20 | Painting | 10d | 2026-04-09 | 2026-04-22 | 120 |  |  | 15d | 0d |  |
| 128 | 7.2.21 | MEP Trimout | 8d | 2026-04-23 | 2026-05-04 | 125, 127SS+2w |  |  | 15d | 13d |  |
| 129 | 7.2.22 | Millwork Install | 5d | 2026-04-21 | 2026-04-27 | 30, 31, 32, 33 |  |  | 18d |  |  |
| 130 | 7.3 | **Level 2 South** | 80d | 2026-01-12 A | 2026-05-01 |  | 54% | 36.54d | 23d |  |  |
| 131 | 7.3.1 | Overhead MEP Rough In | 20d | 2026-01-12 A | 2026-02-06 A | 21, 10 | 100% |  |  |  |  |
| 132 | 7.3.2 | Low Voltage Bulk Cabling | 10d | 2026-02-19 A | 2026-03-04 A | 131SS+3w | 100% |  |  |  | start no earlier than 2026-02-18 |
| 133 | 7.3.3 | Slab Demo and Coring | 2d | 2026-01-29 A | 2026-01-30 A | 110 | 100% |  |  |  | start no earlier than 2026-01-20 |
| 134 | 7.3.4 | Walls - Studs and Track | 4d | 2026-01-28 A | 2026-02-02 A | 87 | 100% |  |  |  |  |
| 135 | 7.3.5 | Underslab MEP | 3d | 2026-02-02 A | 2026-02-04 A | 133 | 100% |  |  |  |  |
| 136 | 7.3.6 | Fire Alarm Rough-in | 2d | 2026-02-19 A | 2026-02-20 A | 134 | 100% |  |  |  | start no earlier than 2026-02-18 |
| 137 | 7.3.7 | MEP Rough-in Walls | 10d | 2026-02-11 A | 2026-02-24 A | 134SS+2w | 100% |  |  |  |  |
| 138 | 7.3.8 | MEP Rough-in Inspection | 1d | 2026-02-25 A | 2026-02-25 A | 137 | 100% |  |  |  | start no earlier than 2026-01-23 |
| 139 | 7.3.9 | Single Side Drywall | 7d | 2026-02-19 A | 2026-02-27 A | 134 | 100% |  |  |  | start no earlier than 2026-02-18 |
| 140 | 7.3.10 | Second Side Drywall | 5d | 2026-02-23 A | 2026-02-27 A | 137FF, 139, 138 | 100% |  |  |  |  |
| 141 | 7.3.11 | Wall Tape and Bed | 5d | 2026-04-01 A | 2026-04-07 A | 140, 59 | 100% |  |  |  |  |
| 142 | 7.3.12 | Grid Install Rework | 5d | 2026-04-01 | 2026-04-07 | 141FS-1w, 182 |  |  | 32d | 4d |  |
| 143 | 7.3.13 | Light Fixture Install (Regular) and Ceiling MEP Finishes | 8d | 2026-04-07 | 2026-04-16 | 142FS-1w, 26 |  |  | 28d | 0d |  |
| 144 | 7.3.14 | Ceiling Cover Inspection | 1d | 2026-04-17 | 2026-04-17 | 143 |  |  | 28d | 0d | start no earlier than 2026-01-23 |
| 145 | 7.3.15 | Ceiling Tile Installation | 5d | 2026-04-20 | 2026-04-24 | 144 |  |  | 28d |  |  |
| 146 | 7.3.16 | Restroom Renovations | 10d | 2026-04-01 | 2026-04-15 | 147SF |  |  | 21d | 5d |  |
| 147 | 7.3.17 | Carpet and Tile Prep and Install | 6d | 2026-04-15 | 2026-04-22 | 141, 46, 47, 48, 49, 51, 52, 53, 54, 55, 56, 57, 103FS-3d |  |  | 21d | 0d |  |
| 148 | 7.3.18 | Painting | 10d | 2026-04-08 | 2026-04-21 | 141 |  |  | 16d | 0d |  |
| 149 | 7.3.19 | MEP Trimout | 8d | 2026-04-22 | 2026-05-01 | 146, 148SS+2w |  |  | 16d | 14d |  |
| 150 | 7.3.20 | Millwork Install | 5d | 2026-04-21 | 2026-04-27 | 30, 31, 32, 33 |  |  | 18d |  |  |

| ID | WBS | Task | Duration | Start | Finish | Predecessors | Complete | Remaining | Total slack | Free slack | Constraint |
| --- | --- | --- | --- | --- | --- | --- | --- | --- | --- | --- | --- |
| 151 | 7.4 | **Level 2 North** | 81d | 2026-01-12 A | 2026-05-04 |  | 45% | 44.4d | 22d |  |  |
| 152 | 7.4.1 | Overhead MEP Rough In | 20d | 2026-01-12 A | 2026-02-06 A | 21, 10 | 100% |  |  |  |  |
| 153 | 7.4.2 | Low Voltage Bulk Cabling | 10d | 2026-02-19 A | 2026-03-04 A | 152SS+3w | 100% |  |  |  | start no earlier than 2026-02-18 |
| 154 | 7.4.3 | Slab Demo and Coring - Level 2 North | 3d | 2026-02-02 A | 2026-02-04 A | 133 | 100% |  |  |  | start no earlier than 2026-01-20 |
| 155 | 7.4.4 | Walls - Studs and Track | 4d | 2026-02-03 A | 2026-02-06 A | 134 | 100% |  |  |  |  |
| 156 | 7.4.5 | Underslab MEP | 3d | 2026-02-05 A | 2026-02-09 A | 154 | 100% |  |  |  |  |
| 157 | 7.4.6 | Fire Alarm Rough-in | 2d | 2026-02-19 A | 2026-02-20 A | 155 | 100% |  |  |  | start no earlier than 2026-02-18 |
| 158 | 7.4.7 | MEP Rough-in Walls | 10d | 2026-02-17 A | 2026-03-02 A | 155SS+2w | 100% |  |  |  |  |
| 159 | 7.4.8 | MEP Rough-in Inspection | 1d | 2026-03-03 A | 2026-03-03 A | 158 | 100% |  |  |  | start no earlier than 2026-01-23 |
| 160 | 7.4.9 | Single Side Drywall | 7d | 2026-02-19 A | 2026-02-27 A | 155 | 100% |  |  |  | start no earlier than 2026-02-18 |
| 161 | 7.4.10 | Second Side Drywall - Level 2 North | 7d | 2026-03-04 A | 2026-03-12 | 158FF, 160, 159 | 14% | 6d | 20d | 0d |  |
| 162 | 7.4.11 | Wall Tape and Bed | 6d | 2026-04-01 | 2026-04-08 | 161, 59 |  |  | 14d | 0d |  |
| 163 | 7.4.12 | Grid Install Rework | 5d | 2026-04-02 | 2026-04-08 | 162FS-1w, 184 |  |  | 31d | 3d |  |
| 164 | 7.4.13 | Light Fixture Install (Regular) and Ceiling MEP Finishes | 8d | 2026-04-07 | 2026-04-16 | 163FS-1w, 26 |  |  | 28d | 0d |  |
| 165 | 7.4.14 | Ceiling Cover Inspection | 1d | 2026-04-17 | 2026-04-17 | 164 |  |  | 28d | 0d | start no earlier than 2026-01-23 |
| 166 | 7.4.15 | Ceiling Tile Installation - Level 2 North | 5d | 2026-04-20 | 2026-04-24 | 165 |  |  | 28d |  |  |
| 167 | 7.4.16 | Restroom Renovations | 10d | 2026-04-01 | 2026-04-15 | 168SF |  |  | 21d | 6d |  |
| 168 | 7.4.17 | Carpet and Tile Prep and Install | 10d | 2026-04-15 | 2026-04-28 | 162, 46, 47, 48, 49, 51, 52, 53, 54, 55, 56, 57, 103FS-3d |  |  | 21d | 0d |  |
| 169 | 7.4.18 | Painting | 10d | 2026-04-09 | 2026-04-22 | 162 |  |  | 15d | 0d |  |
| 170 | 7.4.19 | MEP Trimout - Level 2 North | 8d | 2026-04-23 | 2026-05-04 | 167, 169SS+2w |  |  | 15d | 13d |  |
| 171 | 7.4.20 | Millwork Install | 5d | 2026-04-21 | 2026-04-27 | 30, 31, 32, 33 |  |  | 18d |  |  |
| 172 | 7.5 | Inspections and Commissioning | 8d | 2026-05-22 | 2026-06-03 | 190, 60, 61, 78, 129, 150, 171, 91, 115, 136, 157, 99, 179, 181, 183, 185, 63, 187, 189 |  |  | 0d |  |  |
| 173 | 7.6 | Punch Walk and Corrections | 5d | 2026-05-14 | 2026-05-20 | 190 |  |  | 8d | 6d |  |
| 174 | 7.7 | Final Clean | 6d | 2026-05-22 | 2026-06-01 | 172SS, 173SS, 128, 105, 149, 170 |  |  | 2d |  |  |

| ID | WBS | Task | Duration | Start | Finish | Predecessors | Total slack | Free slack | Constraint |
| --- | --- | --- | --- | --- | --- | --- | --- | --- | --- |
| 175 | 7.8 | **Install of Owner Provided Equipment/Vendors** | 59d | 2026-03-02 | 2026-05-21 |  | 9d |  |  |
| 176 | 7.8.1 | Confirm Weather For RTU Replacements | 1d | 2026-03-02 | 2026-03-02 |  | 64d | 2d | start no earlier than 2026-03-02 |
| 177 | 7.8.2 | RTU Replacement | 3d | 2026-03-05 | 2026-03-09 | 176, 72 | 62d |  |  |
| 178 | 7.8.3 | VAV Replacements - Level 1 South (Round 1) | 5d | 2026-03-05 | 2026-03-11 | 73, 84 | 36d | 0d |  |
| 179 | 7.8.4 | VAV Replacements - Level 1 South (Round 2) | 3d | 2026-04-06 | 2026-04-08 | 84, 74 | 22d | 0d |  |
| 180 | 7.8.5 | VAV Replacements - Level 1 North (Round 1) | 5d | 2026-03-05 | 2026-03-11 | 73, 108 | 43d | 15d |  |
| 181 | 7.8.6 | VAV Replacements - Level 1 North (Round 2) | 3d | 2026-04-09 | 2026-04-13 | 108, 74, 179 | 22d | 0d |  |
| 182 | 7.8.7 | VAV Replacements - Level 2 South (Round 1) | 5d | 2026-03-12 | 2026-03-18 | 73, 131, 178 | 36d | 0d |  |
| 183 | 7.8.8 | VAV Replacements - Level 2 South (Round 2) | 3d | 2026-04-14 | 2026-04-16 | 131, 74, 181 | 22d | 0d |  |
| 184 | 7.8.9 | VAV Replacements - Level 2 North (Round 1) | 5d | 2026-03-19 | 2026-03-25 | 73, 152, 182 | 36d | 5d |  |
| 185 | 7.8.10 | VAV Replacements - Level 2 North | 3d | 2026-04-17 | 2026-04-21 | 152, 74, 183 | 22d |  |  |
| 186 | 7.8.11 | AV Equipment Rough-in (By Others) | 10d | 2026-04-09 | 2026-04-22 | 96, 85, 109, 120, 132, 141, 153, 162 | 15d |  |  |
| 187 | 7.8.12 | AV Equipment Installation and Trim (By Others) | 6d | 2026-05-14 | 2026-05-21 | 186, 190 | 0d |  | start no earlier than 2026-02-11 |
| 188 | 7.8.13 | Security Systems Equipment Rough-in (By Others) | 12d | 2026-04-09 | 2026-04-24 | 96, 85, 109, 120, 132, 141, 153, 162 | 14d | 13d |  |
| 189 | 7.8.14 | Security Systems Equipment Installation and Trim (By Others) | 5d | 2026-05-14 | 2026-05-20 | 188, 190 | 1d |  | start no earlier than 2026-02-11 |
| 190 | 7.8.15 | Furniture Systems Installation (By Others) | 18d | 2026-04-20 | 2026-05-13 | 69, 103FS-2d | 0d |  | start no earlier than 2026-04-17 |
| 191 | 8 | Move in | 1d | 2026-06-04 | 2026-06-04 | 174, 172 | 0d |  |  |
