# Mesa Public Storage Project Schedule Updated 12-9-25 Revised All New

Schedule from MS Project, 2024-12-27 to 2026-05-12, A marks actual dates.

## Calendars

- Standard: Mon-Fri 08:00-12:00, 13:00-17:00; Sat-Sun off. Exceptions (off unless hours are given): 2025-02-17 (Presidents Day), 2025-05-26 (Memorial Day), 2025-07-04 (Independence Day), 2025-09-01 (Labor Day), 2025-11-27 to 2025-11-28 (Thanksgiving), 2025-12-24 to 2025-12-26 (Christmas), 2026-01-01 (New Years), 2026-02-16 (Presidents Day).

## Schedule

| ID | WBS | Task | Type | Duration | Start | Finish | Predecessors | Complete | Remaining | Total slack |
| --- | --- | --- | --- | --- | --- | --- | --- | --- | --- | --- |
| 1 | 1 | **Public Storage - Mesa AZ** |  | 347d | 2024-12-27 A | 2026-05-12 |  | 59% | 141.07d | 0d |
| 2 | 1.1 | **PreConstruction** |  | 18d | 2024-12-27 A | 2025-01-21 A |  | 100% |  |  |
| 3 | 1.1.1 | Notice To Proceed | milestone | 0d | 2024-12-27 A | 2024-12-27 A |  | 100% |  |  |
| 4 | 1.1.2 | Mobilzation |  | 5d | 2024-12-30 A | 2025-01-03 A | 3FS+1d | 100% |  |  |
| 5 | 1.1.3 | Erosion Control |  | 3d | 2025-01-06 A | 2025-01-08 A | 4 | 100% |  |  |
| 6 | 1.1.4 | Hydrant Meter | milestone | 0d | 2025-01-03 A | 2025-01-03 A | 4 | 100% |  |  |
| 7 | 1.1.5 | Hydrant Meter Delay |  | 12d | 2025-01-06 A | 2025-01-21 A | 6 | 100% |  |  |
| 8 | 1.2 | **Surface Demo & Grading** |  | 42d | 2025-01-22 A | 2025-03-21 A |  | 100% |  |  |
| 9 | 1.2.1 | Surface Demo |  | 15d | 2025-01-22 A | 2025-02-11 A | 5, 6, 7 | 100% |  |  |
| 10 | 1.2.2 | Site Survey |  | 1d | 2025-02-12 A | 2025-02-12 A | 9 | 100% |  |  |
| 11 | 1.2.3 | Pregrade Meeting |  | 1d | 2025-02-12 A | 2025-02-12 A | 9 | 100% |  |  |
| 12 | 1.2.4 | Over-Ex & Recompact Bldg Pad |  | 15d | 2025-02-13 A | 2025-03-06 A | 11, 10 | 100% |  |  |
| 13 | 1.2.5 | Grading Delay For Spetic System 2/12, 2/13, 2/14 |  | 3d | 2025-03-07 A | 2025-03-11 A | 12 | 100% |  |  |
| 14 | 1.2.6 | Grading Rain Day Delays 3/7, 3/8, 3/9, 3/12, 3/13, 3/14, 3/15 |  | 7d | 2025-03-12 A | 2025-03-20 A | 13 | 100% |  |  |
| 15 | 1.2.7 | Pad Certification |  | 1d | 2025-03-21 A | 2025-03-21 A | 14 | 100% |  |  |
| 16 | 1.3 | **On Site Improvements** |  | 35d | 2025-03-24 A | 2025-05-09 A |  | 100% |  |  |
| 17 | 1.3.1 | Site Wall |  | 35d | 2025-03-24 A | 2025-05-09 A | 15 | 100% |  |  |
| 18 | 1.4 | **On Site Wet Utilites** |  | 20d | 2025-05-12 A | 2025-06-09 A |  | 100% |  |  |
| 19 | 1.4.1 | Install Sewer |  | 5d | 2025-05-12 A | 2025-05-16 A | 17 | 100% |  |  |
| 20 | 1.4.2 | Install Storm Drain |  | 5d | 2025-05-19 A | 2025-05-23 A | 19 | 100% |  |  |
| 21 | 1.4.3 | Install Fire Loop & Riser |  | 6d | 2025-05-27 A | 2025-06-03 A | 20 | 100% |  |  |
| 22 | 1.4.4 | Install Domestic Water |  | 4d | 2025-06-04 A | 2025-06-09 A | 21 | 100% |  |  |
| 23 | 1.5 | **Off Site Wet Utilites** |  | 92d | 2025-05-12 A | 2025-09-19 A |  | 100% |  |  |
| 24 | 1.5.1 | Water: Fire & Domestic Laterals 8th Street |  | 5d | 2025-05-12 A | 2025-05-16 A | 17 | 100% |  |  |
| 25 | 1.5.2 | Water: Delay (City could not Shut Down) |  | 82d | 2025-05-19 A | 2025-09-12 A | 24 | 100% |  |  |
| 26 | 1.5.3 | Water: Fire & Domestic 8th Street |  | 5d | 2025-09-15 A | 2025-09-19 A | 25 | 100% |  |  |
| 27 | 1.5.4 | Water: Fire Line Lateral Country Club Only |  | 5d | 2025-05-12 A | 2025-05-16 A | 17 | 100% |  |  |
| 28 | 1.5.5 | Water: Delay Country Club (City could not Shut Down) |  | 26d | 2025-05-19 A | 2025-06-24 A | 27 | 100% |  |  |
| 29 | 1.5.6 | Water: Fire Line lateral Coutnry Club (Weekend Only) |  | 31d | 2025-06-25 A | 2025-08-07 A | 28 | 100% |  |  |

| ID | WBS | Task | Type | Duration | Start | Finish | Predecessors | Complete | Remaining | Total slack | Free slack |
| --- | --- | --- | --- | --- | --- | --- | --- | --- | --- | --- | --- |
| 30 | 1.6 | **On & Off Site Dry Utilites Power & Comms** |  | 250d | 2025-03-24 A | 2026-03-20 |  | 53% | 117.69d | 37d |  |
| 31 | 1.6.1 | Approved Power & Comms Permits & Plans |  | 1d | 2025-03-24 | 2025-03-24 | 15 |  |  | 286d |  |
| 32 | 1.6.2 | Delay: Approved Power & Comms Permits & Plans |  | 159d | 2025-03-25 A | 2025-11-05 A | 31 | 100% |  |  |  |
| 33 | 1.6.3 | ROW Permit |  | 1d | 2025-11-06 A | 2025-11-06 A | 32 | 100% |  |  |  |
| 34 | 1.6.4 | Delay: ROW Permit 8th Street (City Moratorium) |  | 13d | 2025-11-07 A | 2025-11-25 A | 33 | 100% |  |  |  |
| 35 | 1.6.5 | Delay: ROW Permit Country Club (City Moratorium) |  | 40d | 2025-11-07 | 2026-01-09 | 33 |  |  | 0d |  |
| 36 | 1.6.6 | **8th Street Dry Utilies Power & Comms** |  | 46d | 2025-11-26 A | 2026-02-05 |  | 13% | 39.97d | 67d |  |
| 37 | 1.6.6.1 | Set Up Message Board (5day Notice Period) |  | 1d | 2025-11-26 A | 2025-11-26 A | 34 | 100% |  |  |  |
| 38 | 1.6.6.2 | Set Up Lane & Sidewalk Closure |  | 2d | 2025-12-01 A | 2025-12-02 A | 37 | 100% |  |  |  |
| 39 | 1.6.6.3 | Relocate Temp fence to behind Barricades |  | 2d | 2025-12-03 A | 2025-12-04 A | 38 | 100% |  |  |  |
| 40 | 1.6.6.4 | Demo & Haul off Sidewalks |  | 2d | 2025-12-05 A | 2025-12-08 A | 39 | 100% |  |  |  |
| 41 | 1.6.6.5 | Survey For New UG Power & Comms |  | 1d | 2025-12-09 A | 2025-12-09 A | 40 | 100% |  |  |  |
| 42 | 1.6.6.6 | OH to UG Power & Comms 8th Ave |  | 2d | 2025-12-10 | 2025-12-11 | 41 |  |  | 36d | 0d |
| 43 | 1.6.6.7 | Open Up Splits pits |  | 2d | 2025-12-12 | 2025-12-15 | 42 |  |  | 36d | 0d |
| 44 | 1.6.6.8 | Splits UG Power |  | 2d | 2025-12-16 | 2025-12-17 | 43 |  |  | 36d | 0d |
| 45 | 1.6.6.9 | Penetrate vaults |  | 1d | 2025-12-18 | 2025-12-18 | 44 |  |  | 36d | 0d |
| 46 | 1.6.6.10 | BF Splits Pits |  | 1d | 2025-12-19 | 2025-12-19 | 45 |  |  | 36d | 0d |
| 47 | 1.6.6.11 | Trench For Coms & Power |  | 1d | 2025-12-22 | 2025-12-22 | 46 |  |  | 36d | 0d |
| 48 | 1.6.6.12 | Install UG Conduits |  | 3d | 2025-12-23 | 2025-12-30 | 47 |  |  | 36d | 0d |
| 49 | 1.6.6.13 | Slurry Encase Conduits |  | 2d | 2025-12-31 | 2026-01-02 | 48 |  |  | 36d | 0d |
| 50 | 1.6.6.14 | Slurry & Set Boxes |  | 2d | 2026-01-05 | 2026-01-06 | 49 |  |  | 36d | 0d |
| 51 | 1.6.6.15 | Set Vaults/Pads |  | 2d | 2026-01-07 | 2026-01-08 | 50 |  |  | 36d | 0d |
| 52 | 1.6.6.16 | Punch Work |  | 1d | 2026-01-09 | 2026-01-09 | 51 |  |  | 36d | 0d |
| 53 | 1.6.6.17 | Survey For New UG Power & Comms For As-Builts |  | 2d | 2026-01-12 | 2026-01-13 | 52 |  |  | 36d | 0d |
| 54 | 1.6.6.18 | Grade for new Sidewalks & Drive Entry |  | 3d | 2026-01-14 | 2026-01-16 | 53 |  |  | 36d | 0d |
| 55 | 1.6.6.19 | Form & Pour New Concrete & Sidewalks |  | 8d | 2026-01-19 | 2026-01-28 | 54 |  |  | 36d | 0d |
| 56 | 1.6.6.20 | Asphalt Slot Patch @ Drive Entry |  | 2d | 2026-01-29 | 2026-01-30 | 55 |  |  | 36d | 0d |
| 57 | 1.6.6.21 | Relocate Temp Fence |  | 2d | 2026-02-02 | 2026-02-03 | 56 |  |  | 67d | 0d |
| 58 | 1.6.6.22 | Traffic Control Removal |  | 2d | 2026-02-04 | 2026-02-05 | 57 |  |  | 67d | 0d |
| 59 | 1.6.6.23 | Public Sidewalk Open | milestone | 0d | 2026-02-05 | 2026-02-05 | 58 |  |  | 67d |  |
| 60 | 1.6.6.24 | City Of Mesa Work Scope Power to Building |  | 10d | 2026-01-12 | 2026-01-23 | 52 |  |  | 71d | 0d |
| 61 | 1.6.6.25 | City Of Mesa or Cox Poles Removal? |  | 5d | 2026-01-26 | 2026-01-30 | 60 |  |  | 71d |  |

| ID | WBS | Task | Type | Duration | Start | Finish | Predecessors | Total slack | Free slack |
| --- | --- | --- | --- | --- | --- | --- | --- | --- | --- |
| 62 | 1.6.7 | **Country Club Dry Utilies Power** |  | 49d | 2026-01-12 | 2026-03-20 |  | 0d |  |
| 63 | 1.6.7.1 | Set Up Message Board (5day Notice Period) |  | 5d | 2026-01-12 | 2026-01-16 | 35 | 0d |  |
| 64 | 1.6.7.2 | Set Up Lane & Sidewalk Closure |  | 2d | 2026-01-19 | 2026-01-20 | 63 | 0d |  |
| 65 | 1.6.7.3 | Relocate Temp fence to behind Barricades |  | 1d | 2026-01-21 | 2026-01-21 | 64 | 0d |  |
| 66 | 1.6.7.4 | Demo & Haul off Sidewalks |  | 2d | 2026-01-22 | 2026-01-23 | 65 | 0d |  |
| 67 | 1.6.7.5 | Survey For New UG Power & Comms |  | 1d | 2026-01-26 | 2026-01-26 | 66 | 0d |  |
| 68 | 1.6.7.6 | Dig Vaults |  | 2d | 2026-01-27 | 2026-01-28 | 67 | 0d |  |
| 69 | 1.6.7.7 | Build Junction |  | 1d | 2026-01-29 | 2026-01-29 | 68 | 0d |  |
| 70 | 1.6.7.8 | Build Switch |  | 3d | 2026-01-30 | 2026-02-03 | 69 | 0d |  |
| 71 | 1.6.7.9 | Dig Vault |  | 1d | 2026-02-04 | 2026-02-04 | 70 | 0d |  |
| 72 | 1.6.7.10 | Build Vault |  | 2d | 2026-02-05 | 2026-02-06 | 71 | 0d |  |
| 73 | 1.6.7.11 | Set Vault |  | 1d | 2026-02-09 | 2026-02-09 | 72 | 0d |  |
| 74 | 1.6.7.12 | Build TX |  | 1d | 2026-02-10 | 2026-02-10 | 73 | 0d |  |
| 75 | 1.6.7.13 | Trench |  | 2d | 2026-02-11 | 2026-02-12 | 74 | 0d |  |
| 76 | 1.6.7.14 | Pipe/Rack |  | 2d | 2026-02-13 | 2026-02-17 | 75 | 0d |  |
| 77 | 1.6.7.15 | Slurry Encasement |  | 2d | 2026-02-18 | 2026-02-19 | 76 | 0d |  |
| 78 | 1.6.7.16 | Backfill |  | 2d | 2026-02-20 | 2026-02-23 | 77 | 0d |  |
| 79 | 1.6.7.17 | Punch Work |  | 2d | 2026-02-24 | 2026-02-25 | 78 | 0d |  |
| 80 | 1.6.7.18 | Dig For Bore Receiving Pit |  | 1d | 2026-02-17 | 2026-02-17 | 75FS+1d | 0d |  |
| 81 | 1.6.7.19 | Mobilize Bore Equipment |  | 1d | 2026-02-18 | 2026-02-18 | 80 | 0d |  |
| 82 | 1.6.7.20 | Bore Trench |  | 2d | 2026-02-19 | 2026-02-20 | 81 | 0d |  |
| 83 | 1.6.7.21 | Back Ream Bore Trench |  | 1d | 2026-02-23 | 2026-02-23 | 82 | 0d |  |
| 84 | 1.6.7.22 | Bore Punch |  | 2d | 2026-02-24 | 2026-02-25 | 83 | 0d |  |
| 85 | 1.6.7.23 | Survey For New UG Power & Comms For As-Builts |  | 1d | 2026-02-26 | 2026-02-26 | 84, 79 | 0d |  |
| 86 | 1.6.7.24 | Grade for new Sidewalks & Drive Entry |  | 3d | 2026-02-27 | 2026-03-03 | 85 | 0d |  |
| 87 | 1.6.7.25 | Form & Pour New Concrete & Sidewalks |  | 8d | 2026-03-04 | 2026-03-13 | 86 | 0d |  |
| 88 | 1.6.7.26 | Asphalt Slot Patch @ Drive Entry |  | 2d | 2026-03-16 | 2026-03-17 | 87 | 0d |  |
| 89 | 1.6.7.27 | Relocate Temp Fence |  | 1d | 2026-03-18 | 2026-03-18 | 88 | 36d | 0d |
| 90 | 1.6.7.28 | Traffic Control Removal |  | 1d | 2026-03-19 | 2026-03-19 | 89 | 36d | 0d |
| 91 | 1.6.7.29 | Public Sidewalk Open | milestone | 0d | 2026-03-20 | 2026-03-20 | 90FS+1d | 37d |  |
| 92 | 1.6.7.30 | City Of Mesa Work Scope Power to AAMCO |  | 10d | 2026-02-26 | 2026-03-11 | 79, 84 | 31d | 0d |
| 93 | 1.6.7.31 | City Of Mesa of Pole Removal? |  | 2d | 2026-03-12 | 2026-03-13 | 92 | 42d |  |

| ID | WBS | Task | Type | Duration | Start | Finish | Predecessors | Complete | Remaining | Total slack | Free slack | Constraint |
| --- | --- | --- | --- | --- | --- | --- | --- | --- | --- | --- | --- | --- |
| 94 | 1.7 | **On-Site Improvements West & South** |  | 47d | 2025-12-01 A | 2026-02-09 |  | 11% | 42d | 65d |  |  |
| 95 | 1.7.1 | Grade for Curb & Gutter |  | 5d | 2025-12-01 A | 2025-12-05 A |  | 100% |  |  |  | start no earlier than 2025-12-01 |
| 96 | 1.7.2 | Concrete Curb & Gutters |  | 4d | 2025-12-08 | 2025-12-11 | 95 |  |  | 52d | 0d |  |
| 97 | 1.7.3 | Grade for Sidewalks, Handicap Ramps, etc |  | 2d | 2025-12-12 | 2025-12-15 | 96 |  |  | 52d | 0d |  |
| 98 | 1.7.4 | Concrete Pour Walks, Ramps, Etc |  | 4d | 2025-12-16 | 2025-12-19 | 97 |  |  | 52d | 0d |  |
| 99 | 1.7.5 | Grade For Paving |  | 2d | 2025-12-22 | 2025-12-23 | 98 |  |  | 52d | 0d |  |
| 100 | 1.7.6 | AC Paving |  | 2d | 2025-12-29 | 2025-12-30 | 99 |  |  | 52d | 0d |  |
| 101 | 1.7.7 | Landscape Sleeving |  | 2d | 2025-12-31 | 2026-01-02 | 100 |  |  | 65d | 0d |  |
| 102 | 1.7.8 | Gate Tracks |  | 5d | 2026-01-05 | 2026-01-09 | 101 |  |  | 65d | 0d |  |
| 103 | 1.7.9 | Gate Fencing |  | 5d | 2026-01-12 | 2026-01-16 | 102 |  |  | 65d | 0d |  |
| 104 | 1.7.10 | Gate Installation |  | 5d | 2026-01-19 | 2026-01-23 | 103 |  |  | 65d | 0d |  |
| 105 | 1.7.11 | Landscape Irrigation and Planting |  | 9d | 2026-01-26 | 2026-02-05 | 54, 104 |  |  | 65d | 0d |  |
| 106 | 1.7.12 | Striping & Signage |  | 2d | 2026-02-06 | 2026-02-09 | 105 |  |  | 65d |  |  |
| 107 | 1.8 | **Building Shell Construction** |  | 151d | 2025-03-24 A | 2025-10-23 A |  | 100% |  |  |  |  |
| 108 | 1.8.1 | Underslab Plumbing & Electrical |  | 8d | 2025-03-24 A | 2025-04-02 A |  | 100% |  |  |  | finish no earlier than 2025-04-02 |
| 109 | 1.8.2 | Elevator Pits form & Pour | manual | 10d | 2025-03-24 A | 2025-04-04 A |  | 100% |  |  |  |  |
| 110 | 1.8.3 | Drill & Set Jack Casings | manual | 5d | 2025-04-07 A | 2025-04-11 A |  | 100% |  |  |  |  |
| 111 | 1.8.4 | CMU Wall Footings | manual | 10d | 2025-03-27 A | 2025-04-09 A |  | 100% |  |  |  |  |
| 112 | 1.8.5 | Fine grade Granular Base & Reinforce Slab on grade -North | manual | 5d | 2025-04-03 A | 2025-04-09 A |  | 100% |  |  |  |  |
| 113 | 1.8.6 | Fine grade Granular Base & Reinforce Slab on grade -South | manual | 5d | 2025-04-10 A | 2025-04-16 A |  | 100% |  |  |  |  |
| 114 | 1.8.7 | Pour Slab on grade North 8" | manual | 3d | 2025-04-14 A | 2025-04-16 A |  | 100% |  |  |  |  |
| 115 | 1.8.8 | Pour Slab on grade South 8" | manual | 3d | 2025-04-17 A | 2025-04-21 A |  | 100% |  |  |  |  |
| 116 | 1.8.9 | CMU walls/Ledgers to 3rd floor | manual | 24d | 2025-04-17 A | 2025-05-20 A |  | 100% |  |  |  |  |
| 117 | 1.8.10 | Shearwalls/Beams & Deck for 2nd floor North | manual | 16d | 2025-05-14 A | 2025-06-05 A |  | 100% |  |  |  |  |
| 118 | 1.8.11 | Reinforce & Pour 2nd floor deck North | manual | 4d | 2025-06-06 A | 2025-06-11 A |  | 100% |  |  |  |  |
| 119 | 1.8.12 | Deck cure | manual | 5d | 2025-06-12 A | 2025-06-18 A |  | 100% |  |  |  |  |
| 120 | 1.8.13 | Shearwalls/Beams & Deck for 2nd floor South | manual | 16d | 2025-06-06 A | 2025-06-27 A |  | 100% |  |  |  |  |
| 121 | 1.8.14 | Reinforce & Pour 2nd floor deck South | manual | 4d | 2025-06-30 A | 2025-07-03 A |  | 100% |  |  |  |  |
| 122 | 1.8.15 | Deck cure | manual | 5d | 2025-07-08 A | 2025-07-14 A |  | 100% |  |  |  |  |
| 123 | 1.8.16 | CMU walls 3rd floor to top out North | manual | 15d | 2025-06-19 A | 2025-07-10 A |  | 100% |  |  |  |  |
| 124 | 1.8.17 | Shearwalls/Beams & Deck for 3rd floor North | manual | 16d | 2025-07-14 A | 2025-08-04 A |  | 100% |  |  |  |  |
| 125 | 1.8.18 | Reinforce & Pour deck 3 North | manual | 4d | 2025-08-05 A | 2025-08-08 A |  | 100% |  |  |  |  |
| 126 | 1.8.19 | Deck Cure | manual | 5d | 2025-08-11 A | 2025-08-15 A |  | 100% |  |  |  |  |
| 127 | 1.8.20 | CMU walls 3rd floor to top out South | manual | 18d | 2025-07-15 A | 2025-08-07 A |  | 100% |  |  |  |  |
| 128 | 1.8.21 | Shearwalls/Beams & Deck for 3rd floor South | manual | 18d | 2025-08-08 A | 2025-09-03 A |  | 100% |  |  |  |  |
| 129 | 1.8.22 | Reinforce & Pour Deck 3 South | manual | 4d | 2025-09-04 A | 2025-09-09 A |  | 100% |  |  |  |  |
| 130 | 1.8.23 | Deck Cure | manual | 5d | 2025-09-10 A | 2025-09-16 A |  | 100% |  |  |  |  |
| 131 | 1.8.24 | Shearwalls/Beams & Roof Deck North | manual | 18d | 2025-09-04 A | 2025-09-29 A |  | 100% |  |  |  |  |
| 132 | 1.8.25 | Shearwalls/Beams & Roof Deck South | manual | 18d | 2025-09-30 A | 2025-10-23 A |  | 100% |  |  |  |  |
| 133 | 1.8.26 | Roof Structural @ platforms & Screens | manual | 5d | 2025-09-30 A | 2025-10-06 A |  | 100% |  |  |  |  |

| ID | WBS | Task | Type | Duration | Start | Finish | Predecessors | Complete | Remaining | Total slack | Free slack |
| --- | --- | --- | --- | --- | --- | --- | --- | --- | --- | --- | --- |
| 134 | 1.9 | **Building Roof Exterior** |  | 35d | 2025-09-30 | 2025-11-17 |  |  |  | 0d |  |
| 135 | 1.9.1 | Install roof accessories/Curbs, drains etc. | manual | 10d | 2025-09-30 | 2025-10-13 |  |  |  |  |  |
| 136 | 1.9.2 | Roof Insulation cover board & Membrane | manual | 22d | 2025-10-14 | 2025-11-12 |  |  |  |  |  |
| 137 | 1.9.3 | Set rooftop Equipment | manual | 3d | 2025-11-13 | 2025-11-17 |  |  |  |  |  |
| 138 | 1.10 | **Building Interior Main Storage** |  | 145d | 2025-07-15 A | 2026-02-11 |  | 55% | 65.09d | 63d |  |
| 139 | 1.10.1 | Layout & Install Hangars from 2nd fl deck |  | 5d | 2025-07-15 A | 2025-07-21 A | 122 | 100% |  |  |  |
| 140 | 1.10.2 | Overhead M,P,E & Fire 1st fl |  | 20d | 2025-07-22 A | 2025-08-18 A | 139 | 100% |  |  |  |
| 141 | 1.10.3 | Hallway System & Doors 1st floor |  | 25d | 2025-08-19 A | 2025-09-23 | 140 | 75% | 6.25d | 2.25d | 0d |
| 142 | 1.10.4 | Finish Mech. & Electrical 1st Fl |  | 3d | 2025-09-24 A | 2025-09-26 | 141 | 75% | 0.75d | 155d |  |
| 143 | 1.10.5 | Layout & Install Overhead Hangars from 3rd fl deck | manual | 5d | 2025-08-18 A | 2025-08-22 A | 126 | 100% |  |  |  |
| 144 | 1.10.6 | Overhead M,P,E & Fire 2nd Fl |  | 20d | 2025-08-25 A | 2025-09-22 | 143 | 75% | 5d | 11d | 0d |
| 145 | 1.10.7 | Hallway System & Doors 2nd Floor |  | 22d | 2025-09-23 A | 2025-10-22 | 144 | 50% | 11d | 134d | 0d |
| 146 | 1.10.8 | Finish Mech. & Electrical 2nd Fl |  | 3d | 2025-10-23 | 2025-10-27 | 145 |  |  | 134d |  |
| 147 | 1.10.9 | Layout & Install Overhead Hangars from Roof deck | manual | 5d | 2025-10-24 A | 2025-10-30 A | 132 | 100% |  |  |  |
| 148 | 1.10.10 | Overhead M,P,E & Fire 3rd Fl |  | 20d | 2025-10-31 A | 2025-12-01 | 147 | 75% | 5d | 63d | 0d |
| 149 | 1.10.11 | Hallway System & Doors 3rd Floor |  | 25d | 2025-12-02 | 2026-01-09 | 148 |  |  | 63d | 0d |
| 150 | 1.10.12 | Finish Mech. & Electrical 3rd Fl |  | 3d | 2026-01-12 | 2026-01-14 | 149 |  |  | 63d | 0d |
| 151 | 1.10.13 | Finish Paint Storage Area |  | 5d | 2026-01-15 | 2026-01-21 | 150 |  |  | 63d | 0d |
| 152 | 1.10.14 | Final Clean up & Seal floors |  | 15d | 2026-01-22 | 2026-02-11 | 151 |  |  | 63d |  |
| 153 | 1.11 | **Building Interior Office** |  | 64d | 2025-11-13 A | 2026-02-19 |  | 33% | 42.67d | 58d |  |
| 154 | 1.11.1 | Office Framing |  | 6d | 2025-11-13 A | 2025-11-20 A | 136 | 100% |  |  |  |
| 155 | 1.11.2 | Office M/E/P Rough in |  | 6d | 2025-11-21 A | 2025-12-02 A | 154 | 100% |  |  |  |
| 156 | 1.11.3 | Office Drywall |  | 10d | 2026-01-16 | 2026-01-29 | 155, 171FS+5d |  |  | 58d | 0d |
| 157 | 1.11.4 | Install HM Doors & Hardware |  | 2d | 2026-01-30 | 2026-02-02 | 156 |  |  | 58d | 0d |
| 158 | 1.11.5 | Finish Painting in Storage areas |  | 3d | 2026-02-03 | 2026-02-05 | 157 |  |  | 58d | 0d |
| 159 | 1.11.6 | Suspended Ceilings |  | 3d | 2026-02-06 | 2026-02-10 | 158 |  |  | 58d | 0d |
| 160 | 1.11.7 | Office Fixtures & Finishes |  | 3d | 2026-02-11 | 2026-02-13 | 159 |  |  | 58d | 0d |
| 161 | 1.11.8 | Final Clean up & Seal floors |  | 3d | 2026-02-17 | 2026-02-19 | 160 |  |  | 58d |  |

| ID | WBS | Task | Type | Duration | Start | Finish | Predecessors | Total slack | Free slack |
| --- | --- | --- | --- | --- | --- | --- | --- | --- | --- |
| 162 | 1.12 | **Elevator** |  | 45d | 2025-12-08 | 2026-02-12 |  | 0d |  |
| 163 | 1.12.1 | Sump Pit Relocation | manual | 5d | 2025-12-08 | 2025-12-12 |  |  |  |
| 164 | 1.12.2 | Install Pit Lights |  | 3d | 2025-12-15 | 2025-12-17 | 163 | 49d | 0d |
| 165 | 1.12.3 | Relocate Plumb & Fire Sprinkler |  | 2d | 2025-12-18 | 2025-12-19 | 164 | 49d | 0d |
| 166 | 1.12.4 | Build Temp Cover |  | 3d | 2025-12-15 | 2025-12-17 | 163 | 51d | 2d |
| 167 | 1.12.5 | Elevator Construction Car #1 |  | 15d | 2025-12-22 | 2026-01-15 | 166, 165, 164 | 49d | 0d |
| 168 | 1.12.6 | Elevator Construction Car #2 |  | 15d | 2026-01-16 | 2026-02-05 | 167 | 49d | 0d |
| 169 | 1.12.7 | Test & Adjust Elevators |  | 5d | 2026-02-06 | 2026-02-12 | 168 | 49d | 18d |
| 170 | 1.13 | **Building Exterior West & South** |  | 41d | 2025-12-31 | 2026-02-27 |  | 52d |  |
| 171 | 1.13.1 | Install Storefront At Main Openings |  | 6d | 2025-12-31 | 2026-01-08 | 100 | 58d | 0d |
| 172 | 1.13.2 | Install Scaffolding at Building Perimeter |  | 3d | 2025-12-31 | 2026-01-05 | 100 | 52d | 0d |
| 173 | 1.13.3 | Exterior Sheathing |  | 5d | 2026-01-06 | 2026-01-12 | 172 | 52d | 0d |
| 174 | 1.13.4 | EIFS |  | 15d | 2026-01-13 | 2026-02-02 | 173 | 52d | 0d |
| 175 | 1.13.5 | Remove Scaffolding |  | 3d | 2026-02-03 | 2026-02-05 | 174 | 52d | 0d |
| 176 | 1.13.6 | Install Storefront Spandral at EFIS |  | 6d | 2026-02-06 | 2026-02-13 | 175 | 52d | 0d |
| 177 | 1.13.7 | Install Metal Panel Systems @ Tower Framing |  | 10d | 2026-02-06 | 2026-02-20 | 175 | 57d |  |
| 178 | 1.13.8 | Exterior Breakmetal, flashings, Sealants, & Painting |  | 7d | 2026-02-05 | 2026-02-13 | 175FS-1d, 174 | 58d | 0d |
| 179 | 1.13.9 | Install Steel Canopies |  | 3d | 2026-02-17 | 2026-02-19 | 178 | 58d |  |
| 180 | 1.13.10 | Install Glass |  | 3d | 2026-02-25 | 2026-02-27 | 176FS+6d | 52d |  |
| 181 | 1.14 | **Building Exterior North** |  | 35d | 2026-02-02 | 2026-03-23 |  | 36d |  |
| 182 | 1.14.1 | Install Storefront At Main Openings |  | 5d | 2026-02-02 | 2026-02-06 | 56 | 66d |  |
| 183 | 1.14.2 | Install Scaffolding at Building Perimeter |  | 2d | 2026-02-02 | 2026-02-03 | 56 | 36d | 0d |
| 184 | 1.14.3 | Exterior Sheathing |  | 5d | 2026-02-04 | 2026-02-10 | 183 | 36d | 0d |
| 185 | 1.14.4 | EIFS |  | 10d | 2026-02-11 | 2026-02-25 | 184 | 36d | 0d |
| 186 | 1.14.5 | Remove Scaffolding |  | 2d | 2026-02-26 | 2026-02-27 | 185 | 36d | 0d |
| 187 | 1.14.6 | Install Storefront Spandral at EFIS |  | 3d | 2026-03-02 | 2026-03-04 | 186 | 36d | 0d |
| 188 | 1.14.7 | Install Metal Panel Systems @ Tower Framing |  | 5d | 2026-03-02 | 2026-03-06 | 186 | 47d |  |
| 189 | 1.14.8 | Exterior Breakmetal, flashings, Sealants, & Painting |  | 3d | 2026-03-02 | 2026-03-04 | 186 | 47d | 0d |
| 190 | 1.14.9 | Install Steel Canopies |  | 2d | 2026-03-05 | 2026-03-06 | 189 | 47d |  |
| 191 | 1.14.10 | Install Glass |  | 3d | 2026-03-12 | 2026-03-16 | 187FS+5d | 36d | 0d |
| 192 | 1.14.11 | Landscape |  | 5d | 2026-03-17 | 2026-03-23 | 191 | 36d |  |

| ID | WBS | Task | Type | Duration | Start | Finish | Predecessors | Total slack | Free slack |
| --- | --- | --- | --- | --- | --- | --- | --- | --- | --- |
| 193 | 1.15 | **Building Exterior East** |  | 38d | 2026-03-18 | 2026-05-08 |  | 0d |  |
| 194 | 1.15.1 | Install Scaffolding at Building Perimeter |  | 3d | 2026-03-18 | 2026-03-20 | 88 | 0d |  |
| 195 | 1.15.2 | Exterior Sheathing |  | 5d | 2026-03-23 | 2026-03-27 | 194 | 0d |  |
| 196 | 1.15.3 | EIFS | manual | 10d | 2026-03-30 | 2026-04-10 | 195 |  |  |
| 197 | 1.15.4 | Remove Scaffolding | manual | 3d | 2026-04-13 | 2026-04-15 | 196 |  |  |
| 198 | 1.15.5 | Install Storefront Spandral at EFIS |  | 3d | 2026-04-16 | 2026-04-20 | 197 | 0d |  |
| 199 | 1.15.6 | Install Metal Panel Systems @ Tower Framing |  | 5d | 2026-04-16 | 2026-04-22 | 197 | 1d | 0d |
| 200 | 1.15.7 | Exterior Breakmetal, flashings, Sealants, & Painting |  | 6d | 2026-04-17 | 2026-04-24 | 197, 199FS-4d | 1d |  |
| 201 | 1.15.8 | Install Glass | manual | 4d | 2026-04-28 | 2026-05-01 | 198FS+5d, 200 |  |  |
| 202 | 1.15.9 | Landscape | manual | 5d | 2026-05-04 | 2026-05-08 | 201 |  |  |
| 203 | 1.16 | **Final Inspections** |  | 44d | 2026-03-12 | 2026-05-12 |  | 0d |  |
| 204 | 1.16.1 | Electrical |  | 1d | 2026-03-12 | 2026-03-12 | 92 | 38d | 0d |
| 205 | 1.16.2 | Mechanical |  | 1d | 2026-03-13 | 2026-03-13 | 92, 204 | 38d | 0d |
| 206 | 1.16.3 | Plumbing |  | 1d | 2026-03-16 | 2026-03-16 | 92, 205 | 38d | 7d |
| 207 | 1.16.4 | Public Works |  | 1d | 2026-03-20 | 2026-03-20 | 90 | 36d |  |
| 208 | 1.16.5 | Elevator inspection scheduling and approval |  | 10d | 2026-03-12 | 2026-03-25 | 169, 92 | 31d | 0d |
| 209 | 1.16.6 | Fire Life & Safety |  | 2d | 2026-03-26 | 2026-03-27 | 206, 208 | 31d | 0d |
| 210 | 1.16.7 | TCO (If City Will Allow it) |  | 1d | 2026-03-30 | 2026-03-30 | 209 | 31d |  |
| 211 | 1.16.8 | Grading |  | 1d | 2026-05-11 | 2026-05-11 | 202 | 0d |  |
| 212 | 1.16.9 | Planning & Zoning |  | 1d | 2026-05-11 | 2026-05-11 | 202 | 0d |  |
| 213 | 1.16.10 | Building Final |  | 1d | 2026-05-12 | 2026-05-12 | 204, 205, 206, 207, 208, 209, 211, 212 | 0d |  |
| 214 | 1.16.11 | CofO | milestone | 0d | 2026-05-12 | 2026-05-12 | 213 | 0d |  |
| 215 | 1.16.12 | Open Date | milestone | 0d | 2026-05-12 | 2026-05-12 | 213 | 0d |  |
