# Johnson Dev. Hawiian Park Self Storage

Schedule from MS Project, 2024-12-27 to 2026-05-20.

## Calendars

- Standard: Mon-Fri 08:00-12:00, 13:00-17:00; Sat-Sun off. Exceptions (off unless hours are given): 2025-01-01 (New Years Day), 2025-02-17 (Presidents Day), 2025-05-26 (Memorial Day), 2025-07-04 to 2025-07-07 (Independence Day), 2025-09-01 (Labor Day), 2025-11-27 to 2025-11-28 (Thanksgiving), 2025-12-25 to 2025-12-26 (Christmas), 2026-01-01 to 2026-01-02 (New Years), 2026-02-16 (Presidents Day).

## Resources

| Resource |
| --- |
| or 36? typ |

## Schedule

| ID | WBS | Task | Type | Duration | Start | Finish | Predecessors | Total slack | Free slack | Constraint |
| --- | --- | --- | --- | --- | --- | --- | --- | --- | --- | --- |
| 1 | 1 | **Public Storage - 810 S. Country Club Drive Meas AZ** |  | 5d | 2024-12-27 | 2025-01-03 |  | 0d |  |  |
| 2 | 1.1 | Notice to Proceed | milestone | 0d | 2024-12-27 | 2024-12-27 |  | 0d |  | start no earlier than 2024-12-27 |
| 3 | 1.2 | Mobilization |  | 5d | 2024-12-27 | 2025-01-03 | 2 | 0d |  |  |
| 4 | 2 | **Public Storage Overall 135,042 Sq Ft** |  | 346d? | 2025-01-06 | 2026-05-20 |  | 0d |  |  |
| 5 | 2.1 | City of Mesa Hydrant Meter Delay | manual | 12d | 2025-01-06 | 2025-01-21 | 3 |  |  |  |
| 6 | 2.2 | **Surface Demo & Grading** |  | 226d | 2025-01-06 | 2025-11-24 |  | 9d |  |  |
| 7 | 2.2.1 | Erosion Control & Site fencing Installation |  | 3d | 2025-01-06 | 2025-01-08 | 3 | 9d |  |  |
| 8 | 2.2.2 | Surface Demolition |  | 15d | 2025-01-22 | 2025-02-11 | 7, 5 | 0d |  |  |
| 9 | 2.2.3 | Site Survey, Boundry & Building Pad |  | 1d | 2025-02-11 | 2025-02-11 | 8FS-1d | 0d |  |  |
| 10 | 2.2.4 | Pre Grading Meeting |  | 1d | 2025-02-11 | 2025-02-11 | 9SS | 0d |  |  |
| 11 | 2.2.5 | Over-Ex & Recompact Bldg Pad & Site areas |  | 15d | 2025-02-12 | 2025-03-05 | 10 | 0d |  |  |
| 12 | 2.2.6 | Delay For Spetic System 2/12, 2/13, 2/14 | manual | 3d | 2025-03-06 | 2025-03-10 | 11 |  |  |  |
| 13 | 2.2.7 | Rain Delays 3/7, 3/8, 3/9, 3/12, 3/13, 3/14, 3/15 | manual | 7d | 2025-03-11 | 2025-03-19 | 12 |  |  |  |
| 14 | 2.2.8 | Certify Pad / Pad Delivery Date |  | 2d | 2025-03-20 | 2025-03-21 | 13 | 0d |  |  |
| 15 | 2.2.9 | Building Permit Due | milestone | 0d | 2025-03-21 | 2025-03-21 | 14 | 217d | 0d |  |
| 16 | 2.2.10 | Final Mesa Utility Power Drawings issued | milestone | 0d | 2025-03-21 | 2025-03-21 | 14 | 0d |  |  |
| 17 | 2.2.11 | Final Mesa Utility Power Drawing Delay | manual | 101d | 2025-03-24 | 2025-08-14 | 16 |  |  |  |
| 18 | 2.2.12 | Final Mesa Power Drawing Right Of Work & Traffic Control Permit | manual | 71d | 2025-08-15 | 2025-11-24 | 17 |  |  |  |
| 19 | 2.3 | **Site Improvements - Structures & Utilities** |  | 25d | 2025-03-24 | 2025-04-25 |  | 217d |  |  |
| 20 | 2.3.1 | Install Offsite Fire Tie In's & Laterals |  | 5d | 2025-03-24 | 2025-03-28 | 15 | 217d | 0d |  |
| 21 | 2.3.2 | Install Site Sewer lines to Bldg. |  | 5d | 2025-03-24 | 2025-03-28 | 15, 20SS | 217d | 0d |  |
| 22 | 2.3.3 | Install Private Fire line Loop & Riser |  | 6d | 2025-03-31 | 2025-04-07 | 15, 20, 21 | 217d | 0d |  |
| 23 | 2.3.4 | Install Private Domestic Water |  | 4d | 2025-04-08 | 2025-04-11 | 21, 22 | 217d | 0d |  |
| 24 | 2.3.5 | Install Dry Utility Ducts & Structures |  | 5d | 2025-04-14 | 2025-04-18 | 15, 23 | 217d | 0d |  |
| 25 | 2.3.6 | Install Private Storm Drain System |  | 5d | 2025-04-21 | 2025-04-25 | 24, 21 | 217d | 0d |  |

| ID | WBS | Task | Duration | Start | Finish | Predecessors | Total slack | Free slack | Constraint |
| --- | --- | --- | --- | --- | --- | --- | --- | --- | --- |
| 26 | 2.4 | **Early PCC & Base Paving of Site (option)** | 13d | 2025-04-28 | 2025-05-14 |  | 217d |  |  |
| 27 | 2.4.1 | Install Catch Basins, Curb & Gutters | 5d | 2025-04-28 | 2025-05-02 | 25 | 217d | 0d |  |
| 28 | 2.4.2 | Regrade for PCC & AC Base Pave | 2d | 2025-05-05 | 2025-05-06 | 27 | 217d | 0d |  |
| 29 | 2.4.3 | UG Electric Site Lts, Gate Motors etc. | 3d | 2025-05-07 | 2025-05-09 | 28 | 257d |  |  |
| 30 | 2.4.4 | Irrigation Sleeves | 3d | 2025-05-07 | 2025-05-09 | 28 | 217d | 0d |  |
| 31 | 2.4.5 | Base Pave site | 3d | 2025-05-12 | 2025-05-14 | 30, 40 | 217d |  |  |
| 32 | 2.5 | **Building Shell Construction** | 277d | 2025-03-24 | 2026-04-29 |  | 15d |  |  |
| 33 | 2.5.1 | Underslab Plumbing & Electrical | 8d | 2025-03-24 | 2025-04-02 | 14 | 69d | 0d |  |
| 34 | 2.5.2 | Elevator Pits form & Pour | 10d | 2025-03-24 | 2025-04-04 | 33SS | 69d | 0d |  |
| 35 | 2.5.3 | Drill & Set Jack Casings | 5d | 2025-04-07 | 2025-04-11 | 34 | 69d | 0d |  |
| 36 | 2.5.4 | CMU Wall Footings | 10d | 2025-03-27 | 2025-04-09 | 33FS-5d | 71d | 0d |  |
| 37 | 2.5.5 | Fine grade Granular Base & Reinforce Slab on grade -North | 5d | 2025-04-03 | 2025-04-09 | 36FS-5d, 33 | 71d | 0d | start no earlier than 2023-04-16 |
| 38 | 2.5.6 | Fine grade Granular Base & Reinforce Slab on grade -South | 5d | 2025-04-10 | 2025-04-16 | 36FS-5d, 37 | 231d | 0d |  |
| 39 | 2.5.7 | Pour Slab on grade North 8" | 3d | 2025-04-14 | 2025-04-16 | 37, 35 | 69d | 0d |  |
| 40 | 2.5.8 | Pour Slab on grade South 8" | 3d | 2025-04-17 | 2025-04-21 | 39, 38 | 231d | 14d |  |
| 41 | 2.5.9 | CMU walls/Ledgers to 3rd floor | 24d | 2025-04-17 | 2025-05-20 | 39 | 69d | 0d |  |
| 42 | 2.5.10 | Shearwalls/Beams & Deck for 2nd floor North | 16d | 2025-05-14 | 2025-06-05 | 41FS-5d | 69d | 0d |  |
| 43 | 2.5.11 | Reinforce & Pour 2nd floor deck North | 4d | 2025-06-06 | 2025-06-11 | 42 | 70d | 0d |  |
| 44 | 2.5.12 | Deck cure | 5d | 2025-06-12 | 2025-06-18 | 43 | 70d | 0d |  |
| 45 | 2.5.13 | Shearwalls/Beams & Deck for 2nd floor South | 16d | 2025-06-06 | 2025-06-27 | 42 | 69d | 0d |  |
| 46 | 2.5.14 | Reinforce & Pour 2nd floor deck South | 4d | 2025-06-30 | 2025-07-03 | 45 | 69d | 0d |  |
| 47 | 2.5.15 | Deck cure | 5d | 2025-07-08 | 2025-07-14 | 46 | 69d | 0d |  |
| 48 | 2.5.16 | CMU walls 3rd floor to top out North | 15d | 2025-06-19 | 2025-07-11 | 44 | 70d | 0d |  |
| 49 | 2.5.17 | Shearwalls/Beams & Deck for 3rd floor North | 16d | 2025-07-14 | 2025-08-04 | 48, 45 | 72d | 0d |  |
| 50 | 2.5.18 | Reinforce & Pour deck 3 North | 4d | 2025-08-05 | 2025-08-08 | 49 | 85d | 0d |  |
| 51 | 2.5.19 | Deck Cure | 5d | 2025-08-11 | 2025-08-15 | 50 | 85d | 12d |  |
| 52 | 2.5.20 | CMU walls 3rd floor to top out South | 18d | 2025-07-15 | 2025-08-07 | 48, 47 | 69d | 0d |  |
| 53 | 2.5.21 | Shearwalls/Beams & Deck for 3rd floor South | 18d | 2025-08-08 | 2025-09-03 | 52, 49 | 69d | 0d |  |
| 54 | 2.5.22 | Reinforce & Pour Deck 3 South | 4d | 2025-09-04 | 2025-09-09 | 53 | 82d | 0d |  |
| 55 | 2.5.23 | Deck Cure | 5d | 2025-09-10 | 2025-09-16 | 54 | 82d | 9d |  |
| 56 | 2.5.24 | Shearwalls/Beams & Roof Deck North | 18d | 2025-09-04 | 2025-09-29 | 53, 51 | 73d | 0d |  |
| 57 | 2.5.25 | Shearwalls/Beams & Roof Deck South | 18d | 2025-09-30 | 2025-10-23 | 56, 55 | 73d | 0d |  |
| 58 | 2.5.26 | Roof Structural @ platforms & Screens | 5d | 2025-09-30 | 2025-10-06 | 56 | 155d |  |  |
| 59 | 2.5.27 | Install roof accessories/Curbs, drains etc. | 10d | 2025-09-30 | 2025-10-13 | 56 | 78d | 0d |  |
| 60 | 2.5.28 | Roof Insulation cover board & Membrane | 22d | 2025-10-14 | 2025-11-12 | 59 | 78d | 0d |  |
| 61 | 2.5.29 | Set rooftop Equipment | 3d | 2025-11-13 | 2025-11-17 | 60 | 96d | 27d |  |
| 62 | 2.5.30 | Elevator Construction Car #1 | 15d | 2025-10-24 | 2025-11-13 | 56, 57, 60FS-17d | 75d | 0d |  |
| 63 | 2.5.31 | Elevator Construction Car #2 | 15d | 2025-11-14 | 2025-12-08 | 62 | 75d |  |  |
| 64 | 2.5.32 | State Elevator inspection scheduling and approval | 22d | 2026-03-31 | 2026-04-29 | 63, 31, 104 | 0d |  |  |

| ID | WBS | Task | Duration | Start | Finish | Predecessors | Total slack | Free slack |
| --- | --- | --- | --- | --- | --- | --- | --- | --- |
| 65 | 2.6 | **Building Exterior** | 54d | 2026-02-12 | 2026-04-29 |  | 0d |  |
| 66 | 2.6.1 | Install Scaffolding at Building Perimeter | 5d | 2026-02-12 | 2026-02-19 | 52, 56, 101 | 0d |  |
| 67 | 2.6.2 | Exterior Light Ga. Metal Frame/Sheathing | 12d | 2026-02-12 | 2026-03-02 | 66SS | 0d |  |
| 68 | 2.6.3 | Install Storefront & Spandral systems | 12d | 2026-02-24 | 2026-03-11 | 67FS-5d | 0d |  |
| 69 | 2.6.4 | EIFS | 15d | 2026-03-05 | 2026-03-25 | 68FS-5d | 0d |  |
| 70 | 2.6.5 | Install Metal Panel Systems @ Tower Framing | 12d | 2026-03-19 | 2026-04-03 | 69FS-5d | 0d |  |
| 71 | 2.6.6 | Install Steel Canopies | 8d | 2026-04-06 | 2026-04-15 | 70 | 0d |  |
| 72 | 2.6.7 | Exterior Breakmetal, flashings, Sealants, & Painting | 7d | 2026-04-16 | 2026-04-24 | 69, 70, 71 | 0d |  |
| 73 | 2.6.8 | Remove Scaffolding | 3d | 2026-04-27 | 2026-04-29 | 72 | 0d |  |
| 74 | 2.7 | **Building Interior** | 140d | 2025-06-30 | 2026-01-22 |  | 74d |  |
| 75 | 2.7.1 | Layout & Install Hangars from 2nd fl deck | 5d | 2025-06-30 | 2025-07-08 | 45 | 74d | 0d |
| 76 | 2.7.2 | Overhead M,P,E & Fire 1st fl | 20d | 2025-07-09 | 2025-08-05 | 75 | 74d | 0d |
| 77 | 2.7.3 | Hallway System & Doors 1st floor | 25d | 2025-07-23 | 2025-08-26 | 76FS-10d | 74d | 0d |
| 78 | 2.7.4 | Finish Mech. & Electrical 1st Fl | 3d | 2025-08-27 | 2025-08-29 | 77 | 78d | 9d |
| 79 | 2.7.5 | Layout & Install Overhead Hangars from 3rd fl deck | 5d | 2025-09-04 | 2025-09-10 | 53, 77 | 69d | 0d |
| 80 | 2.7.6 | Overhead M,P,E & Fire 2nd Fl | 20d | 2025-09-11 | 2025-10-08 | 79, 78FS-2d | 69d | 0d |
| 81 | 2.7.7 | Hallway System & Doors 2nd Floor | 22d | 2025-10-02 | 2025-10-31 | 80FS-5d | 69d | 0d |
| 82 | 2.7.8 | Finish Mech. & Electrical 2nd Fl | 3d | 2025-11-03 | 2025-11-05 | 81 | 69d | 0d |
| 83 | 2.7.9 | Install HM Doors & Hardware | 9d | 2025-11-06 | 2025-11-18 | 82 | 89d | 6d |
| 84 | 2.7.10 | Layout & Install Overhead Hangars from Roof deck | 5d | 2025-10-24 | 2025-10-30 | 57 | 73d | 4d |
| 85 | 2.7.11 | Overhead M,P,E & Fire 3rd Fl | 20d | 2025-11-06 | 2025-12-05 | 84, 82 | 69d | 0d |
| 86 | 2.7.12 | Hallway System & Doors 3rd Floor | 25d | 2025-12-01 | 2026-01-08 | 85FS-5d, 83 | 83d | 0d |
| 87 | 2.7.13 | Single line Electrical | 15d | 2025-12-08 | 2025-12-30 | 85, 99 | 69d | 0d |
| 88 | 2.7.14 | Finish Painting in Storage areas | 5d | 2025-11-13 | 2025-11-19 | 60 | 110d | 71d |
| 89 | 2.7.15 | Final Clean up & Seal floors | 10d | 2026-01-09 | 2026-01-22 | 86 | 83d |  |
| 90 | 2.7.16 | Office Framing | 6d | 2025-11-03 | 2025-11-10 | 81 | 73d | 0d |
| 91 | 2.7.17 | Office M/E/P Rough in | 6d | 2025-11-11 | 2025-11-18 | 90 | 73d | 0d |
| 92 | 2.7.18 | Office Drywall | 10d | 2025-11-19 | 2025-12-04 | 91 | 73d | 0d |
| 93 | 2.7.19 | Suspended Ceilings & Rough in | 6d | 2025-12-05 | 2025-12-12 | 92 | 73d | 0d |
| 94 | 2.7.20 | Office Fixtures & Finishes | 6d | 2025-12-15 | 2025-12-22 | 92, 93 | 73d | 4d |

| ID | WBS | Task | Type | Duration | Start | Finish | Predecessors | Total slack | Free slack | Constraint |
| --- | --- | --- | --- | --- | --- | --- | --- | --- | --- | --- |
| 95 | 2.8 | **Switchgear, City Power & Building Energize** |  | 309d? | 2025-01-06 | 2026-03-30 |  | 15d |  |  |
| 96 | 2.8.1 | Final Mesa Utility Power Drawings issued | manual | 1d? | 2025-03-24 | 2025-03-24 | 14 |  |  |  |
| 97 | 2.8.2 | <New Task> | manual | 1d? | 2025-01-06 | 2025-01-06 |  |  |  |  |
| 98 | 2.8.3 | Switchgear Order & Lead Time |  | 180d | 2025-01-06 | 2025-09-19 | 3 | 43d | 0d |  |
| 99 | 2.8.4 | Switchgear Delivery & Install |  | 3d | 2025-09-22 | 2025-09-24 | 98 | 43d | 0d |  |
| 100 | 2.8.5 | Single line Electrical & Grounding |  | 5d | 2025-09-25 | 2025-10-01 | 98, 99 | 129d | 60d |  |
| 101 | 2.8.6 | COR #1 Undergrounding Power & Comms + Off Site Improvements | manual | 51d | 2025-11-25 | 2026-02-11 | 99, 17, 18 |  |  |  |
| 102 | 2.8.7 | Mesa Utility Release for Equipment & Cabling |  | 2d | 2026-02-12 | 2026-02-13 | 101 | 0d |  |  |
| 103 | 2.8.8 | Mesa Utility Scheduling & Lead time |  | 25d | 2026-02-17 | 2026-03-23 | 102 | 0d |  |  |
| 104 | 2.8.9 | Set Transformer, Cabling, & Energize |  | 5d | 2026-03-24 | 2026-03-30 | 103 | 0d |  |  |
| 105 | 2.8.10 | Electrical Inspection |  | 3d | 2025-12-31 | 2026-01-06 | 94, 61, 87, 100 | 69d | 0d | start no earlier than 2023-06-19 |
| 106 | 2.8.11 | Mechanical Inspection |  | 3d | 2026-01-07 | 2026-01-09 | 105 | 69d | 0d |  |
| 107 | 2.8.12 | Office Completion Date |  | 1d | 2026-01-12 | 2026-01-12 | 106 | 69d | 0d |  |
| 108 | 2.9 | **Onsite improvements** |  | 37d | 2026-01-22 | 2026-03-16 |  | 39d |  |  |
| 109 | 2.9.1 | Grade for Curb & Gutter |  | 5d | 2026-01-22 | 2026-01-28 | 101FS-15d | 39d | 0d |  |
| 110 | 2.9.2 | Place Curb & Gutter |  | 2d | 2026-01-29 | 2026-01-30 | 109 | 39d | 0d |  |
| 111 | 2.9.3 | Regrade & Concrete paving |  | 5d | 2026-02-02 | 2026-02-06 | 110 | 51d | 12d |  |
| 112 | 2.9.4 | Grade & Pour Ramps, Walks & Stairs |  | 5d | 2026-02-02 | 2026-02-06 | 110 | 39d | 0d |  |
| 113 | 2.9.5 | AC Paving & Slot cuts |  | 3d | 2026-02-09 | 2026-02-11 | 112 | 39d | 0d |  |
| 114 | 2.9.6 | Landscape Irrigation and Planting |  | 9d | 2026-02-12 | 2026-02-25 | 112, 113 | 39d | 0d |  |
| 115 | 2.9.7 | Striping & Signage |  | 2d | 2026-02-26 | 2026-02-27 | 111, 114 | 39d | 0d |  |
| 116 | 2.9.8 | Final Grading Inspections |  | 2d | 2026-03-02 | 2026-03-03 | 115 | 39d | 0d |  |
| 117 | 2.9.9 | Final Public Works Inspections |  | 2d | 2026-03-04 | 2026-03-05 | 116 | 39d | 0d |  |
| 118 | 2.9.10 | Final Planning & Zoning Inspection |  | 2d | 2026-03-06 | 2026-03-09 | 117 | 39d | 0d |  |
| 119 | 2.9.11 | Owner Punch list walkthrough & Completion |  | 5d | 2026-03-10 | 2026-03-16 | 118, 88 | 39d |  |  |

| ID | WBS | Task | Type | Duration | Start | Finish | Predecessors | Total slack |
| --- | --- | --- | --- | --- | --- | --- | --- | --- |
| 120 | 2.10 | **Accumulative Building Inspections & C of O** |  | 91d | 2026-01-13 | 2026-05-20 |  | 0d |
| 121 | 2.10.1 | Rain/Weather Delays |  | 7d | 2026-01-13 | 2026-01-21 | 107 | 69d |
| 122 | 2.10.2 | Life Safety & Final Inspections |  | 7d | 2026-04-30 | 2026-05-08 | 64, 107, 121, 73 | 0d |
| 123 | 2.10.3 | Building Final Inspection |  | 2d | 2026-05-11 | 2026-05-12 | 122, 118, 119 | 0d |
| 124 | 2.10.4 | Substantial Completion Date | milestone | 0d | 2026-05-12 | 2026-05-12 | 123 | 0d |
| 125 | 2.10.5 | Certificate Of Occupancy |  | 6d | 2026-05-13 | 2026-05-20 | 124 | 0d |
| 126 | 2.10.6 | Open Date | milestone | 0d | 2026-05-20 | 2026-05-20 | 125, 89 | 0d |
| 127 | 2.10.7 | Final Completion Date | milestone | 0d | 2026-05-20 | 2026-05-20 | 126 | 0d |
