# Johnson Dev. Hawiian Park Self Storage

Schedule from MS Project, 2025-05-27 to 2026-06-02.

## Calendars

- Standard: Mon-Fri 08:00-12:00, 13:00-17:00; Sat-Sun off. Exceptions (off unless hours are given): 2025-07-04 to 2025-07-07 (Independence Day), 2025-09-01 (Labor Day), 2025-11-27 to 2025-11-28 (Thanksgiving), 2025-12-25 to 2025-12-26 (Christmas), 2026-01-01 to 2026-01-02 (New Years), 2026-02-16 (Presidents Day), 2026-05-25 (Memorial Day).

## Resources

| Resource |
| --- |
| or 36? typ |

## Schedule

| ID | WBS | Task | Type | Duration | Start | Finish | Predecessors | Total slack | Free slack | Constraint |
| --- | --- | --- | --- | --- | --- | --- | --- | --- | --- | --- |
| 1 | 1 | **Public Storage - 1061 Cudahy Place San Diego CA** |  | 20d | 2025-05-27 | 2025-06-23 |  | 0d |  |  |
| 2 | 1.1 | Notice to Proceed | milestone | 0d | 2025-05-27 | 2025-05-27 |  | 0d |  | start no earlier than 2025-05-27 |
| 3 | 1.2 | Mobilization |  | 5d | 2025-05-27 | 2025-06-02 | 2 | 0d |  |  |
| 4 | 1.3 | Switchgear Submittal Approval |  | 15d | 2025-06-03 | 2025-06-23 | 3 | 0d |  |  |
| 5 | 1.4 | Chamber System Submittal Approval |  | 15d | 2025-06-03 | 2025-06-23 | 3 | 16d |  |  |
| 6 | 2 | **Public Storage Overall 88,386 Sq Ft** |  | 250d | 2025-06-03 | 2026-06-02 |  | 0d |  |  |
| 7 | 2.1 | **Surface Demo & Grading** |  | 34d | 2025-06-03 | 2025-07-22 |  | 0d |  |  |
| 8 | 2.1.1 | Erosion Control & Remove Owners Fencing |  | 3d | 2025-06-03 | 2025-06-05 | 3 | 0d |  |  |
| 9 | 2.1.2 | Pre Con Meeting |  | 1d | 2025-06-06 | 2025-06-06 | 8 | 0d |  |  |
| 10 | 2.1.3 | Demo Existing Bldg/Slabs,Tank slabs, Retaining walls Etc. |  | 15d | 2025-06-09 | 2025-06-27 | 8, 9 | 0d |  |  |
| 11 | 2.1.4 | Site Survey, Boundry & Building Pad |  | 1d | 2025-06-27 | 2025-06-27 | 10FS-1d | 0d |  |  |
| 12 | 2.1.5 | Pre Grading Meeting |  | 1d | 2025-06-27 | 2025-06-27 | 11SS | 0d |  |  |
| 13 | 2.1.6 | Install Shoring Wall NE corner of Site |  | 12d | 2025-06-30 | 2025-07-17 | 12 | 0d |  |  |
| 14 | 2.1.7 | Over-Ex & Recompact Bldg Pad & Site areas |  | 12d | 2025-06-30 | 2025-07-17 | 12 | 0d |  |  |
| 15 | 2.1.8 | Certify Pad / Pad Delivery Date |  | 3d | 2025-07-18 | 2025-07-22 | 14, 13 | 1d | 0d |  |
| 16 | 2.1.9 | Building Permit Due | milestone | 0d | 2025-07-22 | 2025-07-22 | 15 | 216d |  |  |
| 17 | 2.2 | **Site Improvements - Structures & Utilities** |  | 20d | 2025-07-18 | 2025-08-14 |  | 0d |  |  |
| 18 | 2.2.1 | Install Private Storm Drain & Chamber System |  | 15d | 2025-07-18 | 2025-08-07 | 13, 14, 5 | 0d |  |  |
| 19 | 2.2.2 | Install Offsite Fire Tie In & Lateral |  | 5d | 2025-07-18 | 2025-07-24 | 18SS | 205d | 0d |  |
| 20 | 2.2.3 | Install Site Sewer line to Bldg. |  | 5d | 2025-07-18 | 2025-07-24 | 19SS | 205d | 0d |  |
| 21 | 2.2.4 | Install Private Domestic Water |  | 4d | 2025-07-25 | 2025-07-30 | 20 | 205d | 0d |  |
| 22 | 2.2.5 | Install Dry Utility Ducts & Structures |  | 5d | 2025-07-31 | 2025-08-06 | 21 | 205d |  |  |
| 23 | 2.2.6 | Install Drainage Structures & Backfill |  | 5d | 2025-08-08 | 2025-08-14 | 18 | 181d | 0d |  |
| 24 | 2.3 | **Early AC Paving Option** |  | 18d | 2025-08-15 | 2025-09-10 |  | 181d |  |  |
| 25 | 2.3.1 | Survey & Grade for Curb Cuts |  | 2d | 2025-08-15 | 2025-08-18 | 23 | 181d | 0d |  |
| 26 | 2.3.2 | UG Electric Site Lts, Gate Motors etc. |  | 3d | 2025-08-19 | 2025-08-21 | 25 | 181d | 0d |  |
| 27 | 2.3.3 | Irrigation Sleeves |  | 3d | 2025-08-19 | 2025-08-21 | 25 | 181d | 0d |  |
| 28 | 2.3.4 | Form & Pour Curb & Gutter onsite |  | 3d | 2025-08-22 | 2025-08-26 | 27, 26 | 181d | 0d |  |
| 29 | 2.3.5 | Grade & Pour Site Walks Bollards & Gate Tracks |  | 7d | 2025-08-27 | 2025-09-05 | 27, 28 | 181d | 0d |  |
| 30 | 2.3.6 | Agg Base import & "Early" AC Paving option |  | 3d | 2025-09-08 | 2025-09-10 | 29 | 181d |  |  |

| ID | WBS | Task | Duration | Start | Finish | Predecessors | Total slack | Free slack | Constraint |
| --- | --- | --- | --- | --- | --- | --- | --- | --- | --- |
| 31 | 2.4 | **Building Shell Construction** | 198d | 2025-07-23 | 2026-05-06 |  | 0d |  |  |
| 32 | 2.4.1 | Underslab Plumbing & Electrical | 8d | 2025-07-23 | 2025-08-01 | 15 | 1d | 0d |  |
| 33 | 2.4.2 | Elevator Pits Excavate, Waterproofing, Form & Pour | 10d | 2025-07-23 | 2025-08-05 | 32SS | 2d | 0d |  |
| 34 | 2.4.3 | Drill & Set Jack Casings | 5d | 2025-08-06 | 2025-08-12 | 33 | 2d |  |  |
| 35 | 2.4.4 | Bldg. Wall Ftgs. & CMU to FF | 8d | 2025-07-28 | 2025-08-06 | 32FS-5d | 1d |  |  |
| 36 | 2.4.5 | Fine Grade Slab Base materials & Reinforce Slab on grade | 5d | 2025-08-08 | 2025-08-14 | 35, 18 | 0d |  | start no earlier than 2023-04-16 |
| 37 | 2.4.6 | Pour Slab on Grade 8" | 3d | 2025-08-15 | 2025-08-19 | 36, 34 | 0d |  |  |
| 38 | 2.4.7 | CMU walls/Ledgers to 18' | 24d | 2025-08-20 | 2025-09-23 | 37 | 0d |  |  |
| 39 | 2.4.8 | Shearwalls/Beams & Deck for 2nd floor | 25d | 2025-09-17 | 2025-10-21 | 38FS-5d | 0d |  |  |
| 40 | 2.4.9 | Reinforce & Pour 2nd floor Deck | 6d | 2025-10-17 | 2025-10-24 | 39FS-3d | 0d |  |  |
| 41 | 2.4.10 | Deck cure | 5d | 2025-10-27 | 2025-10-31 | 40 | 0d |  |  |
| 42 | 2.4.11 | CMU Walls/Ledgers to 29' (3rd floor) | 15d | 2025-11-03 | 2025-11-21 | 41 | 0d |  |  |
| 43 | 2.4.12 | Shearwalls/Beams & Deck for 3rd floor | 21d | 2025-11-19 | 2025-12-19 | 42FS-3d | 0d |  |  |
| 44 | 2.4.13 | Reinforce & Pour3rd floor Deck | 6d | 2025-12-17 | 2025-12-24 | 43FS-3d | 0d |  |  |
| 45 | 2.4.14 | Deck Cure | 5d | 2025-12-29 | 2026-01-06 | 44 | 0d |  |  |
| 46 | 2.4.15 | CMU Walls/Roof Ledgers to Top Out | 15d | 2026-01-07 | 2026-01-27 | 45 | 0d |  |  |
| 47 | 2.4.16 | Shearwalls/Beams & Roof Deck | 18d | 2026-01-23 | 2026-02-18 | 46FS-3d | 0d |  |  |
| 48 | 2.4.17 | Roof Structural @ platforms & Screens | 5d | 2026-02-19 | 2026-02-25 | 47 | 40d | 17d |  |
| 49 | 2.4.18 | Install roof accessories/Curbs, drains etc. | 7d | 2026-02-19 | 2026-02-27 | 47 | 0d |  |  |
| 50 | 2.4.19 | Roof Insulation Cover Board & Membrane | 15d | 2026-03-02 | 2026-03-20 | 49 | 0d |  |  |
| 51 | 2.4.20 | Set Rooftop Equipment | 3d | 2026-03-23 | 2026-03-25 | 50, 48 | 23d | 20d |  |
| 52 | 2.4.21 | Elevator Construction Car #1 | 15d | 2026-02-26 | 2026-03-18 | 47, 50FS-17d | 0d |  |  |
| 53 | 2.4.22 | Elevator Construction Car #2 | 15d | 2026-03-19 | 2026-04-08 | 52 | 0d |  |  |
| 54 | 2.4.23 | State Elevator inspection scheduling and approval | 20d | 2026-04-09 | 2026-05-06 | 53, 78 | 0d |  |  |

| ID | WBS | Task | Duration | Start | Finish | Predecessors | Total slack | Free slack |
| --- | --- | --- | --- | --- | --- | --- | --- | --- |
| 55 | 2.5 | **Building Interior** | 122d | 2025-10-17 | 2026-04-15 |  | 33d |  |
| 56 | 2.5.1 | Layout & Install Hangars from 2nd fl deck | 3d | 2025-10-17 | 2025-10-21 | 40SS | 41d | 0d |
| 57 | 2.5.2 | Overhead M,P,E & Fire 1st fl | 15d | 2025-10-22 | 2025-11-11 | 56 | 41d | 0d |
| 58 | 2.5.3 | Hallway System & Doors 1st floor | 15d | 2025-11-05 | 2025-11-25 | 57FS-5d | 41d | 0d |
| 59 | 2.5.4 | Finish Mech. & Electrical 1st Fl | 3d | 2025-11-26 | 2025-12-02 | 58 | 43d | 21d |
| 60 | 2.5.5 | Layout & Install Overhead Hangars from 3rd fl deck | 3d | 2025-12-29 | 2025-12-31 | 58, 44 | 22d | 0d |
| 61 | 2.5.6 | Overhead M,P,E & Fire 2nd Fl | 15d | 2026-01-05 | 2026-01-23 | 59FS-2d, 60 | 22d | 0d |
| 62 | 2.5.7 | Hallway System & Doors 2nd Floor | 15d | 2026-01-19 | 2026-02-06 | 61FS-5d | 22d | 0d |
| 63 | 2.5.8 | Finish Mech. & Electrical 2nd Fl | 3d | 2026-02-09 | 2026-02-11 | 62 | 22d | 0d |
| 64 | 2.5.9 | Install HM Doors & Hardware | 9d | 2026-02-12 | 2026-02-25 | 63 | 43d | 10d |
| 65 | 2.5.10 | Layout & Install Overhead Hangars from Roof deck | 5d | 2026-02-19 | 2026-02-25 | 47 | 13d | 0d |
| 66 | 2.5.11 | Overhead M,P,E & Fire 3rd Fl | 15d | 2026-02-26 | 2026-03-18 | 63, 65 | 13d | 0d |
| 67 | 2.5.12 | Hallway System & Doors 3rd Floor | 15d | 2026-03-12 | 2026-04-01 | 64, 66FS-5d | 33d | 0d |
| 68 | 2.5.13 | Electrical Room 100% Complete | 15d | 2026-03-19 | 2026-04-08 | 66, 74 | 13d | 10d |
| 69 | 2.5.14 | Finish Painting in Storage areas | 5d | 2026-03-23 | 2026-03-27 | 50 | 37d | 15d |
| 70 | 2.5.15 | Final Clean up & Seal floors | 10d | 2026-04-02 | 2026-04-15 | 67 | 33d |  |
| 71 | 2.6 | **Switchgear, City Power & Building Energize** | 197d | 2025-06-24 | 2026-04-08 |  | 0d |  |
| 72 | 2.6.1 | Switchgear Order & Lead Time | 150d | 2025-06-24 | 2026-01-30 | 3, 4 | 0d |  |
| 73 | 2.6.2 | Install Dry Utility Ducts & Structures | 5d | 2026-02-02 | 2026-02-06 | 72 | 4d |  |
| 74 | 2.6.3 | Switchgear Delivery & Install | 4d | 2026-02-02 | 2026-02-05 | 72 | 0d |  |
| 75 | 2.6.4 | Single line Electrical & Grounding | 5d | 2026-02-06 | 2026-02-12 | 72, 74 | 0d |  |
| 76 | 2.6.5 | SDG&E Utility Release for Equipment & Cabling | 3d | 2026-02-13 | 2026-02-18 | 75, 73 | 0d |  |
| 77 | 2.6.6 | SDG&E Utility Scheduling & Lead time | 30d | 2026-02-19 | 2026-04-01 | 76 | 0d |  |
| 78 | 2.6.7 | Set Transformer, Cabling, & Energize | 5d | 2026-04-02 | 2026-04-08 | 77 | 0d |  |

| ID | WBS | Task | Duration | Start | Finish | Predecessors | Total slack | Free slack | Constraint |
| --- | --- | --- | --- | --- | --- | --- | --- | --- | --- |
| 79 | 2.7 | **Site Improvements - Structures & Utilities** | 38d | 2026-01-28 | 2026-03-23 |  | 22d |  |  |
| 80 | 2.7.1 | Install Private Storm Drain & Chamber System | 15d | 2026-01-28 | 2026-02-18 | 46 | 22d | 0d |  |
| 81 | 2.7.2 | Install Offsite Fire Tie In & Lateral | 5d | 2026-01-28 | 2026-02-03 | 80SS | 23d | 0d |  |
| 82 | 2.7.3 | Install Site Sewer line to Bldg. | 5d | 2026-02-04 | 2026-02-10 | 81 | 23d | 0d |  |
| 83 | 2.7.4 | Install Private Domestic Water | 4d | 2026-02-11 | 2026-02-17 | 82 | 23d | 1d |  |
| 84 | 2.7.5 | Install Drainage Structures & Backfill | 5d | 2026-02-19 | 2026-02-25 | 80, 83 | 22d | 0d |  |
| 85 | 2.7.6 | Survey & Grade for Curb Cuts | 2d | 2026-02-26 | 2026-02-27 | 84 | 22d | 0d |  |
| 86 | 2.7.7 | UG Electric Site Lts, Gate Motors etc. | 3d | 2026-03-02 | 2026-03-04 | 85 | 63d |  |  |
| 87 | 2.7.8 | Irrigation Sleeves | 3d | 2026-03-02 | 2026-03-04 | 85 | 22d | 0d |  |
| 88 | 2.7.9 | Form & Pour Curb & Gutter onsite | 3d | 2026-03-05 | 2026-03-09 | 87 | 22d | 0d |  |
| 89 | 2.7.10 | Grade & Pour Site Walks Bollards & Gate Tracks | 7d | 2026-03-10 | 2026-03-18 | 87, 88 | 22d | 0d |  |
| 90 | 2.7.11 | Agg Base import & AC Paving | 3d | 2026-03-19 | 2026-03-23 | 89 | 22d | 0d |  |
| 91 | 2.8 | **Offsite improvements** | 24d | 2026-03-24 | 2026-04-24 |  | 22d |  |  |
| 92 | 2.8.1 | Demo & Grading | 4d | 2026-03-24 | 2026-03-27 | 90 | 22d | 0d |  |
| 93 | 2.8.2 | Offsite Concrete & Driveways | 4d | 2026-03-30 | 2026-04-02 | 92 | 22d | 0d |  |
| 94 | 2.8.3 | Offsite AC Patching & Paving | 4d | 2026-04-03 | 2026-04-08 | 93 | 22d | 0d |  |
| 95 | 2.8.4 | Offsite Striping | 3d | 2026-04-09 | 2026-04-13 | 94 | 22d | 0d |  |
| 96 | 2.8.5 | Final Public Works Inspections | 2d | 2026-04-14 | 2026-04-15 | 95 | 22d | 0d |  |
| 97 | 2.8.6 | Final Planning & Zoning Inspection | 2d | 2026-04-16 | 2026-04-17 | 96 | 22d | 0d |  |
| 98 | 2.8.7 | Owner Civil Punch list walkthrough & Completion | 5d | 2026-04-20 | 2026-04-24 | 97, 69 | 22d |  |  |
| 99 | 2.9 | **Building Exterior, Tower & Office Finishes** | 67d | 2026-01-28 | 2026-05-01 |  | 3d |  |  |
| 100 | 2.9.1 | Install Scaffolding at Office Tower | 1d | 2026-01-28 | 2026-01-28 | 46 | 3d | 0d |  |
| 101 | 2.9.2 | Exterior Metal Frame/Sheathing & Waterproofing | 5d | 2026-01-29 | 2026-02-04 | 100 | 3d | 0d |  |
| 102 | 2.9.3 | Install Storefront System @ Displays | 5d | 2026-02-05 | 2026-02-11 | 101 | 3d | 0d |  |
| 103 | 2.9.4 | EIFS | 5d | 2026-02-12 | 2026-02-19 | 102 | 3d | 0d |  |
| 104 | 2.9.5 | Exterior Painting & Coatings @ CMU Walls | 10d | 2026-02-05 | 2026-02-19 | 101 | 3d | 0d |  |
| 105 | 2.9.6 | Install Metal Panel Systems @ Tower Framing | 5d | 2026-02-20 | 2026-02-26 | 103, 104 | 3d | 0d |  |
| 106 | 2.9.7 | Install Steel Canopies | 5d | 2026-02-27 | 2026-03-05 | 105 | 3d | 0d |  |
| 107 | 2.9.8 | Exterior Breakmetal, flashings, Sealants, & Painting | 5d | 2026-03-06 | 2026-03-12 | 103, 105, 106 | 3d | 0d |  |
| 108 | 2.9.9 | Remove Scaffolding | 1d | 2026-03-13 | 2026-03-13 | 107 | 3d | 0d |  |
| 109 | 2.9.10 | Office Framing | 6d | 2026-03-06 | 2026-03-13 | 106 | 3d | 0d |  |
| 110 | 2.9.11 | Office M/E/P Rough in | 6d | 2026-03-16 | 2026-03-23 | 109, 108 | 3d | 0d |  |
| 111 | 2.9.12 | Office Drywall | 10d | 2026-03-24 | 2026-04-06 | 110, 107 | 3d | 0d |  |
| 112 | 2.9.13 | Suspended Ceilings & Rough in | 6d | 2026-04-07 | 2026-04-14 | 111 | 3d | 0d |  |
| 113 | 2.9.14 | Office Fixtures & Finishes | 6d | 2026-04-15 | 2026-04-22 | 111, 112 | 3d | 0d |  |
| 114 | 2.9.15 | Final Electrical Inspection | 3d | 2026-04-23 | 2026-04-27 | 51, 113, 68, 75, 78 | 3d | 0d | start no earlier than 2023-06-19 |
| 115 | 2.9.16 | Final Mechanical Inspections | 3d | 2026-04-28 | 2026-04-30 | 114 | 3d | 0d |  |
| 116 | 2.9.17 | Office Completion Date, (Possible TCO 1st floor) | 1d | 2026-05-01 | 2026-05-01 | 104, 115 | 3d |  |  |

| ID | WBS | Task | Type | Duration | Start | Finish | Predecessors | Total slack |
| --- | --- | --- | --- | --- | --- | --- | --- | --- |
| 117 | 2.10 | **Accumulative Building Inspections & C of O** |  | 18d | 2026-05-07 | 2026-06-02 |  | 0d |
| 118 | 2.10.1 | Rain/Weather Delays |  | 10d | 2026-05-07 | 2026-05-20 | 116, 54 | 0d |
| 119 | 2.10.2 | Life Safety & Final Inspections |  | 4d | 2026-05-21 | 2026-05-27 | 54, 116, 118 | 0d |
| 120 | 2.10.3 | Building Final Inspection |  | 2d | 2026-05-28 | 2026-05-29 | 119, 95, 97, 98 | 0d |
| 121 | 2.10.4 | Substantial Completion Date | milestone | 0d | 2026-05-29 | 2026-05-29 | 120 | 0d |
| 122 | 2.10.5 | Certificate Of Occupancy |  | 2d | 2026-06-01 | 2026-06-02 | 121 | 0d |
| 123 | 2.10.6 | Open Date | milestone | 0d | 2026-06-02 | 2026-06-02 | 122, 70 | 0d |
| 124 | 2.10.7 | Final Completion Date | milestone | 0d | 2026-06-02 | 2026-06-02 | 123 | 0d |
