# 32504 IMI Engineering-Master Schedule 2-13-25 - GW

Schedule from MS Project XML, 2025-05-27 to 2026-10-23.

## Calendars

- Standard: Mon-Fri 08:00-12:00, 13:00-17:00; Sat-Sun off. Exceptions (off unless hours are given): 2025-07-04 to 2025-07-07 (Independence Day), 2025-09-01 (Labor Day), 2025-11-27 to 2025-11-28 (Thannksgiving), 2025-12-25 to 2025-12-26 (Christmas), 2026-01-01 to 2026-01-02 (New Years), 2026-02-16 (Presidents Day), 2026-05-25 (Memorial Day), 2026-07-03 (Independence Day).

## Schedule

| ID | WBS | Task | Type | Duration | Start | Finish | Predecessors | Total slack | Free slack | Constraint |
| --- | --- | --- | --- | --- | --- | --- | --- | --- | --- | --- |
| 1 | 1 | **Public Storage - 1061 Cudahy Place San Diego CA** |  | 156d | 2025-05-27 | 2026-01-12 |  | 6d |  |  |
| 2 | 1.1 | Notice to Proceed | milestone | 0d | 2025-05-27 | 2025-05-27 |  | 6d | 0d | start no earlier than 2025-05-27 |
| 3 | 1.2 | Demolition Permit Delay (Estimated) |  | 96d | 2025-05-27 | 2025-10-10 | 2 | 6d | 0d |  |
| 4 | 1.3 | SDGE Removal of Transformer | manual | 1d | 2025-10-06 | 2025-10-06 |  |  |  | start no earlier than 2025-10-06 |
| 5 | 1.4 | Mobilization |  | 5d | 2025-10-06 | 2025-10-10 | 3FF | 19d | 0d |  |
| 6 | 1.5 | Switchgear Submittal Approval (30 week Lead Time) |  | 15d | 2025-09-22 | 2025-10-10 | 5FF | 19d | 0d |  |
| 7 | 1.6 | CO #4 - ADS Detension System |  | 40d | 2025-07-16 | 2025-09-10 |  | 283d |  | start no earlier than 2025-07-16 |
| 8 | 1.7 | Chamber System Submittal Approval |  | 20d | 2025-10-27 | 2025-11-21 | 3FS+10d | 163d | 0d |  |
| 9 | 1.8 | ADS Detention System Lead Time |  | 30d | 2025-11-24 | 2026-01-12 | 8 | 163d | 0d |  |
| 10 | 2 | **Public Storage Overall 88,386 Sq Ft** |  | 264d | 2025-10-08 | 2026-10-23 |  | 0d |  |  |
| 11 | 2.1 | **Surface Demo & Grading** |  | 48d | 2025-10-08 | 2025-12-16 |  | 6d |  |  |
| 12 | 2.1.1 | Erosion Control & Remove Owners Fencing |  | 3d | 2025-10-08 | 2025-10-10 | 3FF | 6d |  |  |
| 13 | 2.1.2 | Received Traffic Control Plans City Stamped | manual | 1d | 2025-10-21 | 2025-10-21 | 12 |  |  |  |
| 14 | 2.1.3 | Mock Pre-Con Meeting with City | manual | 1d | 2025-10-22 | 2025-10-22 | 13 |  |  |  |
| 15 | 2.1.4 | Submitted Application for Traffic Control Permit DELAY |  | 20d | 2025-10-23 | 2025-11-19 | 14 | 0d |  |  |
| 16 | 2.1.5 | City List of Items to resolve before Pre-Con Meeting can happen DELAY |  | 1d | 2025-11-20 | 2025-11-20 | 14, 15 | 0d |  |  |
| 17 | 2.1.6 | Pre Con Meeting |  | 1d | 2025-11-21 | 2025-11-21 | 16, 14, 15 | 231d |  |  |
| 18 | 2.1.7 | Demo Existing Bldg/Slabs,Tank slabs, Retaining walls Etc. |  | 10d | 2025-10-13 | 2025-10-24 | 3, 6 | 19d | 0d |  |
| 19 | 2.1.8 | Site Survey, Boundry & Building Pad |  | 1d | 2025-10-24 | 2025-10-24 | 18FS-1d | 19d | 0d |  |
| 20 | 2.1.9 | Pre Grading Meeting |  | 1d | 2025-10-24 | 2025-10-24 | 19SS | 19d |  |  |
| 21 | 2.1.10 | Install Shoring Wall NE corner of Site |  | 13d | 2025-11-21 | 2025-12-11 | 20, 15, 16 | 0d |  |  |
| 22 | 2.1.11 | Over-Ex & Recompact Bldg Pad & Site areas |  | 12d | 2025-11-21 | 2025-12-10 | 20, 15, 16 | 1d |  |  |
| 23 | 2.1.12 | Certify Pad / Pad Delivery Date |  | 3d | 2025-12-12 | 2025-12-16 | 21, 22 | 0d |  |  |
| 24 | 2.1.13 | Building Permit Due | milestone | 0d | 2025-12-16 | 2025-12-16 | 23 | 216d |  |  |

| ID | WBS | Task | Duration | Start | Finish | Predecessors | Total slack | Free slack | Constraint |
| --- | --- | --- | --- | --- | --- | --- | --- | --- | --- |
| 25 | 2.2 | **Site Improvements - Structures & Utilities** | 20d | 2026-01-13 | 2026-02-09 |  | 163d |  |  |
| 26 | 2.2.1 | Install Private Storm Drain & Chamber System | 15d | 2026-01-13 | 2026-02-02 | 8, 21, 22, 9 | 163d | 0d |  |
| 27 | 2.2.2 | Install Offsite Fire Tie In & Lateral | 5d | 2026-01-13 | 2026-01-19 | 26SS | 187d | 0d |  |
| 28 | 2.2.3 | Install Site Sewer line to Bldg. | 5d | 2026-01-13 | 2026-01-19 | 27SS | 187d | 0d |  |
| 29 | 2.2.4 | Install Private Domestic Water | 4d | 2026-01-20 | 2026-01-23 | 28 | 187d | 0d |  |
| 30 | 2.2.5 | Install Dry Utility Ducts & Structures | 5d | 2026-01-26 | 2026-01-30 | 29 | 187d |  |  |
| 31 | 2.2.6 | Install Drainage Structures & Backfill | 5d | 2026-02-03 | 2026-02-09 | 26 | 163d | 0d |  |
| 32 | 2.3 | **Early AC Paving Option** | 18d | 2026-02-10 | 2026-03-06 |  | 163d |  |  |
| 33 | 2.3.1 | Survey & Grade for Curb Cuts | 2d | 2026-02-10 | 2026-02-11 | 31 | 163d | 0d |  |
| 34 | 2.3.2 | UG Electric Site Lts, Gate Motors etc. | 3d | 2026-02-12 | 2026-02-17 | 33 | 163d | 0d |  |
| 35 | 2.3.3 | Irrigation Sleeves | 3d | 2026-02-12 | 2026-02-17 | 33 | 163d | 0d |  |
| 36 | 2.3.4 | Form & Pour Curb & Gutter onsite | 3d | 2026-02-18 | 2026-02-20 | 34, 35 | 163d | 0d |  |
| 37 | 2.3.5 | Grade & Pour Site Walks Bollards & Gate Tracks | 7d | 2026-02-23 | 2026-03-03 | 35, 36 | 163d | 0d |  |
| 38 | 2.3.6 | Agg Base import & "Early" AC Paving option | 3d | 2026-03-04 | 2026-03-06 | 37 | 163d |  |  |
| 39 | 2.4 | **Building Shell Construction** | 198d | 2025-12-17 | 2026-09-29 |  | 0d |  |  |
| 40 | 2.4.1 | Underslab Plumbing & Electrical | 8d | 2025-12-17 | 2025-12-30 | 23 | 0d |  |  |
| 41 | 2.4.2 | Elevator Pits Excavate, Waterproofing, Form & Pour | 10d | 2025-12-17 | 2026-01-05 | 40SS | 15d | 0d |  |
| 42 | 2.4.3 | Drill & Set Jack Casings | 5d | 2026-01-06 | 2026-01-12 | 41 | 15d |  |  |
| 43 | 2.4.4 | Bldg. Wall Ftgs. | 13d | 2025-12-22 | 2026-01-13 | 40FS-5d | 0d |  |  |
| 44 | 2.4.5 | CMU Stem Wall 8" AFF | 10d | 2026-01-12 | 2026-01-23 | 43FS-2d | 0d |  |  |
| 45 | 2.4.6 | Fine Grade Slab Base materials | 5d | 2026-01-21 | 2026-01-27 | 44FS-3d | 0d |  | start no earlier than 2023-04-16 |
| 46 | 2.4.7 | Reinforce Slab on grade | 3d | 2026-01-28 | 2026-01-30 | 45 | 0d |  |  |
| 47 | 2.4.8 | Inspection | 1d | 2026-02-02 | 2026-02-02 | 46 | 0d |  |  |
| 48 | 2.4.9 | Pour Slab on Grade 8" | 1d | 2026-02-03 | 2026-02-03 | 42, 47 | 0d |  |  |
| 49 | 2.4.10 | CMU walls/Ledgers to 18' (exterior scaffold) | 22d | 2026-01-26 | 2026-02-25 | 44 | 81d | 0d |  |
| 50 | 2.4.11 | CMU walls/Ledgers to 18' (interior scaffold) | 15d | 2026-02-04 | 2026-02-25 | 48 | 0d |  |  |
| 51 | 2.4.12 | Shearwalls/Beams for 1st floor (Janus + 3 Wks / GBC / Able) | 25d | 2026-02-11 | 2026-03-18 | 48FS+5d, 50FF+15d | 0d |  |  |
| 52 | 2.4.13 | Deck (Able) | 3d | 2026-03-19 | 2026-03-23 | 51 | 0d |  |  |
| 53 | 2.4.14 | Reinforce 2nd floor Deck | 3d | 2026-03-24 | 2026-03-26 | 52 | 0d |  |  |
| 54 | 2.4.15 | Inspection | 1d | 2026-03-27 | 2026-03-27 | 53 | 0d |  |  |
| 55 | 2.4.16 | Pour 2nd floor Deck | 1d | 2026-03-30 | 2026-03-30 | 54 | 0d |  |  |
| 56 | 2.4.17 | Deck cure | 4d | 2026-03-31 | 2026-04-03 | 55 | 0d |  |  |
| 57 | 2.4.18 | CMU Walls/Ledgers to 29' (3rd floor - interior scaffold) | 15d | 2026-04-06 | 2026-04-24 | 56 | 0d |  |  |
| 58 | 2.4.19 | CMU Walls/Ledgers to 29' (3rd floor - exterior scaffold) | 47d | 2026-02-26 | 2026-05-01 | 49 | 81d | 0d |  |
| 59 | 2.4.20 | Shearwalls/Beams for 2nd Floor (Janus + 3 Wks / GBC / Able) | 29d | 2026-04-07 | 2026-05-15 | 55FS+5d, 57FF+15d | 0d |  |  |
| 60 | 2.4.21 | Deck for 3rd floor (Able) | 3d | 2026-05-18 | 2026-05-20 | 59 | 0d |  |  |
| 61 | 2.4.22 | Reinforce for 3rd floor Deck | 3d | 2026-05-21 | 2026-05-26 | 60 | 0d |  |  |
| 62 | 2.4.23 | Inspection | 1d | 2026-05-27 | 2026-05-27 | 61 | 0d |  |  |
| 63 | 2.4.24 | Pour 3rd floor Deck | 1d | 2026-05-28 | 2026-05-28 | 62 | 0d |  |  |
| 64 | 2.4.25 | Deck Cure | 4d | 2026-05-29 | 2026-06-03 | 63 | 0d |  |  |
| 65 | 2.4.26 | CMU Walls/Roof Ledgers to Top Out (interior scaffold) | 15d | 2026-06-04 | 2026-06-24 | 64 | 0d |  |  |
| 66 | 2.4.27 | CMU Walls/Roof Ledgers to Top Out (exterior scaffold) | 42d | 2026-05-04 | 2026-07-01 | 58 | 81d |  |  |
| 67 | 2.4.28 | Shearwalls/Beams for 3rd floor (Janus + 3 Wks / GBC / Able) | 29d | 2026-06-05 | 2026-07-16 | 63FS+5d, 65FF+15d | 0d |  |  |
| 68 | 2.4.29 | Roof Deck (Able) | 3d | 2026-07-17 | 2026-07-21 | 67 | 35d | 0d |  |
| 69 | 2.4.30 | Roof Structural @ platforms & Screens | 5d | 2026-07-22 | 2026-07-28 | 68 | 35d | 12d |  |
| 70 | 2.4.31 | Install roof accessories/Curbs, drains etc. | 5d | 2026-07-17 | 2026-07-23 | 67 | 0d |  |  |
| 71 | 2.4.32 | Roof Insulation Cover Board & Membrane | 15d | 2026-07-24 | 2026-08-13 | 70 | 0d |  |  |
| 72 | 2.4.33 | Set Rooftop Equipment | 3d | 2026-08-14 | 2026-08-18 | 69, 71 | 23d | 22d |  |
| 73 | 2.4.34 | Elevator Construction Car #1 | 15d | 2026-07-22 | 2026-08-11 | 67, 71FS-17d | 0d |  |  |
| 74 | 2.4.35 | Elevator Construction Car #2 | 15d | 2026-08-12 | 2026-09-01 | 73 | 0d |  |  |
| 75 | 2.4.36 | State Elevator inspection scheduling and approval | 20d | 2026-09-02 | 2026-09-29 | 74, 99 | 0d |  |  |

| ID | WBS | Task | Duration | Start | Finish | Predecessors | Total slack | Free slack |
| --- | --- | --- | --- | --- | --- | --- | --- | --- |
| 76 | 2.5 | **Building Interior** | 121d | 2026-03-24 | 2026-09-10 |  | 31d |  |
| 77 | 2.5.1 | Layout & Install Hangars from 2nd fl deck | 3d | 2026-03-24 | 2026-03-26 | 53SS | 38d | 0d |
| 78 | 2.5.2 | Overhead M,P,E & Fire 1st fl | 15d | 2026-03-27 | 2026-04-16 | 77 | 38d | 0d |
| 79 | 2.5.3 | Hallway System & Doors 1st floor | 15d | 2026-04-10 | 2026-04-30 | 78FS-5d | 38d | 0d |
| 80 | 2.5.4 | Finish Mech. & Electrical 1st Fl | 3d | 2026-05-01 | 2026-05-05 | 79 | 40d | 19d |
| 81 | 2.5.5 | Layout & Install Overhead Hangars from 3rd fl deck | 3d | 2026-05-27 | 2026-05-29 | 61, 79 | 21d | 0d |
| 82 | 2.5.6 | Overhead M,P,E & Fire 2nd Fl | 15d | 2026-06-01 | 2026-06-19 | 80FS-2d, 81 | 21d | 0d |
| 83 | 2.5.7 | Hallway System & Doors 2nd Floor | 15d | 2026-06-15 | 2026-07-06 | 82FS-5d | 21d | 0d |
| 84 | 2.5.8 | Finish Mech. & Electrical 2nd Fl | 3d | 2026-07-07 | 2026-07-09 | 83 | 21d | 0d |
| 85 | 2.5.9 | Install HM Doors & Hardware | 9d | 2026-07-10 | 2026-07-22 | 84 | 42d | 11d |
| 86 | 2.5.10 | Layout & Install Overhead Hangars from Roof deck | 5d | 2026-07-17 | 2026-07-23 | 67 | 11d | 0d |
| 87 | 2.5.11 | Overhead M,P,E & Fire 3rd Fl | 15d | 2026-07-24 | 2026-08-13 | 84, 86 | 11d | 0d |
| 88 | 2.5.12 | Hallway System & Doors 3rd Floor | 15d | 2026-08-07 | 2026-08-27 | 85, 87FS-5d | 31d | 0d |
| 89 | 2.5.13 | Electrical Room 100% Complete | 15d | 2026-08-14 | 2026-09-03 | 87, 95 | 11d | 10d |
| 90 | 2.5.14 | Finish Painting in Storage areas | 5d | 2026-08-14 | 2026-08-20 | 71 | 37d | 17d |
| 91 | 2.5.15 | Final Clean up & Seal floors | 10d | 2026-08-28 | 2026-09-10 | 88 | 31d |  |
| 92 | 2.6 | **Switchgear, City Power & Building Energize** | 197d | 2025-10-13 | 2026-07-27 |  | 26d |  |
| 93 | 2.6.1 | Switchgear Order & Lead Time | 150d | 2025-10-13 | 2026-05-19 | 5, 6 | 26d | 0d |
| 94 | 2.6.2 | Install Dry Utility Ducts & Structures | 5d | 2026-05-20 | 2026-05-27 | 93 | 30d | 4d |
| 95 | 2.6.3 | Switchgear Delivery & Install | 4d | 2026-05-20 | 2026-05-26 | 93 | 26d | 0d |
| 96 | 2.6.4 | Single line Electrical & Grounding | 5d | 2026-05-27 | 2026-06-02 | 93, 95 | 26d | 0d |
| 97 | 2.6.5 | SDG&E Utility Release for Equipment & Cabling | 3d | 2026-06-03 | 2026-06-05 | 94, 96 | 26d | 0d |
| 98 | 2.6.6 | SDG&E Utility Scheduling & Lead time | 30d | 2026-06-08 | 2026-07-20 | 97 | 26d | 0d |
| 99 | 2.6.7 | Set Transformer, Cabling, & Energize | 5d | 2026-07-21 | 2026-07-27 | 98 | 26d |  |

| ID | WBS | Task | Duration | Start | Finish | Predecessors | Total slack | Free slack | Constraint |
| --- | --- | --- | --- | --- | --- | --- | --- | --- | --- |
| 100 | 2.7 | **Site Improvements - Structures & Utilities** | 38d | 2026-06-25 | 2026-08-18 |  | 20d |  |  |
| 101 | 2.7.1 | Install Private Storm Drain & Chamber System | 15d | 2026-06-25 | 2026-07-16 | 65 | 20d | 0d |  |
| 102 | 2.7.2 | Install Offsite Fire Tie In & Lateral | 5d | 2026-06-25 | 2026-07-01 | 101SS | 21d | 0d |  |
| 103 | 2.7.3 | Install Site Sewer line to Bldg. | 5d | 2026-07-02 | 2026-07-09 | 102 | 21d | 0d |  |
| 104 | 2.7.4 | Install Private Domestic Water | 4d | 2026-07-10 | 2026-07-15 | 103 | 21d | 1d |  |
| 105 | 2.7.5 | Install Drainage Structures & Backfill | 5d | 2026-07-17 | 2026-07-23 | 101, 104 | 20d | 0d |  |
| 106 | 2.7.6 | Survey & Grade for Curb Cuts | 2d | 2026-07-24 | 2026-07-27 | 105 | 20d | 0d |  |
| 107 | 2.7.7 | UG Electric Site Lts, Gate Motors etc. | 3d | 2026-07-28 | 2026-07-30 | 106 | 61d |  |  |
| 108 | 2.7.8 | Irrigation Sleeves | 3d | 2026-07-28 | 2026-07-30 | 106 | 20d | 0d |  |
| 109 | 2.7.9 | Form & Pour Curb & Gutter onsite | 3d | 2026-07-31 | 2026-08-04 | 108 | 20d | 0d |  |
| 110 | 2.7.10 | Grade & Pour Site Walks Bollards & Gate Tracks | 7d | 2026-08-05 | 2026-08-13 | 108, 109 | 20d | 0d |  |
| 111 | 2.7.11 | Agg Base import & AC Paving | 3d | 2026-08-14 | 2026-08-18 | 110 | 20d | 0d |  |
| 112 | 2.8 | **Offsite improvements** | 24d | 2026-08-19 | 2026-09-21 |  | 20d |  |  |
| 113 | 2.8.1 | Demo & Grading | 4d | 2026-08-19 | 2026-08-24 | 111 | 20d | 0d |  |
| 114 | 2.8.2 | Offsite Concrete & Driveways | 4d | 2026-08-25 | 2026-08-28 | 113 | 20d | 0d |  |
| 115 | 2.8.3 | Offsite AC Patching & Paving | 4d | 2026-08-31 | 2026-09-03 | 114 | 20d | 0d |  |
| 116 | 2.8.4 | Offsite Striping | 3d | 2026-09-04 | 2026-09-08 | 115 | 20d | 0d |  |
| 117 | 2.8.5 | Final Public Works Inspections | 2d | 2026-09-09 | 2026-09-10 | 116 | 20d | 0d |  |
| 118 | 2.8.6 | Final Planning & Zoning Inspection | 2d | 2026-09-11 | 2026-09-14 | 117 | 20d | 0d |  |
| 119 | 2.8.7 | Owner Civil Punch list walkthrough & Completion | 5d | 2026-09-15 | 2026-09-21 | 90, 118 | 20d |  |  |
| 120 | 2.9 | **Building Exterior, Tower & Office Finishes** | 67d | 2026-06-25 | 2026-09-28 |  | 1d |  |  |
| 121 | 2.9.1 | Install Scaffolding at Office Tower | 1d | 2026-06-25 | 2026-06-25 | 65 | 1d | 0d |  |
| 122 | 2.9.2 | Exterior Metal Frame/Sheathing & Waterproofing | 5d | 2026-06-26 | 2026-07-02 | 121 | 1d | 0d |  |
| 123 | 2.9.3 | Install Storefront System @ Displays | 5d | 2026-07-06 | 2026-07-10 | 122 | 1d | 0d |  |
| 124 | 2.9.4 | EIFS | 5d | 2026-07-13 | 2026-07-17 | 123 | 1d | 0d |  |
| 125 | 2.9.5 | Exterior Painting & Coatings @ CMU Walls | 10d | 2026-07-06 | 2026-07-17 | 122 | 1d | 0d |  |
| 126 | 2.9.6 | Install Metal Panel Systems @ Tower Framing | 5d | 2026-07-20 | 2026-07-24 | 124, 125 | 1d | 0d |  |
| 127 | 2.9.7 | Install Steel Canopies | 5d | 2026-07-27 | 2026-07-31 | 126 | 1d | 0d |  |
| 128 | 2.9.8 | Exterior Breakmetal, flashings, Sealants, & Painting | 5d | 2026-08-03 | 2026-08-07 | 124, 126, 127 | 1d | 0d |  |
| 129 | 2.9.9 | Remove Scaffolding | 1d | 2026-08-10 | 2026-08-10 | 128 | 1d | 0d |  |
| 130 | 2.9.10 | Office Framing | 6d | 2026-08-03 | 2026-08-10 | 127 | 1d | 0d |  |
| 131 | 2.9.11 | Office M/E/P Rough in | 6d | 2026-08-11 | 2026-08-18 | 129, 130 | 1d | 0d |  |
| 132 | 2.9.12 | Office Drywall | 10d | 2026-08-19 | 2026-09-01 | 128, 131 | 1d | 0d |  |
| 133 | 2.9.13 | Suspended Ceilings & Rough in | 6d | 2026-09-02 | 2026-09-09 | 132 | 1d | 0d |  |
| 134 | 2.9.14 | Office Fixtures & Finishes | 6d | 2026-09-10 | 2026-09-17 | 132, 133 | 1d | 0d |  |
| 135 | 2.9.15 | Final Electrical Inspection | 3d | 2026-09-18 | 2026-09-22 | 72, 89, 96, 99, 134 | 1d | 0d | start no earlier than 2023-06-19 |
| 136 | 2.9.16 | Final Mechanical Inspections | 3d | 2026-09-23 | 2026-09-25 | 135 | 1d | 0d |  |
| 137 | 2.9.17 | Office Completion Date, (Possible TCO 1st floor) | 1d | 2026-09-28 | 2026-09-28 | 125, 136 | 1d |  |  |

| ID | WBS | Task | Type | Duration | Start | Finish | Predecessors | Total slack |
| --- | --- | --- | --- | --- | --- | --- | --- | --- |
| 138 | 2.10 | **Accumulative Building Inspections & C of O** |  | 18d | 2026-09-30 | 2026-10-23 |  | 0d |
| 139 | 2.10.1 | Rain/Weather Delays |  | 10d | 2026-09-30 | 2026-10-13 | 75, 137 | 0d |
| 140 | 2.10.2 | Life Safety & Final Inspections |  | 4d | 2026-10-14 | 2026-10-19 | 75, 137, 139 | 0d |
| 141 | 2.10.3 | Building Final Inspection |  | 2d | 2026-10-20 | 2026-10-21 | 116, 118, 119, 140 | 0d |
| 142 | 2.10.4 | Substantial Completion Date | milestone | 0d | 2026-10-21 | 2026-10-21 | 141 | 0d |
| 143 | 2.10.5 | Certificate Of Occupancy |  | 2d | 2026-10-22 | 2026-10-23 | 142 | 0d |
| 144 | 2.10.6 | Open Date | milestone | 0d | 2026-10-23 | 2026-10-23 | 91, 143 | 0d |
| 145 | 2.10.7 | Final Completion Date | milestone | 0d | 2026-10-23 | 2026-10-23 | 144 | 0d |
