# 32504 IMI Engineering-Master Schedule 2-13-25 - GW

Schedule from MS Project XML, 2025-05-27 to 2026-11-03.

## Calendars

- Standard: Mon-Fri 08:00-12:00, 13:00-17:00; Sat-Sun off. Exceptions (off unless hours are given): 2025-07-04 to 2025-07-07 (Independence Day), 2025-09-01 (Labor Day), 2025-11-27 to 2025-11-28 (Thannksgiving), 2025-12-25 to 2025-12-26 (Christmas), 2026-01-01 to 2026-01-02 (New Years), 2026-02-16 (Presidents Day), 2026-05-25 (Memorial Day), 2026-07-03 (Independence Day).

## Schedule

| ID | WBS | Task | Type | Duration | Start | Finish | Predecessors | Total slack | Free slack | Constraint |
| --- | --- | --- | --- | --- | --- | --- | --- | --- | --- | --- |
| 1 | 1 | **Public Storage - 1061 Cudahy Place San Diego CA** |  | 364d | 2025-05-27 | 2026-11-03 |  | 0d |  |  |
| 2 | 1.1 | Notice to Proceed | milestone | 0d | 2025-05-27 | 2025-05-27 |  | 1d | 0d | start no earlier than 2025-05-27 |
| 3 | 1.2 | Demolition Permit Received DELAY |  | 103d | 2025-05-27 | 2025-10-21 | 2 | 1d | 0d |  |
| 4 | 1.3 | Demolition Permit Received DELAY |  | 10d | 2025-10-22 | 2025-11-04 | 3 | 251d |  |  |
| 5 | 1.4 | Building Permit Received |  | 1d | 2025-10-30 | 2025-10-30 |  | 252d | 0d | start no earlier than 2025-10-30 |
| 6 | 1.5 | Traffic Control Permit Received | manual | 1d | 2025-12-01 | 2025-12-01 |  |  |  |  |
| 7 | 1.6 | SDGE Removal of Transformer | manual | 1d | 2025-10-06 | 2025-10-06 |  |  |  | start no earlier than 2025-10-06 |
| 8 | 1.7 | Mobilization |  | 2d | 2025-10-31 | 2025-11-03 | 5 | 252d |  |  |
| 9 | 1.8 | Switchgear Submittal Approval (30 week Lead Time) | manual | 1d | 2025-09-11 | 2025-09-11 |  |  |  |  |
| 10 | 1.9 | CO #4 - ADS Detension System | manual | 40d | 2025-07-16 | 2025-09-10 |  |  |  | start no earlier than 2025-07-16 |
| 11 | 1.10 | Chamber System Submittal Approval |  | 7d | 2025-11-05 | 2025-11-13 | 3FS+10d | 176d | 0d |  |
| 12 | 1.11 | ADS Detention System Lead Time |  | 30d | 2025-11-14 | 2025-12-31 | 11 | 176d | 0d |  |
| 13 | 1.12 | **Public Storage Overall 88,386 Sq Ft** |  | 289d | 2025-09-12 | 2026-11-03 |  | 0d |  |  |
| 14 | 1.12.1 | **Surface Demo & Grading** |  | 44d | 2025-10-17 | 2025-12-19 |  | 1d |  |  |
| 15 | 1.12.1.1 | Erosion Control & Remove Owners Fencing |  | 3d | 2025-10-17 | 2025-10-21 | 3FF | 1d | 0d |  |
| 16 | 1.12.1.2 | Mock Pre-Con Meeting with City |  | 1d | 2025-10-22 | 2025-10-22 | 15, 3 | 1d | 0d |  |
| 17 | 1.12.1.3 | Submitted Application for Traffic Control Permit DELAY |  | 20d | 2025-10-23 | 2025-11-19 | 16 | 1d | 0d |  |
| 18 | 1.12.1.4 | Received Traffic Control Plans City Stamped |  | 1d | 2025-12-01 | 2025-12-01 | 6FF | 234d |  |  |
| 19 | 1.12.1.5 | City List of Items to resolve before Pre-Con Meeting can happen DELAY |  | 1d | 2025-11-05 | 2025-11-05 | 16, 17FF-10d | 1d | 0d |  |
| 20 | 1.12.1.6 | Moratorium Letter Sent To David - NOT APPROVED | manual | 27d | 2025-10-22 | 2025-12-01 | 19 |  |  |  |
| 21 | 1.12.1.7 | Pre Con Meeting For Off-Site - ESTIMATED |  | 10d | 2025-12-02 | 2025-12-15 | 20 | 207d | 7d |  |
| 22 | 1.12.1.8 | Demo Existing Bldg/Slabs,Tank slabs, Retaining walls Etc. |  | 10d | 2025-10-22 | 2025-11-04 | 3, 9 | 251d | 0d |  |
| 23 | 1.12.1.9 | Site Survey, Boundry & Building Pad |  | 1d | 2025-11-04 | 2025-11-04 | 22FS-1d | 251d | 0d |  |
| 24 | 1.12.1.10 | Pre Grading Meeting |  | 1d | 2025-11-04 | 2025-11-04 | 23SS | 251d |  |  |
| 25 | 1.12.1.11 | Underground Fire Permit Approved & Paid | manual | 2d | 2025-11-04 | 2025-11-05 |  |  |  |  |
| 26 | 1.12.1.12 | Install Shoring Wall NE corner of Site | manual | 11d | 2025-12-05 | 2025-12-19 | 19FS+9d |  |  |  |
| 27 | 1.12.1.13 | Over-Ex & Recompact Bldg Pad & Site areas |  | 9d | 2025-11-06 | 2025-11-18 | 19 | 1d | 0d |  |
| 28 | 1.12.1.14 | Rain Delay |  | 6d | 2025-11-19 | 2025-11-26 | 27 | 1d | 0d |  |
| 29 | 1.12.1.15 | Completion of Mass/Finish Grading |  | 2d | 2025-12-01 | 2025-12-02 | 28 | 1d | 0d |  |
| 30 | 1.12.1.16 | Certify Pad / Pad Delivery Date |  | 3d | 2025-12-03 | 2025-12-05 | 29 | 1d | 0d |  |
| 31 | 1.12.1.17 | Building Permit Due | milestone | 0d | 2025-12-05 | 2025-12-05 | 30FF | 230d |  |  |

| ID | WBS | Task | Duration | Start | Finish | Predecessors | Total slack | Free slack | Constraint |
| --- | --- | --- | --- | --- | --- | --- | --- | --- | --- |
| 32 | 1.12.2 | **Site Improvements - Structures & Utilities** | 20d | 2026-01-05 | 2026-01-30 |  | 176d |  |  |
| 33 | 1.12.2.1 | Install Private Storm Drain & Chamber System | 15d | 2026-01-05 | 2026-01-23 | 11, 26, 27, 12 | 176d | 0d |  |
| 34 | 1.12.2.2 | Install Offsite Fire Tie In & Lateral | 5d | 2026-01-05 | 2026-01-09 | 33SS, 21FS+3d | 200d | 0d |  |
| 35 | 1.12.2.3 | Install Site Sewer line to Bldg. | 5d | 2026-01-05 | 2026-01-09 | 34SS | 200d | 0d |  |
| 36 | 1.12.2.4 | Install Private Domestic Water | 4d | 2026-01-12 | 2026-01-15 | 35 | 200d | 0d |  |
| 37 | 1.12.2.5 | Install Dry Utility Ducts & Structures | 5d | 2026-01-16 | 2026-01-22 | 36 | 200d |  |  |
| 38 | 1.12.2.6 | Install Drainage Structures & Backfill | 5d | 2026-01-26 | 2026-01-30 | 33 | 176d | 0d |  |
| 39 | 1.12.3 | **Early AC Paving Option** | 18d | 2026-02-02 | 2026-02-26 |  | 176d |  |  |
| 40 | 1.12.3.1 | Survey & Grade for Curb Cuts | 2d | 2026-02-02 | 2026-02-03 | 38 | 176d | 0d |  |
| 41 | 1.12.3.2 | UG Electric Site Lts, Gate Motors etc. | 3d | 2026-02-04 | 2026-02-06 | 40 | 176d | 0d |  |
| 42 | 1.12.3.3 | Irrigation Sleeves | 3d | 2026-02-04 | 2026-02-06 | 40 | 176d | 0d |  |
| 43 | 1.12.3.4 | Form & Pour Curb & Gutter onsite | 3d | 2026-02-09 | 2026-02-11 | 41, 42 | 176d | 0d |  |
| 44 | 1.12.3.5 | Grade & Pour Site Walks Bollards & Gate Tracks | 7d | 2026-02-12 | 2026-02-23 | 42, 43 | 176d | 0d |  |
| 45 | 1.12.3.6 | Agg Base import & "Early" AC Paving option | 3d | 2026-02-24 | 2026-02-26 | 44 | 176d |  |  |
| 46 | 1.12.4 | **Building Shell Construction** | 217d | 2025-12-08 | 2026-10-15 |  | 1d |  |  |
| 47 | 1.12.4.1 | Underslab Plumbing & Electrical | 10d | 2025-12-08 | 2025-12-19 | 30 | 1d | 0d |  |
| 48 | 1.12.4.2 | Elevator Pits Excavate, Waterproofing, Form & Pour | 10d | 2025-12-08 | 2025-12-19 | 47SS | 1d | 0d |  |
| 49 | 1.12.4.3 | Drill & Set Jack Casings | 5d | 2025-12-08 | 2025-12-12 | 30, 48SS | 15d | 14d |  |
| 50 | 1.12.4.4 | Bldg. Wall Ftgs. | 8d | 2025-12-10 | 2025-12-19 | 48FF | 1d | 0d |  |
| 51 | 1.12.4.5 | CMU Stem Wall 8" AFF | 9d | 2025-12-17 | 2025-12-31 | 50FS-3d | 1d | 0d |  |
| 52 | 1.12.4.6 | Fine Grade Slab Base materials | 1d | 2026-01-05 | 2026-01-05 | 51 | 1d | 0d | start no earlier than 2023-04-16 |
| 53 | 1.12.4.7 | Reinforce Slab on grade | 2d | 2026-01-06 | 2026-01-07 | 52 | 1d | 0d |  |
| 54 | 1.12.4.8 | Inspection | 1d | 2026-01-07 | 2026-01-07 | 53FF | 1d | 0d |  |
| 55 | 1.12.4.9 | Pour Slab on Grade 8" | 1d | 2026-01-08 | 2026-01-08 | 49, 54 | 1d | 0d |  |
| 56 | 1.12.4.10 | CMU walls/Ledgers to 18' (exterior scaffold) | 15d | 2026-01-09 | 2026-01-29 | 55 | 195d |  |  |
| 57 | 1.12.4.11 | CMU walls/Ledgers to 18' (interior scaffold) | 15d | 2026-01-09 | 2026-01-29 | 55 | 1d | 0d |  |
| 58 | 1.12.4.12 | Shearwalls/Beams for 1st floor (Janus + 3 Wks / GBC / Able) | 20d | 2026-01-30 | 2026-02-27 | 57 | 1d | 0d |  |
| 59 | 1.12.4.13 | Deck (Able) | 3d | 2026-03-02 | 2026-03-04 | 58 | 1d | 0d |  |
| 60 | 1.12.4.14 | Reinforce for 2rd floor Deck | 2d | 2026-03-05 | 2026-03-06 | 59 | 1d | 0d |  |
| 61 | 1.12.4.15 | Inspection | 1d | 2026-03-06 | 2026-03-06 | 60FF | 1d | 0d |  |
| 62 | 1.12.4.16 | Pour 2nd floor Deck | 1d | 2026-03-09 | 2026-03-09 | 61 | 1d | 0d |  |
| 63 | 1.12.4.17 | Deck cure | 3d | 2026-03-10 | 2026-03-12 | 62 | 1d | 0d |  |
| 64 | 1.12.4.18 | CMU Walls/Ledgers to 29' (3rd floor - interior scaffold) | 15d | 2026-03-13 | 2026-04-02 | 63 | 151d |  |  |
| 65 | 1.12.4.19 | CMU Walls/Ledgers to 29' (3rd floor - exterior scaffold) | 15d | 2026-03-13 | 2026-04-02 | 63 | 1d | 0d |  |
| 66 | 1.12.4.20 | Shearwalls/Beams for 2nd Floor (Janus + 3 Wks / GBC / Able) | 20d | 2026-04-03 | 2026-04-30 | 65 | 1d | 0d |  |
| 67 | 1.12.4.21 | Deck for 3rd floor (Able) | 3d | 2026-05-01 | 2026-05-05 | 66 | 1d | 0d |  |
| 68 | 1.12.4.22 | Reinforce for 3rd floor Deck | 2d | 2026-05-06 | 2026-05-07 | 67 | 1d | 0d |  |
| 69 | 1.12.4.23 | Inspection | 1d | 2026-05-07 | 2026-05-07 | 68FF | 1d | 0d |  |
| 70 | 1.12.4.24 | Pour 3rd floor Deck | 1d | 2026-05-08 | 2026-05-08 | 69 | 1d | 0d |  |
| 71 | 1.12.4.25 | Deck Cure | 5d | 2026-05-11 | 2026-05-15 | 70 | 1d | 0d |  |
| 72 | 1.12.4.26 | CMU Walls/Roof Ledgers to Top Out (interior scaffold) | 15d | 2026-05-18 | 2026-06-08 | 71 | 26d | 0d |  |
| 73 | 1.12.4.27 | CMU Walls/Roof Ledgers to Top Out (exterior scaffold) | 15d | 2026-05-18 | 2026-06-08 | 71 | 1d | 0d |  |
| 74 | 1.12.4.28 | Shearwalls/Beams for 3rd floor (Janus + 3 Wks / GBC / Able) | 18d | 2026-06-09 | 2026-07-02 | 73 | 1d | 0d |  |
| 75 | 1.12.4.29 | Roof Deck (Able) | 3d | 2026-07-06 | 2026-07-08 | 74 | 1d | 0d |  |
| 76 | 1.12.4.30 | Roof Structural @ platforms & Screens | 5d | 2026-07-09 | 2026-07-15 | 75 | 57d | 17d |  |
| 77 | 1.12.4.31 | Install roof accessories/Curbs, drains etc. | 7d | 2026-07-09 | 2026-07-17 | 75 | 1d | 0d |  |
| 78 | 1.12.4.32 | Roof Insulation Cover Board & Membrane | 15d | 2026-07-20 | 2026-08-07 | 77 | 1d | 0d |  |
| 79 | 1.12.4.33 | Set Rooftop Equipment | 3d | 2026-08-10 | 2026-08-12 | 76, 78 | 40d | 14d |  |
| 80 | 1.12.4.34 | Elevator Construction Car #1 | 20d | 2026-08-10 | 2026-09-04 | 78 | 1d | 0d |  |
| 81 | 1.12.4.35 | Elevator Construction Car #2 | 20d | 2026-08-31 | 2026-09-25 | 80FS-5d | 1d | 0d |  |
| 82 | 1.12.4.36 | State Elevator inspection scheduling and approval | 14d | 2026-09-28 | 2026-10-15 | 81, 106 | 1d |  |  |

| ID | WBS | Task | Duration | Start | Finish | Predecessors | Total slack | Free slack |
| --- | --- | --- | --- | --- | --- | --- | --- | --- |
| 83 | 1.12.5 | **Building Interior** | 125d | 2026-03-05 | 2026-08-28 |  | 47d |  |
| 84 | 1.12.5.1 | Layout & Install Hangars from 2nd fl deck | 3d | 2026-03-05 | 2026-03-09 | 60SS | 64d | 0d |
| 85 | 1.12.5.2 | Overhead M,P,E & Fire 1st fl | 15d | 2026-03-10 | 2026-03-30 | 84 | 64d | 0d |
| 86 | 1.12.5.3 | Hallway System & Doors 1st floor | 15d | 2026-03-24 | 2026-04-13 | 85FS-5d | 64d | 0d |
| 87 | 1.12.5.4 | Finish Mech. & Electrical 1st Fl | 3d | 2026-04-14 | 2026-04-16 | 86 | 66d | 20d |
| 88 | 1.12.5.5 | Layout & Install Overhead Hangars from 3rd fl deck | 3d | 2026-05-08 | 2026-05-12 | 68, 86 | 46d | 0d |
| 89 | 1.12.5.6 | Overhead M,P,E & Fire 2nd Fl | 15d | 2026-05-13 | 2026-06-03 | 87FS-2d, 88 | 46d | 0d |
| 90 | 1.12.5.7 | Hallway System & Doors 2nd Floor | 15d | 2026-05-28 | 2026-06-17 | 89FS-5d | 46d | 0d |
| 91 | 1.12.5.8 | Finish Mech. & Electrical 2nd Fl | 3d | 2026-06-18 | 2026-06-22 | 90 | 46d | 0d |
| 92 | 1.12.5.9 | Install HM Doors & Hardware | 9d | 2026-06-23 | 2026-07-06 | 91 | 61d | 14d |
| 93 | 1.12.5.10 | Layout & Install Overhead Hangars from Roof deck | 5d | 2026-07-06 | 2026-07-10 | 74 | 33d | 0d |
| 94 | 1.12.5.11 | Overhead M,P,E & Fire 3rd Fl | 15d | 2026-07-13 | 2026-07-31 | 91, 93 | 33d | 0d |
| 95 | 1.12.5.12 | Hallway System & Doors 3rd Floor | 15d | 2026-07-27 | 2026-08-14 | 92, 94FS-5d | 47d | 0d |
| 96 | 1.12.5.13 | Electrical Room 100% Complete | 15d | 2026-08-03 | 2026-08-21 | 94, 102 | 33d | 7d |
| 97 | 1.12.5.14 | Finish Painting in Storage areas | 5d | 2026-08-10 | 2026-08-14 | 78 | 48d | 9d |
| 98 | 1.12.5.15 | Final Clean up & Seal floors | 10d | 2026-08-17 | 2026-08-28 | 95 | 47d |  |
| 99 | 1.12.6 | **Switchgear, City Power & Building Energize** | 211d | 2025-09-12 | 2026-07-16 |  | 52d |  |
| 100 | 1.12.6.1 | Switchgear Order & Lead Time | 150d | 2025-09-12 | 2026-04-20 | 9 | 66d | 0d |
| 101 | 1.12.6.2 | Install Dry Utility Ducts & Structures | 5d | 2026-04-21 | 2026-04-27 | 100 | 70d | 18d |
| 102 | 1.12.6.3 | Switchgear Delivery & Install | 4d | 2026-05-11 | 2026-05-14 | 100, 70 | 52d | 0d |
| 103 | 1.12.6.4 | Single line Electrical & Grounding | 5d | 2026-05-15 | 2026-05-21 | 100, 102 | 52d | 0d |
| 104 | 1.12.6.5 | SDG&E Utility Release for Equipment & Cabling | 3d | 2026-05-22 | 2026-05-27 | 101, 103 | 52d | 0d |
| 105 | 1.12.6.6 | SDG&E Utility Scheduling & Lead time | 30d | 2026-05-28 | 2026-07-09 | 104 | 52d | 0d |
| 106 | 1.12.6.7 | Set Transformer, Cabling, & Energize | 5d | 2026-07-10 | 2026-07-16 | 105 | 52d | 33d |

| ID | WBS | Task | Duration | Start | Finish | Predecessors | Total slack | Free slack | Constraint |
| --- | --- | --- | --- | --- | --- | --- | --- | --- | --- |
| 107 | 1.12.7 | **Site Improvements - Structures & Utilities** | 38d | 2026-06-09 | 2026-07-31 |  | 39d |  |  |
| 108 | 1.12.7.1 | Install Private Storm Drain & Chamber System | 15d | 2026-06-09 | 2026-06-29 | 72 | 39d | 0d |  |
| 109 | 1.12.7.2 | Install Offsite Fire Tie In & Lateral | 5d | 2026-06-09 | 2026-06-15 | 108SS | 40d | 0d |  |
| 110 | 1.12.7.3 | Install Site Sewer line to Bldg. | 5d | 2026-06-16 | 2026-06-22 | 109 | 40d | 0d |  |
| 111 | 1.12.7.4 | Install Private Domestic Water | 4d | 2026-06-23 | 2026-06-26 | 110 | 40d | 1d |  |
| 112 | 1.12.7.5 | Install Drainage Structures & Backfill | 5d | 2026-06-30 | 2026-07-07 | 108, 111 | 39d | 0d |  |
| 113 | 1.12.7.6 | Survey & Grade for Curb Cuts | 2d | 2026-07-08 | 2026-07-09 | 112 | 39d | 0d |  |
| 114 | 1.12.7.7 | UG Electric Site Lts, Gate Motors etc. | 3d | 2026-07-10 | 2026-07-14 | 113 | 80d |  |  |
| 115 | 1.12.7.8 | Irrigation Sleeves | 3d | 2026-07-10 | 2026-07-14 | 113 | 39d | 0d |  |
| 116 | 1.12.7.9 | Form & Pour Curb & Gutter onsite | 3d | 2026-07-15 | 2026-07-17 | 115 | 39d | 0d |  |
| 117 | 1.12.7.10 | Grade & Pour Site Walks Bollards & Gate Tracks | 7d | 2026-07-20 | 2026-07-28 | 115, 116 | 39d | 0d |  |
| 118 | 1.12.7.11 | Agg Base import & AC Paving | 3d | 2026-07-29 | 2026-07-31 | 117 | 39d | 0d |  |
| 119 | 1.12.8 | **Offsite improvements** | 24d | 2026-08-03 | 2026-09-03 |  | 39d |  |  |
| 120 | 1.12.8.1 | Demo & Grading | 4d | 2026-08-03 | 2026-08-06 | 118 | 39d | 0d |  |
| 121 | 1.12.8.2 | Offsite Concrete & Driveways | 4d | 2026-08-07 | 2026-08-12 | 120 | 39d | 0d |  |
| 122 | 1.12.8.3 | Offsite AC Patching & Paving | 4d | 2026-08-13 | 2026-08-18 | 121 | 39d | 0d |  |
| 123 | 1.12.8.4 | Offsite Striping | 3d | 2026-08-19 | 2026-08-21 | 122 | 39d | 0d |  |
| 124 | 1.12.8.5 | Final Public Works Inspections | 2d | 2026-08-24 | 2026-08-25 | 123 | 39d | 0d |  |
| 125 | 1.12.8.6 | Final Planning & Zoning Inspection | 2d | 2026-08-26 | 2026-08-27 | 124 | 39d | 0d |  |
| 126 | 1.12.8.7 | Owner Civil Punch list walkthrough & Completion | 5d | 2026-08-28 | 2026-09-03 | 97, 125 | 39d |  |  |
| 127 | 1.12.9 | **Building Exterior, Tower & Office Finishes** | 67d | 2026-06-09 | 2026-09-10 |  | 26d |  |  |
| 128 | 1.12.9.1 | Install Scaffolding at Office Tower | 1d | 2026-06-09 | 2026-06-09 | 72 | 26d | 0d |  |
| 129 | 1.12.9.2 | Exterior Metal Frame/Sheathing & Waterproofing | 5d | 2026-06-10 | 2026-06-16 | 128 | 26d | 0d |  |
| 130 | 1.12.9.3 | Install Storefront System @ Displays | 5d | 2026-06-17 | 2026-06-23 | 129 | 26d | 0d |  |
| 131 | 1.12.9.4 | EIFS | 5d | 2026-06-24 | 2026-06-30 | 130 | 26d | 0d |  |
| 132 | 1.12.9.5 | Exterior Painting & Coatings @ CMU Walls | 10d | 2026-06-17 | 2026-06-30 | 129 | 26d | 0d |  |
| 133 | 1.12.9.6 | Install Metal Panel Systems @ Tower Framing | 5d | 2026-07-01 | 2026-07-08 | 131, 132 | 26d | 0d |  |
| 134 | 1.12.9.7 | Install Steel Canopies | 5d | 2026-07-09 | 2026-07-15 | 133 | 26d | 0d |  |
| 135 | 1.12.9.8 | Exterior Breakmetal, flashings, Sealants, & Painting | 5d | 2026-07-16 | 2026-07-22 | 131, 133, 134 | 26d | 0d |  |
| 136 | 1.12.9.9 | Remove Scaffolding | 1d | 2026-07-23 | 2026-07-23 | 135 | 26d | 0d |  |
| 137 | 1.12.9.10 | Office Framing | 6d | 2026-07-16 | 2026-07-23 | 134 | 26d | 0d |  |
| 138 | 1.12.9.11 | Office M/E/P Rough in | 6d | 2026-07-24 | 2026-07-31 | 136, 137 | 26d | 0d |  |
| 139 | 1.12.9.12 | Office Drywall | 10d | 2026-08-03 | 2026-08-14 | 135, 138 | 26d | 0d |  |
| 140 | 1.12.9.13 | Suspended Ceilings & Rough in | 6d | 2026-08-17 | 2026-08-24 | 139 | 26d | 0d |  |
| 141 | 1.12.9.14 | Office Fixtures & Finishes | 6d | 2026-08-25 | 2026-09-01 | 139, 140 | 26d | 0d |  |
| 142 | 1.12.9.15 | Final Electrical Inspection | 3d | 2026-09-02 | 2026-09-04 | 79, 96, 103, 106, 141 | 26d | 0d | start no earlier than 2023-06-19 |
| 143 | 1.12.9.16 | Final Mechanical Inspections | 3d | 2026-09-07 | 2026-09-09 | 142 | 26d | 0d |  |
| 144 | 1.12.9.17 | Office Completion Date, (Possible TCO 1st floor) | 1d | 2026-09-10 | 2026-09-10 | 132, 143 | 26d |  |  |

| ID | WBS | Task | Type | Duration | Start | Finish | Predecessors | Total slack |
| --- | --- | --- | --- | --- | --- | --- | --- | --- |
| 145 | 1.12.10 | **Accumulative Building Inspections & C of O** |  | 12d | 2026-10-19 | 2026-11-03 |  |  |
| 146 | 1.12.10.1 | Rain/Weather Delays |  | 4d | 2026-10-19 | 2026-10-22 | 82, 144 | 0d |
| 147 | 1.12.10.2 | Life Safety & Final Inspections |  | 4d | 2026-10-23 | 2026-10-28 | 82, 144, 146 | 0d |
| 148 | 1.12.10.3 | Building Final Inspection |  | 2d | 2026-10-29 | 2026-10-30 | 123, 125, 126, 147, 124 | 0d |
| 149 | 1.12.10.4 | Substantial Completion Date | milestone | 0d | 2026-10-30 | 2026-10-30 | 148 | 0d |
| 150 | 1.12.10.5 | Certificate Of Occupancy |  | 2d | 2026-11-02 | 2026-11-03 | 149 | 0d |
| 151 | 1.12.10.6 | Open Date | milestone | 0d | 2026-11-03 | 2026-11-03 | 98, 150 | 0d |
| 152 | 1.12.10.7 | Final Completion Date | milestone | 0d | 2026-11-03 | 2026-11-03 | 151 | 0d |
