# Overall Construction Schedule

Schedule from MS Project, 2025-07-09 to 2026-10-30, status date 2026-01-28, A marks actual dates.
Toshiba

## Calendars

- Standard: Mon-Fri 08:00-12:00, 13:00-17:00; Sat-Sun off.

## Schedule

| ID | WBS | Task | Type | Duration | Start | Finish | Predecessors | Complete | Remaining | Total slack | Free slack | Constraint |
| --- | --- | --- | --- | --- | --- | --- | --- | --- | --- | --- | --- | --- |
| 1 | 1 | **Contract Administration** |  | 40d | 2025-07-09 A | 2025-09-02 A |  | 100% |  |  |  |  |
| 2 | 1.1 | Notice to Proceed |  | 34d | 2025-07-09 A | 2025-08-25 A |  | 100% |  |  |  |  |
| 3 | 1.2 | Mobilization |  | 1d | 2025-08-26 A | 2025-09-02 A | 2 | 100% |  |  |  |  |
| 4 | 2 | **Procurement** |  | 296d | 2025-08-07 A | 2026-09-24 |  | 29% | 209.82d | 26d |  |  |
| 5 | 2.1 | 033000 - CIP - Product Data/Material Certificates, Submittal |  | 1d | 2025-08-11 A | 2025-08-13 A | 2 | 100% |  |  |  |  |
| 6 | 2.2 | 033000 - CIP - Design Mixtures for Concrete, Submittal | milestone | 0d | 2025-08-07 A | 2025-08-08 A | 2 | 100% |  |  |  |  |
| 7 | 2.3 | 033000 - CIP - Rebar Shop Drawings, Submittal | milestone | 0d | 2025-08-07 A | 2025-08-08 A | 2 | 100% |  |  |  | finish no earlier than 2025-08-08 |
| 8 | 2.4 | 033000 - CIP - Construction Joint Layout, Submittal |  | 10d | 2025-12-22 A | 2026-01-02 A | 2 | 100% |  |  |  | start no earlier than 2025-12-19 |
| 9 | 2.5 | 033000 - CIP - Slab on Grade Control Joint Layout, Submittal |  | 11d | 2025-08-07 A | 2025-08-21 A | 2 | 100% |  |  |  | start no earlier than 2025-12-19 |
| 10 | 2.6 | 033000 - CIP - Product Data/Material Certificates, Review/Approval |  | 11d | 2025-08-07 A | 2025-08-21 A | 5 | 100% |  |  |  | start no earlier than 2025-12-19 |
| 11 | 2.7 | 033000 - CIP - Design Mixtures for Concrete, Review/Approval |  | 2d | 2025-08-08 A | 2025-08-25 A | 6 | 100% |  |  |  |  |
| 12 | 2.8 | 033000 - CIP - Rebar Shop Drawings, Review/Approval |  | 31d | 2025-08-08 A | 2025-09-22 A | 7 | 100% |  |  |  | start no earlier than 2025-10-20 |
| 13 | 2.9 | 033000 - CIP - Construction Joint Layout, Review/Approval |  | 15d | 2026-01-05 A | 2026-01-23 A | 8 | 100% |  |  |  | start no earlier than 2025-12-19 |
| 14 | 2.10 | 033000 - CIP - Slab on Grade Control Joint Layout, Review/Approval |  | 15d | 2026-01-05 A | 2026-01-23 A | 9 | 100% |  |  |  | start no earlier than 2025-12-19 |
| 15 | 2.11 | 033300 - Concrete Sealing, Product Data, F-01 Finish, Submittals |  | 2d | 2026-01-19 A | 2026-01-20 A | 2 | 100% |  |  |  | start no earlier than 2025-12-19 |
| 16 | 2.12 | 033300 - Concrete Polishing, Product Data FF-02, Submittals |  | 2d | 2026-01-19 A | 2026-01-20 A | 2 | 100% |  |  |  | start no earlier than 2025-12-19 |
| 17 | 2.13 | 033300 - Concrete Sealing, Product Data, F-01 Finish, Review/Approval |  | 15d | 2026-01-28 A | 2026-02-17 | 15 | 50% | 7.5d | 146d | 2d | start no earlier than 2025-12-19 |
| 18 | 2.14 | 033300 - Concrete Polishing, Product Data FF-02, Review/Approval |  | 15d | 2026-01-28 A | 2026-02-17 | 16 | 50% | 7.5d | 146d | 2d | start no earlier than 2025-12-19 |
| 19 | 2.15 | 042000 - Unit Masonry, Product Data, Masonry Accessories, Submittal | milestone | 0d | 2025-08-07 A | 2025-08-08 A | 2 | 100% |  |  |  |  |
| 20 | 2.16 | 042000 - Unit Masonry, Product Data, Masonry Accessories, Review/Approval | milestone | 0d | 2025-08-14 A | 2025-09-10 A | 19 | 100% |  |  |  |  |
| 21 | 2.17 | 042000 Unit Masonry, Grout Mix, Submittal | milestone | 0d | 2025-08-07 A | 2025-08-08 A | 2 | 100% |  |  |  |  |
| 22 | 2.18 | 042000 Unit Masonry, Grout Mix, Review/Approval | milestone | 0d | 2025-10-07 A | 2025-10-10 A | 21 | 100% |  |  |  |  |
| 23 | 2.19 | 051200 - Structural Steel Framing, Shop Drawings, Submittal |  | 1d | 2025-09-26 A | 2025-09-26 A | 2 | 100% |  |  |  | start no earlier than 2025-10-20 |
| 24 | 2.20 | 051200 - Structural Steel Framing, Shop Drawings, Review/Approval |  | 15d | 2025-09-29 A | 2025-10-17 A | 23 | 100% |  |  |  | start no earlier than 2025-10-20 |
| 25 | 2.21 | 054000 - Cold Formed Metal Framing, Product Data, Submittal |  | 11d | 2025-09-10 A | 2025-09-24 A | 2 | 100% |  |  |  | start no earlier than 2025-12-19 |
| 26 | 2.22 | 054000 - Cold Formed Metal Framing, Product Data, Review/Approval | milestone | 0d | 2025-09-25 A | 2025-09-26 A | 25 | 100% |  |  |  | start no earlier than 2025-11-10 |
| 27 | 2.23 | 054000 - Cold Formed Metal Framing, Shop Drawings, Submittal |  | 11d | 2025-09-10 A | 2025-09-24 A | 2 | 100% |  |  |  | start no earlier than 2025-12-19 |
| 28 | 2.24 | 054000 - Cold Formed Metal Framing, Shop Drawings, Review/Approval | milestone | 0d | 2025-09-29 A | 2025-10-17 A | 27 | 100% |  |  |  | start no earlier than 2025-10-20 |
| 29 | 2.25 | 055000 - Metal Fabricators, Shop Drawings, Submittal |  | 2d | 2025-10-30 A | 2025-10-31 A | 2 | 100% |  |  |  | start no earlier than 2025-11-21 |
| 30 | 2.26 | 055000 - Metal Fabricators, Shop Drawings, Review/Approval |  | 29d | 2025-10-31 A | 2025-12-11 A | 29 | 100% |  |  |  | start no earlier than 2025-12-19 |
| 31 | 2.27 | 055000 - Metal Fabricators, Fabrication/Delivery |  | 30d | 2025-12-15 A | 2026-03-11 | 30 |  | 30d | 24d | 0d | start no earlier than 2026-01-28 |
| 32 | 2.28 | 055100/055116 - Metal Stair, Shop Drawings, Submittal |  | 2d | 2025-10-30 A | 2025-10-31 A | 2 | 100% |  |  |  | start no earlier than 2025-11-21 |
| 33 | 2.29 | 055100/055116 - Metal Stair, Shop Drawings, Review/Approval | milestone | 0d | 2025-10-31 A | 2025-12-11 A | 32 | 100% |  |  |  | start no earlier than 2025-10-20 |
| 34 | 2.30 | 055100/055116 - Metal Stair, Shop Drawings, Fabrication/Delivery |  | 25d | 2025-12-15 A | 2026-03-04 | 33 |  | 25d | 31d | 7d | start no earlier than 2026-01-28 |
| 35 | 2.31 | 055110 - Aluminum Diamond Plate Wainscot, Product Data/Shop Drawings, Submittal |  | 25d | 2026-01-29 | 2026-03-04 | 2 |  |  | 91d | 0d | start no earlier than 2026-01-28 |
| 36 | 2.32 | 055110 - Aluminum Diamond Plate Wainscot, Product Data/Shop Drawings, Review/Approval |  | 15d | 2026-03-05 | 2026-03-25 | 35 |  |  | 91d | 77d | start no earlier than 2026-01-28 |
| 37 | 2.33 | 055213 - Pipe and Tube Railings, Shop Drawings, Submittal |  | 2d | 2025-10-30 A | 2025-10-31 A | 2 | 100% |  |  |  | start no earlier than 2025-11-21 |
| 38 | 2.34 | 055213 - Pipe and Tube Railings, Shop Drawings, Review/Approval | milestone | 0d | 2025-10-31 A | 2025-12-11 A | 37 | 100% |  |  |  | start no earlier than 2025-10-20 |
| 39 | 2.35 | 055213 - Pipe and Tube Railings, Shop Drawings, Fabrication/Delivery |  | 25d | 2025-12-15 A | 2026-03-04 | 38 |  | 25d | 31d | 7d | start no earlier than 2026-01-28 |
| 40 | 2.36 | 061000 - Rough Carpentry, Product Data Submittals |  | 10d | 2026-01-29 | 2026-02-11 | 2 |  |  | 38d | 0d | start no earlier than 2026-01-28 |
| 41 | 2.37 | 061000 - Rough Carpentry, Product Data Approval |  | 15d | 2026-02-12 | 2026-03-04 | 40 |  |  | 38d | 32d | start no earlier than 2026-01-28 |
| 42 | 2.38 | 061600 - Sheathing, Product Data Submittals |  | 10d | 2026-01-29 | 2026-02-11 | 2 |  |  | 38d | 0d | start no earlier than 2026-01-28 |
| 43 | 2.39 | 061600 - Sheathing, Product Data Review/Approval |  | 15d | 2026-02-12 | 2026-03-04 | 42 |  |  | 38d | 32d | start no earlier than 2026-01-28 |
| 44 | 2.40 | 064116 - Plastic Laminate Casework, Product Data, Submittals |  | 20d | 2026-04-09 | 2026-05-06 | 2, 161 |  |  | 0d |  |  |
| 45 | 2.41 | 064116 - Plastic Laminate Casework, Shop Drawings, Submittal |  | 20d | 2026-01-29 | 2026-02-25 | 2 |  |  | 50d | 0d | start no earlier than 2026-01-28 |
| 46 | 2.42 | 064116 - Plastic Laminate Casework, Color Samples |  | 20d | 2026-01-29 | 2026-02-25 | 2 |  |  | 50d | 0d | start no earlier than 2026-01-28 |
| 47 | 2.43 | 064116 - Plastic Laminate Casework, Product Data, Review/Approval |  | 15d | 2026-05-07 | 2026-05-27 | 44 |  |  | 0d |  |  |
| 48 | 2.44 | 064116 - Plastic Laminate Casework, Shop Drawings, Review/Approval |  | 15d | 2026-02-26 | 2026-03-18 | 45 |  |  | 50d |  | start no earlier than 2026-01-28 |
| 49 | 2.45 | 064116 - Plastic Laminate Casework, Color Samples, Review/Approval |  | 15d | 2026-02-26 | 2026-03-18 | 46 |  |  | 50d |  | start no earlier than 2026-01-28 |
| 50 | 2.46 | 064116 - Plastic Laminate Casework, Fabrication/Delivery |  | 25d | 2026-05-28 | 2026-07-01 | 47, 48, 49 |  |  | 0d |  |  |
| 51 | 2.47 | 066400 - FRP Submittals |  | 25d | 2026-01-29 | 2026-03-04 | 2 |  |  | 70d | 0d | start no earlier than 2026-01-28 |
| 52 | 2.48 | 066400 - FRP - Review/Approval |  | 15d | 2026-03-05 | 2026-03-25 | 51 |  |  | 70d |  | start no earlier than 2026-01-28 |
| 53 | 2.49 | 071113 - Bituminous Waterproofing, Product Data Submittals |  | 10d | 2026-01-29 | 2026-02-11 | 2 |  |  | 455d | 0d | start no earlier than 2026-01-28 |
| 54 | 2.50 | 071113 - Bituminous Waterproofing, Review/Approval |  | 15d | 2026-02-12 | 2026-03-04 | 53 |  |  | 455d |  | start no earlier than 2026-01-28 |
| 55 | 2.51 | 071326 - Self-Adhering Sheet Waterproofing, Product Data Submittal |  | 1d | 2025-09-17 A | 2025-09-17 A | 2 | 100% |  |  |  | start no earlier than 2025-10-20 |
| 56 | 2.52 | 071326 - Self-Adhering Sheet Waterproofing, Product Data Review/Approval |  | 6d | 2025-09-24 A | 2025-10-01 A | 55 | 100% |  |  |  | start no earlier than 2025-10-20 |
| 57 | 2.53 | 071326 - Self-Adhering Sheet Waterproofing, Shop Drawings, Submittal |  | 10d | 2026-01-29 | 2026-02-11 | 2 |  |  | 455d | 0d | start no earlier than 2026-01-28 |
| 58 | 2.54 | 071326 - Self-Adhering Sheet Waterproofing, Shop Drawings, Review/Approval |  | 15d | 2026-02-12 | 2026-03-04 | 57 |  |  | 455d |  | start no earlier than 2026-01-28 |
| 59 | 2.55 | 071326 - Self-Adhering Sheet Waterproofing, Samples, Submittal |  | 10d | 2026-01-29 | 2026-02-11 | 2 |  |  | 455d | 0d | start no earlier than 2026-01-28 |
| 60 | 2.56 | 071326 - Self-Adhering Sheet Waterproofing, Samples, Review/Approval |  | 15d | 2026-02-12 | 2026-03-04 | 59 |  |  | 455d |  | start no earlier than 2026-01-28 |
| 61 | 2.57 | 071416 - Cold Fluid Applied Waterproofing, Product Data Submittals |  | 10d | 2026-01-29 | 2026-02-11 | 2 |  |  | 64d | 0d | start no earlier than 2026-01-28 |
| 62 | 2.58 | 071416 - Cold Fluid Applied Waterproofing, Shop Drawings, Submittal |  | 20d | 2026-01-29 | 2026-02-25 | 2 |  |  | 54d | 0d | start no earlier than 2026-01-28 |
| 63 | 2.59 | 071416 - Cold Fluid Applied Waterproofing, Product Data, Review/Approval |  | 15d | 2026-02-12 | 2026-03-04 | 61 |  |  | 64d | 10d | start no earlier than 2026-01-28 |
| 64 | 2.60 | 071416 - Cold Fluid Applied Waterproofing, Shop Drawings, Review/Approval |  | 15d | 2026-02-26 | 2026-03-18 | 62 |  |  | 54d | 0d | start no earlier than 2026-01-28 |
| 65 | 2.61 | 072100 - Thermal Insulation, Product Data Submittals |  | 10d | 2026-01-29 | 2026-02-11 | 2 |  |  | 29d | 0d | start no earlier than 2026-01-28 |
| 66 | 2.62 | 072100 - Thermal Insulation, Product Data, Review/Approval |  | 15d | 2026-02-12 | 2026-03-04 | 65 |  |  | 29d | 5d | start no earlier than 2026-01-28 |
| 67 | 2.63 | 072410 - Stucco System, Product Data, Submittals |  | 6d | 2025-11-17 A | 2025-11-24 A | 2 | 100% |  |  |  | start no earlier than 2025-11-21 |
| 68 | 2.64 | 072410 - Stucco System, Manufacturers Standard Warranty, Submittal |  | 6d | 2025-11-17 A | 2025-11-24 A | 2 | 100% |  |  |  | start no earlier than 2025-11-21 |
| 69 | 2.65 | 072410 - Stucco System, Color Samples for Architect Approval |  | 6d | 2025-11-17 A | 2026-02-02 | 2 | 50% | 3d | 71d | 0d | start no earlier than 2025-12-19 |
| 70 | 2.66 | 072410 - Stucco System, Shop Drawings for Approval |  | 15d | 2026-01-29 | 2026-02-18 | 2 |  |  | 59d | 0d | start no earlier than 2026-01-28 |

| ID | WBS | Task | Type | Duration | Start | Finish | Predecessors | Complete | Remaining | Total slack | Free slack | Constraint |
| --- | --- | --- | --- | --- | --- | --- | --- | --- | --- | --- | --- | --- |
| 71 | 2.67 | 072410 - Stucco System, Product Data, Review/Approval |  | 14d | 2025-11-24 A | 2025-12-11 A | 67 | 100% |  |  |  | start no earlier than 2025-12-19 |
| 72 | 2.68 | 072410 - Stucco System, Manufacturers Standard Warranty, Review/Approval |  | 13d | 2025-11-24 A | 2025-12-11 A | 68 | 100% |  |  |  | start no earlier than 2025-12-19 |
| 73 | 2.69 | 072410 - Stucco System, Color Samples, Review/Approval |  | 15d | 2026-02-03 | 2026-02-23 | 69 |  |  | 71d | 23d | start no earlier than 2026-01-28 |
| 74 | 2.70 | 072410 - Stucco System, Shop Drawings, Review/Approval |  | 15d | 2026-02-19 | 2026-03-11 | 70 |  |  | 59d | 11d | start no earlier than 2026-01-28 |
| 75 | 2.71 | 072500 - Weather Barriers, Product Data, Submittal |  | 10d | 2026-01-29 | 2026-02-11 | 2 |  |  | 455d | 0d | start no earlier than 2026-01-28 |
| 76 | 2.72 | 072500 - Weather Barriers, Product Data, Review/Approval |  | 15d | 2026-02-12 | 2026-03-04 | 75 |  |  | 455d |  | start no earlier than 2026-01-28 |
| 77 | 2.73 | 072500 - Weather Barriers, Shop Drawings, Submittal |  | 10d | 2026-01-29 | 2026-02-11 | 2 |  |  | 455d | 0d | start no earlier than 2026-01-28 |
| 78 | 2.74 | 072500 - Weather Barriers, Shop Drawing, Review/Approval |  | 15d | 2026-02-12 | 2026-03-04 | 77 |  |  | 455d |  | start no earlier than 2026-01-28 |
| 79 | 2.75 | 072713 - Modified Bituminous Sheet Air Barriers, Product Data, Submittals |  | 10d | 2026-01-29 | 2026-02-11 | 2 |  |  | 455d | 0d | start no earlier than 2026-01-28 |
| 80 | 2.76 | 072713 - Modified Bituminous Sheet Air Barriers, Shop Drawing, Submittals |  | 20d | 2026-01-29 | 2026-02-25 | 2 |  |  | 445d | 0d | start no earlier than 2026-01-28 |
| 81 | 2.77 | 072713 - Modified Bituminous Sheet Air Barriers, Product Data, Review/Approval |  | 15d | 2026-02-12 | 2026-03-04 | 79 |  |  | 455d |  | start no earlier than 2026-01-28 |
| 82 | 2.78 | 072713 - Modified Bituminous Sheet Air Barriers, Shop Drawing, Review/Approval |  | 15d | 2026-02-26 | 2026-03-18 | 80 |  |  | 445d |  | start no earlier than 2026-01-28 |
| 83 | 2.79 | 075423 - TPO Roofing, Product Data, Submittals |  | 3d | 2025-11-12 A | 2025-11-14 A | 2 | 100% |  |  |  | start no earlier than 2025-11-21 |
| 84 | 2.80 | 075423 - TPO Roofing, Shop Drawing, Submittals |  | 3d | 2025-11-12 A | 2025-11-14 A | 2 | 100% |  |  |  | start no earlier than 2025-12-19 |
| 85 | 2.81 | 075423 - TPO Roofing, Product Data, Review/Approval |  | 27d | 2025-11-17 A | 2026-02-17 | 83 | 50% | 13.5d | 73.5d | 26.5d | start no earlier than 2025-11-10 |
| 86 | 2.82 | 075423 - TPO Roofing, Shop Drawing, Review/Approval |  | 52d | 2025-11-17 A | 2026-03-05 | 84 | 50% | 26d | 61d | 14d | start no earlier than 2025-10-20 |
| 87 | 2.83 | 075423 - TPO Roofing, Sample Warranty, Submittal |  | 3d | 2025-11-12 A | 2025-11-14 A | 2 | 100% |  |  |  | start no earlier than 2025-12-19 |
| 88 | 2.84 | 075423- TPO Roofing, Sample Warranty, Review/Approval |  | 52d | 2025-11-17 A | 2026-03-05 | 87 | 50% | 26d | 61d | 14d | start no earlier than 2025-12-19 |
| 89 | 2.85 | 075423 - TPO Roofing, Closeout Submittal, Maintenance Data |  | 20d | 2026-06-03 | 2026-06-30 | 364 |  |  | 87d | 72d |  |
| 90 | 2.86 | 075423 - TPO Roofing, Closeout Submittal, Roof Warranty |  | 20d | 2026-06-03 | 2026-06-30 | 364 |  |  | 87d | 72d |  |
| 91 | 2.87 | 075423 - TPO Roofing, Closeout Submittal, Record Drawings |  | 20d | 2026-06-03 | 2026-06-30 | 364 |  |  | 87d | 72d |  |
| 92 | 2.88 | 076200 - Sheet Metal Flashing and Trim, Product Data, Submittals |  | 3d | 2025-11-12 A | 2025-11-14 A | 2 | 100% |  |  |  | finish no earlier than 2025-11-14 |
| 93 | 2.89 | 076200 - Sheet Metal Flashing and Trim, Shop Drawings, Submittals |  | 20d | 2026-01-29 | 2026-02-25 | 2 |  |  | 47d | 0d | start no earlier than 2026-01-28 |
| 94 | 2.90 | 076200 - Sheet Metal Flashing and Trim, Samples, Submittals |  | 20d | 2026-01-29 | 2026-02-25 | 2 |  |  | 47d | 0d | start no earlier than 2026-01-28 |
| 95 | 2.91 | 076200 - Sheet Metal Flashing and Trim, Product Data, Review/Approval |  | 52d | 2025-11-17 A | 2026-03-05 | 2, 92 | 50% | 26d | 61d | 14d | start no earlier than 2025-12-19 |
| 96 | 2.92 | 076200 - Sheet Metal Flashing and Trim, Shop Drawings, Review/Approval |  | 20d | 2026-02-26 | 2026-03-25 | 2, 93 |  |  | 47d | 0d | start no earlier than 2026-01-28 |
| 97 | 2.93 | 076200 - Sheet Metal Flashing and Trim, Samples, Review/Approval |  | 20d | 2026-02-26 | 2026-03-25 | 2, 94 |  |  | 47d | 0d | start no earlier than 2026-01-28 |
| 98 | 2.94 | 077100 - Roof Specialties, Product Data, Submittals |  | 3d | 2025-11-12 A | 2025-11-14 A | 2 | 100% |  |  |  | start no earlier than 2025-12-19 |
| 99 | 2.95 | 077100 - Roof Specialties, Shop Drawing, Submittals |  | 20d | 2026-01-29 | 2026-02-25 | 2 |  |  | 52d | 0d | start no earlier than 2026-01-28 |
| 100 | 2.96 | 077100 - Roof Specialties, Product Data, Review/Approval |  | 52d | 2025-11-17 A | 2026-03-05 | 98 | 50% | 26d | 61d | 14d | start no earlier than 2025-10-20 |
| 101 | 2.97 | 077100 - Roof Specialties, Shop Drawing, Review/Approval |  | 15d | 2026-02-26 | 2026-03-18 | 99 |  |  | 52d | 5d | start no earlier than 2026-01-28 |
| 102 | 2.98 | 077200 - Roof Accessories, Product Data, Submittals |  | 3d | 2025-11-12 A | 2025-11-14 A | 2 | 100% |  |  |  | start no earlier than 2025-12-19 |
| 103 | 2.99 | 077200 - Roof Accessories, Shop Drawings, Submittal |  | 15d | 2026-01-29 | 2026-02-18 | 2 |  |  | 33d | 0d | start no earlier than 2026-01-28 |
| 104 | 2.100 | 077200 - Roof Accessories, Design Certifications, Submittal |  | 3d | 2025-11-12 A | 2025-11-14 A | 2 | 100% |  |  |  | start no earlier than 2025-12-19 |
| 105 | 2.101 | 077200 - Roof Accessories, Product Data, Review/Approval |  | 52d | 2025-11-17 A | 2026-03-05 | 102 | 50% | 26d | 37d | 31d | start no earlier than 2025-12-19 |
| 106 | 2.102 | 077200 - Roof Accessories, Shop Drawings, Review/Approval |  | 15d | 2026-02-19 | 2026-03-11 | 103 |  |  | 33d | 27d | start no earlier than 2026-01-28 |
| 107 | 2.103 | 077200 - Roof Accessories, Design Certifications, Review/Approval |  | 52d | 2025-11-17 A | 2026-03-05 | 104 | 50% | 26d | 37d | 31d | start no earlier than 2025-12-19 |
| 108 | 2.104 | 078413 - Penetration Firestopping, Product Data, Submittals |  | 2d | 2025-10-20 A | 2025-10-21 A | 2 | 100% |  |  |  | start no earlier than 2025-12-19 |
| 109 | 2.105 | 078413 - Penetration Firestopping, Product Data, Review/Approval |  | 16d | 2025-10-22 A | 2025-11-12 A | 2, 108 | 100% |  |  |  | start no earlier than 2025-12-19 |
| 110 | 2.106 | 079200 - Joint Sealants, Product Data, Submittal |  | 2d | 2025-10-21 A | 2025-10-22 A | 2 | 100% |  |  |  | start no earlier than 2025-11-21 |
| 111 | 2.107 | 079200 - Joint Sealants, Initial Samples for Selection |  | 10d | 2026-01-29 | 2026-02-11 | 2 |  |  | 74d | 0d | start no earlier than 2026-01-28 |
| 112 | 2.108 | 079200 - Joint Sealants, Samples for Verificiation |  | 20d | 2026-02-26 | 2026-03-25 | 114 |  |  | 74d | 0d | start no earlier than 2026-01-28 |
| 113 | 2.109 | 079200 - Joint Sealants, Product Data, Review/Approval |  | 15d | 2025-10-23 A | 2025-11-12 A | 110 | 100% |  |  |  | start no earlier than 2025-11-10 |
| 114 | 2.110 | 079200 - Joint Sealants, Initial Samples for Selection, Review/Approval |  | 10d | 2026-02-12 | 2026-02-25 | 111 |  |  | 74d | 0d | start no earlier than 2026-01-28 |
| 115 | 2.111 | 079200 - Joint Sealants, Samples for Verificiation, Review/Approval |  | 20d | 2026-03-26 | 2026-04-22 | 114, 112 |  |  | 74d | 66d |  |
| 116 | 2.112 | 081113 - Hollow Metal Doors and Frames, Product Data Submittal |  | 6d | 2025-08-25 A | 2025-09-02 A | 2 | 100% |  |  |  | start no earlier than 2025-10-20 |
| 117 | 2.113 | 081113 - Hollow Metal Doors and Frames, Shop Drawings, Submittal |  | 6d | 2025-08-25 A | 2025-09-02 A | 2 | 100% |  |  |  | start no earlier than 2025-10-20 |
| 118 | 2.114 | 081113 - Hollow Metal Doors and Frames, Product Data, Review/Approval | milestone | 0d | 2025-09-03 A | 2025-10-09 A | 116 | 100% |  |  |  | start no earlier than 2025-10-20 |
| 119 | 2.115 | 081113 - Hollow Metal Doors and Frames, Shop Drawings, Review/Approval |  | 15d | 2026-01-29 | 2026-02-18 | 117 |  |  | 464d | 0d | start no earlier than 2026-01-28 |
| 120 | 2.116 | 083113 - Access Doors and Frames, Product Data, Submittal |  | 10d | 2026-01-29 | 2026-02-11 | 2 |  |  | 85d | 0d | start no earlier than 2026-01-28 |
| 121 | 2.117 | 083113 - Access Doors and Frames, Product Data, Review/Approval |  | 15d | 2026-02-12 | 2026-03-04 | 120 |  |  | 85d |  | start no earlier than 2026-01-28 |
| 122 | 2.118 | 084113 - Aluminum Framed Entrances and Storefronts, Product Data, Submittal |  | 84d | 2025-09-15 A | 2026-01-08 A | 2 | 100% |  |  |  | start no earlier than 2025-12-19 |
| 123 | 2.119 | 084113 - Aluminum Framed Entrances/Storefronts, Shop Drawings, Submittal |  | 84d | 2025-09-15 A | 2026-01-08 A | 2 | 100% |  |  |  | start no earlier than 2025-10-20 |
| 124 | 2.120 | 084113 - Aluminum Framing Samples, for review |  | 20d | 2026-01-29 | 2026-02-25 | 2 |  |  | 15d | 0d | start no earlier than 2026-01-28 |
| 125 | 2.121 | 084113 - Aluminum Framed Entrances and Storefronts, Product Data, Review/Approval |  | 15d | 2026-01-08 A | 2026-02-09 | 2, 122 | 50% | 7.5d | 42.5d | 27.5d | start no earlier than 2025-10-20 |
| 126 | 2.122 | 084113 - Aluminum Framed Entrances/Storefronts, Shop Drawings, Review/Approval |  | 30d | 2025-09-15 A | 2026-02-19 | 2, 123 | 50% | 15d | 34d | 19d | start no earlier than 2025-10-20 |
| 127 | 2.123 | 084113 - Aluminum Framing Samples, Review/Approval |  | 15d | 2026-02-26 | 2026-03-18 | 2, 124 |  |  | 15d | 0d | start no earlier than 2026-01-28 |
| 128 | 2.124 | 084113 - Aluminum Entrances/Storefront Fabrication/Delivery |  | 45d | 2026-03-20 | 2026-05-21 | 308 |  |  | 15d | 9d |  |
| 129 | 2.125 | 084329 - Sliding Automatic Storm Entrances, Shop Drawing, Submittals | milestone | 0d | 2025-09-15 A | 2026-01-08 A | 2 | 100% |  |  |  |  |
| 130 | 2.126 | 084329 - Sliding Automatic Storm Entrance, Color Sample, for Approval |  | 25d | 2026-01-29 | 2026-03-04 | 2 |  |  | 55d | 0d | start no earlier than 2026-01-28 |
| 131 | 2.127 | 084329 - Sliding Automatic Storm Entrances, Shop Drawing, Review/Approval |  | 15d | 2026-01-09 A | 2026-02-09 | 129 | 50% | 7.5d | 87.5d | 81.5d |  |
| 132 | 2.128 | 084329 - Sliding Automatic Storm Entrance, Color Sample, Review/Approval |  | 15d | 2026-03-05 | 2026-03-25 | 130 |  |  | 55d | 49d | start no earlier than 2026-01-28 |
| 133 | 2.129 | 087111 - Door Hardware, Product Data, Submittal |  | 6d | 2025-08-25 A | 2025-09-02 A | 2 | 100% |  |  |  | start no earlier than 2025-08-25 |
| 134 | 2.130 | 087111 - Door Hardware Schedule for Approval |  | 7.5d | 2025-09-03 A | 2025-10-31 A | 2 | 100% |  |  |  | start no earlier than 2025-10-20 |
| 135 | 2.131 | 087111 - Door Hardware, Maintenance Data for Closeout |  | 10d | 2026-01-29 | 2026-02-11 | 342 |  |  | 469d | 171d | start no earlier than 2026-01-28 |
| 136 | 2.132 | 087111 - Door Hardware, Warranties |  | 10d | 2026-01-29 | 2026-02-11 | 342 |  |  | 469d | 171d | start no earlier than 2026-01-28 |
| 137 | 2.133 | 087111 - Door Hardware, Product Data, Review/Approval |  | 36.1d | 2025-09-03 A | 2025-10-31 A | 2, 133 | 100% |  |  |  | start no earlier than 2025-10-20 |
| 138 | 2.134 | 087111 - Door Hardware Schedule, Review/Approval | milestone | 0d | 2025-09-03 A | 2025-10-31 A | 2, 134 | 100% |  |  |  | start no earlier than 2025-12-19 |
| 139 | 2.135 | 087111 - Door Hardware, Qualification Data, Review/Approval |  | 15d | 2026-01-29 | 2026-02-18 | 2 |  |  | 465d |  | start no earlier than 2026-01-28 |
| 140 | 2.136 | 087111 - Door Hardware, Fabrication/Delivery |  | 20d | 2026-01-29 | 2026-02-25 | 137, 138 |  |  | 460d |  | start no earlier than 2026-01-28 |

| ID | WBS | Task | Duration | Start | Finish | Predecessors | Complete | Remaining | Total slack | Free slack | Constraint |
| --- | --- | --- | --- | --- | --- | --- | --- | --- | --- | --- | --- |
| 141 | 2.137 | 088000 - Glazing, Product Data and Glazing Schedule, Submittal | 2d | 2026-01-06 A | 2026-01-07 A | 2 | 100% |  |  |  | start no earlier than 2025-12-19 |
| 142 | 2.138 | 088000 - Glazing, Product Data and Glazing Schedule, Review/Approval | 15d | 2026-01-08 A | 2026-02-09 | 141 | 50% | 7.5d | 68.5d | 28.5d | start no earlier than 2025-10-20 |
| 143 | 2.139 | 088000 - Glazing Fabrication/Delivery | 40d | 2026-03-20 | 2026-05-14 | 142, 308 |  |  | 40d | 34d |  |
| 144 | 2.140 | 089516 - Wall Vents, Product Data, Submittal | 2d | 2025-12-10 A | 2025-12-11 A | 2 | 100% |  |  |  | start no earlier than 2025-12-19 |
| 145 | 2.141 | 089516 - Wall Vents, Metal Samples of Vents, for Approval | 20d | 2026-01-29 | 2026-02-25 | 2 |  |  | 91d | 0d | start no earlier than 2026-01-28 |
| 146 | 2.142 | 089516 - Wall Vents, Product Data, Review/Approval | 33d | 2025-12-12 A | 2026-02-20 | 144 | 50% | 16.5d | 109.5d | 103.5d | start no earlier than 2025-10-20 |
| 147 | 2.143 | 089516 - Wall Vents, Metal Samples of Vents, Review/Approval | 15d | 2026-02-26 | 2026-03-18 | 145 |  |  | 91d | 85d | start no earlier than 2026-01-28 |
| 148 | 2.144 | 092216 - Non-Structural Metal Framing, Product Data, Submittals | 10d | 2026-01-29 | 2026-02-11 | 2 |  |  | 85d | 0d | start no earlier than 2026-01-28 |
| 149 | 2.145 | 092216 - Non-Structural Metal Framing, Product Data, Review/Approval | 15d | 2026-02-12 | 2026-03-04 | 148 |  |  | 85d |  | start no earlier than 2026-01-28 |
| 150 | 2.146 | 092900 - Gypsum Board, Product Data, Submittals | 10d | 2026-01-29 | 2026-02-11 | 2 |  |  | 85d | 0d | start no earlier than 2026-01-28 |
| 151 | 2.147 | 092900 - Gypsum Board, Product Data, Review/Approval | 15d | 2026-02-12 | 2026-03-04 | 150 |  |  | 85d |  | start no earlier than 2026-01-28 |
| 152 | 2.148 | 095113 - Acoustical Panel Ceilings, Product Data, Submittals | 10d | 2026-01-29 | 2026-02-11 | 2 |  |  | 85d | 0d | start no earlier than 2026-01-28 |
| 153 | 2.149 | 095113 - Acoustical Panel Ceilings, Product Data, Review/Approval | 15d | 2026-02-12 | 2026-03-04 | 152 |  |  | 85d |  | start no earlier than 2026-01-28 |
| 154 | 2.150 | 096513 - Resilient Base and Accessories, Product Data, Submittals | 2d | 2026-01-19 A | 2026-01-20 A | 2 | 100% |  |  |  | start no earlier than 2025-12-19 |
| 155 | 2.151 | 096513 - Resilient Base and Accessories, Product Data, Review/Approval | 15d | 2026-01-28 A | 2026-02-17 | 154 | 50% | 7.5d | 47d | 33d | start no earlier than 2025-12-19 |
| 156 | 2.152 | 099100 - Painting, Product Data, Submittals | 10d | 2026-01-29 | 2026-02-11 | 2 |  |  | 36d | 0d | start no earlier than 2026-01-28 |
| 157 | 2.153 | 099100 - Painting, Product Data, Review/Approval | 15d | 2026-02-12 | 2026-03-04 | 156 |  |  | 36d | 22d | start no earlier than 2026-01-28 |
| 158 | 2.154 | 099100 - Painting, Samples for Initial Selection | 10d | 2026-01-29 | 2026-02-11 | 2 |  |  | 0d |  | start no earlier than 2026-01-28 |
| 159 | 2.155 | 099100- Painting, Initial Paint Selection, Approval | 15d | 2026-02-12 | 2026-03-04 | 158 |  |  | 0d |  | start no earlier than 2026-01-28 |
| 160 | 2.156 | 099100 - Painting, Samples for Verificiation, submittal to Architect | 10d | 2026-03-05 | 2026-03-18 | 159 |  |  | 0d |  | start no earlier than 2026-01-28 |
| 161 | 2.157 | 099100 - Painting, Samples for Verificaiton, Review/Approval | 15d | 2026-03-19 | 2026-04-08 | 160 |  |  | 0d |  |  |
| 162 | 2.158 | 101423 - Interior Signage, Product Data/Shop Drawings, Submittal | 20d | 2026-01-29 | 2026-02-25 | 2 |  |  | 108d | 0d | start no earlier than 2026-01-28 |
| 163 | 2.159 | 101423 - Interior Signage, Samples for approval | 20d | 2026-01-29 | 2026-02-25 | 2 |  |  | 108d | 0d | start no earlier than 2026-01-28 |
| 164 | 2.160 | 101423 - Interior Signage, Product Data/Shop Drawings, Review/Approval | 15d | 2026-02-26 | 2026-03-18 | 162 |  |  | 108d | 0d | start no earlier than 2026-01-28 |
| 165 | 2.161 | 101423 - Interior Signage, Samples, Review/Approval | 15d | 2026-02-26 | 2026-03-18 | 163 |  |  | 108d | 0d | start no earlier than 2026-01-28 |
| 166 | 2.162 | 101423 - Interior Signage, Fabrication/Delivery | 15d | 2026-03-19 | 2026-04-08 | 165, 164 |  |  | 108d | 105d |  |
| 167 | 2.163 | 102800 - Toilet Accessories, Product Data/Equipment Schedule, Submittal | 4d | 2026-01-19 A | 2026-01-22 A | 2 | 100% |  |  |  | start no earlier than 2025-12-19 |
| 168 | 2.164 | 102800 - Toilet Accessories, Product Data, Review/Approval | 15d | 2026-01-28 A | 2026-02-18 | 167 |  | 15d | 95d |  | start no earlier than 2025-10-20 |
| 169 | 2.165 | 104413 - Fire Extinquishers/Cabinets, Product Data/Shop Drawings, Submittal | 25d | 2026-01-29 | 2026-03-04 | 2 |  |  | 110d | 0d | start no earlier than 2026-01-28 |
| 170 | 2.166 | 104413 - Fire Extinquishers/Cabinets, Product Data/Shop Drawings, Review/Approval | 15d | 2026-03-05 | 2026-03-25 | 169 |  |  | 110d |  | start no earlier than 2026-01-28 |
| 171 | 2.167 | 107316 - Metal Canopies, Product Data, Submittal | 2d | 2026-01-19 A | 2026-01-20 A | 2 | 100% |  |  |  | start no earlier than 2025-12-19 |
| 172 | 2.168 | 107316 - Metal Canopies, Shop Drawings, for Approval | 2d | 2026-01-19 A | 2026-01-20 A | 2 | 100% |  |  |  | start no earlier than 2025-10-20 |
| 173 | 2.169 | 107316 - Metal Canopies, Color Samples | 20d | 2026-01-19 A | 2026-02-13 | 2 | 50% | 10d | 7.5d | 0d | start no earlier than 2025-12-19 |
| 174 | 2.170 | 107316 - Metal Canopies, Product Data, Review/Approval | 15d | 2026-01-21 A | 2026-02-10 | 171 | 50% | 7.5d | 49d | 19d | start no earlier than 2025-10-20 |
| 175 | 2.171 | 107316 - Metal Canopies, Shop Drawings, Review/Approval | 15d | 2026-01-21 A | 2026-02-10 | 172 | 50% | 7.5d | 49d | 19d | start no earlier than 2025-10-20 |
| 176 | 2.172 | 107316 - Metal Canopies, Color Samples, Review/Approval | 15d | 2026-01-19 A | 2026-03-06 | 173 | 50% | 7.5d | 30d | 0d | start no earlier than 2025-10-20 |
| 177 | 2.173 | 107316 - Metal Canopies, Fabrication/Delivery | 60d | 2026-03-10 | 2026-06-01 | 176, 174, 175, 309 |  |  | 30d | 14d |  |
| 178 | 2.174 | 113100 - Office Appliances, Product Data, Submittal | 30d | 2026-01-29 | 2026-03-11 | 2 |  |  | 114d | 0d | start no earlier than 2026-01-28 |
| 179 | 2.175 | 113100 - Office Appliances, Product Data, Review/Approval | 15d | 2026-03-12 | 2026-04-01 | 2, 178 |  |  | 114d | 111d | start no earlier than 2025-10-20 |
| 180 | 2.176 | 142123 - Hydraulic Passenger Elevators, Product Data, Submittal | 3d | 2025-08-18 A | 2025-08-20 A | 2 | 100% |  |  |  |  |
| 181 | 2.177 | 142123 - Hydraulic Elevator, Shop Drawings, Submittal | 3d | 2025-08-18 A | 2025-08-20 A | 2 | 100% |  |  |  |  |
| 182 | 2.178 | 142123 - Hydraulic Elevator, Color Chart/Samples, for approval | 3d | 2025-08-18 A | 2025-08-20 A | 2 | 100% |  |  |  |  |
| 183 | 2.179 | 142123 - Hydraulic Passenger Elevators, Product Data, Review/Approval | 4d | 2025-08-21 A | 2025-08-26 A | 180 | 100% |  |  |  |  |
| 184 | 2.180 | 142123 - Hydraulic Elevator, Shop Drawings, Review/Approval | 4d | 2025-08-21 A | 2025-08-26 A | 181 | 100% |  |  |  |  |
| 185 | 2.181 | 142123 - Hydraulic Elevator, Color Chart/Samples, Review/Approval | 4d | 2025-08-21 A | 2025-08-26 A | 182 | 100% |  |  |  |  |
| 186 | 2.182 | 142123 - Hydraulic Elevators, Fabrication/Delivery | 60d | 2025-08-27 A | 2026-04-22 | 185 |  | 60d | 56d | 31d |  |
| 187 | 2.183 | 211000 - Wet Pipe Fire Protection System, Product Data, Submittals | 2d | 2025-10-30 A | 2025-10-31 A | 2 | 100% |  |  |  | start no earlier than 2025-11-21 |
| 188 | 2.184 | 211000 - Wet Pipe Fire Protection, Sprinkler Shop Drawings, for Approval | 2d | 2025-10-30 A | 2025-10-31 A | 2 | 100% |  |  |  | start no earlier than 2025-11-21 |
| 189 | 2.185 | 211000 - Wet Pipe Fire Protection System, Product Data, Review/Approval | 12d | 2025-11-03 A | 2025-11-18 A | 187 | 100% |  |  |  | start no earlier than 2025-10-20 |
| 190 | 2.186 | 211000 - Wet Pipe Fire Protection, Sprinkler Shop Drawings, Review/Approval | 12d | 2025-11-03 A | 2025-11-18 A | 188 | 100% |  |  |  | start no earlier than 2025-10-20 |
| 191 | 2.187 | 220000 - Plumbing Submittals, Product Data, Submittals | 2d | 2025-09-19 A | 2025-09-22 A | 2 | 100% |  |  |  | start no earlier than 2025-11-21 |
| 192 | 2.188 | 220000 - Plumbing Submittals, Product Data, Review/Approval | 37d | 2025-09-23 A | 2025-11-12 A | 191 | 100% |  |  |  | start no earlier than 2025-10-20 |
| 193 | 2.189 | 221429 - Sump Pumps, Product Data, Submittals | 1d | 2025-09-19 A | 2025-09-19 A | 2 | 100% |  |  |  | start no earlier than 2025-10-20 |
| 194 | 2.190 | 221429 - Sump Pumps, Product Data, Review/Approval | 13d | 2025-09-22 A | 2025-10-08 A | 193 | 100% |  |  |  | start no earlier than 2025-10-20 |
| 195 | 2.191 | 223300 - Electric Domestic Water Heaters, Product Data/Shop Drawing, Submittal | 1d | 2025-09-19 A | 2025-09-19 A | 2 | 100% |  |  |  | start no earlier than 2025-10-20 |
| 196 | 2.192 | 223300 - Electric Domestic Water Heaters, Product Data/Shop Drawing, Review/Approval | 13d | 2025-09-22 A | 2025-10-08 A | 195 | 100% |  |  |  | start no earlier than 2025-10-20 |
| 197 | 2.193 | 224000 - Public Plumbing Fixtures, Product Data, Submittal | 1d | 2025-09-19 A | 2025-09-19 A | 2 | 100% |  |  |  | start no earlier than 2025-10-20 |
| 198 | 2.194 | 224000 - Public Plumbing Fixtures, Product Data, Review/Approval | 12.5d | 2025-09-22 A | 2025-11-12 A | 197 | 100% |  |  |  | start no earlier than 2025-10-20 |
| 199 | 2.195 | 224700 - Drinking Fountain and Water Coolers, Product Data, Submittal | 2d | 2025-09-19 A | 2025-09-22 A | 2 | 100% |  |  |  | start no earlier than 2025-11-21 |
| 200 | 2.196 | 224700 - Drinking Fountain and Water Coolers, Product Data, Review/Approval | 37d | 2025-09-23 A | 2025-11-12 A | 199 | 100% |  |  |  | start no earlier than 2025-10-20 |
| 201 | 2.197 | 230553 - ID for HVAC Piping & Equipment, Product Data, Submittals | 20d | 2026-01-29 | 2026-02-25 | 2 |  |  | 126d | 0d | start no earlier than 2026-01-28 |
| 202 | 2.198 | 230553 - ID for HVAC Piping & Equipment, Product Data, Review/Approve | 15d | 2026-02-26 | 2026-03-18 | 201 |  |  | 126d |  | start no earlier than 2026-01-28 |
| 203 | 2.199 | 230593 - Testing and Balancing, Qualifications Data for TAB Firm | 20d | 2026-01-29 | 2026-02-25 | 2 |  |  | 21d | 0d | start no earlier than 2026-01-28 |
| 204 | 2.200 | 230593 - Testing and Balancing, TAB agenda | 20d | 2026-01-29 | 2026-02-25 | 2 |  |  | 21d | 0d | start no earlier than 2026-01-28 |
| 205 | 2.201 | 230593 - Testing and Balancing, Qualifications Data, Review/Approval | 20d | 2026-02-26 | 2026-03-25 | 2, 203 |  |  | 21d | 3d | start no earlier than 2026-01-28 |
| 206 | 2.202 | 230593 - Testing and Balancing, TAB agenda, Review/Approval | 20d | 2026-02-26 | 2026-03-25 | 2, 204 |  |  | 21d | 3d | start no earlier than 2026-01-28 |
| 207 | 2.203 | 230593 - Testing and Balancing, Final TAB Report | 10d | 2026-09-11 | 2026-09-24 | 410 |  |  | 308d | 10d |  |
| 208 | 2.204 | 230713 - Duct Insulation, Product Data, Submittals | 15d | 2026-01-29 | 2026-02-18 | 2 |  |  | 31d | 0d | start no earlier than 2026-01-28 |
| 209 | 2.205 | 230713 - Duct Insulation, Product Data, Review/Approval | 15d | 2026-02-19 | 2026-03-11 | 208 |  |  | 31d | 13d | start no earlier than 2026-01-28 |
| 210 | 2.206 | 230719 - HVAC Piping Insulation, Product Data, Submittals | 15d | 2026-01-29 | 2026-02-18 | 2 |  |  | 31d | 0d | start no earlier than 2026-01-28 |

| ID | WBS | Task | Type | Duration | Start | Finish | Predecessors | Complete | Remaining | Total slack | Free slack | Constraint |
| --- | --- | --- | --- | --- | --- | --- | --- | --- | --- | --- | --- | --- |
| 211 | 2.207 | 230719 - HVAC Piping Insulation, Product Data, Review/Approval |  | 15d | 2026-02-19 | 2026-03-11 | 210 |  |  | 31d | 13d | start no earlier than 2026-01-28 |
| 212 | 2.208 | 232300 - Refrigerant Piping, Product Data, Submittals |  | 15d | 2026-01-29 | 2026-02-18 | 2 |  |  | 31d | 0d | start no earlier than 2026-01-28 |
| 213 | 2.209 | 232300 - Refrigerant Piping, Shop Drawings, Submittals |  | 15d | 2026-01-29 | 2026-02-18 | 2 |  |  | 31d | 0d | start no earlier than 2026-01-28 |
| 214 | 2.210 | 232300 - Refrigerant Piping, Product Data, Review/Approvals |  | 15d | 2026-02-19 | 2026-03-11 | 212 |  |  | 31d | 13d | start no earlier than 2026-01-28 |
| 215 | 2.211 | 232300 - Refrigerant Piping, Shop Drawings, Review/Approvals |  | 15d | 2026-02-19 | 2026-03-11 | 213 |  |  | 31d | 13d | start no earlier than 2026-01-28 |
| 216 | 2.212 | 233113 - Metal Ducts, Shop Drawings, Submittal |  | 15d | 2026-01-29 | 2026-02-18 | 2 |  |  | 31d | 0d | start no earlier than 2026-01-28 |
| 217 | 2.213 | 233113 - Metal Ducts, Shop Drawings, Review/Approval |  | 15d | 2026-02-19 | 2026-03-11 | 216 |  |  | 31d | 13d | start no earlier than 2026-01-28 |
| 218 | 2.214 | 233300 - Air Duct Accessories, Product Data, Submittals |  | 2d | 2025-10-20 A | 2025-10-21 A | 2 | 100% |  |  |  | start no earlier than 2025-12-19 |
| 219 | 2.215 | 233300 - Air Duct Accessories, Product Data, Review/Approval |  | 13d | 2025-10-22 A | 2025-11-07 A | 218 | 100% |  |  |  | start no earlier than 2025-12-19 |
| 220 | 2.216 | 233713 - Diffusers, Registers and Grilles, Product Data, Submittals |  | 2d | 2025-12-11 A | 2025-12-12 A | 2 | 100% |  |  |  | start no earlier than 2025-12-19 |
| 221 | 2.217 | 233713 - Diffusers, Registers and Grilles, Product Data, Review/Approval |  | 32d | 2025-12-15 A | 2026-02-19 | 220 | 50% | 16d | 45d | 31d | start no earlier than 2025-12-19 |
| 222 | 2.218 | 238126 - Split System Air-Conditioners, Product Data, Submittals |  | 2d | 2025-12-11 A | 2025-12-12 A | 2 | 100% |  |  |  | start no earlier than 2025-12-19 |
| 223 | 2.219 | 238126 - Split System Air-Conditioners, Shop Drawings, Submittal |  | 15d | 2026-01-29 | 2026-02-18 | 2 |  |  | 31d | 0d | start no earlier than 2026-01-28 |
| 224 | 2.220 | 238126 - Split System Air-Conditioners, Product Data, Review/Approval |  | 32d | 2025-12-15 A | 2026-01-27 A | 222 | 100% |  |  |  | start no earlier than 2025-12-19 |
| 225 | 2.221 | 238126 - Split System Air-Conditioners, Shop Drawings, Review/Approval |  | 15d | 2026-02-19 | 2026-03-11 | 223 |  |  | 31d | 13d | start no earlier than 2026-01-28 |
| 226 | 2.222 | 238136 - VRF System, Product Data, Submittals |  | 2d | 2025-12-11 A | 2025-12-12 A | 2 | 100% |  |  |  | start no earlier than 2025-12-19 |
| 227 | 2.223 | 238136 - VRF System, Shop Drawing, Review/Approval |  | 32d | 2025-12-15 A | 2026-01-27 A | 226 | 100% |  |  |  | start no earlier than 2025-12-19 |
| 228 | 2.224 | 238239 - Decentralized HVAC Equipment, Product Data, Submittal |  | 2d | 2025-12-11 A | 2025-12-12 A | 2 | 100% |  |  |  | start no earlier than 2025-12-19 |
| 229 | 2.225 | 238239 - Decentralized HVAC Equipment, Product Data, Review/Approval |  | 32d | 2025-12-15 A | 2026-02-19 | 228 | 50% | 16d | 45d | 31d | start no earlier than 2025-12-19 |
| 230 | 2.226 | 260526 - Grounding and Bonding for Electrical, Product Data, Review/Approval |  | 17d | 2025-10-28 A | 2025-11-19 A |  | 100% |  |  |  | start no earlier than 2025-12-19 |
| 231 | 2.227 | 260553 - ID for Electrical Systems, Product Data/ID Schedule, Submittal |  | 20d | 2026-01-29 | 2026-02-25 | 2 |  |  | 126d | 0d | start no earlier than 2026-01-28 |
| 232 | 2.228 | 260553 - ID for Electrical Systems, Product Data/ID Schedule, Review/Approval |  | 15d | 2026-02-26 | 2026-03-18 | 231 |  |  | 126d |  | start no earlier than 2026-01-28 |
| 233 | 2.229 | 260923 - Lighting Control Devices, Product Data, Submital |  | 1d | 2025-09-19 A | 2025-09-19 A | 2 | 100% |  |  |  | start no earlier than 2025-10-20 |
| 234 | 2.230 | 260923 - Lighting Control Devices, Product Data, Review/Approval |  | 15d | 2025-09-22 A | 2025-10-10 A | 233 | 100% |  |  |  | start no earlier than 2025-10-20 |
| 235 | 2.231 | 260923 - Lighting Control Devices, Shop Drawings, Submital |  | 1d | 2025-09-19 A | 2025-09-19 A | 2 | 100% |  |  |  | start no earlier than 2025-12-19 |
| 236 | 2.232 | 260923 - Lighting Control Devices, Shop Drawings, Review/Approval |  | 15d | 2025-09-22 A | 2025-10-10 A | 235 | 100% |  |  |  | start no earlier than 2025-12-19 |
| 237 | 2.233 | 262200 - Low Voltage Transformers, Product Data, Submital |  | 3d | 2025-10-23 A | 2025-10-27 A | 2 | 100% |  |  |  | start no earlier than 2025-12-19 |
| 238 | 2.234 | 262200 - Low Voltage Transformers, Product Data, Review/Approval |  | 17d | 2025-10-28 A | 2025-11-19 A | 237 | 100% |  |  |  | start no earlier than 2025-12-19 |
| 239 | 2.235 | 262200 - Low Voltage Transformers, Shop Drawings, Submital |  | 3d | 2025-10-23 A | 2025-10-27 A | 2 | 100% |  |  |  | start no earlier than 2025-12-19 |
| 240 | 2.236 | 262200 - Low Voltage Transformers, Shop Drawings, Review/Approval |  | 17d | 2025-10-28 A | 2025-11-19 A | 239 | 100% |  |  |  | start no earlier than 2025-12-19 |
| 241 | 2.237 | 262416 - Panelboards, Product Data, Submittal |  | 1d | 2025-09-19 A | 2025-09-19 A | 2 | 100% |  |  |  | start no earlier than 2025-10-20 |
| 242 | 2.238 | 262416 - Panelboard, Product Data, Review/Approval |  | 14d | 2025-09-22 A | 2025-10-09 A | 241 | 100% |  |  |  | start no earlier than 2025-10-20 |
| 243 | 2.239 | 262416 - Panelboard, Shop Drawings/Schedules, Submittal |  | 2d | 2025-10-24 A | 2025-10-27 A | 2 | 100% |  |  |  | start no earlier than 2025-11-21 |
| 244 | 2.240 | 262416 - Panelboard, Shop Drawings/Schedules, Review/Approal |  | 17d | 2025-10-28 A | 2025-11-19 A | 243 | 100% |  |  |  | start no earlier than 2025-11-10 |
| 245 | 2.241 | 262416 - Panelboard, Release for Fabrication |  | 1d | 2025-11-20 A | 2025-11-20 A | 242, 244 | 100% |  |  |  | start no earlier than 2025-12-19 |
| 246 | 2.242 | 262816 - Enclosed Switches & Circuit Breakers, Product Data, Submittal |  | 2d | 2025-10-24 A | 2025-10-27 A | 2 | 100% |  |  |  | start no earlier than 2025-12-19 |
| 247 | 2.243 | 262816 - Enclosed Switches & Circuit Breakers, Product Data, Review/Approval |  | 17d | 2025-10-28 A | 2025-11-19 A | 246 | 100% |  |  |  | start no earlier than 2025-12-19 |
| 248 | 2.244 | 265100 - LED Interior Lighting, Product Data, Submittal |  | 1d | 2025-09-19 A | 2025-09-19 A | 2 | 100% |  |  |  | start no earlier than 2025-10-20 |
| 249 | 2.245 | 265100 - LED Interior Lighting, Product Data, Review/Approval | milestone | 0d | 2025-09-22 A | 2025-11-07 A | 248 | 100% |  |  |  | start no earlier than 2025-10-20 |
| 250 | 2.246 | 265100 - LED Interior Lighting, Fabrication/Delivery |  | 55d | 2025-11-10 A | 2026-01-23 A | 249 | 100% |  |  |  | start no earlier than 2026-01-28 |
| 251 | 2.247 | 265600 - Exterior Lighting, Product Data, Submittal |  | 1d | 2025-09-19 A | 2025-09-19 A | 2 | 100% |  |  |  | start no earlier than 2025-10-20 |
| 252 | 2.248 | 265600 - Exterior Lighting, Product Data, Review/Approval | milestone | 0d | 2025-09-22 A | 2025-11-07 A | 251 | 100% |  |  |  | start no earlier than 2025-10-20 |
| 253 | 2.249 | 265600 - Exterior Lighting, Fabrication/Delivery |  | 80d | 2025-11-10 A | 2026-05-20 | 252 |  | 80d | 47d | 39d | start no earlier than 2026-01-28 |
| 254 | 2.250 | 275123 - Intercommunications & PA Systems, Shop Drawings/Product Data, Submittal |  | 20d | 2026-01-29 | 2026-02-25 | 2 |  |  | 43d | 0d | start no earlier than 2026-01-28 |
| 255 | 2.251 | 275123 - Intercommunications & PA Systems, Shop Drawings/Product Data, Review/Approval |  | 15d | 2026-02-26 | 2026-03-18 | 254 |  |  | 43d | 25d | start no earlier than 2026-01-28 |
| 256 | 2.252 | 281300 - Access Control System, Shop Drawings, Submittal |  | 20d | 2026-01-29 | 2026-02-25 | 2 |  |  | 43d | 0d | start no earlier than 2026-01-28 |
| 257 | 2.253 | 281300 - Access Control System, Shop Drawings, Review/Approval |  | 15d | 2026-02-26 | 2026-03-18 | 256 |  |  | 43d | 25d | start no earlier than 2026-01-28 |
| 258 | 2.254 | 282300 - Video Surveillance, Product Data, Submittal |  | 20d | 2026-01-29 | 2026-02-25 | 2 |  |  | 43d | 0d | start no earlier than 2026-01-28 |
| 259 | 2.255 | 282300 - Video Surveillance, Product Data, Review/Approval |  | 15d | 2026-02-26 | 2026-03-18 | 258 |  |  | 43d | 25d | start no earlier than 2026-01-28 |
| 260 | 2.256 | 282300 - Video Surveillance, Shop Drawings, Submittal |  | 20d | 2026-01-29 | 2026-02-25 | 2 |  |  | 43d | 0d | start no earlier than 2026-01-28 |
| 261 | 2.257 | 282300 - Video Surveillance, Shop Drawings, Review/Approval |  | 15d | 2026-02-26 | 2026-03-18 | 260 |  |  | 43d | 25d | start no earlier than 2026-01-28 |
| 262 | 2.258 | 283111 - Digital, Addressable Fire Alarm System, Product Data, Submittal to AHJ |  | 10d | 2025-12-08 A | 2025-12-19 A | 2 | 100% |  |  |  |  |
| 263 | 2.259 | 283111 - Digital, Addressable Fire Alarm System, Product Data, Review/Approval by AHJ |  | 15d | 2025-12-22 A | 2026-02-18 | 262 |  | 15d | 48d | 0d | start no earlier than 2026-01-28 |
| 264 | 2.260 | 283111 - Digital, Addressable Fire Alarm System, Shop Drawings, Submittal to AHJ |  | 10d | 2025-12-08 A | 2025-12-19 A | 2 | 100% |  |  |  | start no earlier than 2026-01-28 |
| 265 | 2.261 | 283111 - Digital, Addressable Fire Alarm System, Shop Drawings, AHJ Review/Approval |  | 15d | 2025-12-22 A | 2026-02-18 | 264 |  | 15d | 48d | 0d | start no earlier than 2026-01-28 |
| 266 | 2.262 | 283111 - Digital, Addressable Fire Alarm System, Product Data, to EOR |  | 15d | 2026-02-19 | 2026-03-11 | 263, 265 |  |  | 48d | 30d |  |
| 267 | 2.263 | 283111 - Digital, Addressable Fire Alarm System, Shop Drawings, to EOR Review/Approval |  | 15d | 2026-02-19 | 2026-03-11 | 265 |  |  | 48d | 30d |  |
| 268 | 2.264 | 321216 - Asphalt Paving, Design Mix, Submittal |  | 10d | 2026-01-29 | 2026-02-11 | 2 |  |  | 129d | 0d | start no earlier than 2026-01-28 |
| 269 | 2.265 | 321216 - Asphalt Paving, Design Mix, Review/Approval |  | 15d | 2026-02-12 | 2026-03-04 | 268 |  |  | 129d | 123d | start no earlier than 2026-01-28 |
| 270 | 2.266 | 321313 - Concrete Paving, Design Mixes, Submittal |  | 15d | 2026-01-29 | 2026-02-18 | 2 |  |  | 124d | 0d | start no earlier than 2026-01-28 |
| 271 | 2.267 | 321313 - Concrete Paving, Design Mixes, Review/Approval |  | 15d | 2026-02-19 | 2026-03-11 | 270 |  |  | 124d | 118d | start no earlier than 2026-01-28 |
| 272 | 2.268 | 321313 - Concrete Paving, Product Data, Submittals |  | 15d | 2026-01-29 | 2026-02-18 | 2 |  |  | 124d | 0d | start no earlier than 2026-01-28 |
| 273 | 2.269 | 321313 - Concrete Paving, Product Data, Review/Approval |  | 15d | 2026-02-19 | 2026-03-11 | 272 |  |  | 124d | 118d | start no earlier than 2026-01-28 |
| 274 | 2.270 | 321713 - Parking Bumpers and Bollards, Product Data, Submittal |  | 25d | 2026-01-29 | 2026-03-04 | 2FS+10d |  |  | 114d | 0d | start no earlier than 2026-01-28 |
| 275 | 2.271 | 321713 - Parking Bumpers and Bollards, Product Data, Review/Approval |  | 15d | 2026-03-05 | 2026-03-25 | 274 |  |  | 114d | 108d | start no earlier than 2026-01-28 |
| 276 | 2.272 | 321723 - Pavement Markings, Product Data, Submittal |  | 25d | 2026-01-29 | 2026-03-04 | 2FS+10d |  |  | 114d | 0d | start no earlier than 2026-01-28 |
| 277 | 2.273 | 321723 - Pavement Markings, Product Data, Review/Approval |  | 15d | 2026-03-05 | 2026-03-25 | 276 |  |  | 114d | 108d | start no earlier than 2026-01-28 |
| 278 | 2.274 | 321726 - Tactile Warning Surfacing, Product Data, Submittal |  | 25d | 2026-01-29 | 2026-03-04 | 2FS+10d |  |  | 87d | 0d | start no earlier than 2026-01-28 |
| 279 | 2.275 | 321726 - Tactile Warning Surfacing, Product Data, Review/Approval |  | 15d | 2026-03-05 | 2026-03-25 | 278 |  |  | 87d | 79d | start no earlier than 2026-01-28 |
| 280 | 2.276 | 321726 - Tactile Warning Surfacing, Color Sample Chart, Submittal |  | 25d | 2026-01-29 | 2026-03-04 | 2FS+10d |  |  | 87d | 0d | start no earlier than 2026-01-28 |

| ID | WBS | Task | Type | Duration | Start | Finish | Predecessors | Complete | Remaining | Total slack | Free slack | Constraint |
| --- | --- | --- | --- | --- | --- | --- | --- | --- | --- | --- | --- | --- |
| 281 | 2.277 | 321726 - Tactile Warning Surfacing, Color Sample Chart, Review/Approval |  | 15d | 2026-03-05 | 2026-03-25 | 280 |  |  | 87d | 79d | start no earlier than 2026-01-28 |
| 282 | 2.278 | 323113 - Chain Link Fence, Product Data, Submittal |  | 25d | 2026-01-29 | 2026-03-04 | 2FS+15d |  |  | 110d | 0d | start no earlier than 2026-01-28 |
| 283 | 2.279 | 323113 - Chain Link Fence, Product Data, Review/Approval |  | 15d | 2026-03-05 | 2026-03-25 | 282 |  |  | 110d | 0d | start no earlier than 2026-01-28 |
| 284 | 2.280 | 323113 - Chain Link Fence, Shop Drawings, Submittal |  | 25d | 2026-01-29 | 2026-03-04 | 2FS+15d |  |  | 110d | 0d | start no earlier than 2026-01-28 |
| 285 | 2.281 | 323113 - Chain Link Fence, Shop Drawings, Review/Approval |  | 15d | 2026-03-05 | 2026-03-25 | 284 |  |  | 110d | 0d | start no earlier than 2026-01-28 |
| 286 | 2.282 | 323113 - Chain Link Fence, Samples, Submittal |  | 25d | 2026-01-29 | 2026-03-04 | 2FS+15d |  |  | 110d | 0d | start no earlier than 2026-01-28 |
| 287 | 2.283 | 323113 - Chain Link Fence, Samples, Review/Approval |  | 15d | 2026-03-05 | 2026-03-25 | 286 |  |  | 110d | 0d | start no earlier than 2026-01-28 |
| 288 | 2.284 | 323114 - Security Wire Mesh Fences/Gates, Product Data, Submittals |  | 25d | 2026-01-29 | 2026-03-04 | 2 |  |  | 110d | 0d | start no earlier than 2026-01-28 |
| 289 | 2.285 | 323114 - Security Wire Mesh Fences/Gates, Product Data, Review/Approval |  | 15d | 2026-03-05 | 2026-03-25 | 288 |  |  | 110d | 0d | start no earlier than 2026-01-28 |
| 290 | 2.286 | 323114 - Security Wire Mesh Fences/Gates, Shop Drawings, Submittals |  | 25d | 2026-01-29 | 2026-03-04 | 2 |  |  | 110d | 0d | start no earlier than 2026-01-28 |
| 291 | 2.287 | 323114 - Security Wire Mesh Fences/Gates, Shop Drawings, Review/Approval |  | 15d | 2026-03-05 | 2026-03-25 | 290 |  |  | 110d | 0d | start no earlier than 2026-01-28 |
| 292 | 2.288 | 323119 - Decorative Metal Fences & Gates, Product Data, Submittal |  | 3d | 2025-10-13 A | 2025-10-15 A | 2 | 100% |  |  |  | start no earlier than 2025-11-21 |
| 293 | 2.289 | 323119 - Decorative Metal Fences & Gates, Product Data, Review/Approval |  | 15d | 2025-10-15 A | 2026-02-18 | 292 |  | 15d | 135d | 0d | start no earlier than 2025-10-20 |
| 294 | 2.290 | 323119 - Decorative Metal Fences & Gates, Shop Drawings, Submittal |  | 1d | 2025-10-13 A | 2025-10-13 A | 2 | 100% |  |  |  | start no earlier than 2025-10-20 |
| 295 | 2.291 | 323119 - Decorative Metal Fences & Gates, Shop Drawings, Review/Approval |  | 15d | 2025-10-15 A | 2026-02-18 | 294 |  | 15d | 135d | 0d | start no earlier than 2025-10-20 |
| 296 | 2.292 | 328400 - Planting Irrigation, Product Data/Shop Drawings, Submittal |  | 25d | 2026-01-29 | 2026-03-04 | 2 |  |  | 94d | 0d | start no earlier than 2026-01-28 |
| 297 | 2.293 | 328400 - Planting Irrigation, Product Data/Shop Drawings, Review/Approval |  | 15d | 2026-03-05 | 2026-03-25 | 296 |  |  | 94d | 88d | start no earlier than 2026-01-28 |
| 298 | 2.294 | 329200 - Turf and Grasses, Product Data, Submittal |  | 25d | 2026-01-29 | 2026-03-04 | 2 |  |  | 94d | 0d | start no earlier than 2026-01-28 |
| 299 | 2.295 | 329200 - Turf and Grasses, Product Data, Review/Approval |  | 15d | 2026-03-05 | 2026-03-25 | 298 |  |  | 94d | 88d | start no earlier than 2026-01-28 |
| 300 | 2.296 | 329300 - Plants, Product Data, Submittal |  | 25d | 2026-01-29 | 2026-03-04 | 2 |  |  | 94d | 0d | start no earlier than 2026-01-28 |
| 301 | 2.297 | 329300 - Plants, Product Data, Review/Approval |  | 15d | 2026-03-05 | 2026-03-25 | 300 |  |  | 94d | 88d | start no earlier than 2026-01-28 |
| 302 | 3 | **Pre-Installation Meetings** |  | 134d | 2025-09-23 A | 2026-03-27 |  | 8% | 122.83d | 155d |  |  |
| 303 | 3.1 | Preinstallation Meeting for CIP Concrete | milestone | 0d | 2025-09-23 A | 2025-10-23 A | 10, 6, 14, 13, 12, 11 | 100% |  |  |  | start no earlier than 2025-10-20 |
| 304 | 3.2 | Preinstallation Meeting, Cold Formed Metal Framing |  | 1d | 2025-12-16 A | 2025-12-16 A | 26, 28 | 100% |  |  |  | start no earlier than 2025-11-21 |
| 305 | 3.3 | Preinstallation Meeting, Bituminous and Self-Adhering Waterproofing | milestone | 0d | 2025-09-23 A | 2025-09-23 A | 54, 60, 58, 56, 81, 82 | 100% |  |  |  |  |
| 306 | 3.4 | Preinstallation Meeting, Cold Fluid Applied Waterproofing |  | 1d | 2026-03-19 | 2026-03-19 | 63, 64 |  |  | 54d | 46d |  |
| 307 | 3.5 | Preinstallation Meeting, Hollow Metal Doors and Frames |  | 1d | 2026-02-19 | 2026-02-19 | 118, 119, 134 |  |  | 464d |  | start no earlier than 2026-01-28 |
| 308 | 3.6 | Preinstallation Meeting, Aluminum Frames and Storefronts |  | 1d | 2026-03-19 | 2026-03-19 | 125, 126, 127 |  |  | 15d | 0d |  |
| 309 | 3.7 | Preinstallation Meeting, Metal Canopies |  | 1d | 2026-03-09 | 2026-03-09 | 176 |  |  | 30d | 0d |  |
| 310 | 3.8 | Preinstallation Meeting, Hydraulic Passenger Elevator |  | 1d | 2026-01-29 | 2026-01-29 | 183, 184, 185 |  |  | 53d | 29d | start no earlier than 2026-01-28 |
| 311 | 3.9 | Preinstallation Meeting, Fencing |  | 1d | 2026-03-26 | 2026-03-26 | 283, 285, 287 |  |  | 110d | 86d |  |
| 312 | 3.10 | Preinstallation Meeting, Security Wire Mesh Fence and Gates |  | 1d | 2026-03-26 | 2026-03-26 | 291, 289 |  |  | 110d | 86d |  |
| 313 | 3.11 | Preinstallation Meeting, Decorative Metal Fences and Gates |  | 1d | 2026-02-19 | 2026-02-19 | 295, 293 |  |  | 135d | 0d | start no earlier than 2026-01-28 |
| 314 | 3.12 | Preinstallation Meeting, TPO Roofing/Sheet Metal Flashing & Trim |  | 1d | 2026-03-26 | 2026-03-26 | 85, 86, 88, 95, 96, 97, 100, 101 |  |  | 47d | 0d |  |
| 315 | 3.13 | Preinstallation Meeting, Stucco System |  | 1d | 2026-03-27 | 2026-03-27 | 71, 72, 73, 74, 314 |  |  | 48d | 40d |  |
| 316 | 3.14 | Preinstallation Meeting, Architectural Concrete Sealing & Polishing |  | 1d | 2026-02-20 | 2026-02-20 | 17, 18, 313 |  |  | 144d |  |  |

| ID | WBS | Task | Type | Duration | Start | Finish | Predecessors | Complete | Remaining | Total slack | Free slack | Constraint |
| --- | --- | --- | --- | --- | --- | --- | --- | --- | --- | --- | --- | --- |
| 317 | 4 | **Sitework** |  | 145d | 2025-07-24 A | 2026-02-11 |  | 53% | 68.88d | 154d |  |  |
| 318 | 4.1 | Complete Erosion Control Install |  | 4d | 2025-07-24 A | 2025-09-08 A | 1, 2 | 100% |  |  |  | start no earlier than 2025-10-20 |
| 319 | 4.2 | Silt Fence Inspection |  | 1d | 2025-09-09 A | 2025-09-09 A | 318 | 100% |  |  |  | start no earlier than 2025-10-20 |
| 320 | 4.3 | Clear and Grub | milestone | 0d | 2025-09-03 A | 2025-09-18 A | 319 | 100% |  |  |  | finish no earlier than 2025-09-22 |
| 321 | 4.4 | Install Temporary Fencing |  | 1d | 2025-10-03 A | 2025-10-03 A | 319, 320 | 100% |  |  |  | start no earlier than 2025-10-20 |
| 322 | 4.5 | Mass Grade Site |  | 14d | 2025-09-16 A | 2025-10-08 A | 320 | 100% |  |  |  | start no earlier than 2025-10-20 |
| 323 | 4.6 | Construct Retention Pond |  | 3d | 2025-10-10 A | 2026-02-02 | 322FS-5d |  | 3d | 122d | 114d |  |
| 324 | 4.7 | Storm Sewer |  | 6d | 2025-11-14 A | 2026-02-05 | 322 |  | 6d | 158d | 0d |  |
| 325 | 4.8 | Sanitary Sewer, Fire Line and domestic water |  | 10d | 2025-11-14 A | 2026-02-11 | 324SS, 322 |  | 10d | 115d | 107d |  |
| 326 | 4.9 | Grade for building pad |  | 1d | 2025-10-01 A | 2025-10-08 A | 322FS-1d | 100% |  |  |  |  |
| 327 | 5 | **Building Pad Construction** |  | 43d | 2025-10-09 A | 2025-12-08 A |  | 100% |  |  |  |  |
| 328 | 5.1 | Survey and Form Perimeter Walls of Building |  | 10d | 2025-10-09 A | 2025-10-22 A | 326 | 100% |  |  |  |  |
| 329 | 5.2 | Concrete Footings for Columns |  | 10d | 2025-10-28 A | 2025-12-05 A | 328FS-1d, 303, 6 | 100% |  |  |  |  |
| 330 | 5.3 | Excavation for Elevator Pits | milestone | 0d | 2025-10-28 A | 2025-11-07 A | 329SS+1d, 328, 321 | 100% |  |  |  |  |
| 331 | 5.4 | Waterproofing of Below Elevator Pit Floors |  | 3d | 2025-11-06 A | 2025-11-10 A | 330 | 100% |  |  |  |  |
| 332 | 5.5 | Construct Concrete Elevator Pit Floors and Sump Pits | milestone | 0d | 2025-11-06 A | 2025-11-07 A | 328SS+3d, 305, 331 | 100% |  |  |  |  |
| 333 | 5.6 | Form and Pour Elevator Pit Walls |  | 2d | 2025-11-06 A | 2025-11-07 A | 332FS-2d | 100% |  |  |  |  |
| 334 | 5.7 | Underslab Plumbing Rough | milestone | 0d | 2025-11-11 A | 2025-11-21 A | 329SS | 100% |  |  |  | start no earlier than 2025-11-21 |
| 335 | 5.8 | Fine Grade SOG-Place Stone | milestone | 0d | 2025-11-20 A | 2025-11-24 A | 334FS-2d, 336, 332, 333 | 100% |  |  |  |  |
| 336 | 5.9 | Underslab Electrical Rough | milestone | 0d | 2025-10-30 A | 2025-12-05 A | 329 | 100% |  |  |  |  |
| 337 | 5.10 | Vapor Barrier/Rebar for Slab on Grade |  | 9d | 2025-11-11 A | 2025-12-05 A | 335 | 100% |  |  |  |  |
| 338 | 5.11 | Pour First Half of Slab on Grade | milestone | 0d | 2025-11-22 A | 2025-11-22 A | 337 | 100% |  |  |  |  |
| 339 | 5.12 | Pour Second Half of Slab on Grade | milestone | 0d | 2025-12-06 A | 2025-12-06 A | 338 | 100% |  |  |  | must start on 2025-12-06 |
| 340 | 5.13 | Backfill Around Slab on Grade |  | 1d | 2025-12-08 A | 2025-12-08 A | 338, 339FS-2d | 100% |  |  |  |  |

| ID | WBS | Task | Type | Duration | Start | Finish | Predecessors | Complete | Remaining | Total slack | Free slack | Constraint |
| --- | --- | --- | --- | --- | --- | --- | --- | --- | --- | --- | --- | --- |
| 341 | 6 | **Building Construction** |  | 172d | 2025-12-10 A | 2026-08-06 | 339 | 1% | 170.78d | 20d |  |  |
| 342 | 6.1 | Hollow metal frames to job site for CMU | milestone | 0d | 2025-12-10 A | 2025-12-10 A | 307, 140, 139, 338SS | 100% |  |  |  |  |
| 343 | 6.2 | Construct First Lift of Elevators/Stair Tower CMU | milestone | 0d | 2025-12-11 A | 2026-01-09 A | 338 | 100% |  |  |  |  |
| 344 | 6.3 | Construct Exterior CMU Walls - SOG to 2nd Floor |  | 10d | 2025-12-11 A | 2026-02-11 | 338, 20, 22, 343SS, 340 |  | 10d | 0d |  |  |
| 345 | 6.4 | Install Hollow Metal Frames in CMU - 1st Floor |  | 1d | 2025-12-10 A | 2025-12-10 A | 343SS | 100% |  |  |  |  |
| 346 | 6.5 | Grout First Lift of CMU at Elevators/Stair Towers |  | 1d | 2025-12-31 A | 2025-12-31 A | 345 | 100% |  |  |  | start no earlier than 2026-01-28 |
| 347 | 6.6 | Construct Second Lift of Elevators/Stair Tower CMU |  | 8d | 2026-01-15 A | 2026-02-09 | 346 |  | 8d | 5d | 0d |  |
| 348 | 6.7 | Install Hollow Metal Frames in Stair Towers - 2nd Floor |  | 1d | 2026-01-29 | 2026-01-29 | 347SS |  |  | 50d | 0d | start no earlier than 2026-01-28 |
| 349 | 6.8 | Grout Second Lift of CMU at Elevators/Stair Towers |  | 2d | 2026-01-30 | 2026-02-02 | 348 |  |  | 50d | 0d | start no earlier than 2026-01-28 |
| 350 | 6.9 | Construct Final Lift of Elevators/Stair Tower CMU |  | 8d | 2026-02-03 | 2026-02-12 | 349 |  |  | 50d | 0d | start no earlier than 2026-01-28 |
| 351 | 6.10 | Install Hollow Metal Frame in Stair Towers - 3rd Floor |  | 1d | 2026-02-03 | 2026-02-03 | 350SS |  |  | 50d | 26d | start no earlier than 2026-01-28 |
| 352 | 6.11 | Grout Final Lift of CMU at Elevators/Stair Towers |  | 2d | 2026-03-12 | 2026-03-13 | 332FS+5d, 338FS+5d, 20, 22, 31, 66, 109, 310, 351 |  |  | 24d | 0d |  |
| 353 | 6.12 | 1st floor structure erection/decking |  | 7d | 2026-01-07 A | 2026-02-20 | 337, 338FS+5d, 344, 24, 28, 304 |  | 7d | 6d | 0d |  |
| 354 | 6.13 | 2nd floor SOD-Prep/wire install/Pour |  | 7d | 2026-01-20 A | 2026-02-09 | 353SS+17d, 342 |  | 7d | 0d |  |  |
| 355 | 6.14 | 2nd floor SOD-Pour Completed | milestone | 0d | 2026-02-09 | 2026-02-09 | 354 |  |  | 10d | 4d |  |
| 356 | 6.15 | Construct Exterior CMU Walls - 2nd to 3rd floor |  | 15d | 2026-01-15 A | 2026-03-09 | 354FS+5d, 347 |  | 15d | 33d | 19d |  |
| 357 | 6.16 | 2nd floor-structure erection |  | 25d | 2026-02-23 | 2026-03-27 | 355FS+5d, 356SS+3d, 353 |  |  | 6d | 0d |  |
| 358 | 6.17 | 3rd floor-SOD prep/wire install/Pour |  | 7d | 2026-03-26 | 2026-04-03 | 357FS-2d, 356SS+5d |  |  | 6d | 0d |  |
| 359 | 6.18 | 3rd floor-SOD Pour Completed | milestone | 0d | 2026-04-03 | 2026-04-03 | 358 |  |  | 6d | 0d |  |
| 360 | 6.19 | Install stairs in stair towers |  | 7d | 2026-03-16 | 2026-03-24 | 337, 352, 338FS+5d, 34, 39 |  |  | 24d | 0d |  |
| 361 | 6.20 | Install Railings |  | 8d | 2026-03-25 | 2026-04-03 | 360, 39 |  |  | 41d | 35d |  |
| 362 | 6.21 | 3rd Floor - Construct CMU walls from 3rd Floor to Roof |  | 15d | 2026-04-13 | 2026-05-01 | 358FS+5d, 359FS+5d |  |  | 6d | 0d |  |
| 363 | 6.22 | 3rd floor structure erection & Roof |  | 25d | 2026-04-20 | 2026-05-22 | 359FS+5d, 362SS+5d, 41, 43, 105, 106, 107, 360 |  |  | 6d | 0d |  |
| 364 | 6.23 | Install TPO Roofing |  | 7d | 2026-05-25 | 2026-06-02 | 363, 362, 41, 43, 314, 361 |  |  | 6d | 0d |  |
| 365 | 6.24 | Roofing Complete - Building Dry-In | milestone | 0d | 2026-06-03 | 2026-06-03 | 364, 369 |  |  | 6d | 0d |  |
| 366 | 6.25 | EIFS/Stucco |  | 35d | 2026-05-25 | 2026-07-10 | 362, 363, 306, 315 |  |  | 8d | 0d |  |
| 367 | 6.26 | Storefront Frames Install |  | 10d | 2026-06-04 | 2026-06-17 | 365, 362, 363, 306, 308, 128 |  |  | 6d | 0d |  |
| 368 | 6.27 | Storefront Glass Installed |  | 10d | 2026-07-02 | 2026-07-15 | 367FS+10d, 143 |  |  | 6d | 0d |  |
| 369 | 6.28 | Stanley Sliding Door Install |  | 1d | 2026-06-03 | 2026-06-03 | 364, 131, 132 |  |  | 6d | 0d |  |
| 370 | 6.29 | Canopies |  | 8d | 2026-06-22 | 2026-07-01 | 366SS+20d, 369, 177 |  |  | 16d | 10d |  |
| 371 | 6.30 | Install Metal Coping/Downspouts/Trim |  | 6d | 2026-07-16 | 2026-07-23 | 364, 366, 370, 368, 146, 147 |  |  | 6d | 0d |  |
| 372 | 6.31 | Exterior Building Caulking |  | 5d | 2026-07-24 | 2026-07-30 | 371, 367, 366, 115, 113 |  |  | 8d | 0d |  |
| 373 | 6.32 | Exterior Building Punchlist |  | 5d | 2026-07-31 | 2026-08-06 | 372, 371, 425 |  |  | 8d | 2d |  |
| 374 | 6.33 | Light gauge office framing |  | 5d | 2026-05-25 | 2026-05-29 | 355, 353, 363 |  |  | 11d | 0d |  |
| 375 | 6.34 | Elevator #1 Install |  | 20d | 2026-06-05 | 2026-07-02 | 393, 365, 186, 194 |  |  | 25d | 0d |  |
| 376 | 6.35 | Elevator #2 install |  | 20d | 2026-07-03 | 2026-07-30 | 375, 186, 194 |  |  | 25d | 14d |  |
| 377 | 6.36 | Building Façade Complete | milestone | 0d | 2026-07-23 | 2026-07-23 | 371, 368 |  |  | 6d | 0d |  |

| ID | WBS | Task | Type | Duration | Start | Finish | Predecessors | Complete | Remaining | Total slack | Free slack | Constraint |
| --- | --- | --- | --- | --- | --- | --- | --- | --- | --- | --- | --- | --- |
| 378 | 7 | **Site Utlities/As-Builts** |  | 223d | 2025-11-17 A | 2026-09-23 |  |  | 223d | 6d |  |  |
| 379 | 7.1 | Electrical Gear Procurement |  | 20d | 2025-11-17 A | 2026-02-25 | 1FS+20d, 245 |  | 20d | 80d | 69d | start no earlier than 2026-01-28 |
| 380 | 7.2 | Install Secondary Power from Building to Transfomer | milestone | 0d | 2025-12-22 A | 2025-12-22 A | 379, 394 | 100% |  |  |  |  |
| 381 | 7.3 | Survey for Transformer Pad |  | 1d | 2026-01-29 | 2026-01-29 | 380 |  |  | 70d | 0d | start no earlier than 2026-01-28 |
| 382 | 7.4 | Grade for Transformer Pad |  | 2d | 2026-01-30 | 2026-02-02 | 381 |  |  | 70d | 0d | start no earlier than 2026-01-28 |
| 383 | 7.5 | Construct or Set Transformer Pad |  | 4d | 2026-02-03 | 2026-02-06 | 382 |  |  | 70d | 0d | start no earlier than 2026-01-28 |
| 384 | 7.6 | Order Transformer from Duke Energy |  | 15d | 2026-02-09 | 2026-02-27 | 1, 383 |  |  | 70d | 0d |  |
| 385 | 7.7 | Set Transformer |  | 2d | 2026-03-02 | 2026-03-03 | 384, 326 |  |  | 70d | 0d |  |
| 386 | 7.8 | Install Primary Power Conduits and Transformer - Duke Energy |  | 10d | 2026-03-04 | 2026-03-17 | 326, 230, 384, 385 |  |  | 70d | 0d | start no earlier than 2026-01-28 |
| 387 | 7.9 | Permanent Power to Building |  | 10d | 2026-03-18 | 2026-03-31 | 380, 385, 386 |  |  | 70d | 45d |  |
| 388 | 7.10 | As-Built Drawings for Sanitary and Storm |  | 12d | 2026-09-08 | 2026-09-23 | 324, 325, 432 |  |  | 6d | 0d | start no earlier than 2026-01-28 |
| 389 | 8 | **Rough-ins and Finishes** |  | 134d | 2026-04-06 | 2026-10-08 | 155, 157 |  |  | 0d |  |  |
| 390 | 8.1 | Office Buildout |  | 40d | 2026-07-02 | 2026-08-26 | 367, 415, 374, 41, 50, 52, 121, 149, 151, 153, 168, 394 |  |  | 0d |  |  |
| 391 | 8.2 | 1st Floor HVAC Rough In |  | 15d | 2026-04-06 | 2026-04-24 | 355, 205, 206, 209, 227, 229, 225, 224, 211, 214, 215, 217, 219, 221, 356, 359 |  |  | 14d | 0d |  |
| 392 | 8.3 | 3rd Floor Electrical/Fire Alarm Rough In |  | 15d | 2026-06-25 | 2026-07-15 | 364, 423SS+5d, 422SS+8d, 266, 267 |  |  | 7d | 0d |  |
| 393 | 8.4 | Power to elevator machine rooms |  | 2d | 2026-06-03 | 2026-06-04 | 364, 387 |  |  | 25d | 0d |  |
| 394 | 8.5 | Install Gear in Electrical Room |  | 10d | 2026-06-03 | 2026-06-16 | 417, 364, 379, 247 |  |  | 11d |  |  |
| 395 | 8.6 | 3rd Floor HVAC Trim/Line Sets |  | 10d | 2026-06-25 | 2026-07-08 | 422, 423 |  |  | 12d | 0d |  |
| 396 | 8.7 | Install Aluminum Wainscot at Elevator Lobbies |  | 5d | 2026-08-13 | 2026-08-19 | 36, 424, 420, 409, 411 |  |  | 9d | 0d |  |
| 397 | 8.8 | 1st Floor HVAC Trim/Line Set |  | 10d | 2026-05-20 | 2026-06-02 | 391, 416, 417 |  |  | 14d | 3d |  |
| 398 | 8.9 | 1st Floor Electrical Trim/FA/Hang Lights |  | 7d | 2026-07-06 | 2026-07-14 | 424, 250, 417 |  |  | 24d | 13d |  |
| 399 | 8.10 | 2nd Floor HVAC Rough In |  | 15d | 2026-05-25 | 2026-06-12 | 359, 209, 224, 225, 227, 229, 211, 214, 215, 217, 219, 221, 363 |  |  | 11d | 0d |  |
| 400 | 8.11 | 2nd Floor HVAC Trim/Line Sets |  | 10d | 2026-06-17 | 2026-06-30 | 399, 418 |  |  | 14d | 3d |  |
| 401 | 8.12 | 3rd Floor Electrical Trim/FA/Hang Lights |  | 7d | 2026-08-13 | 2026-08-21 | 409, 395 |  |  | 7d | 0d |  |
| 402 | 8.13 | Initial BDA System Requirement Testing |  | 1d | 2026-08-13 | 2026-08-13 | 409 |  |  | 19d | 0d |  |
| 403 | 8.14 | Install BDA System |  | 10d | 2026-08-28 | 2026-09-10 | 402FS+10d |  |  | 19d | 0d |  |
| 404 | 8.15 | 1st Floor Punchlist Repairs |  | 5d | 2026-08-27 | 2026-09-02 | 411, 390, 398, 397, 424 |  |  | 4d | 1d |  |
| 405 | 8.16 | 2nd Floor Punchlist Repairs |  | 5d | 2026-08-20 | 2026-08-26 | 400, 419, 421, 396, 420 |  |  | 9d | 6d |  |
| 406 | 8.17 | 3rd Floor Punchlist Repairs |  | 5d | 2026-08-24 | 2026-08-28 | 401, 396, 395, 409 |  |  | 7d | 4d |  |
| 407 | 8.18 | Complete Interior Punchlist Work - All Floors |  | 2d | 2026-09-04 | 2026-09-07 | 412, 426, 179, 401, 396, 405, 406, 404 |  |  | 3d | 1d |  |
| 408 | 8.19 | Final Clean/Floor Sealer |  | 20d | 2026-09-11 | 2026-10-08 | 376, 390, 316, 401, 361, 414, 412, 413, 411, 200, 202, 410, 232, 405, 407 |  |  | 0d |  |  |
| 409 | 8.20 | 3rd Floor Hallway System-by Janus |  | 20d | 2026-07-16 | 2026-08-12 | 392, 395, 423, 422 |  |  | 7d | 0d |  |
| 410 | 8.21 | HVAC Startup |  | 6d | 2026-09-03 | 2026-09-10 | 395, 390, 400, 397, 414 |  |  | 0d |  |  |
| 411 | 8.22 | Install Plumbing Fixtures and Water Heaters |  | 4d | 2026-07-09 | 2026-07-14 | 395, 196, 198, 200 |  |  | 30d | 21d |  |
| 412 | 8.23 | Install Interior Signage |  | 1d | 2026-09-03 | 2026-09-03 | 409, 396, 390, 166, 414 |  |  | 3d | 0d |  |
| 413 | 8.24 | Install Fire Extinguishers and Cabinets |  | 1d | 2026-08-27 | 2026-08-27 | 409, 390, 420, 424, 170 |  |  | 0d |  |  |
| 414 | 8.25 | Final Painting, Stairs/Railings/Doors |  | 5d | 2026-08-27 | 2026-09-02 | 161, 409, 361, 411, 425, 421, 413FS-1d |  |  | 0d |  |  |
| 415 | 8.26 | 1st Floor Plumbing rough walls |  | 5d | 2026-06-01 | 2026-06-05 | 374 |  |  | 11d | 0d |  |
| 416 | 8.27 | 1st Floor Sprinkler Rough-in/riser room-1st floor |  | 12d | 2026-04-20 | 2026-05-05 | 355, 190, 189, 391FS-5d |  |  | 14d | 0d |  |
| 417 | 8.28 | 1st Floor Electrical/Fire Alarm Rough In |  | 15d | 2026-04-29 | 2026-05-19 | 353, 355, 391, 234FS+2d, 236, 238, 240, 247, 255, 257, 259, 261, 266, 267, 416FS-5d |  |  | 14d | 0d |  |
| 418 | 8.29 | 2nd Floor Sprinkler Rough-in |  | 7d | 2026-06-08 | 2026-06-16 | 359, 399FS-5d, 416 |  |  | 14d | 0d |  |
| 419 | 8.30 | 2nd Floor Electrical/Fire Alarm Rough In |  | 15d | 2026-06-15 | 2026-07-03 | 357, 399, 418FS-5d, 266, 267 |  |  | 11d | 0d |  |
| 420 | 8.31 | 2nd Floor Hallway System - by Janus |  | 20d | 2026-07-06 | 2026-07-31 | 419, 424, 418, 400 |  |  | 11d | 0d |  |
| 421 | 8.32 | 2nd Floor Electrical Trim/FA/Hang Light-2nd Floor |  | 7d | 2026-08-03 | 2026-08-11 | 398, 420 |  |  | 11d | 6d |  |
| 422 | 8.33 | 3rd Floor HVAC Rough In |  | 15d | 2026-05-28 | 2026-06-17 | 364SS+3d, 209, 227, 229, 225, 224, 211, 214, 215, 217, 219, 221 |  |  | 7d | 0d |  |
| 423 | 8.34 | 3rd Floor Sprinkler Rough-in |  | 5d | 2026-06-18 | 2026-06-24 | 364, 422, 363 |  |  | 7d | 0d |  |
| 424 | 8.35 | 1st Floor Hallway System- by Janus |  | 20d | 2026-06-08 | 2026-07-03 | 359, 391, 417, 416, 397, 415 |  |  | 11d | 0d |  |
| 425 | 8.36 | Wall Packs |  | 3d | 2026-07-13 | 2026-07-15 | 366, 36 |  |  | 14d | 8d |  |
| 426 | 8.37 | Elevator Trim out by Subs |  | 3d | 2026-08-20 | 2026-08-24 | 376, 375, 409, 420, 424, 396 |  |  | 11d | 0d |  |

| ID | WBS | Task | Type | Duration | Start | Finish | Predecessors | Total slack | Free slack | Constraint |
| --- | --- | --- | --- | --- | --- | --- | --- | --- | --- | --- |
| 427 | 9 | **Finsh Sitework - Dumpster/Sidewalks/Paving/Landscaping** |  | 68d | 2026-07-13 | 2026-10-14 |  | 6d |  |  |
| 428 | 9.1 | Rough grade for landscaping |  | 2d | 2026-07-13 | 2026-07-14 | 366, 385, 325, 323 | 8d | 0d |  |
| 429 | 9.2 | Install Exterior Lighting in Parking Area |  | 5d | 2026-07-15 | 2026-07-21 | 428, 253, 279, 281 | 8d | 2d |  |
| 430 | 9.3 | Form and Pour Sidewalks |  | 5d | 2026-07-24 | 2026-07-30 | 428, 429, 377 | 6d | 0d |  |
| 431 | 9.4 | Landscaping and Irrigation Installation |  | 20d | 2026-07-28 | 2026-08-24 | 428FS-1d, 297, 299, 301, 425, 430FS-3d, 373FF+10d, 386 | 6d | 0d |  |
| 432 | 9.5 | Curb/Asphalt Paving |  | 10d | 2026-08-25 | 2026-09-07 | 428, 430, 269, 271, 273, 275, 277, 431 | 6d | 0d |  |
| 433 | 9.6 | Install Fencing |  | 5d | 2026-07-31 | 2026-08-06 | 430, 283, 285, 287, 311, 312, 313 | 20d | 12d |  |
| 434 | 9.7 | Striping |  | 1d | 2026-09-08 | 2026-09-08 | 432, 431SS+10d | 15d | 0d |  |
| 435 | 9.8 | Landscaping As-Built Drawings |  | 10d | 2026-08-25 | 2026-09-07 | 431, 433 | 8d | 0d |  |
| 436 | 9.9 | Developer's Letter of Dedication |  | 10d | 2026-09-08 | 2026-09-21 | 435 | 8d | 2d |  |
| 437 | 9.10 | Engineer's Certificate of Completion |  | 5d | 2026-09-08 | 2026-09-14 | 435 | 13d | 7d |  |
| 438 | 9.11 | Contractor's Letter of Completion |  | 2d | 2026-09-09 | 2026-09-10 | 431, 407, 425, 372, 373, 434 | 15d | 9d |  |
| 439 | 9.12 | Satisfaction Letter/Email from FDOT and City for Infrastructure |  | 10d | 2026-09-08 | 2026-09-21 | 435 | 8d | 2d |  |
| 440 | 9.13 | Polk County Final Walkthrough Request |  | 5d | 2026-09-24 | 2026-09-30 | 435, 432, 436, 437, 438, 439, 388 | 6d | 0d |  |
| 441 | 9.14 | Polk County Approval of Site |  | 10d | 2026-10-01 | 2026-10-14 | 440 | 6d |  |  |
| 442 | 10 | **Final Building Sign-Offs** |  | 38d | 2026-08-25 | 2026-10-15 |  | 11d |  |  |
| 443 | 10.1 | Pre Closeout Meeting with AHJ |  | 1d | 2026-10-09 | 2026-10-09 | 377, 408, 444, 89, 90, 91, 135, 136, 413, 207, 407, 445 | 15d |  |  |
| 444 | 10.2 | Final BDA Test |  | 1d | 2026-09-11 | 2026-09-11 | 409SS+10d, 403 | 19d |  |  |
| 445 | 10.3 | Elevator Ready for State Inspection |  | 1d | 2026-08-25 | 2026-08-25 | 426, 387 | 32d |  |  |
| 446 | 10.4 | Final Building Inspections |  | 5d | 2026-10-09 | 2026-10-15 | 434, 408, 445, 435FS-1d, 444, 412, 179, 441SS | 0d |  |  |
| 447 | 11 | Weather Days per Contract (20 Calendar Days) |  | 15d | 2026-10-12 | 2026-10-30 | 446FS-4d | 0d |  |  |
| 448 | 12 | Substantial Completion | milestone | 0d | 2026-10-30 | 2026-10-30 | 446, 447, 407 | 0d |  | finish no later than 2026-10-30 |
