# Public Storage Anna

Schedule from MS Project, 2025-12-16 to 2026-11-30, A marks actual dates.

## Calendars

- Standard: Mon-Fri 08:00-12:00, 13:00-17:00; Sat-Sun off. Exceptions (off unless hours are given): 2026-01-31 08:00-12:00, 13:00-17:00.

## Schedule

| ID | WBS | Task | Duration | Start | Finish | Predecessors | Complete | Remaining | Baseline start | Baseline finish | Baseline duration | Total slack | Free slack | Constraint |
| --- | --- | --- | --- | --- | --- | --- | --- | --- | --- | --- | --- | --- | --- | --- |
| 1 | 1 | **Public Storage Anna** | 251d | 2025-12-16 A | 2026-11-30 |  | 6% | 235.44d | 2024-07-01 | 2025-04-01 | 196d | 0d |  |  |
| 2 | 1.1 | **Permitting** | 80d | 2025-12-16 A | 2026-04-03 |  | 75% | 20d | 2024-07-01 | 2024-08-28 | 42d | 0d |  |  |
| 3 | 1.1.1 | Engineering Permit | 1d | 2025-12-16 A | 2025-12-16 A |  | 100% |  | 2024-07-01 | 2024-07-02 | 1d? |  |  | start no earlier than 2025-12-16 |
| 4 | 1.1.2 | Building Permit | 1d | 2026-01-08 A | 2026-01-08 A | 3FS+3.2w | 100% |  | 2024-07-01 | 2024-07-02 | 1d? |  |  |  |
| 5 | 1.1.3 | NTP Start Date | 1d | 2026-01-05 A | 2026-01-05 A |  | 100% |  | 2024-07-01 | 2024-07-01 | 0d |  |  | start no earlier than 2026-01-05 |
| 6 | 1.1.4 | Fire Department Approval to Go Vertical | 1d | 2026-04-03 | 2026-04-03 | 77, 80, 90 |  |  | 2024-08-27 | 2024-08-28 | 1d | 0d |  | start no earlier than 2024-09-18 |
| 7 | 1.2 | **Procurement** | 181.5d | 2026-01-06 A | 2026-09-15 |  | 6% | 171.52d | 2024-07-01 | 2025-01-27 | 150d | 54.5d |  |  |
| 8 | 1.2.1 | **Elevator / Schendler** | 101d | 2026-01-06 A | 2026-05-25 |  | 20% | 80.8d | 2024-07-01 | 2025-01-27 | 150d | 80d |  |  |
| 9 | 1.2.1.1 | Shop Drawing / Preparation - Review - Approval | 4w | 2026-01-06 A | 2026-02-02 A | 5 | 100% |  | 2024-07-01 | 2024-07-29 | 4w |  |  |  |
| 10 | 1.2.1.2 | Fabrication and Material Delivery | 16w | 2026-02-03 | 2026-05-25 | 9 |  |  | 2024-07-29 | 2025-01-27 | 26w | 80d | 55.5d |  |
| 11 | 1.2.2 | **Hallway System / Janus International** | 181.5d | 2026-01-06 A | 2026-09-15 |  | 30% | 127.05d | 2024-07-01 | 2024-12-23 | 125.5d | 54.5d |  |  |
| 12 | 1.2.2.1 | Shop Drawing / Preparation - Review - Approval | 2w | 2026-01-06 A | 2026-01-19 | 5 | 75% | 0.5w | 2024-07-01 | 2024-07-15 | 2w | 226d |  |  |
| 13 | 1.2.2.2 | Fabrication and Material Delivery | 3w | 2026-08-25 | 2026-09-15 | 171SS-3w, 237SS-3w, 279SS-3w, 321SS-3w |  |  | 2024-12-03 | 2024-12-23 | 3w | 54.5d |  |  |
| 14 | 1.2.3 | **Electrical Gear** | 80d | 2026-01-06 | 2026-04-24 |  |  |  | 2024-07-01 | 2024-09-23 | 60d | 139d |  |  |
| 15 | 1.2.3.1 | Submittals / Preparation - Review - Approval | 6w | 2026-01-06 | 2026-02-13 | 5 |  |  | 2024-07-01 | 2024-07-15 | 2w | 139d | 0d |  |
| 16 | 1.2.3.2 | Fabrication and Material Delivery | 50d | 2026-02-16 | 2026-04-24 | 15 |  |  | 2024-07-15 | 2024-09-23 | 50d | 139d |  |  |
| 17 | 1.2.4 | **Electrical Lighting** | 45d | 2026-01-06 | 2026-03-06 |  |  |  | 2024-07-01 | 2024-09-02 | 45d | 191d |  |  |
| 18 | 1.2.4.1 | Submittals / Preparation - Review - Approval | 2w | 2026-01-06 | 2026-01-19 | 5 |  |  | 2024-07-01 | 2024-07-15 | 2w | 191d | 0d |  |
| 19 | 1.2.4.2 | Fabrication and Material Delivery | 7w | 2026-01-20 | 2026-03-06 | 18 |  |  | 2024-07-15 | 2024-09-02 | 7w | 191d |  |  |
| 20 | 1.2.5 | **CMU Split Face Masonry** | 110d | 2026-01-06 | 2026-06-05 |  |  |  | 2024-07-01 | 2024-10-21 | 80d | 126d |  |  |
| 21 | 1.2.5.1 | Submittals / Preparation - Review - Approval | 8w | 2026-01-06 | 2026-02-27 | 5 |  |  | 2024-07-01 | 2024-07-15 | 2w | 126d | 0d |  |
| 22 | 1.2.5.2 | Fabrication and Material Delivery | 14w | 2026-03-02 | 2026-06-05 | 21 |  |  | 2024-07-15 | 2024-10-21 | 14w | 126d |  |  |
| 23 | 1.2.6 | **Bi-Parts Sliding Doors / Stanley Door** | 100d | 2026-01-06 | 2026-05-22 |  |  |  | 2024-07-01 | 2024-10-07 | 70d | 136d |  |  |
| 24 | 1.2.6.1 | Shop Drawing / Preparation - Review - Approval | 8w | 2026-01-06 | 2026-02-27 | 5 |  |  | 2024-07-01 | 2024-07-15 | 2w | 136d | 0d |  |
| 25 | 1.2.6.2 | Fabrication and Material Delivery | 12w | 2026-03-02 | 2026-05-22 | 24 |  |  | 2024-07-15 | 2024-10-07 | 12w | 136d |  |  |

| ID | WBS | Task | Duration | Start | Finish | Predecessors | Complete | Remaining | Baseline start | Baseline finish | Baseline duration | Total slack | Free slack | Constraint |
| --- | --- | --- | --- | --- | --- | --- | --- | --- | --- | --- | --- | --- | --- | --- |
| 26 | 1.2.7 | **Glass** | 40d | 2026-01-06 | 2026-02-27 |  |  |  | 2024-07-01 | 2024-09-09 | 50d | 196d |  |  |
| 27 | 1.2.7.1 | Shop Drawing / Preparation - Review - Approval | 2w | 2026-01-06 | 2026-01-19 | 5 |  |  | 2024-07-01 | 2024-07-15 | 2w | 196d | 0d | start no earlier than 2024-09-02 |
| 28 | 1.2.7.2 | Fabrication and Material Delivery | 6w | 2026-01-20 | 2026-02-27 | 27 |  |  | 2024-07-15 | 2024-09-09 | 8w | 196d |  |  |
| 29 | 1.3 | **Site Work** | 197d | 2025-12-17 A | 2026-09-16 |  | 26% | 145.22d | 2024-07-01 | 2025-03-21 | 189d | 48d |  |  |
| 30 | 1.3.1 | **Survey - Staking and SWPPP** | 68d | 2025-12-17 A | 2026-03-19 |  | 55% | 30.6d | 2024-07-01 | 2024-08-08 | 28d | 177d |  |  |
| 31 | 1.3.1.1 | Property Corner and BM | 1d | 2025-12-17 A | 2025-12-17 A | 3 | 100% |  | 2024-07-01 | 2024-07-02 | 1d |  |  |  |
| 32 | 1.3.1.2 | Building Pad Staking | 1d | 2026-01-16 A | 2026-01-19 A | 40 | 100% |  | 2024-07-02 | 2024-07-03 | 1d |  |  |  |
| 33 | 1.3.1.3 | UG Utility Staking | 1d | 2026-01-30 A | 2026-01-31 | 68SS, 41 | 75% | 0.25d | 2024-07-19 | 2024-07-22 | 1d | 211.5d |  |  |
| 34 | 1.3.1.4 | Paving Staking | 1d | 2026-03-19 | 2026-03-19 | 79SS-2d |  |  | 2024-08-07 | 2024-08-08 | 1d | 177d |  |  |
| 35 | 1.3.1.5 | Silt Fence, Construction Entrance | 1d | 2025-12-18 | 2025-12-18 | 31 |  |  |  |  |  | 243d |  |  |
| 36 | 1.3.2 | **Dirt Work / Inside the Property** | 152.5d | 2026-01-06 A | 2026-08-05 |  | 91% | 13.62d | 2024-07-09 | 2025-02-20 | 162d | 61d |  |  |
| 37 | 1.3.2.1 | **Site Dirtwork** | 152.5d | 2026-01-06 A | 2026-08-05 |  | 87% | 19.68d | 2024-07-09 | 2025-02-20 | 162d | 61d |  |  |
| 38 | 1.3.2.1.1 | Dirt Contractor Mobilization | 2d | 2026-01-06 A | 2026-01-07 A | 5 | 100% |  | 2024-07-09 | 2024-07-11 | 2d |  |  |  |
| 39 | 1.3.2.1.2 | Demo the Additional Trees along Buddy Hayes Street | 0.5w | 2026-01-08 A | 2026-01-12 A | 38 | 100% |  |  |  |  |  |  |  |
| 40 | 1.3.2.1.3 | Strip and Stockpile Topsoil | 4d | 2026-01-12 A | 2026-01-16 A | 39 | 100% |  | 2024-07-11 | 2024-07-15 | 2d |  |  |  |
| 41 | 1.3.2.1.4 | Site Excavation Cut to Fill | 1w | 2026-01-16 A | 2026-01-23 A | 40 | 100% |  | 2024-07-15 | 2024-07-19 | 4d |  |  |  |
| 42 | 1.3.2.1.5 | Fine Grade Landscape area +/- .10 | 2d | 2026-08-03 | 2026-08-05 | 97SS-1w |  |  | 2025-02-18 | 2025-02-20 | 2d | 61d | 13d |  |
| 43 | 1.3.2.2 | **Building Pad Subgrade Preparation** | 20d | 2026-01-23 A | 2026-02-19 A |  | 100% |  | 2024-07-23 | 2024-08-09 | 13d |  |  |  |
| 44 | 1.3.2.2.1 | **Building A** | 14.5d | 2026-01-23 A | 2026-02-11 A |  | 100% |  |  |  |  |  |  |  |
| 45 | 1.3.2.2.1.1 | Excavate Building Pad 7FT Deep and 5 FT over ex | 5d | 2026-01-23 A | 2026-01-30 A | 41 | 100% |  | 2024-07-23 | 2024-07-26 | 3d |  |  |  |
| 46 | 1.3.2.2.1.2 | 1FT Moisture Condition Building Pad | 0.5w | 2026-01-30 A | 2026-02-03 A | 45 | 100% |  | 2024-07-26 | 2024-08-05 | 1.2w |  |  |  |
| 47 | 1.3.2.2.1.3 | Import and Place 6FT of Select Fill | 1w | 2026-02-04 A | 2026-02-10 A | 46 | 100% |  | 2024-08-05 | 2024-08-08 | 3d |  |  |  |
| 48 | 1.3.2.2.1.4 | Fine Grade Building Pad | 1d | 2026-02-11 A | 2026-02-11 A | 47 | 100% |  | 2024-08-08 | 2024-08-09 | 1d |  |  |  |
| 49 | 1.3.2.2.2 | **Building B** | 9d | 2026-01-30 A | 2026-02-11 A |  | 100% |  |  |  |  |  |  |  |
| 50 | 1.3.2.2.2.1 | Excavate Building Pad 7FT Deep and 5 FT over ex | 3d | 2026-01-30 A | 2026-02-04 A | 45 | 100% |  | 2024-07-23 | 2024-07-26 | 3d |  |  |  |
| 51 | 1.3.2.2.2.2 | 1FT Moisture Condition Building Pad | 2d | 2026-02-04 A | 2026-02-06 A | 50 | 100% |  | 2024-07-26 | 2024-08-05 | 1.2w |  |  |  |
| 52 | 1.3.2.2.2.3 | Import and Place 6FT of Select Fill | 2d | 2026-02-06 A | 2026-02-10 A | 51 | 100% |  | 2024-08-05 | 2024-08-08 | 3d |  |  |  |
| 53 | 1.3.2.2.2.4 | Fine Grade Building Pad | 1d | 2026-02-10 A | 2026-02-11 A | 52 | 100% |  | 2024-08-08 | 2024-08-09 | 1d |  |  |  |

| ID | WBS | Task | Duration | Start | Finish | Predecessors | Complete | Baseline start | Baseline finish | Baseline duration | Total slack | Free slack |
| --- | --- | --- | --- | --- | --- | --- | --- | --- | --- | --- | --- | --- |
| 54 | 1.3.2.2.3 | **Building C** | 8d | 2026-02-04 A | 2026-02-16 A |  | 100% |  |  |  |  |  |
| 55 | 1.3.2.2.3.1 | Excavate Building Pad 7FT Deep and 5 FT over ex | 3d | 2026-02-04 A | 2026-02-09 A | 50 | 100% | 2024-07-23 | 2024-07-26 | 3d |  |  |
| 56 | 1.3.2.2.3.2 | 1FT Moisture Condition Building Pad | 2d | 2026-02-09 A | 2026-02-11 A | 55 | 100% | 2024-07-26 | 2024-08-05 | 1.2w |  |  |
| 57 | 1.3.2.2.3.3 | Import and Place 6FT of Select Fill | 2d | 2026-02-11 A | 2026-02-13 A | 56 | 100% | 2024-08-05 | 2024-08-08 | 3d |  |  |
| 58 | 1.3.2.2.3.4 | Fine Grade Building Pad | 1d | 2026-02-13 A | 2026-02-16 A | 57 | 100% | 2024-08-08 | 2024-08-09 | 1d |  |  |
| 59 | 1.3.2.2.4 | **Building D** | 8d | 2026-02-09 A | 2026-02-19 A |  | 100% |  |  |  |  |  |
| 60 | 1.3.2.2.4.1 | Excavate Building Pad 7FT Deep and 5 FT over ex | 3d | 2026-02-09 A | 2026-02-12 A | 55 | 100% | 2024-07-23 | 2024-07-26 | 3d |  |  |
| 61 | 1.3.2.2.4.2 | 1FT Moisture Condition Building Pad | 2d | 2026-02-12 A | 2026-02-16 A | 60 | 100% | 2024-07-26 | 2024-08-05 | 1.2w |  |  |
| 62 | 1.3.2.2.4.3 | Import and Place 6FT of Select Fill | 2d | 2026-02-16 A | 2026-02-18 A | 61 | 100% | 2024-08-05 | 2024-08-08 | 3d |  |  |
| 63 | 1.3.2.2.4.4 | Fine Grade Building Pad | 1d | 2026-02-18 A | 2026-02-19 A | 62 | 100% | 2024-08-08 | 2024-08-09 | 1d |  |  |
| 64 | 1.3.2.3 | **Pavement Subgrade Prep** | 3d | 2026-03-18 | 2026-03-20 |  |  | 2024-08-09 | 2024-08-15 | 4d | 5d |  |
| 65 | 1.3.2.3.1 | Scarify and Recompact Pavement Subgrade | 2d | 2026-03-18 | 2026-03-19 | 76 |  | 2024-08-12 | 2024-08-14 | 2d | 5d | 0d |
| 66 | 1.3.2.3.2 | Fine Grade Pavement Subgrade | 1d | 2026-03-20 | 2026-03-20 | 65 |  | 2024-08-14 | 2024-08-15 | 1d | 5d | 0d |
| 67 | 1.3.3 | **Utility / Inside the Property** | 38d | 2026-01-30 | 2026-03-24 |  |  | 2024-07-15 | 2024-08-22 | 28d | 0d |  |
| 68 | 1.3.3.1 | Utility Contractor Mobilization | 2d | 2026-01-30 | 2026-02-02 | 41FS+1w |  | 2024-07-15 | 2024-07-17 | 2d | 0d |  |
| 69 | 1.3.3.2 | Public and Private Water | 2w | 2026-02-20 | 2026-03-05 | 71 |  | 2024-07-22 | 2024-07-29 | 1w | 0d |  |
| 70 | 1.3.3.3 | Fire Water and connections | 1.2w | 2026-03-06 | 2026-03-13 | 69 |  | 2024-07-29 | 2024-08-01 | 3d | 5d | 0d |
| 71 | 1.3.3.4 | Public Sanitary Sewer | 3d | 2026-02-17 | 2026-02-19 | 72 |  | 2024-07-31 | 2024-08-02 | 2d | 0d |  |
| 72 | 1.3.3.5 | Sewer Easement Delay | 1.5w | 2026-02-05 | 2026-02-16 | 73 |  |  |  |  | 0d |  |
| 73 | 1.3.3.6 | Private Sanitary Sewer | 3d | 2026-02-02 | 2026-02-05 | 68 |  | 2024-07-29 | 2024-08-02 | 4d | 0d |  |
| 74 | 1.3.3.7 | Public Storm Drain | 1.5w | 2026-03-06 | 2026-03-17 | 69 |  | 2024-08-02 | 2024-08-07 | 3d | 174.5d | 0d |
| 75 | 1.3.3.8 | Private Storm Drain | 1w | 2026-03-17 | 2026-03-24 | 74 |  | 2024-08-07 | 2024-08-09 | 2d | 174.5d |  |
| 76 | 1.3.3.9 | Pressure Testing | 2d | 2026-03-16 | 2026-03-17 | 70 |  | 2024-08-15 | 2024-08-19 | 2d | 5d | 0d |
| 77 | 1.3.3.10 | Get Approval from Fire Department and Public Works | 1d | 2026-03-18 | 2026-03-18 | 76 |  | 2024-08-19 | 2024-08-22 | 3d | 7d | 2d |

| ID | WBS | Task | Duration | Start | Finish | Predecessors | Baseline start | Baseline finish | Baseline duration | Total slack | Free slack |
| --- | --- | --- | --- | --- | --- | --- | --- | --- | --- | --- | --- |
| 78 | 1.3.4 | **Site Paving** | 25d | 2026-02-24 | 2026-03-30 |  | 2024-08-06 | 2024-08-29 | 17d | 24d |  |
| 79 | 1.3.4.1 | Paving Contractor Mobilization | 1d | 2026-03-23 | 2026-03-23 | 77, 66 |  |  |  | 5d | 0d |
| 80 | 1.3.4.2 | Concrete Fire Lane Paving | 3d | 2026-03-24 | 2026-03-26 | 79 | 2024-08-22 | 2024-08-27 | 3d | 5d | 0d |
| 81 | 1.3.4.3 | Concrete Parking Paving | 2d | 2026-03-27 | 2026-03-30 | 80 | 2024-08-27 | 2024-08-29 | 2d | 170d |  |
| 82 | 1.3.4.4 | Concrete Pour Back for the Utility Tie-in | 2d | 2026-02-24 | 2026-02-25 | 71FS+2d | 2024-08-06 | 2024-08-08 | 2d | 193d |  |
| 83 | 1.3.5 | **Public Street Work / Buddy Hayes Street** | 35d | 2026-02-27 | 2026-04-16 |  | 2024-07-15 | 2024-08-22 | 28d | 2d |  |
| 84 | 1.3.5.1 | Saw Cut and Demo | 2d | 2026-02-27 | 2026-03-02 | 85SS-2d | 2024-07-15 | 2024-07-17 | 2d | 190d |  |
| 85 | 1.3.5.2 | 12" Water line crossings and Connect with Kroger | 1w | 2026-03-03 | 2026-03-09 | 69FF+2d |  |  |  | 0d |  |
| 86 | 1.3.5.3 | Site Excavation Cut to Fill | 3d | 2026-03-10 | 2026-03-12 | 85 | 2024-07-22 | 2024-07-29 | 1w | 0d |  |
| 87 | 1.3.5.4 | 8" Lime Stabilization | 2w | 2026-03-13 | 2026-03-26 | 86 | 2024-07-29 | 2024-08-01 | 3d | 0d |  |
| 88 | 1.3.5.5 | Scarify and Recompact Pavement Subgrade | 4d | 2026-03-23 | 2026-03-26 | 87FF | 2024-07-31 | 2024-08-02 | 2d | 0d |  |
| 89 | 1.3.5.6 | Blue Top and Proof Roll | 2d | 2026-03-27 | 2026-03-30 | 88 | 2024-07-29 | 2024-08-02 | 4d | 0d |  |
| 90 | 1.3.5.7 | Concrete Paving / Buddy Hayes | 2d | 2026-04-01 | 2026-04-02 | 89FS+1d | 2024-08-02 | 2024-08-07 | 3d | 0d |  |
| 91 | 1.3.5.8 | Asphalt Paving / Buddy Hayes | 2d | 2026-04-08 | 2026-04-09 | 90FS+3d |  |  |  | 157d | 0d |
| 92 | 1.3.5.9 | Pavement Markings | 2d | 2026-04-15 | 2026-04-16 | 91FS+3d |  |  |  | 157d |  |
| 93 | 1.3.6 | **Site Electrical** | 7d | 2026-03-06 | 2026-03-16 |  | 2024-07-01 | 2024-08-15 | 33d | 180d |  |
| 94 | 1.3.6.1 | Electrical Primary by GCEC | 4d | 2026-03-06 | 2026-03-11 | 69 | 2024-08-07 | 2024-08-12 | 3d | 180d | 0d |
| 95 | 1.3.6.2 | Electrical Secondry | 3d | 2026-03-12 | 2026-03-16 | 94 | 2024-08-12 | 2024-08-15 | 3d | 180d |  |
| 96 | 1.3.7 | **Landscape and Irrigation** | 17.5d | 2026-08-10 | 2026-09-02 |  | 2025-02-25 | 2025-03-10 | 9d | 48d |  |
| 97 | 1.3.7.1 | Irrigation | 2w | 2026-08-10 | 2026-08-24 | 144FS-3w, 224FS-3w, 266FS-3w, 308FS-3w | 2025-02-25 | 2025-03-04 | 1w | 48d | 0d |
| 98 | 1.3.7.2 | Landscape | 1.5w | 2026-08-24 | 2026-09-02 | 97, 42 | 2025-03-04 | 2025-03-10 | 4d | 48d | 0d |
| 99 | 1.3.8 | **Site Amenities** | 159.5d | 2026-02-05 | 2026-09-16 |  | 2025-03-10 | 2025-03-21 | 9d | 48d |  |
| 100 | 1.3.8.1 | Retaining Wall / Permit and Installation | 1w | 2026-02-05 | 2026-02-12 | 41FS+2w | 2025-03-10 | 2025-03-12 | 2d | 172.5d | 0d |
| 101 | 1.3.8.2 | 7 FT Tall Screening Wall | 2w | 2026-03-12 | 2026-03-26 | 100FS+4w |  |  |  | 172.5d |  |
| 102 | 1.3.8.3 | Light Bollard, Keypad Bollard | 3d | 2026-09-03 | 2026-09-07 | 103SS | 2025-03-10 | 2025-03-13 | 3d | 55d |  |
| 103 | 1.3.8.4 | Wrought Iron Fence | 1w | 2026-09-03 | 2026-09-09 | 98 | 2025-03-10 | 2025-03-17 | 1w | 48d | 0d |
| 104 | 1.3.8.5 | Sliding Gate | 1w | 2026-09-10 | 2026-09-16 | 103 |  |  |  | 48d |  |
| 105 | 1.3.8.6 | Swing Arm Gate | 4d | 2026-09-10 | 2026-09-15 | 103 | 2025-03-17 | 2025-03-21 | 4d | 49d |  |

| ID | WBS | Task | Duration | Start | Finish | Predecessors | Complete | Remaining | Baseline start | Baseline finish | Baseline duration | Total slack | Free slack |
| --- | --- | --- | --- | --- | --- | --- | --- | --- | --- | --- | --- | --- | --- |
| 106 | 1.4 | **Building Work** | 214d | 2026-02-02 A | 2026-11-26 |  | 2% | 210.46d | 2024-08-09 | 2025-03-19 | 158d | 2d |  |
| 107 | 1.4.1 | **Building A** | 214d | 2026-02-02 A | 2026-11-26 |  | 3% | 208.43d |  |  |  | 2d |  |
| 108 | 1.4.1.1 | **Concrete / Building A** | 89.5d | 2026-02-02 A | 2026-06-05 |  | 71% | 25.82d | 2024-08-09 | 2024-10-16 | 48.5d | 0d |  |
| 109 | 1.4.1.1.1 | **Slab on Grade / Building A** | 9d | 2026-02-02 A | 2026-02-12 A |  | 100% |  | 2024-08-09 | 2024-09-13 | 25.5d |  |  |
| 110 | 1.4.1.1.1.1 | Form Board installation | 2d | 2026-02-05 A | 2026-02-06 A | 48FS-1w, 4 | 100% |  | 2024-08-09 | 2024-08-13 | 2d |  |  |
| 111 | 1.4.1.1.1.2 | UG Plumbing Rough-in | 3d | 2026-02-04 A | 2026-02-06 A | 110FS-3d | 100% |  | 2024-08-13 | 2024-08-20 | 1w |  |  |
| 112 | 1.4.1.1.1.3 | Excavation for the Footing | 3d | 2026-02-09 A | 2026-02-11 A | 111 | 100% |  | 2024-08-20 | 2024-08-29 | 1.5w |  |  |
| 113 | 1.4.1.1.1.4 | Excavation for the Elevator Pit | 3d | 2026-02-02 A | 2026-02-04 A | 110FS-1w | 100% |  | 2024-08-13 | 2024-08-16 | 3d |  |  |
| 114 | 1.4.1.1.1.5 | Pour Concrete wall for the Elevator Pit | 1d | 2026-02-09 A | 2026-02-09 A | 113FS+2d | 100% |  | 2024-08-20 | 2024-08-21 | 1d |  |  |
| 115 | 1.4.1.1.1.6 | Elevator Pit Waterproofing | 1d | 2026-02-10 A | 2026-02-10 A | 114 | 100% |  | 2024-08-23 | 2024-08-26 | 1d |  |  |
| 116 | 1.4.1.1.1.7 | Poly, Termite Control | 2d | 2026-02-10 A | 2026-02-11 A | 112FF | 100% |  | 2024-08-30 | 2024-09-02 | 2d |  |  |
| 117 | 1.4.1.1.1.8 | Reinforcement Steel Placement | 2d | 2026-02-10 A | 2026-02-11 A | 116FF | 100% |  | 2024-09-03 | 2024-09-09 | 1w |  |  |
| 118 | 1.4.1.1.1.9 | Pour Concrete Slab on Grade- Building A | 1d | 2026-02-12 A | 2026-02-12 A | 117 | 100% |  | 2024-09-10 | 2024-09-12 | 3d |  |  |
| 119 | 1.4.1.1.1.10 | Saw Cut for Control Joint | 0.5d | 2026-02-12 A | 2026-02-12 A | 118FF | 100% |  | 2024-09-13 | 2024-09-13 | 1d |  |  |
| 120 | 1.4.1.1.2 | **Second Floor Slab on Deck / Building A** | 3d | 2026-05-01 | 2026-05-05 |  |  |  | 2024-10-11 | 2024-10-16 | 4d | 0d |  |
| 121 | 1.4.1.1.2.1 | Place Wire Mesh | 2d | 2026-05-01 | 2026-05-04 | 130 |  |  | 2024-10-11 | 2024-10-14 | 2d | 0d |  |
| 122 | 1.4.1.1.2.2 | Pour Concrete Slab on Deck | 1d | 2026-05-05 | 2026-05-05 | 121 |  |  | 2024-10-15 | 2024-10-15 | 1d | 0d |  |
| 123 | 1.4.1.1.2.3 | Saw Cut for Control Joint | 0.5d | 2026-05-05 | 2026-05-05 | 122FF |  |  | 2024-10-16 | 2024-10-16 | 1d | 0d |  |
| 124 | 1.4.1.1.3 | **Third Floor Slab on Deck / Building A** | 3d | 2026-06-02 | 2026-06-05 |  |  |  | 2024-10-11 | 2024-10-16 | 4d | 0d |  |
| 125 | 1.4.1.1.3.1 | Place Wire Mesh | 2d | 2026-06-02 | 2026-06-04 | 132 |  |  | 2024-10-11 | 2024-10-14 | 2d | 0d |  |
| 126 | 1.4.1.1.3.2 | Pour Concrete Slab on Deck | 1d | 2026-06-04 | 2026-06-05 | 125 |  |  | 2024-10-15 | 2024-10-15 | 1d | 0d |  |
| 127 | 1.4.1.1.3.3 | Saw Cut for Control Joint | 1d | 2026-06-04 | 2026-06-05 | 126FF |  |  | 2024-10-16 | 2024-10-16 | 1d | 0d |  |
| 128 | 1.4.1.2 | **Structural Steel Framing / Building A** | 115.5d | 2026-04-06 | 2026-09-14 |  |  |  | 2024-09-16 | 2024-12-19 | 68.5d | 0d |  |
| 129 | 1.4.1.2.1 | First Floor Structural Framing | 3w | 2026-04-06 | 2026-04-24 | 6, 119FS+3d |  |  | 2024-09-16 | 2024-10-04 | 3w | 0d |  |
| 130 | 1.4.1.2.2 | Second Floor Deck | 4d | 2026-04-27 | 2026-04-30 | 129 |  |  | 2024-10-07 | 2024-10-10 | 4d | 0d |  |
| 131 | 1.4.1.2.3 | Second Floor Structural Framing | 2.5w | 2026-05-11 | 2026-05-27 | 123FS+3d |  |  | 2024-10-22 | 2024-11-07 | 2.5w | 0d |  |
| 132 | 1.4.1.2.4 | Third Floor Deck | 4d | 2026-05-27 | 2026-06-02 | 131 |  |  | 2024-10-07 | 2024-10-10 | 4d | 0d |  |
| 133 | 1.4.1.2.5 | Third Floor Structural Framing | 2.5w | 2026-06-10 | 2026-06-26 | 127FS+3d |  |  | 2024-10-22 | 2024-11-07 | 2.5w | 0d |  |
| 134 | 1.4.1.2.6 | Roof Framing and Roof Deck- Building A | 1.5w | 2026-06-29 | 2026-07-08 | 133 |  |  | 2024-11-07 | 2024-11-18 | 1.5w | 0d |  |
| 135 | 1.4.1.2.7 | Awning | 2w | 2026-08-31 | 2026-09-14 | 138 |  |  | 2024-12-05 | 2024-12-19 | 2w | 55.5d |  |
| 136 | 1.4.1.2.8 | Stair 1 | 6w | 2026-05-06 | 2026-06-16 | 150FF |  |  | 2024-11-07 | 2024-11-21 | 2w | 109d | 0d |
| 137 | 1.4.1.2.9 | Stair 2 | 6w | 2026-05-20 | 2026-06-30 | 150FF, 136SS+2w |  |  | 2024-11-21 | 2024-12-05 | 2w | 109d |  |

| ID | WBS | Task | Duration | Start | Finish | Predecessors | Baseline start | Baseline finish | Baseline duration | Total slack | Free slack |
| --- | --- | --- | --- | --- | --- | --- | --- | --- | --- | --- | --- |
| 138 | 1.4.1.3 | **Exterior Wall Assembly / Building A** | 53d | 2026-06-17 | 2026-08-31 |  | 2024-11-07 | 2024-12-10 | 23.5d | 37.5d | 0d |
| 139 | 1.4.1.3.1 | Exterior Sheathing | 3w | 2026-06-17 | 2026-07-08 | 133SS+1w | 2024-11-07 | 2024-11-21 | 2w | 37.5d | 0d |
| 140 | 1.4.1.3.2 | Air Moisture Barrier | 1w | 2026-07-08 | 2026-07-15 | 139 | 2024-11-21 | 2024-11-26 | 3d | 45.5d | 0d |
| 141 | 1.4.1.3.3 | Rigid Insulation | 2.5w | 2026-07-15 | 2026-07-31 | 140 | 2024-11-26 | 2024-12-05 | 1.5w | 46d | 0.5d |
| 142 | 1.4.1.3.4 | EIFS | 4w | 2026-07-29 | 2026-08-26 | 140FS+2w | 2024-11-26 | 2024-12-05 | 1.5w | 45.5d | 0d |
| 143 | 1.4.1.3.5 | Parapet Wall Assembly | 4d | 2026-07-06 | 2026-07-10 | 134FF+2d | 2024-12-06 | 2024-12-10 | 3d | 91.5d |  |
| 144 | 1.4.1.3.6 | 4" Split Face CMU Masonry | 3w | 2026-08-10 | 2026-08-31 | 141FS+1w, 142FF+3d | 2024-12-03 | 2025-02-25 | 12w | 45.5d | 0d |
| 145 | 1.4.1.4 | **Roof / Building A** | 17d | 2026-07-17 | 2026-08-11 |  | 2024-11-19 | 2024-12-09 | 15d | 0d |  |
| 146 | 1.4.1.4.1 | Roofing Insulation | 1.4w | 2026-07-17 | 2026-07-28 | 134FS+7d | 2024-11-19 | 2024-11-25 | 1w | 0d |  |
| 147 | 1.4.1.4.2 | TPO Roofing system | 2w | 2026-07-28 | 2026-08-11 | 146 | 2024-11-26 | 2024-12-09 | 2w | 0d |  |
| 148 | 1.4.1.5 | **Interior Wall Assembly / Building A** | 100.5d | 2026-04-06 | 2026-08-24 |  | 2024-11-14 | 2024-12-20 | 27d | 60.5d |  |
| 149 | 1.4.1.5.1 | Elevator CMU Wall Assembly | 10w | 2026-04-06 | 2026-06-12 | 129SS | 2024-11-14 | 2024-12-04 | 3w | 71d | 0d |
| 150 | 1.4.1.5.2 | Stair CMU Wall Assembly | 10w | 2026-04-08 | 2026-06-16 | 149SS+2d |  |  |  | 109d | 0d |
| 151 | 1.4.1.5.3 | Lite-Gauge Framing / Office Area | 1w | 2026-07-22 | 2026-07-29 | 139FS+2w | 2024-11-21 | 2024-11-28 | 1w | 37.5d | 9d |
| 152 | 1.4.1.5.4 | Plumbing and Electrical Wall Rough-in / Office Area | 1w | 2026-08-11 | 2026-08-18 | 151, 147 | 2024-12-10 | 2024-12-16 | 1w | 28.5d | 0d |
| 153 | 1.4.1.5.5 | Sheathing / Office Area | 4d | 2026-08-18 | 2026-08-24 | 152 | 2024-12-17 | 2024-12-20 | 4d | 28.5d | 0d |
| 154 | 1.4.1.6 | **Elevator / Building A** | 40d | 2026-08-18 | 2026-10-13 |  | 2025-02-03 | 2025-03-19 | 32d | 24.5d | 0d |
| 155 | 1.4.1.6.1 | Elevator 1 | 4w | 2026-08-18 | 2026-09-15 | 149, 147FS+1w, 10FS+1w | 2025-02-03 | 2025-02-24 | 3w | 24.5d | 0d |
| 156 | 1.4.1.6.2 | Elevator 2 | 4w | 2026-09-15 | 2026-10-13 | 155 | 2025-02-24 | 2025-03-17 | 3w | 24.5d | 0d |
| 157 | 1.4.1.6.3 | Sump Pump for Elevator | 2d | 2026-10-09 | 2026-10-13 | 156FF | 2025-03-17 | 2025-03-19 | 2d | 24.5d | 0d |
| 158 | 1.4.1.6.4 | Fire Alarm and Electrical for Elevator | 2d | 2026-10-09 | 2026-10-13 | 157FF | 2025-03-17 | 2025-03-19 | 2d | 24.5d |  |
| 159 | 1.4.1.7 | **Fire Supression / Building A** | 61.5d | 2026-05-15 | 2026-08-10 |  | 2024-12-03 | 2025-01-02 | 23d | 72.5d |  |
| 160 | 1.4.1.7.1 | Fire Sprinkler / First Floor | 3w | 2026-05-15 | 2026-06-04 | 130FS+2w | 2024-12-03 | 2024-12-16 | 2w | 86d | 7.5d |
| 161 | 1.4.1.7.2 | Fire Sprinkler / Second Floor | 3w | 2026-06-16 | 2026-07-07 | 160, 132FS+2w | 2024-12-17 | 2024-12-30 | 2w | 78.5d | 6d |
| 162 | 1.4.1.7.3 | Fire Sprinkler / Third Floor | 3w | 2026-07-15 | 2026-08-05 | 134FS+1w, 161 | 2024-12-17 | 2024-12-30 | 2w | 72.5d | 0d |
| 163 | 1.4.1.7.4 | UG Utility Flush Test for the Riser | 2d | 2026-06-10 | 2026-06-11 | 76FS+12w |  |  |  | 111d | 38.5d |
| 164 | 1.4.1.7.5 | Riser Room Assembly | 3d | 2026-08-05 | 2026-08-10 | 161, 163, 162 | 2024-12-31 | 2025-01-02 | 3d | 72.5d | 31d |

| ID | WBS | Task | Duration | Start | Finish | Predecessors | Baseline start | Baseline finish | Baseline duration | Total slack | Free slack |
| --- | --- | --- | --- | --- | --- | --- | --- | --- | --- | --- | --- |
| 165 | 1.4.1.8 | **Fire Alarm / Building A** | 33d | 2026-08-11 | 2026-09-25 |  | 2024-12-10 | 2025-01-07 | 21d | 41.5d |  |
| 166 | 1.4.1.8.1 | Fire Alarm rough-in First Floor | 2w | 2026-08-11 | 2026-08-25 | 147 | 2024-12-10 | 2024-12-10 | 0.2w | 41.5d | 0d |
| 167 | 1.4.1.8.2 | Fire Alarm rough-in Second Floor | 2w | 2026-08-25 | 2026-09-08 | 166 | 2024-12-11 | 2024-12-11 | 0.2w | 41.5d | 0d |
| 168 | 1.4.1.8.3 | Fire Alarm rough-in Third Floor | 2w | 2026-09-08 | 2026-09-22 | 167 | 2024-12-11 | 2024-12-11 | 0.2w | 41.5d | 0d |
| 169 | 1.4.1.8.4 | Fire Alarm Panels | 3d | 2026-09-22 | 2026-09-25 | 167, 164, 168 | 2025-01-03 | 2025-01-07 | 3d | 41.5d |  |
| 170 | 1.4.1.9 | **Hallway System / Owner Furnished** | 57.5d | 2026-09-08 | 2026-11-26 |  | 2024-12-24 | 2025-02-03 | 30d | 2d |  |
| 171 | 1.4.1.9.1 | Hallway System / First Floor- Building A | 2w | 2026-09-15 | 2026-09-29 | 147FS+2w, 174 | 2024-12-24 | 2025-01-13 | 3w | 24.5d | 0d |
| 172 | 1.4.1.9.2 | Hallway System / Second Floor- Building A | 2w | 2026-10-13 | 2026-10-27 | 171, 175 | 2025-01-14 | 2025-02-03 | 3w | 14.5d | 12.5d |
| 173 | 1.4.1.9.3 | Hallway System / Third Floor- Building A | 2w | 2026-11-13 | 2026-11-26 | 172, 176 | 2025-01-14 | 2025-02-03 | 3w | 2d |  |
| 174 | 1.4.1.9.4 | Welded Wire Mesh / First Floor | 1w | 2026-09-08 | 2026-09-15 | 185, 178 | 2025-01-07 | 2025-01-13 | 1w | 24.5d | 0d |
| 175 | 1.4.1.9.5 | Welded Wire Mesh / Second Floor | 1w | 2026-10-06 | 2026-10-13 | 174, 179, 187 | 2025-01-14 | 2025-01-20 | 1w | 14.5d | 0d |
| 176 | 1.4.1.9.6 | Welded Wire Mesh / Third Floor | 1w | 2026-11-06 | 2026-11-12 | 175, 180, 189 | 2025-01-14 | 2025-01-20 | 1w | 2d | 0d |
| 177 | 1.4.1.10 | **HVAC / Building A** | 47d | 2026-08-11 | 2026-10-15 |  | 2024-12-03 | 2024-12-19 | 13d | 12.5d |  |
| 178 | 1.4.1.10.1 | First Floor Rough-in | 3w | 2026-08-11 | 2026-09-01 | 147 | 2024-12-03 | 2024-12-09 | 1w | 12.5d | 0d |
| 179 | 1.4.1.10.2 | Second Floor Rough-in | 3w | 2026-09-01 | 2026-09-22 | 147, 178 | 2024-12-10 | 2024-12-16 | 1w | 12.5d | 0d |
| 180 | 1.4.1.10.3 | Third Floor Rough-in | 3w | 2026-09-22 | 2026-10-13 | 147, 179 | 2024-12-10 | 2024-12-16 | 1w | 12.5d | 0d |
| 181 | 1.4.1.10.4 | Set up the AHU on Three Floors | 1.5w | 2026-10-02 | 2026-10-13 | 180FF | 2024-12-17 | 2024-12-19 | 3d | 20.5d | 0d |
| 182 | 1.4.1.10.5 | Setup the Roof Top Condenser Unit | 2d | 2026-10-13 | 2026-10-15 | 147, 181 |  |  |  | 20.5d |  |
| 183 | 1.4.1.11 | **Electrical / Building A** | 67.5d | 2026-08-11 | 2026-11-12 |  | 2024-12-03 | 2025-02-27 | 62.5d | 0d |  |
| 184 | 1.4.1.11.1 | First Floor / Conduit, running Wire | 3w | 2026-08-11 | 2026-09-01 | 147 | 2024-12-03 | 2024-12-16 | 2w | 0d |  |
| 185 | 1.4.1.11.2 | First Floor Lighting | 1w | 2026-09-01 | 2026-09-08 | 184 | 2024-12-17 | 2024-12-23 | 1w | 0d |  |
| 186 | 1.4.1.11.3 | Second Floor / Conduit, running wire | 3w | 2026-09-08 | 2026-09-29 | 185 | 2024-12-24 | 2025-01-06 | 2w | 0d |  |
| 187 | 1.4.1.11.4 | Second Floor Lighting | 1w | 2026-09-29 | 2026-10-06 | 186 | 2025-01-07 | 2025-01-13 | 1w | 0d |  |
| 188 | 1.4.1.11.5 | Third Floor / Conduit, running wire | 3w | 2026-10-06 | 2026-10-27 | 187 | 2024-12-24 | 2025-01-06 | 2w | 0d |  |
| 189 | 1.4.1.11.6 | Third Floor Lighting | 1.5w | 2026-10-27 | 2026-11-05 | 188 | 2025-01-07 | 2025-01-13 | 1w | 0d |  |
| 190 | 1.4.1.11.7 | Gear Installation and Electrical Riser Assembly | 1w | 2026-11-06 | 2026-11-12 | 187, 16, 189 | 2025-01-14 | 2025-01-20 | 1w | 0d |  |
| 191 | 1.4.1.11.8 | Exterior Wall Packs | 2d | 2026-08-27 | 2026-08-31 | 144FF | 2025-02-25 | 2025-02-27 | 2d | 53.5d |  |

| ID | WBS | Task | Duration | Start | Finish | Predecessors | Baseline start | Baseline finish | Baseline duration | Total slack | Free slack | Constraint |
| --- | --- | --- | --- | --- | --- | --- | --- | --- | --- | --- | --- | --- |
| 192 | 1.4.1.12 | **Plumbing / Building A** | 81d | 2026-07-06 | 2026-10-27 |  | 2024-11-15 | 2025-02-12 | 64d | 12.5d |  |  |
| 193 | 1.4.1.12.1 | Second Floor Condenser line | 1w | 2026-10-13 | 2026-10-20 | 179, 180 | 2024-12-17 | 2024-12-23 | 1w | 12.5d | 0d |  |
| 194 | 1.4.1.12.2 | Third Floor Condenser line | 1w | 2026-10-20 | 2026-10-27 | 180, 193 | 2024-12-17 | 2024-12-23 | 1w | 12.5d |  |  |
| 195 | 1.4.1.12.3 | Roof Drain | 4d | 2026-07-06 | 2026-07-10 | 134FF+2d | 2024-11-15 | 2024-11-20 | 4d | 89.5d |  |  |
| 196 | 1.4.1.12.4 | Plumbing Bathroom Fixture | 2d | 2026-10-01 | 2026-10-05 | 203, 204 | 2025-02-11 | 2025-02-12 | 2d | 28.5d |  |  |
| 197 | 1.4.1.13 | **Opening / Building A** | 73d | 2026-06-17 | 2026-09-28 |  | 2024-11-07 | 2025-03-18 | 93d | 45.5d |  |  |
| 198 | 1.4.1.13.1 | HMD Frame | 3d | 2026-06-17 | 2026-06-22 | 139SS | 2024-11-07 | 2024-11-12 | 3d | 115.5d |  |  |
| 199 | 1.4.1.13.2 | HM Door and Hardware | 3d | 2026-09-21 | 2026-09-24 | 144SS+6w | 2025-01-14 | 2025-01-17 | 3d | 45.5d | 0d |  |
| 200 | 1.4.1.13.3 | Glass and Glazing | 1w | 2026-09-21 | 2026-09-28 | 199SS | 2025-02-25 | 2025-03-18 | 3w | 45.5d |  |  |
| 201 | 1.4.1.13.4 | Automatic Bi-Part Sliding Door | 4d | 2026-09-08 | 2026-09-14 | 147FS+4w | 2025-02-25 | 2025-02-28 | 3d | 55.5d |  |  |
| 202 | 1.4.1.14 | **Finishout / Building A** | 25d | 2026-08-31 | 2026-10-05 |  | 2025-01-20 | 2025-02-12 | 18d | 40.5d |  |  |
| 203 | 1.4.1.14.1 | Polish Concrete Floor / Restroom and corridor | 1.5w | 2026-08-31 | 2026-09-09 | 153FS+1w | 2025-02-03 | 2025-02-05 | 3d | 41d | 12.5d |  |
| 204 | 1.4.1.14.2 | White FRP for the Rest Room | 3d | 2026-09-28 | 2026-10-01 | 206, 203 | 2025-02-06 | 2025-02-10 | 3d | 28.5d | 0d |  |
| 205 | 1.4.1.14.3 | Bathroom accessories and Signage | 2d | 2026-10-01 | 2026-10-05 | 204 | 2025-02-11 | 2025-02-12 | 2d | 40.5d |  |  |
| 206 | 1.4.1.14.4 | Gypsum Board Ceiling and Paint / Bathroom | 1w | 2026-09-21 | 2026-09-28 | 153FS+4w | 2025-01-20 | 2025-01-24 | 1w | 28.5d | 0d |  |
| 207 | 1.4.1.14.5 | Tape, Bed and Paint the Stair Wall | 1w | 2026-09-21 | 2026-09-28 | 206FF | 2025-01-20 | 2025-01-24 | 1w | 45.5d | 0d |  |
| 208 | 1.4.1.14.6 | Paint HMD | 2d | 2026-09-24 | 2026-09-28 | 207FF | 2025-01-23 | 2025-01-24 | 2d | 45.5d |  |  |
| 209 | 1.4.1.15 | Punch List / Building A | 1w | 2026-11-13 | 2026-11-19 | 183, 192, 177 | 2025-02-27 | 2025-03-13 | 2w | 0d |  |  |
| 210 | 1.4.2 | **Building B** | 99.5d | 2026-03-05 | 2026-07-22 |  |  |  |  | 63.5d |  |  |
| 211 | 1.4.2.1 | **Concrete / Building B** | 11d | 2026-03-05 | 2026-03-19 |  | 2024-08-09 | 2024-10-16 | 48.5d | 63.5d |  |  |
| 212 | 1.4.2.1.1 | **Slab on Grade / Building B** | 11d | 2026-03-05 | 2026-03-19 |  | 2024-08-09 | 2024-09-13 | 25.5d | 63.5d |  |  |
| 213 | 1.4.2.1.1.1 | Form Board installation | 2d | 2026-03-05 | 2026-03-06 | 297FS+1w | 2024-08-09 | 2024-08-13 | 2d | 63.5d | 0d |  |
| 214 | 1.4.2.1.1.2 | UG Plumbing Rough-in | 2d | 2026-03-09 | 2026-03-10 | 213 | 2024-08-13 | 2024-08-20 | 1w | 63.5d | 0d |  |
| 215 | 1.4.2.1.1.3 | Excavation for the Footing | 3d | 2026-03-11 | 2026-03-13 | 214 | 2024-08-20 | 2024-08-29 | 1.5w | 63.5d | 0d |  |
| 216 | 1.4.2.1.1.4 | Poly, Termite Control | 1d | 2026-03-16 | 2026-03-16 | 215 | 2024-08-30 | 2024-09-02 | 2d | 63.5d | 0d |  |
| 217 | 1.4.2.1.1.5 | Reinforcement Steel Placement | 2d | 2026-03-17 | 2026-03-18 | 216 | 2024-09-03 | 2024-09-09 | 1w | 63.5d | 0d |  |
| 218 | 1.4.2.1.1.6 | Pour Concrete Slab on Grade | 1d | 2026-03-19 | 2026-03-19 | 217 | 2024-09-10 | 2024-09-12 | 3d | 63.5d | 0d |  |
| 219 | 1.4.2.1.1.7 | Saw Cut for Control Joint | 0.5d | 2026-03-19 | 2026-03-19 | 218FF | 2024-09-13 | 2024-09-13 | 1d | 63.5d | 0d | start no earlier than 2026-03-17 |

| ID | WBS | Task | Duration | Start | Finish | Predecessors | Baseline start | Baseline finish | Baseline duration | Total slack | Free slack |
| --- | --- | --- | --- | --- | --- | --- | --- | --- | --- | --- | --- |
| 220 | 1.4.2.2 | **Structural Steel Framing / Building B** | 12.5d | 2026-04-17 | 2026-05-05 |  | 2024-09-16 | 2024-12-19 | 68.5d | 93.5d |  |
| 221 | 1.4.2.2.1 | First Floor Structural Framing | 1w | 2026-04-17 | 2026-04-23 | 219FS+3d, 6, 224 | 2024-09-16 | 2024-10-04 | 3w | 93.5d | 0d |
| 222 | 1.4.2.2.2 | Roof Framing and Roof Deck | 1.5w | 2026-04-24 | 2026-05-05 | 221 | 2024-11-07 | 2024-11-18 | 1.5w | 93.5d | 0d |
| 223 | 1.4.2.3 | **Exterior Wall Assembly / Building B** | 15d | 2026-03-27 | 2026-04-16 |  | 2024-11-07 | 2024-12-10 | 23.5d | 63.5d |  |
| 224 | 1.4.2.3.1 | 8" CMU Masonry | 3w | 2026-03-27 | 2026-04-16 | 219FS+1w | 2024-12-03 | 2025-02-25 | 12w | 63.5d | 0d |
| 225 | 1.4.2.4 | **Roof / Building B** | 17d | 2026-05-14 | 2026-06-08 |  | 2024-11-19 | 2024-12-09 | 15d | 93.5d |  |
| 226 | 1.4.2.4.1 | Roofing Insulation | 1.4w | 2026-05-14 | 2026-05-25 | 222FS+7d | 2024-11-19 | 2024-11-25 | 1w | 93.5d | 0d |
| 227 | 1.4.2.4.2 | Standing Seam Metal Roof | 2w | 2026-05-25 | 2026-06-08 | 226 | 2024-11-26 | 2024-12-09 | 2w | 93.5d | 0d |
| 228 | 1.4.2.5 | **Interior Wall Assembly / Building B** | 10d | 2026-06-08 | 2026-06-22 |  | 2024-11-14 | 2024-12-20 | 27d | 93.5d |  |
| 229 | 1.4.2.5.1 | Fire Riser Room Assembly | 2w | 2026-06-08 | 2026-06-22 | 227 | 2024-11-14 | 2024-12-04 | 3w | 93.5d | 0d |
| 230 | 1.4.2.6 | **Fire Supression / Building B** | 10.5d | 2026-06-08 | 2026-06-22 |  | 2024-12-03 | 2025-01-02 | 23d | 107d |  |
| 231 | 1.4.2.6.1 | Fire Sprinkler / Dry System | 1.5w | 2026-06-08 | 2026-06-17 | 227 | 2024-12-03 | 2024-12-16 | 2w | 107d | 0d |
| 232 | 1.4.2.6.2 | Riser Room Assembly | 3d | 2026-06-18 | 2026-06-22 | 231 | 2024-12-31 | 2025-01-02 | 3d | 107d | 0d |
| 233 | 1.4.2.7 | **Fire Alarm / Building B** | 13.5d | 2026-06-08 | 2026-06-25 |  | 2024-12-10 | 2025-01-07 | 21d | 107d |  |
| 234 | 1.4.2.7.1 | Fire Alarm rough-in First Floor | 2w | 2026-06-08 | 2026-06-22 | 227 | 2024-12-10 | 2024-12-10 | 0.2w | 110.5d |  |
| 235 | 1.4.2.7.2 | Fire Alarm Panels | 3d | 2026-06-23 | 2026-06-25 | 232 | 2025-01-03 | 2025-01-07 | 3d | 107d |  |
| 236 | 1.4.2.8 | **Hallway System / Owner Furnished** | 15d | 2026-07-01 | 2026-07-22 |  | 2024-12-24 | 2025-02-03 | 30d | 93.5d |  |
| 237 | 1.4.2.8.1 | Hallway System / First Floor | 2w | 2026-07-08 | 2026-07-22 | 227FS+2w, 238 | 2024-12-24 | 2025-01-13 | 3w | 93.5d | 49d |
| 238 | 1.4.2.8.2 | Welded Wire Mesh / First Floor | 1w | 2026-07-01 | 2026-07-08 | 243, 240 | 2025-01-07 | 2025-01-13 | 1w | 93.5d | 0d |
| 239 | 1.4.2.9 | **HVAC / Building B** | 2d | 2026-06-29 | 2026-07-01 |  | 2024-12-03 | 2024-12-19 | 13d | 93.5d | 1d |
| 240 | 1.4.2.9.1 | Riser Room Heater | 2d | 2026-06-29 | 2026-07-01 | 229FS+1w | 2024-12-03 | 2024-12-09 | 1w | 93.5d | 0d |
| 241 | 1.4.2.10 | **Electrical / Building B** | 15d | 2026-06-11 | 2026-07-02 |  | 2024-12-03 | 2025-02-27 | 62.5d | 95.5d | 0d |
| 242 | 1.4.2.10.1 | First Floor / Conduit, running Wire | 1w | 2026-06-11 | 2026-06-18 | 227FS+3d | 2024-12-03 | 2024-12-16 | 2w | 95.5d | 0d |
| 243 | 1.4.2.10.2 | First Floor Lighting | 1w | 2026-06-18 | 2026-06-25 | 242 | 2024-12-17 | 2024-12-23 | 1w | 95.5d | 0d |
| 244 | 1.4.2.10.3 | Gear Installation and Electrical Riser Assembly | 1w | 2026-06-25 | 2026-07-02 | 243 | 2025-01-14 | 2025-01-20 | 1w | 95.5d |  |
| 245 | 1.4.2.10.4 | Exterior Wall Packs | 2d | 2026-06-18 | 2026-06-22 | 224FS+2d, 242 | 2025-02-25 | 2025-02-27 | 2d | 103.5d |  |

| ID | WBS | Task | Duration | Start | Finish | Predecessors | Baseline start | Baseline finish | Baseline duration | Total slack | Free slack | Constraint |
| --- | --- | --- | --- | --- | --- | --- | --- | --- | --- | --- | --- | --- |
| 246 | 1.4.2.11 | **Plumbing / Building B** | 1d | 2026-05-06 | 2026-05-07 |  | 2024-11-15 | 2025-02-12 | 64d | 135.5d | 40d |  |
| 247 | 1.4.2.11.1 | Roof Drain | 1d | 2026-05-06 | 2026-05-07 | 222FF+2d | 2024-11-15 | 2024-11-20 | 4d | 135.5d |  |  |
| 248 | 1.4.2.12 | **Opening / Building B** | 52.5d | 2026-03-31 | 2026-06-11 |  | 2024-11-07 | 2025-03-18 | 93d | 122.5d |  |  |
| 249 | 1.4.2.12.1 | HMD Frame | 3d | 2026-03-31 | 2026-04-02 | 224SS+2d | 2024-11-07 | 2024-11-12 | 3d | 169d | 46.5d |  |
| 250 | 1.4.2.12.2 | HM Door and Hardware | 3d | 2026-06-08 | 2026-06-11 | 227, 249 | 2025-01-14 | 2025-01-17 | 3d | 122.5d |  |  |
| 251 | 1.4.2.13 | Punch List / Building B | 1w | 2026-07-02 | 2026-07-09 | 239, 241, 246 | 2025-02-27 | 2025-03-13 | 2w | 95.5d |  |  |
| 252 | 1.4.3 | **Building C** | 123.5d | 2026-02-20 | 2026-08-12 |  |  |  |  | 63.5d |  |  |
| 253 | 1.4.3.1 | **Concrete / Building C** | 26d | 2026-02-20 | 2026-03-27 |  | 2024-08-09 | 2024-10-16 | 48.5d | 63.5d |  |  |
| 254 | 1.4.3.1.1 | **Slab on Grade / Building C** | 26d | 2026-02-20 | 2026-03-27 |  | 2024-08-09 | 2024-09-13 | 25.5d | 63.5d |  |  |
| 255 | 1.4.3.1.1.1 | Form Board installation | 2d | 2026-02-20 | 2026-02-23 | 118FS+1w | 2024-08-09 | 2024-08-13 | 2d | 63.5d | 0d |  |
| 256 | 1.4.3.1.1.2 | UG Plumbing Rough-in | 2d | 2026-02-24 | 2026-02-25 | 255 | 2024-08-13 | 2024-08-20 | 1w | 87.5d | 15d |  |
| 257 | 1.4.3.1.1.3 | Excavation for the Footing | 3d | 2026-03-19 | 2026-03-23 | 256, 217 | 2024-08-20 | 2024-08-29 | 1.5w | 72.5d | 0d |  |
| 258 | 1.4.3.1.1.4 | Poly, Termite Control | 1d | 2026-03-24 | 2026-03-24 | 257 | 2024-08-30 | 2024-09-02 | 2d | 72.5d | 0d |  |
| 259 | 1.4.3.1.1.5 | Reinforcement Steel Placement | 2d | 2026-03-25 | 2026-03-26 | 258 | 2024-09-03 | 2024-09-09 | 1w | 72.5d | 0d |  |
| 260 | 1.4.3.1.1.6 | Pour Concrete Slab on Grade | 1d | 2026-03-27 | 2026-03-27 | 259 | 2024-09-10 | 2024-09-12 | 3d | 72.5d | 0d |  |
| 261 | 1.4.3.1.1.7 | Saw Cut for Control Joint | 0.5d | 2026-03-27 | 2026-03-27 | 260FF | 2024-09-13 | 2024-09-13 | 1d | 72.5d | 9d | start no earlier than 2026-03-17 |
| 262 | 1.4.3.2 | **Structural Steel Framing / Building C** | 12.5d | 2026-05-08 | 2026-05-26 |  | 2024-09-16 | 2024-12-19 | 68.5d | 78.5d |  |  |
| 263 | 1.4.3.2.1 | First Floor Structural Framing | 1w | 2026-05-08 | 2026-05-14 | 261FS+3d, 6, 266 | 2024-09-16 | 2024-10-04 | 3w | 78.5d | 0d |  |
| 264 | 1.4.3.2.2 | Roof Framing and Roof Deck | 1.5w | 2026-05-15 | 2026-05-26 | 263 | 2024-11-07 | 2024-11-18 | 1.5w | 78.5d | 0d |  |
| 265 | 1.4.3.3 | **Exterior Wall Assembly / Building C** | 15d | 2026-04-17 | 2026-05-07 |  | 2024-11-07 | 2024-12-10 | 23.5d | 63.5d |  |  |
| 266 | 1.4.3.3.1 | 8" CMU Masonry | 3w | 2026-04-17 | 2026-05-07 | 261FS+1w, 224 | 2024-12-03 | 2025-02-25 | 12w | 63.5d | 0d |  |
| 267 | 1.4.3.4 | **Roof / Building C** | 17d | 2026-06-04 | 2026-06-29 |  | 2024-11-19 | 2024-12-09 | 15d | 78.5d |  |  |
| 268 | 1.4.3.4.1 | Roofing Insulation | 1.4w | 2026-06-04 | 2026-06-15 | 264FS+7d | 2024-11-19 | 2024-11-25 | 1w | 78.5d | 0d |  |
| 269 | 1.4.3.4.2 | Standing Seam Metal Roof | 2w | 2026-06-15 | 2026-06-29 | 268 | 2024-11-26 | 2024-12-09 | 2w | 78.5d | 0d |  |

| ID | WBS | Task | Duration | Start | Finish | Predecessors | Baseline start | Baseline finish | Baseline duration | Total slack | Free slack |
| --- | --- | --- | --- | --- | --- | --- | --- | --- | --- | --- | --- |
| 270 | 1.4.3.5 | **Interior Wall Assembly / Building C** | 10d | 2026-06-29 | 2026-07-13 |  | 2024-11-14 | 2024-12-20 | 27d | 78.5d |  |
| 271 | 1.4.3.5.1 | Fire Riser Room Assembly | 2w | 2026-06-29 | 2026-07-13 | 269 | 2024-11-14 | 2024-12-04 | 3w | 78.5d | 0d |
| 272 | 1.4.3.6 | **Fire Supression / Building C** | 10.5d | 2026-06-29 | 2026-07-13 |  | 2024-12-03 | 2025-01-02 | 23d | 92d |  |
| 273 | 1.4.3.6.1 | Fire Sprinkler / Dry System | 1.5w | 2026-06-29 | 2026-07-08 | 269 | 2024-12-03 | 2024-12-16 | 2w | 92d | 0d |
| 274 | 1.4.3.6.2 | Riser Room Assembly | 3d | 2026-07-09 | 2026-07-13 | 273 | 2024-12-31 | 2025-01-02 | 3d | 92d | 0d |
| 275 | 1.4.3.7 | **Fire Alarm / Building C** | 13.5d | 2026-06-29 | 2026-07-16 |  | 2024-12-10 | 2025-01-07 | 21d | 92d |  |
| 276 | 1.4.3.7.1 | Fire Alarm rough-in First Floor | 2w | 2026-06-29 | 2026-07-13 | 269 | 2024-12-10 | 2024-12-10 | 0.2w | 95.5d |  |
| 277 | 1.4.3.7.2 | Fire Alarm Panels | 3d | 2026-07-14 | 2026-07-16 | 274 | 2025-01-03 | 2025-01-07 | 3d | 92d |  |
| 278 | 1.4.3.8 | **Hallway System / Owner Furnished** | 15d | 2026-07-22 | 2026-08-12 |  | 2024-12-24 | 2025-02-03 | 30d | 78.5d |  |
| 279 | 1.4.3.8.1 | Hallway System / First Floor | 2w | 2026-07-29 | 2026-08-12 | 269FS+2w, 280 | 2024-12-24 | 2025-01-13 | 3w | 78.5d | 34d |
| 280 | 1.4.3.8.2 | Welded Wire Mesh / First Floor | 1w | 2026-07-22 | 2026-07-29 | 285, 282 | 2025-01-07 | 2025-01-13 | 1w | 78.5d | 0d |
| 281 | 1.4.3.9 | **HVAC / Building C** | 2d | 2026-07-20 | 2026-07-22 |  | 2024-12-03 | 2024-12-19 | 13d | 78.5d | 1d |
| 282 | 1.4.3.9.1 | Riser Room Heater | 2d | 2026-07-20 | 2026-07-22 | 271FS+1w | 2024-12-03 | 2024-12-09 | 1w | 78.5d | 0d |
| 283 | 1.4.3.10 | **Electrical / Building C** | 15d | 2026-07-02 | 2026-07-23 |  | 2024-12-03 | 2025-02-27 | 62.5d | 80.5d | 0d |
| 284 | 1.4.3.10.1 | First Floor / Conduit, running Wire | 1w | 2026-07-02 | 2026-07-09 | 269FS+3d | 2024-12-03 | 2024-12-16 | 2w | 80.5d | 0d |
| 285 | 1.4.3.10.2 | First Floor Lighting | 1w | 2026-07-09 | 2026-07-16 | 284 | 2024-12-17 | 2024-12-23 | 1w | 80.5d | 0d |
| 286 | 1.4.3.10.3 | Gear Installation and Electrical Riser Assembly | 1w | 2026-07-16 | 2026-07-23 | 285 | 2025-01-14 | 2025-01-20 | 1w | 80.5d |  |
| 287 | 1.4.3.10.4 | Exterior Wall Packs | 2d | 2026-07-09 | 2026-07-13 | 266FS+2d, 284 | 2025-02-25 | 2025-02-27 | 2d | 88.5d |  |
| 288 | 1.4.3.11 | **Plumbing / Building C** | 1d | 2026-05-27 | 2026-05-28 |  | 2024-11-15 | 2025-02-12 | 64d | 120.5d | 40d |
| 289 | 1.4.3.11.1 | Roof Drain | 1d | 2026-05-27 | 2026-05-28 | 264FF+2d | 2024-11-15 | 2024-11-20 | 4d | 120.5d |  |
| 290 | 1.4.3.12 | **Opening / Building C** | 52.5d | 2026-04-21 | 2026-07-02 |  | 2024-11-07 | 2025-03-18 | 93d | 107.5d |  |
| 291 | 1.4.3.12.1 | HMD Frame | 3d | 2026-04-21 | 2026-04-23 | 266SS+2d | 2024-11-07 | 2024-11-12 | 3d | 154d | 46.5d |
| 292 | 1.4.3.12.2 | HM Door and Hardware | 3d | 2026-06-29 | 2026-07-02 | 269, 291 | 2025-01-14 | 2025-01-17 | 3d | 107.5d |  |
| 293 | 1.4.3.13 | Punch List / Building C | 1w | 2026-07-23 | 2026-07-30 | 281, 283, 288 | 2025-02-27 | 2025-03-13 | 2w | 80.5d |  |

| ID | WBS | Task | Duration | Start | Finish | Predecessors | Baseline start | Baseline finish | Baseline duration | Total slack | Free slack | Constraint |
| --- | --- | --- | --- | --- | --- | --- | --- | --- | --- | --- | --- | --- |
| 294 | 1.4.4 | **Building D** | 136.5d | 2026-02-24 | 2026-09-02 |  |  |  |  | 63.5d |  |  |
| 295 | 1.4.4.1 | **Concrete / Building D** | 27d | 2026-02-24 | 2026-04-01 |  | 2024-08-09 | 2024-10-16 | 48.5d | 63.5d |  |  |
| 296 | 1.4.4.1.1 | **Slab on Grade / Building D** | 27d | 2026-02-24 | 2026-04-01 |  | 2024-08-09 | 2024-09-13 | 25.5d | 63.5d |  |  |
| 297 | 1.4.4.1.1.1 | Form Board installation | 2d | 2026-02-24 | 2026-02-25 | 255 | 2024-08-09 | 2024-08-13 | 2d | 63.5d | 0d |  |
| 298 | 1.4.4.1.1.2 | UG Plumbing Rough-in | 2d | 2026-02-26 | 2026-02-27 | 297 | 2024-08-13 | 2024-08-20 | 1w | 100.5d | 16d |  |
| 299 | 1.4.4.1.1.3 | Excavation for the Footing | 3d | 2026-03-24 | 2026-03-26 | 298, 257 | 2024-08-20 | 2024-08-29 | 1.5w | 84.5d | 0d |  |
| 300 | 1.4.4.1.1.4 | Poly, Termite Control | 1d | 2026-03-27 | 2026-03-27 | 299 | 2024-08-30 | 2024-09-02 | 2d | 84.5d | 0d |  |
| 301 | 1.4.4.1.1.5 | Reinforcement Steel Placement | 2d | 2026-03-30 | 2026-03-31 | 300 | 2024-09-03 | 2024-09-09 | 1w | 84.5d | 0d |  |
| 302 | 1.4.4.1.1.6 | Pour Concrete Slab on Grade | 1d | 2026-04-01 | 2026-04-01 | 301 | 2024-09-10 | 2024-09-12 | 3d | 84.5d | 0d |  |
| 303 | 1.4.4.1.1.7 | Saw Cut for Control Joint | 0.5d | 2026-04-01 | 2026-04-01 | 302FF | 2024-09-13 | 2024-09-13 | 1d | 84.5d | 21d | start no earlier than 2026-03-17 |
| 304 | 1.4.4.2 | **Structural Steel Framing / Building D** | 12.5d | 2026-05-29 | 2026-06-16 |  | 2024-09-16 | 2024-12-19 | 68.5d | 63.5d |  |  |
| 305 | 1.4.4.2.1 | First Floor Structural Framing | 1w | 2026-05-29 | 2026-06-04 | 303FS+3d, 6, 308 | 2024-09-16 | 2024-10-04 | 3w | 63.5d | 0d |  |
| 306 | 1.4.4.2.2 | Roof Framing and Roof Deck | 1.5w | 2026-06-05 | 2026-06-16 | 305 | 2024-11-07 | 2024-11-18 | 1.5w | 63.5d | 0d |  |
| 307 | 1.4.4.3 | **Exterior Wall Assembly / Building D** | 15d | 2026-05-08 | 2026-05-28 |  | 2024-11-07 | 2024-12-10 | 23.5d | 63.5d |  |  |
| 308 | 1.4.4.3.1 | 8" CMU Masonry | 3w | 2026-05-08 | 2026-05-28 | 303FS+1w, 266 | 2024-12-03 | 2025-02-25 | 12w | 63.5d | 0d |  |
| 309 | 1.4.4.4 | **Roof / Building D** | 17d | 2026-06-25 | 2026-07-20 |  | 2024-11-19 | 2024-12-09 | 15d | 63.5d |  |  |
| 310 | 1.4.4.4.1 | Roofing Insulation | 1.4w | 2026-06-25 | 2026-07-06 | 306FS+7d | 2024-11-19 | 2024-11-25 | 1w | 63.5d | 0d |  |
| 311 | 1.4.4.4.2 | Standing Seam Metal Roof | 2w | 2026-07-06 | 2026-07-20 | 310 | 2024-11-26 | 2024-12-09 | 2w | 63.5d | 0d |  |
| 312 | 1.4.4.5 | **Interior Wall Assembly / Building D** | 10d | 2026-07-20 | 2026-08-03 |  | 2024-11-14 | 2024-12-20 | 27d | 63.5d |  |  |
| 313 | 1.4.4.5.1 | Fire Riser Room Assembly | 2w | 2026-07-20 | 2026-08-03 | 311 | 2024-11-14 | 2024-12-04 | 3w | 63.5d | 0d |  |
| 314 | 1.4.4.6 | **Fire Supression / Building D** | 10.5d | 2026-07-20 | 2026-08-03 |  | 2024-12-03 | 2025-01-02 | 23d | 77d |  |  |
| 315 | 1.4.4.6.1 | Fire Sprinkler / Dry System | 1.5w | 2026-07-20 | 2026-07-29 | 311 | 2024-12-03 | 2024-12-16 | 2w | 77d | 0d |  |
| 316 | 1.4.4.6.2 | Riser Room Assembly | 3d | 2026-07-30 | 2026-08-03 | 315 | 2024-12-31 | 2025-01-02 | 3d | 77d | 0d |  |
| 317 | 1.4.4.7 | **Fire Alarm / Building D** | 13.5d | 2026-07-20 | 2026-08-06 |  | 2024-12-10 | 2025-01-07 | 21d | 77d |  |  |
| 318 | 1.4.4.7.1 | Fire Alarm rough-in First Floor | 2w | 2026-07-20 | 2026-08-03 | 311 | 2024-12-10 | 2024-12-10 | 0.2w | 80.5d |  |  |
| 319 | 1.4.4.7.2 | Fire Alarm Panels | 3d | 2026-08-04 | 2026-08-06 | 316 | 2025-01-03 | 2025-01-07 | 3d | 77d |  |  |

| ID | WBS | Task | Type | Duration | Start | Finish | Predecessors | Baseline start | Baseline finish | Baseline duration | Total slack | Free slack |
| --- | --- | --- | --- | --- | --- | --- | --- | --- | --- | --- | --- | --- |
| 320 | 1.4.4.8 | **Hallway System / Owner Furnished** |  | 15d | 2026-08-12 | 2026-09-02 |  | 2024-12-24 | 2025-02-03 | 30d | 63.5d |  |
| 321 | 1.4.4.8.1 | Hallway System / First Floor |  | 2w | 2026-08-19 | 2026-09-02 | 311FS+2w, 322 | 2024-12-24 | 2025-01-13 | 3w | 63.5d | 19d |
| 322 | 1.4.4.8.2 | Welded Wire Mesh / First Floor |  | 1w | 2026-08-12 | 2026-08-19 | 327, 324 | 2025-01-07 | 2025-01-13 | 1w | 63.5d | 0d |
| 323 | 1.4.4.9 | **HVAC / Building D** |  | 2d | 2026-08-10 | 2026-08-12 |  | 2024-12-03 | 2024-12-19 | 13d | 63.5d | 1d |
| 324 | 1.4.4.9.1 | Riser Room Heater |  | 2d | 2026-08-10 | 2026-08-12 | 313FS+1w | 2024-12-03 | 2024-12-09 | 1w | 63.5d | 0d |
| 325 | 1.4.4.10 | **Electrical / Building D** |  | 15d | 2026-07-23 | 2026-08-13 |  | 2024-12-03 | 2025-02-27 | 62.5d | 65.5d | 0d |
| 326 | 1.4.4.10.1 | First Floor / Conduit, running Wire |  | 1w | 2026-07-23 | 2026-07-30 | 311FS+3d | 2024-12-03 | 2024-12-16 | 2w | 65.5d | 0d |
| 327 | 1.4.4.10.2 | First Floor Lighting |  | 1w | 2026-07-30 | 2026-08-06 | 326 | 2024-12-17 | 2024-12-23 | 1w | 65.5d | 0d |
| 328 | 1.4.4.10.3 | Gear Installation and Electrical Riser Assembly |  | 1w | 2026-08-06 | 2026-08-13 | 327 | 2025-01-14 | 2025-01-20 | 1w | 65.5d |  |
| 329 | 1.4.4.10.4 | Exterior Wall Packs |  | 2d | 2026-07-30 | 2026-08-03 | 308FS+2d, 326 | 2025-02-25 | 2025-02-27 | 2d | 73.5d |  |
| 330 | 1.4.4.11 | **Plumbing / Building D** |  | 1d | 2026-06-17 | 2026-06-18 |  | 2024-11-15 | 2025-02-12 | 64d | 105.5d | 40d |
| 331 | 1.4.4.11.1 | Roof Drain |  | 1d | 2026-06-17 | 2026-06-18 | 306FF+2d | 2024-11-15 | 2024-11-20 | 4d | 105.5d |  |
| 332 | 1.4.4.12 | **Opening / Building D** |  | 52.5d | 2026-05-12 | 2026-07-23 |  | 2024-11-07 | 2025-03-18 | 93d | 92.5d |  |
| 333 | 1.4.4.12.1 | HMD Frame |  | 3d | 2026-05-12 | 2026-05-14 | 308SS+2d | 2024-11-07 | 2024-11-12 | 3d | 139d | 46.5d |
| 334 | 1.4.4.12.2 | HM Door and Hardware |  | 3d | 2026-07-20 | 2026-07-23 | 311, 333 | 2025-01-14 | 2025-01-17 | 3d | 92.5d |  |
| 335 | 1.4.4.13 | Punch List / Building D |  | 1w | 2026-08-13 | 2026-08-20 | 323, 325, 330 | 2025-02-27 | 2025-03-13 | 2w | 65.5d |  |
| 336 | 1.5 | Elevator State Inspection |  | 2d | 2026-10-16 | 2026-10-20 | 154FS+3d | 2025-03-19 | 2025-03-21 | 2d | 24.5d |  |
| 337 | 1.6 | MEP Final Inspection |  | 2d | 2026-11-20 | 2026-11-23 | 209, 251, 293, 335 | 2025-03-13 | 2025-03-17 | 2d | 0d |  |
| 338 | 1.7 | Fire Final Inspection |  | 2d | 2026-11-24 | 2026-11-25 | 159, 165, 29, 230, 233, 272, 275, 314, 317, 336, 337 | 2025-03-21 | 2025-03-25 | 2d | 0d |  |
| 339 | 1.8 | Engineering Final Inspection |  | 2d | 2026-11-26 | 2026-11-27 | 29, 209, 338, 251, 293, 335 | 2025-03-25 | 2025-03-28 | 3d | 0d |  |
| 340 | 1.9 | Building Final Inspection |  | 1d | 2026-11-30 | 2026-11-30 | 338, 339, 336 | 2025-03-28 | 2025-04-01 | 2d | 0d |  |
| 341 | 1.10 | TCO/CO | milestone | 0d | 2026-11-30 | 2026-11-30 | 340 | 2025-04-01 | 2025-04-01 | 0d | 0d |  |
| 343 | 1.11 | Weather Day Log | manual | 1d? | 2025-12-16 | 2025-12-16 |  | 2024-07-01 | 2024-07-02 | 1d? |  |  |
| 344 | 1.12 | Contractor has included 20 Weatherdays in this schedule from 01.05.2026 - 11.30.2026 | manual | 20d | 2025-12-16 | 2026-01-12 |  | 2024-07-01 | 2024-08-05 | 25d |  |  |

| ID | WBS | Task | Duration | Start | Finish | Predecessors | Complete | Baseline start | Baseline finish | Baseline duration | Constraint |
| --- | --- | --- | --- | --- | --- | --- | --- | --- | --- | --- | --- |
| 345 | 1.13 | **Januray 2026 - 7 Days** | 7d | 2026-01-23 A | 2026-01-31 A |  | 100% |  |  |  |  |
| 346 | 1.13.1 | 01.23.2026 - Freezing Rain | 1d | 2026-01-23 A | 2026-01-23 A |  | 100% |  |  |  | start no earlier than 2026-01-23 |
| 347 | 1.13.2 | 01.26.2026 - Snow | 1d | 2026-01-26 A | 2026-01-26 A | 346 | 100% |  |  |  |  |
| 348 | 1.13.3 | 01.27.2026 - Snow | 1d | 2026-01-27 A | 2026-01-27 A | 347 | 100% |  |  |  |  |
| 349 | 1.13.4 | 01.28.2026 - Ice | 1d | 2026-01-28 A | 2026-01-28 A | 348 | 100% |  |  |  |  |
| 350 | 1.13.5 | 01.29.2026 - Ice | 1d | 2026-01-29 A | 2026-01-29 A | 349 | 100% |  |  |  |  |
| 351 | 1.13.6 | 01.30.2026 - Ice | 1d | 2026-01-30 A | 2026-01-30 A | 350 | 100% |  |  |  |  |
| 352 | 1.13.7 | 01.31.2026 - Freezing | 1d | 2026-01-31 A | 2026-01-31 A | 351 | 100% |  |  |  | start no earlier than 2026-01-31 |
| 353 | 1.14 | **February 2026** | 10d | 2026-02-03 A | 2026-02-16 A |  | 100% |  |  |  |  |
| 354 | 1.14.1 | 02.03.2026 - Muddy | 1d | 2026-02-03 A | 2026-02-03 A |  | 100% |  |  |  | start no earlier than 2026-02-03 |
| 355 | 1.14.2 | 02.16.2026 - Water Ponding and Muddy | 1d | 2026-02-16 A | 2026-02-16 A |  | 100% |  |  |  | start no earlier than 2026-02-16 |
| 356 | 1.15 | **Delay Log** | 4d | 2026-01-06 A | 2026-01-09 A |  | 100% | 2024-07-01 | 2024-07-02 | 1d? |  |
| 357 | 1.15.1 | Material Testing Lab | 4d | 2026-01-06 A | 2026-01-09 A |  | 100% |  |  |  | start no earlier than 2026-01-06 |
