# PS Willis - Preliminary Schedule - 01.05.26

Schedule from MS Project XML, 2025-09-25 to 2026-08-31, A marks actual dates.

## Calendars

- Standard: Mon-Fri 08:00-12:00, 13:00-17:00; Sat-Sun off.

## Schedule

| ID | WBS | Task | Duration | Start | Finish | Predecessors | Complete | Remaining | Total slack | Free slack | Constraint |
| --- | --- | --- | --- | --- | --- | --- | --- | --- | --- | --- | --- |
| 1 | 1 | **Public Storage Willis - TX 24198** | 224d | 2025-09-25 A | 2026-08-04 |  | 9% | 204.28d | 19d |  |  |
| 2 | 1.1 | **Pre-Construction** | 133d | 2025-09-25 A | 2026-03-30 |  | 60% | 53.2d | 110d |  |  |
| 3 | 1.1.1 | Contract Signed | 1d | 2025-09-25 A | 2025-09-25 A |  | 100% |  |  |  | start no earlier than 2025-09-25 |
| 4 | 1.1.2 | Building Permit | 1d | 2026-01-09 A | 2026-01-09 A |  | 100% |  |  |  | start no earlier than 2026-01-09 |
| 5 | 1.1.3 | Fire Tank Permit | 1d | 2026-03-30 | 2026-03-30 |  |  |  | 81d | 40d | start no earlier than 2026-03-30 |
| 6 | 1.1.4 | NTP - From PS | 1d | 2026-01-12 A | 2026-01-12 A |  | 100% |  |  |  | start no earlier than 2026-01-12 |
| 7 | 1.1.5 | Approval to go Vertical by AHJ | 1d | 2026-03-25 | 2026-03-25 | 22 |  |  | 113d |  |  |
| 8 | 1.2 | **Procurament** | 44d | 2026-03-31 | 2026-06-01 |  |  |  | 66d |  |  |
| 9 | 1.2.1 | Building Structure | 2d | 2026-03-31 | 2026-04-02 | 49SF-5d |  |  | 108d |  |  |
| 10 | 1.2.2 | Hallway System | 2d | 2026-05-28 | 2026-06-01 | 66SF-5d |  |  | 66d |  |  |
| 11 | 1.2.3 | Fire Tank Delivery | 1d | 2026-05-25 | 2026-05-25 |  |  |  | 41d | 0d | start no earlier than 2026-05-25 |
| 12 | 1.3 | **Site Work** | 116d | 2026-02-02 A | 2026-07-13 |  | 20% | 93.11d | 35d |  |  |
| 13 | 1.3.1 | **Earthwork** | 17d | 2026-02-02 A | 2026-02-24 A |  | 100% |  |  |  |  |
| 14 | 1.3.1.1 | Erosion Control / BMPs | 3d | 2026-02-02 A | 2026-02-04 A | 6 | 100% |  |  |  | start no earlier than 2026-02-02 |
| 15 | 1.3.1.2 | Demolition & Haul Off - For Bldg Pad | 4d | 2026-02-09 A | 2026-02-12 A | 14 | 100% |  |  |  | start no earlier than 2026-02-09 |
| 16 | 1.3.1.3 | Grading / Cut & Fill | 5d | 2026-02-13 A | 2026-02-19 A | 15 | 100% |  |  |  |  |
| 17 | 1.3.1.4 | Bulding Pad Preparation | 3d | 2026-02-20 A | 2026-02-24 A | 16 | 100% |  |  |  |  |
| 18 | 1.3.2 | **Site Utilities** | 63d | 2026-03-05 | 2026-06-01 |  |  |  | 4d |  |  |
| 19 | 1.3.2.1 | Storm Sewer | 4d | 2026-03-05 | 2026-03-10 | 17, 47 |  |  | 4d | 0d |  |
| 20 | 1.3.2.2 | Sanitary Sewer | 4d | 2026-03-11 | 2026-03-16 | 19 |  |  | 4d | 0d |  |
| 21 | 1.3.2.3 | Water Line | 5d | 2026-03-17 | 2026-03-23 | 20 |  |  | 4d | 0d |  |
| 22 | 1.3.2.4 | Utility Approval by AHJ | 1d | 2026-03-24 | 2026-03-24 | 21 |  |  | 113d | 0d |  |
| 23 | 1.3.2.5 | **Fire Tank (By Others)** | 5d | 2026-05-26 | 2026-06-01 |  |  |  | 41d |  |  |
| 24 | 1.3.2.5.1 | Fire Tank Installation | 5d | 2026-05-26 | 2026-06-01 | 11, 5 |  |  | 41d | 0d |  |

| ID | WBS | Task | Duration | Start | Finish | Predecessors | Complete | Remaining | Total slack | Free slack |
| --- | --- | --- | --- | --- | --- | --- | --- | --- | --- | --- |
| 25 | 1.3.3 | **Exterior Improvements** | 93d | 2026-03-05 | 2026-07-13 |  |  |  | 17d |  |
| 26 | 1.3.3.1 | **Site Paving** | 12d | 2026-03-24 | 2026-04-08 |  |  |  | 4d |  |
| 27 | 1.3.3.1.1 | Paving Subgrade Prep | 6d | 2026-03-24 | 2026-03-31 | 21 |  |  | 4d | 0d |
| 28 | 1.3.3.1.2 | Fire Lane Concrete Paving | 4d | 2026-04-01 | 2026-04-06 | 27 |  |  | 4d | 0d |
| 29 | 1.3.3.1.3 | Light Duty Concrete Paving | 2d | 2026-04-07 | 2026-04-08 | 28 |  |  | 4d | 0d |
| 30 | 1.3.3.2 | **Detention Pond Work** | 14d | 2026-03-05 | 2026-03-24 |  |  |  | 114d |  |
| 31 | 1.3.3.2.1 | Grading / Cut | 10d | 2026-03-05 | 2026-03-18 | 47 |  |  | 114d | 0d |
| 32 | 1.3.3.2.2 | Storm Sewer | 4d | 2026-03-19 | 2026-03-24 | 31 |  |  | 114d |  |
| 33 | 1.3.3.3 | **Landscape & Irrigation** | 11d | 2026-06-22 | 2026-07-06 |  |  |  | 35d |  |
| 34 | 1.3.3.3.1 | Irrigation Installation | 6d | 2026-06-22 | 2026-06-29 | 76 |  |  | 35d | 0d |
| 35 | 1.3.3.3.2 | Landscape Installation | 5d | 2026-06-30 | 2026-07-06 | 34 |  |  | 35d | 0d |
| 36 | 1.3.3.4 | **Gates & Fences** | 5d | 2026-07-07 | 2026-07-13 |  |  |  | 35d |  |
| 37 | 1.3.3.4.1 | Chain Link Fence | 3d | 2026-07-07 | 2026-07-09 | 35 |  |  | 35d | 0d |
| 38 | 1.3.3.4.2 | Double Swing Gate | 2d | 2026-07-10 | 2026-07-13 | 37 |  |  | 35d |  |
| 39 | 1.4 | **Building Work** | 110d | 2026-02-25 A | 2026-07-28 |  | 5% | 105.02d | 24d |  |
| 40 | 1.4.1 | **SOG / Foundation** | 6d | 2026-02-25 A | 2026-03-04 A |  | 100% |  |  |  |
| 41 | 1.4.1.1 | Form Board & Grade Beam Excavation | 1d | 2026-02-25 A | 2026-02-25 A | 17 | 100% |  |  |  |
| 42 | 1.4.1.2 | Pest Control | 1d | 2026-02-26 A | 2026-02-26 A | 41 | 100% |  |  |  |
| 43 | 1.4.1.3 | Set Up Poly & Rebar - Phase 1 | 2d | 2026-02-27 A | 2026-03-02 A | 42 | 100% |  |  |  |
| 44 | 1.4.1.4 | Place and Finish Slab - Phase 1 | 1d | 2026-03-03 A | 2026-03-03 A | 43 | 100% |  |  |  |
| 45 | 1.4.1.5 | Undeground Plumbing Rough In | 2d | 2026-02-26 A | 2026-02-27 A | 41 | 100% |  |  |  |
| 46 | 1.4.1.6 | Set Up Poly & Rebar - Phase 2 | 2d | 2026-03-02 A | 2026-03-03 A | 45 | 100% |  |  |  |
| 47 | 1.4.1.7 | Joint Control Saw Cutting | 1d | 2026-03-04 A | 2026-03-04 A | 46 | 100% |  |  |  |
| 48 | 1.4.2 | **Steel Structure (Betco/Janus)** | 38d | 2026-04-09 | 2026-06-01 |  |  |  | 4d |  |
| 49 | 1.4.2.1 | Framing & Interior Partitions | 12d | 2026-04-09 | 2026-04-24 | 29 |  |  | 4d | 0d |
| 50 | 1.4.2.2 | Standing Seam Metal Roofing System | 10d | 2026-04-27 | 2026-05-08 | 49 |  |  | 23d | 0d |
| 51 | 1.4.2.3 | Exterior Wall Assembly | 10d | 2026-05-11 | 2026-05-22 | 50 |  |  | 65d | 0d |
| 52 | 1.4.2.4 | Gutter, Coping & Downpsouts | 6d | 2026-05-25 | 2026-06-01 | 51 |  |  | 65d |  |

| ID | WBS | Task | Duration | Start | Finish | Predecessors | Total slack | Free slack |
| --- | --- | --- | --- | --- | --- | --- | --- | --- |
| 53 | 1.4.3 | **Masonry** | 4d | 2026-05-25 | 2026-05-28 |  | 67d |  |
| 54 | 1.4.3.1 | Fire Pump Room | 4d | 2026-05-25 | 2026-05-28 | 51 | 67d |  |
| 55 | 1.4.4 | **Fire Sprinkler System** | 30d | 2026-04-27 | 2026-06-05 |  | 4d |  |
| 56 | 1.4.4.1 | Sprinkler Installation | 12d | 2026-04-27 | 2026-05-12 | 49 | 4d | 0d |
| 57 | 1.4.4.2 | Final Adjustment and Testing | 4d | 2026-06-02 | 2026-06-05 | 56, 24 | 41d |  |
| 58 | 1.4.5 | **Fire Alarm** | 19d | 2026-05-13 | 2026-06-08 |  | 40d | 36d |
| 59 | 1.4.5.1 | Fire Alarm Installation | 15d | 2026-05-13 | 2026-06-02 | 56 | 40d | 0d |
| 60 | 1.4.5.2 | Final Adjustment & Testing | 4d | 2026-06-03 | 2026-06-08 | 59 | 40d |  |
| 61 | 1.4.6 | **ERCCS - TBD subject to AHJ Review** | 17d | 2026-07-06 | 2026-07-28 |  | 4d | 0d |
| 62 | 1.4.6.1 | ERCCS Testing | 2d | 2026-07-06 | 2026-07-07 | 66, 81 | 4d | 0d |
| 63 | 1.4.6.2 | Submittal and Approval by AHJ | 10d | 2026-07-08 | 2026-07-21 | 62 | 4d | 0d |
| 64 | 1.4.6.3 | ERCCS Installation | 5d | 2026-07-22 | 2026-07-28 | 63 | 4d |  |
| 65 | 1.4.7 | **Hallway System (Betco/Janus)** | 25d | 2026-06-08 | 2026-07-10 |  | 4d | 0d |
| 66 | 1.4.7.1 | Hallway System & Roll Up Doors | 20d | 2026-06-08 | 2026-07-03 | 56, 70 | 4d | 0d |
| 67 | 1.4.7.2 | Wire Mesh | 5d | 2026-07-06 | 2026-07-10 | 56, 59, 70, 66 | 22d |  |
| 68 | 1.4.8 | **Mechanical** | 26d | 2026-05-13 | 2026-06-17 |  | 4d |  |
| 69 | 1.4.8.1 | Line Sets & Rough In | 8d | 2026-05-13 | 2026-05-22 | 56 | 4d | 0d |
| 70 | 1.4.8.2 | AHUs & Duct Work | 10d | 2026-05-25 | 2026-06-05 | 69 | 4d | 0d |
| 71 | 1.4.8.3 | Dehumidifiers | 3d | 2026-06-08 | 2026-06-10 | 70 | 33d | 0d |
| 72 | 1.4.8.4 | Condensers & Final Connection | 5d | 2026-06-11 | 2026-06-17 | 71 | 33d |  |
| 73 | 1.4.9 | **Electrical** | 38d | 2026-05-11 | 2026-07-01 |  | 23d | 7d |
| 74 | 1.4.9.1 | Conduit, Wire | 3d | 2026-05-11 | 2026-05-13 | 50 | 23d | 0d |
| 75 | 1.4.9.2 | Light Installation | 15d | 2026-05-14 | 2026-06-03 | 74 | 23d | 0d |
| 76 | 1.4.9.3 | Gear & Riser Room Assembly | 12d | 2026-06-04 | 2026-06-19 | 75 | 23d | 0d |
| 77 | 1.4.9.4 | Wall Packs | 8d | 2026-06-22 | 2026-07-01 | 76 | 23d |  |

| ID | WBS | Task | Duration | Start | Finish | Predecessors | Total slack | Free slack | Constraint |
| --- | --- | --- | --- | --- | --- | --- | --- | --- | --- |
| 78 | 1.4.10 | **Plumbing** | 5d | 2026-06-08 | 2026-06-12 |  | 36d | 32d |  |
| 79 | 1.4.10.1 | Condensate Drain & Vents | 5d | 2026-06-08 | 2026-06-12 | 70 | 36d |  |  |
| 80 | 1.4.11 | **Openings (Betco/Janus)** | 18d | 2026-05-04 | 2026-05-27 |  | 46d |  |  |
| 81 | 1.4.11.1 | HM Frames | 3d | 2026-05-04 | 2026-05-06 | 50SS+5d | 46d | 0d |  |
| 82 | 1.4.11.2 | HM Doors & Hardware | 3d | 2026-05-25 | 2026-05-27 | 51 | 68d |  |  |
| 83 | 1.4.12 | **Finish-Out** | 55d | 2026-05-07 | 2026-07-22 |  | 28d |  |  |
| 84 | 1.4.12.1 | Light Gauge Framing / Electrical, Riser | 5d | 2026-05-07 | 2026-05-13 | 81 | 74d | 27d |  |
| 85 | 1.4.12.2 | Drywall Assembly | 4d | 2026-06-22 | 2026-06-25 | 84, 76 | 47d |  |  |
| 86 | 1.4.12.3 | Seal Concrete in Corridors | 8d | 2026-07-13 | 2026-07-22 | 65, 68, 73 | 22d | 0d |  |
| 87 | 1.5 | **Post-Construction** | 9d | 2026-07-23 | 2026-08-04 |  | 8d |  |  |
| 88 | 1.5.1 | Final Clean-Up | 5d | 2026-07-23 | 2026-07-29 | 86 | 22d | 0d |  |
| 89 | 1.5.2 | Punch List - TBD - Proposed Date | 1d | 2026-07-30 | 2026-07-30 | 88 | 22d |  |  |
| 90 | 1.5.3 | Final Inspections | 3d | 2026-07-29 | 2026-07-31 | 55, 58, 61, 68, 73, 78 | 4d | 0d |  |
| 91 | 1.5.4 | CO/TCO | 1d | 2026-08-03 | 2026-08-03 | 90 | 4d | 0d |  |
| 92 | 1.5.5 | Substantial Completion | 1d | 2026-08-04 | 2026-08-04 | 91 | 4d | 0d |  |
| 94 | 2 | 15 Weather Days in Contract | 15d | 2026-08-05 | 2026-08-25 | 92 | 4d |  |  |
| 96 | 3 | Contracted Finish Date 08.31 | 1d | 2026-08-31 | 2026-08-31 |  | 0d |  | start no earlier than 2026-08-31 |
