# CCP25 Schedule JS OAC Schedule 07.02.20

Schedule from MS Project XML, 2024-11-29 to 2026-07-01, A marks actual dates.

## Calendars

- Standard: Mon-Fri 08:00-12:00, 13:00-17:00; Sat-Sun off.

## Schedule

| ID | WBS | Task | Type | Duration | Start | Finish | Predecessors | Complete | Remaining | Baseline start | Baseline finish | Baseline duration | Total slack | Constraint | Contact Start | Contract Finish |
| --- | --- | --- | --- | --- | --- | --- | --- | --- | --- | --- | --- | --- | --- | --- | --- | --- |
| 1 | 1 | **Overall Project Duration - Public Storage - Delray Beach** |  | 414d | 2024-11-29 A | 2026-07-01 |  | 84% | 66.19d | 2024-11-29 | 2026-07-03 | 219d | 0d |  | Fri 3/31/23 | Thu 2/22/24 |
| 2 | 1.1 | Contract Award |  | 35d | 2024-11-29 A | 2025-01-16 A |  | 100% |  | 2024-11-29 | 2025-01-16 | 1d |  | start no earlier than 2024-11-29 | Mon 4/10/23 | Fri 4/14/23 |
| 3 | 1.2 | Release Subcontractors |  | 10d | 2025-04-11 A | 2025-04-24 A | 2FS+60d | 100% |  | 2025-01-17 | 2025-01-30 | 10d |  |  | Mon 4/17/23 | Fri 5/12/23 |
| 4 | 1.3 | Obtain Vertical Building Pemit By Owner |  | 1d | 2025-04-28 A | 2025-04-28 A | 2FS+5w | 100% |  | 2025-04-28 | 2025-04-28 |  |  | start no earlier than 2023-08-07 | Mon 8/7/23 | Mon 8/7/23 |
| 5 | 1.4 | Obtain Water & Sewer Permit |  | 1d | 2025-05-06 A | 2025-05-06 A | 4FS+2w | 100% |  | 2025-05-06 | 2025-05-06 |  |  |  | Fri 8/18/23 | Fri 8/18/23 |
| 6 | 1.5 | DELAY - Gopher Tortoise Relocation Permit - FWC |  | 16d | 2025-05-09 A | 2025-05-30 A |  | 100% |  | 2025-05-09 | 2025-05-30 |  |  |  |  |  |
| 7 | 1.6 | DELAY - Gopher Tortoise Relocation |  | 1d | 2025-06-12 A | 2025-06-12 A | 6FS+8d | 100% |  | 2025-06-12 | 2025-06-12 |  |  |  |  |  |
| 8 | 1.7 | City Precontruction Meeting | milestone | 0d | 2025-07-21 A | 2025-07-21 A | 5FS+54d | 100% |  | 2025-07-01 | 2025-07-01 |  |  |  | Fri 9/1/23 | Fri 9/1/23 |
| 9 | 1.8 | **SUBMITTALS** |  | 345d | 2024-12-06 A | 2026-04-02 |  | 99% | 4.02d | 2024-12-06 | 2025-09-04 | 163d | 48d |  | Mon 4/3/23 | Fri 11/3/23 |
| 10 | 1.8.1 | **Site Submittals** |  | 125d | 2025-01-24 A | 2025-07-17 A |  | 100% |  | 2025-01-24 | 2025-07-01 | 60d |  |  | Mon 4/24/23 | Fri 7/14/23 |
| 11 | 1.8.1.1 | Storm Drainage& Sewer System Submittals |  | 5.4w | 2025-01-24 A | 2025-03-03 A | 3SS+5d | 100% |  | 2025-01-24 | 2025-03-03 | 2w |  | finish no earlier than 2020-08-14 | Mon 4/24/23 | Fri 5/5/23 |
| 12 | 1.8.1.2 | Approval / EOR |  | 40d | 2025-03-04 A | 2025-04-28 A | 11 | 100% |  | 2025-03-04 | 2025-04-28 | 10d |  | start no earlier than 2021-01-08 | Mon 5/8/23 | Fri 5/19/23 |
| 13 | 1.8.1.3 | Revised Submittals |  | 5d | 2025-04-29 A | 2025-05-05 A | 12 | 100% |  | 2025-04-29 | 2025-05-05 |  |  |  |  |  |
| 14 | 1.8.1.4 | Approval / EOR |  | 8d | 2025-05-06 A | 2025-05-15 A | 13 | 100% |  | 2025-05-06 | 2025-05-15 |  |  |  |  |  |
| 15 | 1.8.1.5 | Fabricate and Deliver Structures |  | 7.5w | 2025-05-27 A | 2025-07-17 A | 14FS+20d | 100% |  | 2025-05-27 | 2025-07-01 | 8w |  | start no earlier than 2021-01-04 | Mon 5/22/23 | Fri 7/14/23 |
| 16 | 1.8.2 | **Fire Sprinkler Shop Drawings** |  | 84d | 2025-04-25 A | 2025-08-20 A |  | 100% |  | 2025-01-31 | 2025-07-09 | 69d |  |  | Mon 5/15/23 | Wed 9/20/23 |
| 17 | 1.8.2.1 | Request& Receive CAD Files |  | 55d | 2025-04-25 A | 2025-07-10 A | 3 | 100% |  | 2025-01-31 | 2025-02-04 | 1d |  |  | Mon 5/15/23 | Mon 5/15/23 |
| 18 | 1.8.2.2 | Shop Drawing Submittal |  | 12d | 2025-07-11 A | 2025-07-28 A | 17 | 100% |  | 2025-02-05 | 2025-02-25 | 25d |  | finish no earlier than 2023-05-24 | Tue 5/16/23 | Mon 6/19/23 |
| 19 | 1.8.2.3 | Approval / AOR |  | 17d | 2025-07-29 A | 2025-08-20 A | 18 | 100% |  | 2025-02-26 | 2025-03-11 | 15d |  | finish no earlier than 2020-09-30 | Tue 6/20/23 | Mon 7/10/23 |
| 20 | 1.8.2.4 | City Submission& Approval Estimated | milestone | 0d | 2025-08-04 A | 2025-08-04 A | 19, 4FS+5d | 100% |  | 2025-05-06 | 2025-06-23 | 25d |  | finish no earlier than 2020-11-20 | Mon 8/14/23 | Fri 9/15/23 |
| 21 | 1.8.2.5 | Fire Sprinkler Permit |  | 10d | 2025-08-06 A | 2025-08-19 A | 20FS+2d | 100% |  | 2025-06-26 | 2025-07-09 | 1d |  | start no earlier than 2020-12-07 | Wed 9/20/23 | Wed 9/20/23 |
| 22 | 1.8.3 | **Structural Steel Shop Drawings** |  | 150d | 2024-12-06 A | 2025-07-03 A |  | 100% |  | 2024-12-06 | 2025-07-03 | 154d |  |  | Mon 4/10/23 | Fri 10/23/23 |
| 23 | 1.8.3.1 | Release Structural Steel Pkg |  | 88d | 2024-12-06 A | 2025-04-08 A | 3SS-30d | 100% |  | 2024-12-06 | 2025-04-08 |  |  |  | Mon 4/10/23 | Thu 4/10/23 |
| 24 | 1.8.3.2 | Structural Steel Shop Drawings Submittal | milestone | 0d | 2025-03-07 A | 2025-03-07 A | 23FS+5d | 100% |  | 2025-03-07 | 2025-03-07 | 30d |  |  | Mon 4/17/23 | Thu 5/26/24 |
| 25 | 1.8.3.3 | Approval / AOR |  | 49d | 2025-03-10 A | 2025-05-15 A | 24 | 100% |  | 2025-03-10 | 2025-05-15 | 10d |  |  | Mon 5/29/23 | Mon 6/9/23 |
| 26 | 1.8.3.4 | Fabricate Steel Pkg |  | 6w | 2025-05-23 A | 2025-07-03 A | 25FS+5d | 100% |  | 2025-05-23 | 2025-07-03 | 21.6w |  |  | Mon 6/13/23 | Tue 10/23/23 |

| ID | WBS | Task | Type | Duration | Start | Finish | Predecessors | Complete | Remaining | Baseline start | Baseline finish | Baseline duration | Total slack | Free slack | Constraint | Contact Start | Contract Finish |
| --- | --- | --- | --- | --- | --- | --- | --- | --- | --- | --- | --- | --- | --- | --- | --- | --- | --- |
| 27 | 1.8.4 | **Cold Formed Framing** |  | 140d | 2025-01-31 A | 2025-08-14 A |  | 100% |  | 2025-01-31 | 2025-07-03 |  |  |  |  |  |  |
| 28 | 1.8.4.1 | Release CFS Package |  | 48d | 2025-01-31 A | 2025-04-08 A | 3SS+10d | 100% |  | 2025-01-31 | 2025-04-08 |  |  |  |  |  |  |
| 29 | 1.8.4.2 | Shop Drawings | milestone | 0d | 2025-04-07 A | 2025-04-07 A | 28 | 100% |  | 2025-04-07 | 2025-04-07 |  |  |  |  |  |  |
| 30 | 1.8.4.3 | Approval / AOR |  | 28d | 2025-04-08 A | 2025-05-15 A | 29 | 100% |  | 2025-04-08 | 2025-05-15 |  |  |  |  |  |  |
| 31 | 1.8.4.4 | Revised Submittals | manual | 4d | 2025-05-16 A | 2025-05-21 A | 30 | 100% |  | 2025-05-16 | 2025-05-21 |  |  |  |  |  |  |
| 32 | 1.8.4.5 | Approval / AOR | manual | 16d | 2025-05-19 A | 2025-06-09 A | 31 | 100% |  | 2025-05-19 | 2025-06-09 |  |  |  |  |  |  |
| 33 | 1.8.4.6 | Material Delivery |  | 7w | 2025-06-27 A | 2025-08-14 A | 30FS+6w | 100% |  | 2025-05-16 | 2025-07-03 |  |  |  |  |  |  |
| 34 | 1.8.5 | **Concrete / Masonry Submittals** |  | 138d | 2025-01-31 A | 2025-08-12 A |  | 100% |  | 2025-01-31 | 2025-06-27 | 51d |  |  |  | Mon 5/15/23 | Mon 7/24/23 |
| 35 | 1.8.5.1 | Footing Rebar Submittal |  | 23d | 2025-01-31 A | 2025-03-04 A | 3 | 100% |  | 2025-01-31 | 2025-03-04 | 5d |  |  |  | Mon 5/15/23 | Fri 5/19/23 |
| 36 | 1.8.5.2 | Approval AOR |  | 53d | 2025-03-05 A | 2025-05-16 A | 35 | 100% |  | 2025-03-05 | 2025-05-16 | 4d |  |  | finish no earlier than 2020-08-19 | Mon 5/22/23 | Thu 5/25/23 |
| 37 | 1.8.5.3 | Concrete mix Submittals |  | 68d | 2025-04-25 A | 2025-07-29 A | 3 | 100% |  | 2025-01-31 | 2025-02-13 | 5d |  |  | finish no earlier than 2020-08-19 | Fri 5/26/23 | Thu 6/1/23 |
| 38 | 1.8.5.4 | Approval AOR |  | 10d | 2025-07-30 A | 2025-08-12 A | 37 | 100% |  | 2025-02-14 | 2025-02-27 | 5d |  |  |  | Fri 6/2/23 | Thu 6/8/23 |
| 39 | 1.8.5.5 | CMU Submittals |  | 81d | 2025-01-31 A | 2025-05-23 A | 3 | 100% |  | 2025-01-31 | 2025-05-23 | 14d |  |  | finish no earlier than 2020-08-27 | Fri 6/2/23 | Wed 6/21/23 |
| 40 | 1.8.5.6 | Approval AOR |  | 11d | 2025-05-26 A | 2025-06-09 A | 39 | 100% |  | 2025-05-26 | 2025-06-09 | 8d |  |  | finish no earlier than 2020-09-08 | Thu 6/22/23 | Mon 7/3/23 |
| 41 | 1.8.5.7 | Release Rebar |  | 15d | 2025-06-09 A | 2025-06-27 A | 36FS+3w | 100% |  | 2025-06-09 | 2025-06-27 | 10d |  |  |  | Tue 7/11/23 | Mon 7/24/23 |
| 42 | 1.8.6 | **Roofing** |  | 286d | 2025-01-29 A | 2026-03-04 A |  | 100% |  | 2025-01-17 | 2025-05-12 | 135d |  |  |  | Mon 4/17/23 | Fri 11/3/23 |
| 43 | 1.8.6.1 | Roofing Submittal |  | 30d | 2025-10-31 A | 2025-12-11 A |  | 100% |  | 2025-01-17 | 2025-03-03 | 15d |  |  | finish no earlier than 2023-05-30 | Mon 4/17/23 | Fri 5/5/23 |
| 44 | 1.8.6.2 | Approval / AOR |  | 34d | 2025-12-12 A | 2026-01-28 A | 43 | 100% |  | 2025-03-04 | 2025-03-17 | 10d |  |  |  | Mon 5/8/23 | Fri 5/19/23 |
| 45 | 1.8.6.3 | Release Roofing Material Production |  | 5d | 2025-01-29 A | 2026-02-04 A | 44 | 100% |  | 2025-01-17 | 2025-01-17 |  |  |  |  | Mon 4/17/23 | Mon 4/17/23 |
| 46 | 1.8.6.4 | Fabricate & Deliver Roofing Material |  | 5w | 2026-01-29 A | 2026-03-04 A | 44 | 100% |  | 2025-03-18 | 2025-05-12 | 22w |  |  |  | Mon 5/22/23 | Fri 11/3/23 |
| 47 | 1.8.7 | **Storefront & Window Shop drawings** |  | 145d | 2025-09-08 A | 2026-03-27 |  | 97% | 4.26d | 2025-01-31 | 2025-05-27 | 116d | 52d |  |  | Mon 5/15/23 | Mon 10/23/23 |
| 48 | 1.8.7.1 | Storefront& Window Submittal |  | 18d | 2025-09-08 A | 2025-10-01 A |  | 100% |  | 2025-01-31 | 2025-02-11 | 51d |  |  |  | Mon 5/15/23 | Mon 7/24/23 |
| 49 | 1.8.7.2 | Approval / AOR |  | 32d | 2025-10-01 A | 2025-11-13 A | 48 | 100% |  | 2025-02-12 | 2025-02-25 | 10d |  |  |  | Tue 7/25/23 | Mon 8/7/23 |
| 50 | 1.8.7.3 | Glazing Samples | manual | 9d | 2025-12-24 A | 2026-01-05 A | 48 | 100% |  |  |  |  |  |  |  |  |  |
| 51 | 1.8.7.4 | Approval / AOR | manual | 14d | 2026-01-06 A | 2026-01-23 A | 50 | 100% |  |  |  |  |  |  |  |  |  |
| 52 | 1.8.7.5 | City Submission& Approval |  | 11d | 2026-02-05 A | 2026-02-20 A | 51FS+9d | 100% |  | 2025-02-26 | 2025-03-25 | 20d |  |  | start no earlier than 2020-11-02 | Tue 8/8/23 | Mon 9/4/23 |
| 53 | 1.8.7.6 | Fabrication |  | 35d | 2026-02-09 A | 2026-03-27 | 51FS+10d | 90% | 3.5d | 2025-03-26 | 2025-05-27 | 35d | 52d | 6d |  | Tue 9/5/23 | Mon 10/23/23 |

| ID | WBS | Task | Type | Duration | Start | Finish | Predecessors | Complete | Remaining | Baseline start | Baseline finish | Baseline duration | Total slack | Constraint | Contact Start | Contract Finish |
| --- | --- | --- | --- | --- | --- | --- | --- | --- | --- | --- | --- | --- | --- | --- | --- | --- |
| 54 | 1.8.8 | **HVAC Submittals** |  | 158d | 2025-07-22 A | 2026-02-26 A |  | 100% |  | 2025-01-31 | 2025-08-28 | 60d |  |  | Mon 5/15/23 | Fri 8/4/23 |
| 55 | 1.8.8.1 | Equipment, Air Distribution Submittals |  | 10d | 2025-07-22 A | 2025-08-04 A |  | 100% |  | 2025-01-31 | 2025-02-20 | 13d |  | finish no earlier than 2020-09-04 | Mon 5/15/23 | Wed 5/31/23 |
| 56 | 1.8.8.2 | Approval / AOR & EOR |  | 14d | 2025-08-04 A | 2025-08-21 A | 55 | 100% |  | 2025-02-21 | 2025-03-06 | 4d |  | finish no earlier than 2023-06-24 | Thu 6/1/23 | Tue 6/6/23 |
| 57 | 1.8.8.3 | Revised VRV Package - Rev 5 | manual | 8d | 2025-08-22 A | 2025-09-02 A | 56 | 100% |  |  |  |  |  |  |  |  |
| 58 | 1.8.8.4 | Approval / AOR & EOR | manual | 10d | 2025-09-03 A | 2025-09-16 A | 57 | 100% |  |  |  |  |  |  |  |  |
| 59 | 1.8.8.5 | Additional Submittals Equipment Requested by EOR | manual | 55d | 2025-09-17 A | 2025-12-02 A | 58 | 100% |  |  |  |  |  |  |  |  |
| 60 | 1.8.8.6 | Approval / AOR & EOR | manual | 26d | 2025-12-03 A | 2026-01-07 A | 59 | 100% |  |  |  |  |  |  |  |  |
| 61 | 1.8.8.7 | 3rd Revised Package Submitted - (Daikin Response) | manual | 1d | 2026-01-08 A | 2026-01-08 A | 60 | 100% |  |  |  |  |  |  |  |  |
| 62 | 1.8.8.8 | Approval AOR / EOR | manual | 10d | 2026-01-09 A | 2026-01-22 A | 61 | 100% |  |  |  |  |  |  |  |  |
| 63 | 1.8.8.9 | Fabricate and Delivery |  | 5w | 2026-01-23 A | 2026-02-26 A | 62 | 100% |  | 2025-03-07 | 2025-08-28 | 8.6w |  | finish no earlier than 2020-10-23 | Wed 6/7/23 | Fri 8/4/23 |
| 64 | 1.8.9 | **Electrical Submittals** |  | 197d | 2025-04-25 A | 2026-01-26 A |  | 100% |  | 2025-01-31 | 2025-09-04 | 75d |  |  | Mon 5/15/23 | Fri 8/25/23 |
| 65 | 1.8.9.1 | Gear and Lighting Submittals |  | 20d | 2025-04-25 A | 2025-05-22 A | 3 | 100% |  | 2025-01-31 | 2025-02-27 | 20d |  |  | Mon 5/15/23 | Fri 6/9/23 |
| 66 | 1.8.9.2 | Approval / EOR |  | 10d | 2025-08-19 A | 2025-09-01 A | 65 | 100% |  | 2025-02-28 | 2025-03-13 | 10d |  |  | Mon 6/12/23 | Fri 6/23/23 |
| 67 | 1.8.9.3 | Fabricate and Delivery |  | 21w | 2025-09-02 A | 2026-01-26 A | 66 | 100% |  | 2025-03-14 | 2025-09-04 | 9w |  |  | Mon 6/26/23 | Fri 8/25/23 |
| 68 | 1.8.10 | **Elevator Submittals** |  | 305d | 2025-01-31 A | 2026-04-02 |  | 94% | 17.6d | 2025-01-31 | 2025-08-08 | 75d | 0d |  | Mon 5/15/23 | Fri 8/25/23 |
| 69 | 1.8.10.1 | Submittals |  | 13d | 2025-01-31 A | 2025-02-18 A | 3 | 100% |  | 2025-01-31 | 2025-02-18 | 20d |  |  | Mon 5/15/23 | Fri 6/9/23 |
| 70 | 1.8.10.2 | Approval / EOR |  | 23d | 2025-02-19 A | 2025-03-21 A | 69 | 100% |  | 2025-02-19 | 2025-03-21 | 10d |  |  | Mon 6/12/23 | Fri 6/23/23 |
| 71 | 1.8.10.3 | Revised Submittals | manual | 77d | 2025-01-31 A | 2025-05-19 A |  | 100% |  | 2025-01-31 | 2025-05-19 |  |  |  |  |  |
| 72 | 1.8.10.4 | Approval / EOR | manual | 38d | 2025-05-20 A | 2025-07-10 A | 71 | 100% |  | 2025-05-20 | 2025-06-02 |  |  |  |  |  |
| 73 | 1.8.10.5 | Release Material form Sent to Schindler | manual | 1d | 2025-11-21 A | 2025-11-21 A |  | 100% |  |  |  |  |  |  |  |  |
| 74 | 1.8.10.6 | Fabricate and Delivery (Estimated) |  | 19w | 2025-11-21 A | 2026-04-02 | 70 | 85% | 2.85w | 2025-03-24 | 2025-08-08 | 9w | 0d |  | Mon 6/26/23 | Fri 8/25/23 |
| 75 | 1.9 | **Construction** |  | 268d | 2025-06-23 A | 2026-07-01 |  | 64% | 97.48d | 2025-06-24 | 2026-07-03 | 177d | 0d |  | Mon 4/17/23 | Thu 2/22/24 |
| 76 | 1.9.1 | **Overall Site Construction** |  | 249d | 2025-06-23 A | 2026-06-04 |  | 68% | 78.58d | 2025-06-24 | 2026-05-11 | 171d | 19d |  | Mon 4/17/23 | Thu 1/18/24 |
| 77 | 1.9.1.1 | Site Mobilization |  | 4d | 2025-06-23 A | 2025-06-27 A | 7FS+7d | 100% |  | 2025-06-24 | 2025-07-07 | 6d |  | start no earlier than 2022-09-06 | Mon 4/17/23 | Mon 4/24/23 |

| ID | WBS | Task | Duration | Start | Finish | Predecessors | Complete | Remaining | Baseline start | Baseline finish | Baseline duration | Total slack | Free slack | Constraint | Contact Start | Contract Finish |
| --- | --- | --- | --- | --- | --- | --- | --- | --- | --- | --- | --- | --- | --- | --- | --- | --- |
| 78 | 1.9.1.2 | **Sitework** | 20d | 2025-06-23 A | 2025-07-18 A |  | 100% |  | 2025-06-24 | 2025-08-11 | 74d |  |  |  | Mon 4/17/23 | Tue 8/22/23 |
| 79 | 1.9.1.2.1 | Build Construction Entrances | 1d | 2025-06-23 A | 2025-06-23 A | 77SS | 100% |  | 2025-06-24 | 2025-06-25 | 3d |  |  | finish no earlier than 2022-04-18 | Mon 4/17/23 | Mon 4/17/23 |
| 80 | 1.9.1.2.2 | Clear & Grub | 7d | 2025-06-27 A | 2025-07-07 A | 79 | 100% |  | 2025-06-26 | 2025-07-09 |  |  |  |  |  |  |
| 81 | 1.9.1.2.3 | Erosion Control | 1.3d | 2025-07-02 A | 2025-07-03 A | 80SS+4d | 100% |  |  |  |  |  |  |  |  |  |
| 82 | 1.9.1.2.4 | Site Survey& Layout (verify building pad) | 3d | 2025-07-08 A | 2025-07-10 A | 80 | 100% |  | 2025-07-10 | 2025-07-14 | 3d |  |  |  | Wed 4/19/23 | Fri 4/21/23 |
| 83 | 1.9.1.2.5 | Construct Building Pad - Obtain Pad Certificate | 6d | 2025-07-10 A | 2025-07-18 A | 82 | 100% |  | 2025-07-15 | 2025-07-28 |  |  |  |  |  |  |
| 84 | 1.9.1.3 | **Storm Drainage** | 141d | 2025-07-28 A | 2026-02-09 A |  | 100% |  | 2025-10-07 | 2025-11-11 | 31d |  |  |  | Mon 8/21/23 | Mon 10/2/23 |
| 85 | 1.9.1.3.1 | PENDING RFI #08 - DRAINAGE CONFLICT | 10d | 2025-08-20 A | 2025-09-02 A |  | 100% |  |  |  |  |  |  |  |  |  |
| 86 | 1.9.1.3.2 | Drainage Revision #01 (Estimated) | 16d | 2025-09-03 A | 2025-09-24 A | 85 | 100% |  |  |  |  |  |  |  |  |  |
| 87 | 1.9.1.3.3 | Drainage Revision #02 (Pricing Approval) | 32d | 2025-10-17 A | 2025-12-01 A | 86 | 100% |  |  |  |  |  |  |  |  |  |
| 88 | 1.9.1.3.4 | Drainage Revision #02 - County Approval | 11d | 2026-01-15 A | 2026-01-29 A | 87FS+32d | 100% |  |  |  |  |  |  |  |  |  |
| 89 | 1.9.1.3.5 | Install Storm Structures | 4w | 2025-07-28 A | 2026-02-06 A | 145FS-9w, 88FS+3d | 100% |  | 2025-10-07 | 2025-10-27 | 3w |  |  | start no earlier than 2023-08-21 | Mon 8/21/23 | Fri 9/8/23 |
| 90 | 1.9.1.3.6 | Install storm pipe and exfiltration trenches | 3.75w | 2025-07-29 A | 2026-02-06 A | 89SS+2w, 88 | 100% |  | 2025-10-21 | 2025-11-10 | 3w |  |  | finish no earlier than 2021-02-12 | Mon 9/4/23 | Fri 9/22/23 |
| 91 | 1.9.1.3.7 | Inspection | 1d | 2026-02-09 A | 2026-02-09 A | 90 | 100% |  | 2025-11-11 | 2025-11-11 | 1d |  |  |  | Mon 10/2/23 | Mon 10/2/23 |
| 92 | 1.9.1.4 | **Sewer System** | 24d | 2025-08-11 A | 2025-09-11 A |  | 100% |  | 2025-11-11 | 2025-12-15 | 23d |  |  |  | Wed 10/11/23 | Fri 11/10/23 |
| 93 | 1.9.1.4.1 | Tie into Existing Stub as required | 1d | 2025-08-11 A | 2025-08-13 A | 8, 90 | 100% |  | 2025-11-11 | 2025-11-17 | 5d |  |  | start no earlier than 2023-10-11 | Wed 10/11/23 | Tue 10/17/23 |
| 94 | 1.9.1.4.2 | Install Sanitary Piping | 21d | 2025-08-11 A | 2025-09-11 A | 93 | 100% |  | 2025-11-18 | 2025-12-15 | 10d |  |  |  | Mon 10/30/23 | Fri 11/10/23 |
| 95 | 1.9.1.5 | **Domestic Water Service** | 154d | 2025-08-19 A | 2026-03-20 |  | 94% | 8.56d | 2025-12-16 | 2026-01-26 | 30d | 3d |  |  | Fri 9/8/23 | Thu 10/26/23 |
| 96 | 1.9.1.5.1 | Water Main installation | 4w | 2025-08-19 A | 2025-10-08 A | 94 | 100% |  | 2025-12-16 | 2025-12-29 | 3w |  |  | start no earlier than 2023-09-08 | Fri 9/8/23 | Thu 9/28/23 |
| 97 | 1.9.1.5.2 | Tie-in to Existing Water Main | 2d | 2025-10-09 A | 2025-10-10 A | 96 | 100% |  | 2026-01-23 | 2026-01-26 | 2d |  |  |  | Wed 10/25/23 | Thu 10/26/23 |
| 98 | 1.9.1.5.3 | PBCWUD - Preliminary AB Review & Approval | 16d | 2025-10-16 A | 2025-11-06 A |  | 100% |  |  |  |  |  |  |  |  |  |
| 99 | 1.9.1.5.4 | PBCWUD - S/S AB Hard Copy Submitted Review & Approval | 23d | 2025-12-04 A | 2026-01-05 A | 98 | 100% |  |  |  |  |  |  |  |  |  |
| 100 | 1.9.1.5.5 | Building Water Services | 5d | 2026-02-06 A | 2026-02-12 A | 90FS-1d | 100% |  | 2025-12-30 | 2026-01-05 | 5d |  |  |  | Fri 9/29/23 | Thu 10/5/23 |
| 101 | 1.9.1.5.6 | PBCWUD - Revised AB (New comments provided) | 15d | 2026-02-13 A | 2026-03-05 A | 100 | 100% |  |  |  |  |  |  |  |  |  |
| 102 | 1.9.1.5.7 | Fire Line Underground w/ DDCV& FDC | 3d | 2026-02-11 A | 2026-02-18 A | 100FS+1d, 5 | 100% |  | 2026-01-20 | 2026-01-22 | 3d |  |  |  | Fri 10/20/23 | Tue 10/24/23 |
| 103 | 1.9.1.5.8 | W&S AB After 1st Lift - Submitted to Civil EOR | 1d | 2026-03-13 A | 2026-03-13 A |  | 100% |  |  |  |  |  |  |  |  |  |
| 104 | 1.9.1.5.9 | PBCWUD Review - W&S AB After 1st Lift | 5d | 2026-03-16 | 2026-03-20 | 103 |  |  |  |  |  | 3d | 0d |  |  |  |

| ID | WBS | Task | Type | Duration | Start | Finish | Predecessors | Complete | Remaining | Baseline start | Baseline finish | Baseline duration | Total slack | Free slack | Constraint | Contact Start | Contract Finish |
| --- | --- | --- | --- | --- | --- | --- | --- | --- | --- | --- | --- | --- | --- | --- | --- | --- | --- |
| 105 | 1.9.1.6 | **Hardscape& Misc. Site Work** |  | 54d | 2026-02-04 A | 2026-04-20 |  | 50% | 27.14d | 2026-02-17 | 2026-05-11 | 50d | 52d |  |  | Wed 9/20/23 | Tue 1/2/24 |
| 106 | 1.9.1.6.1 | Primary Electrical Conduit |  | 3d | 2026-02-04 A | 2026-02-06 A | 108SS-10d, 97, 94 | 100% |  | 2026-02-17 | 2026-02-23 | 5d |  |  |  | Wed 9/20/23 | Tue 9/26/23 |
| 107 | 1.9.1.6.2 | Site Lighting, brooks boxes,& Fixture Installation |  | 5d | 2026-02-06 A | 2026-02-17 A | 106SS+5d | 100% |  | 2026-02-24 | 2026-03-02 | 5d |  |  |  | Wed 9/27/23 | Tue 10/3/23 |
| 108 | 1.9.1.6.3 | Fill balance of Site |  | 3d | 2026-02-13 A | 2026-02-17 A | 100 | 100% |  | 2026-02-17 | 2026-03-09 | 10d |  |  | start no earlier than 2023-10-20 | Wed 9/20/23 | Tue 10/10/23 |
| 109 | 1.9.1.6.4 | Sub-base |  | 4d | 2026-02-17 A | 2026-02-20 A | 108SS+2d | 100% |  | 2026-02-24 | 2026-03-09 | 15d |  |  |  | Wed 10/18/23 | Tue 11/7/23 |
| 110 | 1.9.1.6.5 | Base |  | 5d | 2026-02-23 A | 2026-02-27 A | 109 | 100% |  | 2026-03-10 | 2026-03-23 | 10d |  |  |  | Mon 11/13/23 | Fri 11/24/23 |
| 111 | 1.9.1.6.6 | Asphalt (first lift) |  | 5d | 2026-03-02 A | 2026-03-06 A | 110FF+5d | 100% |  | 2026-03-19 | 2026-03-30 | 10d |  |  |  | Mon 11/20/23 | Fri 12/1/23 |
| 112 | 1.9.1.6.7 | Irrigation and ancillary conduit sleeves |  | 7d | 2026-02-25 A | 2026-03-05 A | 108SS+5d | 100% |  | 2026-02-24 | 2026-03-02 | 5d |  |  |  | Wed 9/27/23 | Tue 10/3/23 |
| 113 | 1.9.1.6.8 | Concrete Curbs |  | 6d | 2026-03-05 A | 2026-03-12 A | 111SS+3d | 100% |  | 2026-03-24 | 2026-04-02 | 10d |  |  |  | Thu 11/23/23 | Wed 12/6/23 |
| 114 | 1.9.1.6.9 | Install Water Meter Boxes |  | 2d | 2026-03-12 A | 2026-03-13 A | 113SS+5d | 100% |  | 2026-03-27 | 2026-04-02 | 3d |  |  |  | Tue 11/28/23 | Thu 11/30/23 |
| 115 | 1.9.1.6.10 | Sidewalks |  | 20d | 2026-03-13 A | 2026-04-09 | 113SS, 111 | 25% | 15d | 2026-03-31 | 2026-04-27 | 8d | 59d |  |  | Mon 12/4/23 | Wed 12/13/23 |
| 116 | 1.9.1.6.11 | Irrigation Installation |  | 15d | 2026-03-13 A | 2026-04-02 | 113 | 25% | 11.25d | 2026-04-03 | 2026-04-23 | 12d | 39d | 0d |  | Thu 12/7/23 | Fri 12/22/23 |
| 117 | 1.9.1.6.12 | Final Lift Asphalt |  | 15d | 2026-03-27 | 2026-04-16 | 116FF+10d |  |  | 2026-04-17 | 2026-05-07 | 7d | 39d | 0d |  | Thu 12/21/23 | Fri 12/29/23 |
| 118 | 1.9.1.6.13 | Pavement Marking& Striping |  | 5d | 2026-04-14 | 2026-04-20 | 117FF+2d |  |  | 2026-05-05 | 2026-05-11 | 5d | 39d | 0d |  | Wed 12/27/23 | Tue 1/2/24 |
| 119 | 1.9.1.6.14 | Jet Vac System |  | 3d | 2026-04-16 | 2026-04-20 | 118FF |  |  | 2026-05-07 | 2026-05-11 | 2d | 52d |  |  | Mon 1/1/24 | Tue 1/2/24 |
| 120 | 1.9.1.7 | **CONVEYANCE PROCESS** |  | 54d | 2026-03-23 | 2026-06-04 |  |  |  | 2025-12-29 | 2026-04-27 | 39d | 3d |  |  | Wed 10/25/23 | Fri 1/5/24 |
| 121 | 1.9.1.7.1 | Water (Flush & Pressure Testing) |  | 4d | 2026-03-23 | 2026-03-26 | 102FS+5d, 97, 111FS+1d, 104 |  |  | 2026-01-27 | 2026-01-30 | 4d | 3d | 0d | start no earlier than 2023-10-25 | Wed 10/25/23 | Mon 10/30/23 |
| 122 | 1.9.1.7.2 | Water Asbuilts (Partitial for HRS) | milestone | 0d | 2026-03-30 | 2026-03-30 | 102FS+1w, 121FS+2d |  |  | 2026-02-03 | 2026-02-03 |  | 16d | 0d | start no earlier than 2023-11-06 | Fri 11/24/23 | Fri 11/24/23 |
| 123 | 1.9.1.7.3 | Testing (Bacti Samples / Density Tests) |  | 5d | 2026-04-03 | 2026-04-09 | 121FS+1w |  |  | 2026-02-09 | 2026-02-13 | 5d | 3d | 0d |  | Mon 11/6/23 | Mon 11/6/23 |
| 124 | 1.9.1.7.4 | Sewer Asbuilts | milestone | 0d | 2026-03-30 | 2026-03-30 | 122 |  |  | 2025-12-29 | 2025-12-29 |  | 16d | 0d |  | Tue 11/7/23 | Mon 11/13/23 |
| 125 | 1.9.1.7.5 | Release of Lien | milestone | 0d | 2026-04-16 | 2026-04-16 | 124, 122, 123FS+1w |  |  | 2026-02-20 | 2026-02-20 |  | 3d | 0d |  | Fri 11/24/23 | Fri 11/24/23 |
| 126 | 1.9.1.7.6 | HRS Certification (Submission) |  | 6w | 2026-04-17 | 2026-05-28 | 122, 121, 123, 125 |  |  | 2026-02-23 | 2026-04-03 | 4w | 3d | 0d |  | Mon 11/27/23 | Fri 1/5/24 |
| 127 | 1.9.1.7.7 | Sewer (Leakage & Lamping) |  | 3d | 2026-03-31 | 2026-04-02 | 94, 109FS+1w, 124 |  |  | 2026-03-17 | 2026-03-19 | 3d | 37d | 0d | start no earlier than 2023-12-01 | Mon 11/27/23 | Wed 11/29/23 |
| 128 | 1.9.1.7.8 | DERM Certification (Submission) |  | 6w | 2026-04-17 | 2026-05-28 | 127SS, 125SS, 126SS |  |  | 2026-03-17 | 2026-04-27 | 4w | 24d |  |  | Mon 11/27/23 | Fri 1/5/24 |
| 129 | 1.9.1.7.9 | Water Meter Installation |  | 5d | 2026-05-29 | 2026-06-04 | 126 |  |  | 2026-04-06 | 2026-04-10 |  | 3d | 0d |  | Fri 1/5/24 | Fri 1/5/24 |
| 130 | 1.9.1.7.10 | Final Asbuilts |  | 1d | 2026-04-17 | 2026-04-17 | 127FS+2w, 114FS+2w |  |  | 2026-04-17 | 2026-04-17 |  | 53d |  | start no earlier than 2024-01-09 | Fri 12/22/23 | Fri 12/22/23 |

| ID | WBS | Task | Duration | Start | Finish | Predecessors | Complete | Remaining | Baseline start | Baseline finish | Baseline duration | Total slack | Free slack | Contact Start | Contract Finish |
| --- | --- | --- | --- | --- | --- | --- | --- | --- | --- | --- | --- | --- | --- | --- | --- |
| 131 | 1.9.2 | **Shell Construction** | 227d | 2025-07-23 A | 2026-06-04 |  | 63% | 83.92d | 2025-07-29 | 2026-06-03 | 148d | 19d |  | Mon 5/22/23 | Thu 2/8/24 |
| 132 | 1.9.2.1 | Building Mobilize | 3d | 2025-07-23 A | 2025-07-25 A | 83FS+2d | 100% |  | 2025-07-29 | 2025-07-31 | 3d |  |  | Mon 5/22/23 | Wed 5/24/23 |
| 133 | 1.9.2.2 | Prep and Reinforce Perimeter Footings | 10d | 2025-07-28 A | 2025-08-08 A | 132 | 100% |  | 2025-08-01 | 2025-08-11 | 15d |  |  | Mon 5/29/23 | Fri 6/16/23 |
| 134 | 1.9.2.3 | Pour Perimeter Footings | 4d | 2025-08-06 A | 2025-08-12 A | 133 | 100% |  |  |  |  |  |  |  |  |
| 135 | 1.9.2.4 | UG Plumbing | 9d | 2025-08-04 A | 2025-08-14 A | 133SS+5d | 100% |  |  |  |  |  |  |  |  |
| 136 | 1.9.2.5 | UG Plumbing Inspection | 1d | 2025-08-15 A | 2025-08-15 A | 135FS+1d | 100% |  |  |  |  |  |  |  |  |
| 137 | 1.9.2.6 | UG Electrical | 9d | 2025-08-04 A | 2025-08-14 A | 135SS | 100% |  |  |  |  |  |  |  |  |
| 138 | 1.9.2.7 | UG Electrical Inspection | 1d | 2025-08-15 A | 2025-08-15 A | 137 | 100% |  |  |  |  |  |  |  |  |
| 139 | 1.9.2.8 | Elevator Pit Waterproofing | 9d | 2025-08-15 A | 2025-08-27 A |  | 100% |  |  |  |  |  |  |  |  |
| 140 | 1.9.2.9 | WEATHER DELAY | 1d | 2025-09-03 A | 2025-09-03 A |  | 100% |  |  |  |  |  |  |  |  |
| 141 | 1.9.2.10 | WEATHER DELAY | 1d | 2025-09-05 A | 2025-09-05 A |  | 100% |  |  |  |  |  |  |  |  |
| 142 | 1.9.2.11 | Slab on Grade Prep and Pour with 1' of Footers | 20d | 2025-08-15 A | 2025-09-19 A | 134, 141 | 100% |  | 2025-08-15 | 2025-09-11 |  |  |  |  |  |
| 143 | 1.9.2.12 | WEATHER DELAY | 1d | 2025-09-22 A | 2025-09-22 A |  | 100% |  |  |  |  |  |  |  |  |
| 144 | 1.9.2.13 | CMU | 32d | 2025-09-24 A | 2025-11-07 A | 142FS+3d | 100% |  | 2025-09-19 | 2025-10-16 |  |  |  |  |  |
| 145 | 1.9.2.14 | CFS Framing & Decking | 20d | 2025-10-14 A | 2025-11-10 A | 142FS+10d, 33 | 100% |  | 2025-09-26 | 2025-10-23 |  |  |  |  |  |
| 146 | 1.9.2.15 | Wall Rough Elec | 30d | 2025-11-11 A | 2025-12-23 A | 145 | 100% |  | 2025-10-24 | 2025-11-20 |  |  |  |  |  |
| 147 | 1.9.2.16 | OH Elec | 25d | 2025-12-10 A | 2026-01-20 A | 146 | 100% |  | 2025-11-21 | 2025-12-25 |  |  |  |  |  |
| 148 | 1.9.2.17 | Interior Build-Out | 45d | 2026-01-22 A | 2026-03-26 | 147FS+2d | 40% | 27d | 2026-01-30 | 2026-03-19 |  | 69.8d |  |  |  |
| 149 | 1.9.2.18 | Fire Sprikler OH | 15d | 2026-01-26 A | 2026-02-16 A | 147FS+4d | 100% |  |  |  |  |  |  |  |  |
| 150 | 1.9.2.19 | Elecrtical Room - Finish 1st Floor | 20d | 2026-02-20 A | 2026-03-23 | 67FS+20d | 70% | 6d | 2026-02-10 | 2026-03-02 |  | 54d | 0d |  |  |
| 151 | 1.9.2.20 | Duct Work Installation | 8d | 2026-02-18 A | 2026-03-02 A | 149FF+10d | 100% |  |  |  |  |  |  |  |  |
| 152 | 1.9.2.21 | MEP Trim-Out | 2w | 2026-03-09 A | 2026-03-23 | 149, 151FS+5d | 45% | 1.1w | 2026-01-30 | 2026-02-12 |  | 72.8d |  |  |  |
| 153 | 1.9.2.22 | **2nd Floor** | 130d | 2025-11-11 A | 2026-05-11 |  | 88% | 16.25d | 2025-10-24 | 2026-03-12 |  | 37d |  |  |  |
| 154 | 1.9.2.22.1 | Prep and Pour Composite Slab | 6d | 2025-11-11 A | 2025-11-18 A | 145 | 100% |  | 2025-10-24 | 2025-11-07 |  |  |  |  |  |
| 155 | 1.9.2.22.2 | CMU | 5d | 2025-11-19 A | 2025-12-02 A | 154FS+5d | 100% |  | 2025-11-17 | 2025-12-12 |  |  |  |  |  |
| 156 | 1.9.2.22.3 | CFS Framing & Decking | 4d | 2025-11-21 A | 2025-12-08 A | 155SS+10d | 100% |  | 2025-12-01 | 2025-12-26 |  |  |  |  |  |
| 157 | 1.9.2.22.4 | Wall Rough Elec | 30d | 2025-12-23 A | 2026-02-03 A | 156FS+10d, 146 | 100% |  | 2025-12-29 | 2026-01-16 |  |  |  |  |  |
| 158 | 1.9.2.22.5 | OH Elec | 25d | 2026-01-02 A | 2026-02-06 A | 157FF+3d | 100% |  | 2026-01-19 | 2026-02-20 |  |  |  |  |  |
| 159 | 1.9.2.22.6 | Fire Sprikler OH | 10d | 2026-02-18 A | 2026-03-04 A | 149FS+2d | 100% |  |  |  |  |  |  |  |  |
| 160 | 1.9.2.22.7 | Duct Work Installation 2nd Floor | 10d | 2026-03-10 A | 2026-03-23 | 151FS+5d | 75% | 2.5d |  |  |  | 4d | 0d |  |  |
| 161 | 1.9.2.22.8 | MEP Trim-Out 2nd Floor | 2w | 2026-04-28 | 2026-05-11 | 176FS-5d |  |  | 2026-02-27 | 2026-03-12 |  | 37d |  |  |  |

| ID | WBS | Task | Duration | Start | Finish | Predecessors | Complete | Remaining | Baseline start | Baseline finish | Baseline duration | Total slack | Free slack | Contact Start | Contract Finish |
| --- | --- | --- | --- | --- | --- | --- | --- | --- | --- | --- | --- | --- | --- | --- | --- |
| 162 | 1.9.2.23 | **3rd Floor** | 126d | 2025-12-09 A | 2026-06-02 |  | 80% | 25.36d | 2025-12-29 | 2026-05-05 |  | 21d |  |  |  |
| 163 | 1.9.2.23.1 | Prep and Pour Composite Slab | 6d | 2025-12-09 A | 2025-12-16 A | 156 | 100% |  | 2025-12-29 | 2026-01-09 |  |  |  |  |  |
| 164 | 1.9.2.23.2 | PBC Inspections Delay | 9d | 2026-01-06 A | 2026-01-16 A |  | 100% |  |  |  |  |  |  |  |  |
| 165 | 1.9.2.23.3 | CMU | 24d | 2025-12-17 A | 2026-02-03 A | 163FS+1d, 164 | 100% |  | 2026-01-19 | 2026-02-13 |  |  |  |  |  |
| 166 | 1.9.2.23.4 | CFS Framing & Decking | 22d | 2025-12-22 A | 2026-02-10 A | 165SS+12d, 164 | 100% |  | 2026-02-04 | 2026-03-03 |  |  |  |  |  |
| 167 | 1.9.2.23.5 | Top-Out | 10.25d | 2026-02-10 A | 2026-02-24 A | 166 | 100% |  | 2026-03-04 | 2026-03-17 |  |  |  |  |  |
| 168 | 1.9.2.23.6 | Wall Rough & OH Elec | 10.25d | 2026-02-18 A | 2026-03-04 A | 167FS-4d | 100% |  | 2026-03-04 | 2026-03-24 |  |  |  |  |  |
| 169 | 1.9.2.23.7 | Exterior CFD Trusses and Sheathing | 8.25d | 2026-02-24 A | 2026-03-06 A | 167 | 100% |  | 2026-03-18 | 2026-04-07 |  |  |  |  |  |
| 170 | 1.9.2.23.8 | Installation of Additional Framing - South Elevation - Per RFI 21 | 15d | 2026-02-20 A | 2026-03-12 A |  | 100% |  |  |  |  |  |  |  |  |
| 171 | 1.9.2.23.9 | OH Elec | 25d | 2026-03-05 A | 2026-04-08 | 168 | 85% | 3.75d | 2026-03-25 | 2026-04-28 | 2d | 60d |  | Wed 12/27/23 | Thu 12/28/23 |
| 172 | 1.9.2.23.10 | Fire Sprikler OH | 10d | 2026-03-20 | 2026-04-03 | 159FS+12d |  |  |  |  |  | 63.8d |  |  |  |
| 173 | 1.9.2.23.11 | Duct Work Install | 8d | 2026-03-24 | 2026-04-02 | 160 |  |  |  |  |  | 64d |  |  |  |
| 174 | 1.9.2.23.12 | MEP Trim-Out 3rd Floor | 2w | 2026-05-20 | 2026-06-02 | 177, 63 |  |  | 2026-04-22 | 2026-05-05 | 2w | 4d | 0d | Fri 1/12/24 | Thu 1/25/24 |
| 175 | 1.9.2.24 | Roofing | 10d | 2026-03-17 A | 2026-03-30 | 167FS+1d, 46, 170FS+2d | 15% | 8.5d | 2026-03-18 | 2026-03-31 |  | 3d | 0d |  |  |
| 176 | 1.9.2.25 | Hallway System (By Owner) - 2nd & 3rd Floor | 5w | 2026-03-31 | 2026-05-04 | 157, 159, 160FS+5d, 175 |  |  | 2026-01-30 | 2026-02-26 |  | 4d | 0d |  |  |
| 177 | 1.9.2.26 | Hallway System (By Owner) - 1st Floor | 2w | 2026-05-06 | 2026-05-19 | 168, 176FS+1d |  |  | 2026-03-25 | 2026-04-21 | 2.4w | 4d | 0d | Tue 1/2/24 | Wed 1/17/24 |
| 178 | 1.9.2.27 | Stucco and Architectural Finishes | 45d | 2026-03-18 | 2026-05-19 | 169FS+7d |  |  | 2026-03-04 | 2026-05-05 |  | 21d | 0d |  |  |
| 179 | 1.9.2.28 | Exterior Storefront& Windows, & Louvers | 15d | 2026-04-08 | 2026-04-28 | 178FF-15d, 53FS+1d |  |  | 2026-03-18 | 2026-04-14 | 10d | 46d |  | Tue 1/16/24 | Mon 1/29/24 |
| 180 | 1.9.2.29 | Elevator Installation | 35d | 2026-04-03 | 2026-05-21 | 175, 74 |  |  | 2026-04-01 | 2026-05-19 |  | 0d |  |  |  |
| 181 | 1.9.2.30 | Install Gutters and downspouts | 10d | 2026-05-20 | 2026-06-02 | 178 |  |  | 2026-05-06 | 2026-05-19 | 8d | 21d |  | Tue 1/23/24 | Thu 2/1/24 |
| 182 | 1.9.2.31 | Temp For Test | 3d | 2026-03-31 | 2026-04-02 | 150FS+5d, 168 |  |  | 2026-03-03 | 2026-03-05 | 3d | 54d | 0d | Mon 1/22/24 | Wed 1/24/24 |
| 183 | 1.9.2.32 | Install Electric Meter | 10d | 2026-04-03 | 2026-04-16 | 182 |  |  | 2026-03-06 | 2026-03-19 | 1d | 54d |  | Thu 1/25/24 | Thu 1/25/24 |
| 184 | 1.9.2.33 | Fire Alarm | 10d | 2026-05-22 | 2026-06-04 | 180FF+10d |  |  | 2026-05-20 | 2026-06-09 |  | 0d |  |  |  |
| 185 | 1.9.2.34 | BDA & Low Voltage | 10d | 2026-05-22 | 2026-06-04 | 184FF |  |  | 2026-05-20 | 2026-06-09 |  | 0d |  |  |  |

| ID | WBS | Task | Duration | Start | Finish | Predecessors | Baseline start | Baseline finish | Baseline duration | Total slack | Free slack | Constraint | Contact Start | Contract Finish |
| --- | --- | --- | --- | --- | --- | --- | --- | --- | --- | --- | --- | --- | --- | --- |
| 186 | 1.9.3 | **Final Inspections & Cert. of Completion** | 21d | 2026-06-03 | 2026-07-01 |  | 2026-05-06 | 2026-07-07 | 10d | 0d |  |  | Mon 1/8/24 | Thu 2/22/24 |
| 187 | 1.9.3.1 | Final Mechanical | 1d | 2026-06-03 | 2026-06-03 | 174 | 2026-05-05 | 2026-05-06 | 1d | 5d | 0d | start no earlier than 2024-02-08 | Thu 2/8/24 | Thu 2/8/24 |
| 188 | 1.9.3.2 | Final Sprinkler | 1d | 2026-06-04 | 2026-06-04 | 187 | 2026-05-06 | 2026-05-07 | 1d | 5d |  |  | Tue 2/13/24 | Tue 2/13/24 |
| 189 | 1.9.3.3 | Final Electrical& Fire Alarm | 3d | 2026-06-05 | 2026-06-09 | 185, 184 | 2026-06-05 | 2026-06-10 | 1d | 0d |  | start no earlier than 2021-06-12 | Tue 2/13/24 | Tue 2/13/24 |
| 190 | 1.9.3.4 | Final Fire | 2d | 2026-06-10 | 2026-06-11 | 189 | 2026-06-10 | 2026-06-12 | 1d | 0d |  |  | Tue 2/20/24 | Tue 2/20/24 |
| 191 | 1.9.3.5 | Photometric Inspection / Certification | 3d | 2026-06-03 | 2026-06-05 | 174 | 2026-05-05 | 2026-05-08 | 3d | 4d |  | start no earlier than 2024-02-01 | Thu 2/1/24 | Mon 2/5/24 |
| 192 | 1.9.3.6 | Final Plumbing | 1d | 2026-06-08 | 2026-06-08 | 174, 129FS+1d | 2026-05-05 | 2026-05-06 | 1d | 3d |  |  | Mon 1/8/24 | Mon 1/8/24 |
| 193 | 1.9.3.7 | Final Building | 1d | 2026-06-12 | 2026-06-12 | 187, 188, 189, 190, 191, 192 | 2026-06-12 | 2026-06-15 | 1d | 0d |  |  | Wed 2/21/24 | Wed 2/21/24 |
| 194 | 1.9.3.8 | Final Zoning | 1d | 2026-06-15 | 2026-06-15 | 118, 193 | 2026-06-15 | 2026-06-16 | 1d | 0d |  |  | Thu 2/22/24 | Thu 2/22/24 |
| 195 | 1.9.3.9 | Estimated Certificate Of Completion | 5d | 2026-06-16 | 2026-06-22 | 194, 193 | 2026-06-16 | 2026-06-23 |  | 0d |  |  | Thu 2/22/24 | Thu 2/22/24 |
| 196 | 1.9.3.10 | Weather Allowance | 7d | 2026-06-23 | 2026-07-01 | 195 | 2026-06-23 | 2026-07-01 |  | 0d |  |  |  |  |
