# 12.8.25 master.owner.updated

Schedule from MS Project, 2025-10-06 to 2026-10-09, status date 2024-12-08.

## Calendars

- Standard: Mon-Fri 08:00-12:00, 13:00-17:00; Sat-Sun off. Exceptions (off unless hours are given): 2025-11-27 to 2025-11-28.

## Schedule

| ID | WBS | Task | Type | Duration | Start | Finish | Predecessors | Total slack | Free slack | Constraint | Phoenix ID |
| --- | --- | --- | --- | --- | --- | --- | --- | --- | --- | --- | --- |
| 1 | 1 | **Public Storage Selma, NC** |  | 263d | 2025-10-06 | 2026-10-09 |  | 0d |  |  |  |
| 2 | 1.1 | Award Contract | milestone | 0d | 2025-10-06 | 2025-10-06 |  | 0d |  | start no earlier than 2025-10-06 | 10 |
| 3 | 1.2 | **Mobilization** |  | 6d | 2025-12-01 | 2025-12-08 |  |  |  |  |  |
| 4 | 1.2.1 | Mobilization (Site Fence, Layout, Barricades, Etc.) |  | 1d | 2026-01-05 | 2026-01-05 | 2SS+63d | 0d |  |  | 20 |
| 5 | 1.2.2 | SWPPP |  | 5d | 2025-12-15 | 2025-12-19 | 4FS-16d | 0d |  |  | 30 |
| 6 | 1.3 | **Demo/Site Work** |  | 84d | 2026-01-05 | 2026-04-30 | 5FS+10d | 0d |  |  |  |
| 7 | 1.3.1 | Clearing and Grubbing |  | 10d | 2026-01-05 | 2026-01-16 | 5FS-6d | 0d |  |  |  |
| 8 | 1.3.2 | Dewatering |  | 5d | 2026-01-19 | 2026-01-23 | 7 | 0d |  |  |  |
| 9 | 1.3.3 | Rough Grading |  | 18d | 2026-01-19 | 2026-02-11 | 8SS | 0d |  |  |  |
| 10 | 1.3.4 | Storm System |  | 21d | 2026-02-12 | 2026-03-12 | 9 | 6d | 0d |  | 90 |
| 11 | 1.3.5 | Sanitary Sewer |  | 5d | 2026-03-13 | 2026-03-19 | 10 | 6d | 0d |  |  |
| 12 | 1.3.6 | Water |  | 10d | 2026-03-20 | 2026-04-02 | 11 | 6d | 0d |  |  |
| 13 | 1.3.7 | Site Electrical |  | 10d | 2026-04-03 | 2026-04-16 | 12 | 6d | 0d |  |  |
| 14 | 1.3.8 | Building Tie In |  | 10d | 2026-04-17 | 2026-04-30 | 12, 13 | 6d | 0d |  |  |
| 15 | 1.4 | **Building A** |  | 139d | 2026-02-05 | 2026-08-18 |  | 0d |  |  |  |
| 16 | 1.4.1 | **Structure** |  | 109d | 2026-02-05 | 2026-07-07 |  | 0d |  |  |  |
| 17 | 1.4.1.1 | **First Floor** |  | 59d | 2026-02-05 | 2026-04-28 |  | 0d |  |  |  |
| 18 | 1.4.1.1.1 | Building Pad Delivery (Bldg A) |  | 5d | 2026-02-05 | 2026-02-11 | 9FS-5d | 0d |  |  | 100 |
| 19 | 1.4.1.1.2 | Elevator Pit - Excavate |  | 5d | 2026-02-12 | 2026-02-18 | 18 | 157d | 0d |  |  |
| 20 | 1.4.1.1.3 | Elevator Pit - Form and Pour |  | 10d | 2026-02-19 | 2026-03-04 | 19 | 157d |  |  |  |
| 21 | 1.4.1.1.4 | FRP Foundations / Foundation CMU - Area 1 |  | 7d | 2026-02-12 | 2026-02-20 | 18 | 0d |  |  | 120 |
| 22 | 1.4.1.1.5 | Concrete Retaining Walls |  | 10d | 2026-02-23 | 2026-03-06 | 21 | 0d |  |  |  |
| 23 | 1.4.1.1.6 | FRP Foundations/Foundation Area 2 |  | 7d | 2026-03-09 | 2026-03-17 | 22 | 0d |  |  |  |
| 24 | 1.4.1.1.7 | Under Slab MEP |  | 10d | 2026-03-04 | 2026-03-17 | 23FS-10d | 0d |  |  | 130 |
| 25 | 1.4.1.1.8 | Slab #1 Prep / Pour (North Half) |  | 10d | 2026-03-11 | 2026-03-24 | 24FS-5d, 21FS-5d | 0d |  |  | 140 |
| 26 | 1.4.1.1.9 | CMU shafts |  | 15d | 2026-03-25 | 2026-04-14 | 25 | 128d |  |  | 150 |
| 27 | 1.4.1.1.10 | Slab #2 Prep / Pour (South Half) |  | 10d | 2026-03-25 | 2026-04-07 | 25 | 133d |  |  | 160 |
| 28 | 1.4.1.1.11 | Janus Framing System (North Half) |  | 15d | 2026-03-25 | 2026-04-14 | 25 | 0d |  |  | 170 |
| 29 | 1.4.1.1.12 | Janus Framing System (South Half) |  | 10d | 2026-04-15 | 2026-04-28 | 28 | 0d |  |  | 190 |

| ID | WBS | Task | Duration | Start | Finish | Predecessors | Total slack | Free slack | Phoenix ID |
| --- | --- | --- | --- | --- | --- | --- | --- | --- | --- |
| 30 | 1.4.1.2 | **Second Floor** | 40d | 2026-04-15 | 2026-06-09 |  | 5d |  |  |
| 31 | 1.4.1.2.1 | Elevated Slab #1 (North Half) Prep/Pour | 5d | 2026-04-15 | 2026-04-21 | 29FS-10d | 10d | 5d | 200 |
| 32 | 1.4.1.2.2 | Elevated Slab #2 (South Half) Prep/Pour | 5d | 2026-04-29 | 2026-05-05 | 29, 31 | 15d | 10d | 210 |
| 33 | 1.4.1.2.3 | Janus Framing System (North Half) | 15d | 2026-04-29 | 2026-05-19 | 31, 29 | 5d | 0d | 220 |
| 34 | 1.4.1.2.4 | Janus Framing System (South Half) | 10d | 2026-05-20 | 2026-06-02 | 33, 32 | 5d | 0d | 230 |
| 35 | 1.4.1.2.5 | Roof Decking | 5d | 2026-06-03 | 2026-06-09 | 34 | 5d | 0d | 320 |
| 36 | 1.4.1.3 | **Stairs** | 20d | 2026-06-10 | 2026-07-07 |  | 68d |  |  |
| 37 | 1.4.1.3.1 | Stair #1 | 10d | 2026-06-10 | 2026-06-23 | 35 | 68d | 0d | 380 |
| 38 | 1.4.1.3.2 | Stair #2 | 10d | 2026-06-24 | 2026-07-07 | 37 | 68d |  | 390 |
| 39 | 1.4.1.4 | **Roof** | 10d | 2026-06-10 | 2026-06-23 |  | 15d |  |  |
| 40 | 1.4.1.4.1 | Metal Roofing | 10d | 2026-06-10 | 2026-06-23 | 35 | 15d | 0d | 410 |
| 41 | 1.4.2 | **Framing and MEP** | 80d | 2026-04-29 | 2026-08-18 |  | 0d |  |  |
| 42 | 1.4.2.1 | **First Floor** | 65d | 2026-04-29 | 2026-07-28 |  | 0d |  |  |
| 43 | 1.4.2.1.1 | Interior Framing | 5d | 2026-04-29 | 2026-05-05 | 29 | 0d |  | 420 |
| 44 | 1.4.2.1.2 | 1st Floor MEP Rough-In Area 1 | 20d | 2026-05-06 | 2026-06-02 | 43 | 0d |  | 440 |
| 45 | 1.4.2.1.3 | 1st Floor MEP Rough-In Area 2 | 15d | 2026-06-03 | 2026-06-23 | 44 | 0d |  |  |
| 46 | 1.4.2.1.4 | 1st Floor MEP Trim Out Area 1 | 10d | 2026-07-08 | 2026-07-21 | 156, 44 | 3d | 0d | 455 |
| 47 | 1.4.2.1.5 | 1st Floor MEP Trim Out Area 2 | 5d | 2026-07-22 | 2026-07-28 | 46 | 3d | 0d |  |
| 48 | 1.4.2.2 | **Second Floor** | 50d | 2026-06-10 | 2026-08-18 |  | 3d |  |  |
| 49 | 1.4.2.2.1 | Interior Framing | 5d | 2026-06-10 | 2026-06-16 | 32, 35, 81, 107, 127 | 5d |  | 460 |
| 50 | 1.4.2.2.2 | 2nd Floor MEP Rough-In Area 2 | 15d | 2026-06-24 | 2026-07-14 | 44, 49, 45, 87, 112, 132 | 0d |  | 480 |
| 51 | 1.4.2.2.3 | 2nd Floor MEP Rough-In Area 2 | 15d | 2026-07-15 | 2026-08-04 | 50 | 0d |  |  |
| 52 | 1.4.2.2.4 | 2nd Floor MEP Trim Out Area 1 | 10d | 2026-07-29 | 2026-08-11 | 47 | 3d | 0d | 500 |
| 53 | 1.4.2.2.5 | 2nd Floor MEP Trim Out Area 2 | 5d | 2026-08-12 | 2026-08-18 | 52 | 3d | 0d |  |

| ID | WBS | Task | Type | Duration | Start | Finish | Predecessors | Total slack | Free slack | Phoenix ID |
| --- | --- | --- | --- | --- | --- | --- | --- | --- | --- | --- |
| 54 | 1.4.3 | **Elevator** |  | 30d | 2026-06-23 | 2026-08-04 |  | 28d |  |  |
| 55 | 1.4.3.1 | Delivery | milestone | 0d | 2026-06-23 | 2026-06-23 | 40, 83, 109, 129 | 28d | 0d | 630 |
| 56 | 1.4.3.2 | Elevator 1 - First Floor |  | 5d | 2026-06-24 | 2026-06-30 | 55SS | 28d | 0d | 640 |
| 57 | 1.4.3.3 | Elevator 1 - Second Floor |  | 5d | 2026-07-01 | 2026-07-07 | 56 | 28d | 0d |  |
| 58 | 1.4.3.4 | Elevator 2 - First Floor |  | 5d | 2026-07-08 | 2026-07-14 | 57 | 28d | 0d |  |
| 59 | 1.4.3.5 | Elevator 2 - Second Floor |  | 5d | 2026-07-15 | 2026-07-21 | 58 | 28d | 0d |  |
| 60 | 1.4.3.6 | Infill Doors |  | 5d | 2026-07-15 | 2026-07-21 | 59FS-5d | 28d | 0d | 650 |
| 61 | 1.4.3.7 | Test / Adjust |  | 5d | 2026-07-22 | 2026-07-28 | 60 | 28d | 0d | 660 |
| 62 | 1.4.3.8 | State Inspection |  | 5d | 2026-07-29 | 2026-08-04 | 61 | 28d |  | 670 |
| 63 | 1.4.4 | **Exterior Finishes** |  | 50d | 2026-05-06 | 2026-07-14 |  | 28d |  |  |
| 64 | 1.4.4.1 | Masonry Veneer |  | 15d | 2026-05-06 | 2026-05-26 | 43, 86 | 28d | 0d | 720 |
| 65 | 1.4.4.2 | Metal Panels Completion |  | 15d | 2026-05-27 | 2026-06-16 | 64 | 28d | 0d | 730 |
| 66 | 1.4.4.3 | Sheetmetal Work (Coping, Gutters, & Downspouts) |  | 10d | 2026-06-17 | 2026-06-30 | 65 | 38d | 35d | 760 |
| 67 | 1.4.4.4 | Automatic Entrance Door |  | 5d | 2026-05-27 | 2026-06-02 | 64 | 93d |  | 770 |
| 68 | 1.4.4.5 | Exterior Paint |  | 10d | 2026-06-17 | 2026-06-30 | 65 | 28d | 0d | 820 |
| 69 | 1.4.4.6 | Exterior Signage Install |  | 10d | 2026-07-01 | 2026-07-14 | 68 | 28d | 0d | 830 |
| 70 | 1.4.4.7 | Canopy |  | 10d | 2026-07-01 | 2026-07-14 | 69SS | 28d | 25d | 840 |
| 71 | 1.5 | **Building B** |  | 85d | 2026-02-12 | 2026-06-10 |  | 14d |  |  |
| 72 | 1.5.1 | **Structure** |  | 55d | 2026-02-12 | 2026-04-29 |  | 14d |  |  |
| 73 | 1.5.1.1 | **First Floor** |  | 50d | 2026-02-12 | 2026-04-22 |  | 14d |  |  |
| 74 | 1.5.1.1.1 | Building Pad Delivery (Bldg B) |  | 5d | 2026-02-12 | 2026-02-18 | 18 | 14d | 0d | 100 |
| 75 | 1.5.1.1.2 | FRP Foundations / Foundation CMU - Area 1 |  | 5d | 2026-02-19 | 2026-02-25 | 74 | 14d | 0d | 120 |
| 76 | 1.5.1.1.3 | FRP Foundations/Foundation Area 2 |  | 5d | 2026-02-26 | 2026-03-04 | 75 | 14d | 0d |  |
| 77 | 1.5.1.1.4 | Under Slab MEP |  | 5d | 2026-03-05 | 2026-03-11 | 76 | 14d | 0d | 130 |
| 78 | 1.5.1.1.5 | Slab Prep / Pour |  | 5d | 2026-03-12 | 2026-03-18 | 77 | 14d | 0d | 140 |
| 79 | 1.5.1.1.6 | CMU Walls |  | 10d | 2026-03-19 | 2026-04-01 | 78 | 14d | 0d |  |
| 80 | 1.5.1.1.7 | Janus Framing System |  | 10d | 2026-04-02 | 2026-04-15 | 79 | 34d | 0d | 170 |
| 81 | 1.5.1.1.8 | Roof Decking |  | 5d | 2026-04-16 | 2026-04-22 | 80 | 39d | 0d | 320 |

| ID | WBS | Task | Duration | Start | Finish | Predecessors | Total slack | Free slack | Phoenix ID |
| --- | --- | --- | --- | --- | --- | --- | --- | --- | --- |
| 82 | 1.5.1.2 | **Roof** | 5d | 2026-04-23 | 2026-04-29 |  | 67d |  |  |
| 83 | 1.5.1.2.1 | Metal Roofing | 5d | 2026-04-23 | 2026-04-29 | 81 | 67d | 0d | 410 |
| 84 | 1.5.2 | **Framing and MEP** | 30d | 2026-04-16 | 2026-05-27 |  | 34d |  |  |
| 85 | 1.5.2.1 | **First Floor** | 30d | 2026-04-16 | 2026-05-27 |  | 34d |  |  |
| 86 | 1.5.2.1.1 | Interior Framing | 5d | 2026-04-16 | 2026-04-22 | 80 | 34d | 0d | 420 |
| 87 | 1.5.2.1.2 | 1st Floor MEP Rough-In Area 1 | 10d | 2026-04-23 | 2026-05-06 | 86 | 34d |  | 440 |
| 88 | 1.5.2.1.3 | Finishes | 10d | 2026-04-30 | 2026-05-13 | 83, 86 | 97d | 0d | 450 |
| 89 | 1.5.2.1.4 | 1st Floor MEP Trim Out Area 1 | 10d | 2026-05-14 | 2026-05-27 | 88 | 97d |  | 455 |
| 90 | 1.5.3 | **Exterior Finishes** | 35d | 2026-04-23 | 2026-06-10 |  | 52d |  |  |
| 91 | 1.5.3.1 | Metal Panels Completion | 15d | 2026-04-23 | 2026-05-13 | 81 | 52d | 0d | 730 |
| 92 | 1.5.3.2 | Sheetmetal Work (Coping, Gutters, & Downspouts) | 10d | 2026-05-14 | 2026-05-27 | 91 | 62d | 59d | 760 |
| 93 | 1.5.3.3 | Automatic Entrance Door | 5d | 2026-05-14 | 2026-05-20 | 91 | 102d |  | 770 |
| 94 | 1.5.3.4 | Exterior Paint | 10d | 2026-05-14 | 2026-05-27 | 91 | 52d | 0d | 820 |
| 95 | 1.5.3.5 | Exterior Signage Install | 10d | 2026-05-28 | 2026-06-10 | 94 | 52d | 0d | 830 |
| 96 | 1.5.3.6 | Canopy | 10d | 2026-05-28 | 2026-06-10 | 95SS | 52d | 49d | 840 |
| 97 | 1.6 | **Building C** | 85d | 2026-02-19 | 2026-06-17 |  | 19d |  |  |
| 98 | 1.6.1 | **Structure** | 55d | 2026-02-19 | 2026-05-06 |  | 19d |  |  |
| 99 | 1.6.1.1 | **First Floor** | 50d | 2026-02-19 | 2026-04-29 |  | 19d |  |  |
| 100 | 1.6.1.1.1 | Building Pad Delivery (Bldg C) | 5d | 2026-02-19 | 2026-02-25 | 74 | 19d | 0d | 100 |
| 101 | 1.6.1.1.2 | FRP Foundations / Foundation CMU - Area 1 | 5d | 2026-02-26 | 2026-03-04 | 100 | 19d | 0d | 120 |
| 102 | 1.6.1.1.3 | FRP Foundations/Foundation Area 2 | 5d | 2026-03-05 | 2026-03-11 | 101 | 19d | 0d |  |
| 103 | 1.6.1.1.4 | Under Slab MEP | 5d | 2026-03-12 | 2026-03-18 | 102 | 19d | 0d | 130 |
| 104 | 1.6.1.1.5 | Slab Prep / Pour | 5d | 2026-03-19 | 2026-03-25 | 103 | 19d | 5d | 140 |
| 105 | 1.6.1.1.6 | CMU Walls | 10d | 2026-04-02 | 2026-04-15 | 104, 79 | 14d | 0d |  |
| 106 | 1.6.1.1.7 | Janus Framing System | 5d | 2026-04-16 | 2026-04-22 | 105 | 24d | 0d | 170 |
| 107 | 1.6.1.1.8 | Roof Decking | 5d | 2026-04-23 | 2026-04-29 | 106 | 24d | 0d | 320 |

| ID | WBS | Task | Duration | Start | Finish | Predecessors | Total slack | Free slack | Phoenix ID |
| --- | --- | --- | --- | --- | --- | --- | --- | --- | --- |
| 108 | 1.6.1.2 | **Roof** | 5d | 2026-04-30 | 2026-05-06 |  | 24d |  |  |
| 109 | 1.6.1.2.1 | Metal Roofing | 5d | 2026-04-30 | 2026-05-06 | 107 | 24d | 0d | 410 |
| 110 | 1.6.2 | **Framing and MEP** | 20d | 2026-05-07 | 2026-06-03 |  | 24d |  |  |
| 111 | 1.6.2.1 | **First Floor** | 20d | 2026-05-07 | 2026-06-03 |  | 24d |  |  |
| 112 | 1.6.2.1.1 | 1st Floor MEP Rough-In Area 1 | 10d | 2026-05-07 | 2026-05-20 | 109 | 24d | 0d | 440 |
| 113 | 1.6.2.1.2 | 1st Floor MEP Trim Out Area 1 | 10d | 2026-05-21 | 2026-06-03 | 112 | 92d |  | 455 |
| 114 | 1.6.3 | **Exterior Finishes** | 25d | 2026-05-14 | 2026-06-17 |  | 82d |  |  |
| 115 | 1.6.3.1 | Metal Panels Completion | 15d | 2026-05-14 | 2026-06-03 | 107, 91 | 82d | 0d | 730 |
| 116 | 1.6.3.2 | Exterior Signage Install | 10d | 2026-06-04 | 2026-06-17 | 115 | 82d |  | 830 |
| 117 | 1.7 | **Building D** | 80d | 2026-02-26 | 2026-06-17 |  | 24d |  |  |
| 118 | 1.7.1 | **Structure** | 60d | 2026-02-26 | 2026-05-20 |  | 14d |  |  |
| 119 | 1.7.1.1 | **First Floor** | 55d | 2026-02-26 | 2026-05-13 |  | 14d |  |  |
| 120 | 1.7.1.1.1 | Building Pad Delivery (Bldg D) | 5d | 2026-02-26 | 2026-03-04 | 100 | 24d | 0d | 100 |
| 121 | 1.7.1.1.2 | FRP Foundations / Foundation CMU - Area 1 | 5d | 2026-03-05 | 2026-03-11 | 120 | 24d | 0d | 120 |
| 122 | 1.7.1.1.3 | FRP Foundations/Foundation Area 2 | 5d | 2026-03-12 | 2026-03-18 | 121 | 24d | 0d |  |
| 123 | 1.7.1.1.4 | Under Slab MEP | 5d | 2026-03-19 | 2026-03-25 | 122 | 24d | 0d | 130 |
| 124 | 1.7.1.1.5 | Slab Prep / Pour | 5d | 2026-03-26 | 2026-04-01 | 123 | 24d | 10d | 140 |
| 125 | 1.7.1.1.6 | CMU Walls | 10d | 2026-04-16 | 2026-04-29 | 124, 79, 105 | 14d | 0d |  |
| 126 | 1.7.1.1.7 | Janus Framing System | 5d | 2026-04-30 | 2026-05-06 | 125 | 14d | 0d | 170 |
| 127 | 1.7.1.1.8 | Roof Decking | 5d | 2026-05-07 | 2026-05-13 | 126 | 14d | 0d | 320 |
| 128 | 1.7.1.2 | **Roof** | 5d | 2026-05-14 | 2026-05-20 |  | 14d |  |  |
| 129 | 1.7.1.2.1 | Metal Roofing | 5d | 2026-05-14 | 2026-05-20 | 127 | 14d | 0d | 410 |
| 130 | 1.7.2 | **Framing and MEP** | 20d | 2026-05-21 | 2026-06-17 |  | 14d |  |  |
| 131 | 1.7.2.1 | **First Floor** | 20d | 2026-05-21 | 2026-06-17 |  | 14d |  |  |
| 132 | 1.7.2.1.1 | 1st Floor MEP Rough-In Area 1 | 10d | 2026-05-21 | 2026-06-03 | 129 | 14d | 0d | 440 |
| 133 | 1.7.2.1.2 | 1st Floor MEP Trim Out Area 1 | 10d | 2026-06-04 | 2026-06-17 | 132 | 82d |  | 455 |

| ID | WBS | Task | Duration | Start | Finish | Predecessors | Total slack | Free slack | Phoenix ID |
| --- | --- | --- | --- | --- | --- | --- | --- | --- | --- |
| 134 | 1.7.3 | **Exterior Finishes** | 25d | 2026-05-14 | 2026-06-17 |  | 82d |  |  |
| 135 | 1.7.3.1 | Metal Panels Completion | 15d | 2026-05-14 | 2026-06-03 | 127, 91 | 82d | 0d | 730 |
| 136 | 1.7.3.2 | Exterior Signage Install | 10d | 2026-06-04 | 2026-06-17 | 135 | 82d |  | 830 |
| 137 | 1.8 | **Site Finishes** | 90d | 2026-05-01 | 2026-09-03 |  | 6d |  |  |
| 138 | 1.8.1 | Site Fine Grading | 10d | 2026-05-01 | 2026-05-14 | 14 | 6d | 0d | 850 |
| 139 | 1.8.2 | Stone Base | 10d | 2026-05-08 | 2026-05-21 | 138FS-5d | 6d | 0d | 860 |
| 140 | 1.8.3 | Curb / Sidewalks | 10d | 2026-05-15 | 2026-05-28 | 139FS-5d | 6d | 0d | 870 |
| 141 | 1.8.4 | Binder Course Asphalt - Area 1 | 5d | 2026-05-29 | 2026-06-04 | 140 | 6d | 0d | 880 |
| 142 | 1.8.5 | Binder Course Asphalt - Area 2 | 5d | 2026-06-05 | 2026-06-11 | 141 | 6d | 0d |  |
| 143 | 1.8.6 | Landscaping - Area 1 | 10d | 2026-06-12 | 2026-06-25 | 142 | 6d | 0d | 890 |
| 144 | 1.8.7 | Landscaping - Area 2 | 10d | 2026-06-26 | 2026-07-09 | 143 | 6d | 0d |  |
| 145 | 1.8.8 | Final Pavement | 10d | 2026-07-10 | 2026-07-23 | 144 | 6d | 0d | 900 |
| 146 | 1.8.9 | Line Marking/Signage | 5d | 2026-07-24 | 2026-07-30 | 145 | 6d | 0d | 910 |
| 147 | 1.8.10 | As-Builts Complete & Submitted to AHJ | 5d | 2026-07-31 | 2026-08-06 | 146 | 6d | 0d | 920 |
| 148 | 1.8.11 | As-Built/City Review | 20d | 2026-08-07 | 2026-09-03 | 147 | 6d |  | 930 |
| 149 | 1.9 | **Interior Upfit** | 78d | 2026-06-24 | 2026-10-09 |  | 0d |  |  |
| 150 | 1.9.1 | 1st Floor - Janus Unit Install | 15d | 2026-06-24 | 2026-07-14 | 44, 45, 87, 112, 132, 40 | 15d |  | 940 |
| 151 | 1.9.2 | 2nd Floor - Janus Unit Install | 15d | 2026-08-05 | 2026-08-25 | 50, 51, 150 | 0d |  | 950 |
| 152 | 1.9.3 | Bldg B Janus Install | 5d | 2026-08-26 | 2026-09-01 | 151 | 0d |  | 960 |
| 153 | 1.9.4 | Bldg C Janus Install | 5d | 2026-09-02 | 2026-09-08 | 152 | 18d | 0d |  |
| 154 | 1.9.5 | Bldg D Janus Install | 5d | 2026-09-09 | 2026-09-15 | 153 | 18d |  |  |
| 155 | 1.9.6 | Drywall Hanging | 5d | 2026-06-24 | 2026-06-30 | 44, 45, 87, 112, 132 | 3d | 0d |  |
| 156 | 1.9.7 | Drywall Finishing | 10d | 2026-06-24 | 2026-07-07 | 155FS-5d | 3d | 0d |  |
| 157 | 1.9.8 | Paint | 5d | 2026-07-08 | 2026-07-14 | 156 | 31d | 0d |  |
| 158 | 1.9.9 | Millwork | 5d | 2026-07-14 | 2026-07-20 | 157FS-1d | 31d | 0d |  |
| 159 | 1.9.10 | Floor Sealer - 2nd Floor | 5d | 2026-07-21 | 2026-07-27 | 158 | 39d | 0d |  |
| 160 | 1.9.11 | Floor Sealer / Polish - 1st Floor and drive ups | 15d | 2026-07-28 | 2026-08-17 | 159 | 39d |  | 1000 |

| ID | WBS | Task | Type | Duration | Start | Finish | Predecessors | Total slack | Free slack | Phoenix ID |
| --- | --- | --- | --- | --- | --- | --- | --- | --- | --- | --- |
| 161 | 1.9.12 | **Closeout** |  | 38d | 2026-08-19 | 2026-10-09 |  | 0d |  |  |
| 162 | 1.9.12.1 | Final Clean - Bldg A |  | 8d | 2026-09-02 | 2026-09-11 | 158, 152 | 0d |  | 1010 |
| 163 | 1.9.12.2 | Final Clean - Bldg B |  | 5d | 2026-09-14 | 2026-09-18 | 162 | 10d | 0d |  |
| 164 | 1.9.12.3 | Final Clean - Bldg C and D |  | 5d | 2026-09-21 | 2026-09-25 | 163 | 10d |  |  |
| 165 | 1.9.12.4 | MEP Final Inspections |  | 10d | 2026-08-19 | 2026-09-01 | 66, 70, 68, 146, 52, 53, 92, 94, 96, 50, 44 | 3d | 0d | 1020 |
| 166 | 1.9.12.5 | Building Final Inspections |  | 5d | 2026-09-02 | 2026-09-08 | 165 | 3d |  |  |
| 167 | 1.9.12.6 | Weather Days Included (20 Days) |  | 20d | 2026-09-14 | 2026-10-09 | 148, 62, 162, 166 | 0d |  | 1030 |
| 168 | 1.9.13 | **Substantial Completion** |  | 0d | 2026-10-09 | 2026-10-09 |  | 0d |  |  |
| 169 | 1.9.13.1 | Substantial Completion | milestone | 0d | 2026-10-09 | 2026-10-09 | 167FF | 0d |  | 1040 |
