# 1.31.26 master.updated

Schedule from MS Project XML, 2025-10-06 to 2026-10-09, status date 2026-01-31, A marks actual dates.

## Calendars

- Standard: Mon-Fri 08:00-12:00, 13:00-17:00; Sat-Sun off. Exceptions (off unless hours are given): 2025-11-27 to 2025-11-28.

## Schedule

| ID | WBS | Task | Type | Duration | Start | Finish | Predecessors | Complete | Remaining | Actual start | Actual finish | Total slack | Free slack | Constraint | Phoenix ID |
| --- | --- | --- | --- | --- | --- | --- | --- | --- | --- | --- | --- | --- | --- | --- | --- |
| 1 | 1 | **Public Storage Selma, NC** |  | 263d | 2025-10-06 A | 2026-10-09 |  | 4% | 253.25d |  |  | 0d |  |  |  |
| 2 | 1.1 | Award Contract | milestone | 0d | 2025-10-06 A | 2025-10-06 A |  | 100% |  |  |  |  |  | start no earlier than 2025-10-06 | 10 |
| 3 | 1.2 | **Mobilization** |  | 16d | 2025-12-01 | 2025-12-08 |  | 100% |  | 2025-12-15 | 2026-01-05 |  |  |  |  |
| 4 | 1.2.1 | Mobilization (Site Fence, Layout, Barricades, Etc.) |  | 1d | 2026-01-05 A | 2026-01-05 A | 2SS+63d | 100% |  |  |  |  |  |  | 20 |
| 5 | 1.2.2 | SWPPP |  | 5d | 2025-12-15 A | 2025-12-19 A | 4FS-16d | 100% |  |  |  |  |  |  | 30 |
| 6 | 1.3 | **Demo/Site Work** |  | 84d | 2026-01-05 A | 2026-04-30 | 5FS+10d | 26% | 62.29d |  |  | 116d |  |  |  |
| 7 | 1.3.1 | Clearing and Grubbing |  | 10d | 2026-01-05 A | 2026-01-16 | 5FS-6d | 90% | 1d |  |  | 190d |  |  |  |
| 8 | 1.3.2 | Dewatering |  | 5d | 2026-01-19 A | 2026-01-23 A | 7 | 100% |  |  |  |  |  |  |  |
| 9 | 1.3.3 | Rough Grading |  | 18d | 2026-01-19 A | 2026-02-11 | 8SS | 50% | 9d |  |  | 7d | 0d |  |  |
| 10 | 1.3.4 | Storm System |  | 21d | 2026-02-12 | 2026-03-12 | 9 |  |  |  |  | 14.75d | 0d |  | 90 |
| 11 | 1.3.5 | Sanitary Sewer |  | 5d | 2026-03-13 | 2026-03-19 | 10 |  |  |  |  | 14.75d | 0d |  |  |
| 12 | 1.3.6 | Water |  | 10d | 2026-03-20 | 2026-04-02 | 11 |  |  |  |  | 14.75d | 0d |  |  |
| 13 | 1.3.7 | Site Electrical |  | 10d | 2026-04-03 | 2026-04-16 | 12 |  |  |  |  | 14.75d | 0d |  |  |
| 14 | 1.3.8 | Building Tie In |  | 10d | 2026-04-17 | 2026-04-30 | 12, 13 |  |  |  |  | 14.75d | 0d |  |  |
| 15 | 1.4 | **Building A** |  | 144d | 2026-02-05 A | 2026-08-25 |  | 2% | 141.5d |  |  | 33d |  |  |  |
| 16 | 1.4.1 | **Structure** |  | 104d | 2026-02-05 A | 2026-06-30 |  | 4% | 100.15d |  |  | 73d |  |  |  |
| 17 | 1.4.1.1 | **First Floor** |  | 64d | 2026-02-05 A | 2026-05-05 |  | 6% | 60.24d |  |  | 113d |  |  |  |
| 18 | 1.4.1.1.1 | Weather Delay( Snow & Ice) |  | 5d | 2026-02-05 A | 2026-02-11 A | 9FS-5d | 100% |  |  |  |  |  |  |  |
| 19 | 1.4.1.1.2 | Building Pad Delivery (Bldg A) |  | 5d | 2026-02-12 A | 2026-02-18 | 9FS-5d, 18 | 40% | 3d |  |  | 3.75d | 0d |  | 100 |
| 20 | 1.4.1.1.3 | Elevator Pit - Excavate |  | 5d | 2026-02-19 | 2026-02-25 | 19 |  |  |  |  | 152d | 0d |  |  |
| 21 | 1.4.1.1.4 | Elevator Pit - Form and Pour |  | 10d | 2026-02-26 | 2026-03-11 | 20 |  |  |  |  | 152d |  |  |  |
| 22 | 1.4.1.1.5 | FRP Foundations / Foundation CMU - Area 1 |  | 7d | 2026-02-19 | 2026-02-27 | 19 |  |  |  |  | 3.75d | 0d |  | 120 |
| 23 | 1.4.1.1.6 | Concrete Retaining Walls |  | 10d | 2026-03-02 | 2026-03-13 | 22 |  |  |  |  | 3.75d | 0d |  |  |
| 24 | 1.4.1.1.7 | FRP Foundations/Foundation Area 2 |  | 7d | 2026-03-16 | 2026-03-24 | 23 |  |  |  |  | 3.75d | 0d |  |  |
| 25 | 1.4.1.1.8 | Under Slab MEP |  | 10d | 2026-03-11 | 2026-03-24 | 24FS-10d |  |  |  |  | 3.75d | 0d |  | 130 |
| 26 | 1.4.1.1.9 | Slab #1 Prep / Pour (North Half) |  | 10d | 2026-03-18 | 2026-03-31 | 25FS-5d, 22FS-5d |  |  |  |  | 3.75d | 0d |  | 140 |
| 27 | 1.4.1.1.10 | CMU shafts |  | 15d | 2026-04-01 | 2026-04-21 | 26 |  |  |  |  | 8.75d | 0d |  | 150 |
| 28 | 1.4.1.1.11 | Slab #2 Prep / Pour (South Half) |  | 10d | 2026-04-01 | 2026-04-14 | 26 |  |  |  |  | 123d | 0d |  | 160 |
| 29 | 1.4.1.1.12 | Janus Framing System (North Half) |  | 15d | 2026-04-01 | 2026-04-21 | 26 |  |  |  |  | 3.75d | 0d |  | 170 |
| 30 | 1.4.1.1.13 | Janus Framing System (South Half) |  | 10d | 2026-04-22 | 2026-05-05 | 29 |  |  |  |  | 3.75d | 0d |  | 190 |

| ID | WBS | Task | Duration | Start | Finish | Predecessors | Total slack | Free slack | Phoenix ID |
| --- | --- | --- | --- | --- | --- | --- | --- | --- | --- |
| 31 | 1.4.1.2 | **Second Floor** | 40d | 2026-04-22 | 2026-06-16 |  | 8.75d |  |  |
| 32 | 1.4.1.2.1 | Elevated Slab #1 (North Half) Prep/Pour | 5d | 2026-04-22 | 2026-04-28 | 30FS-10d | 13.75d | 5d | 200 |
| 33 | 1.4.1.2.2 | Elevated Slab #2 (South Half) Prep/Pour | 5d | 2026-05-06 | 2026-05-12 | 30, 32 | 18.75d | 0d | 210 |
| 34 | 1.4.1.2.3 | Janus Framing System (North Half) | 15d | 2026-05-06 | 2026-05-26 | 32, 30 | 8.75d | 0d | 220 |
| 35 | 1.4.1.2.4 | Janus Framing System (South Half) | 10d | 2026-05-27 | 2026-06-09 | 34, 33 | 8.75d | 0d | 230 |
| 36 | 1.4.1.2.5 | Roof Decking - Building A | 5d | 2026-06-10 | 2026-06-16 | 35 | 8.75d | 0d | 320 |
| 37 | 1.4.1.3 | **Stairs** | 20d | 2026-05-19 | 2026-06-15 |  | 84d |  |  |
| 38 | 1.4.1.3.1 | Stair #1 | 10d | 2026-05-19 | 2026-06-01 | 33FS+4d | 84d | 0d | 380 |
| 39 | 1.4.1.3.2 | Stair #2 | 10d | 2026-06-02 | 2026-06-15 | 38 | 84d |  | 390 |
| 40 | 1.4.1.4 | **Roof** | 10d | 2026-06-17 | 2026-06-30 |  | 18.75d |  |  |
| 41 | 1.4.1.4.1 | Metal Roofing - Building A | 10d | 2026-06-17 | 2026-06-30 | 36 | 18.75d | 0d | 410 |
| 42 | 1.4.2 | **Framing and MEP** | 80d | 2026-05-06 | 2026-08-25 |  | 3.75d |  |  |
| 43 | 1.4.2.1 | **First Floor** | 65d | 2026-05-06 | 2026-08-04 |  | 3.75d |  |  |
| 44 | 1.4.2.1.1 | Interior Framing | 5d | 2026-05-06 | 2026-05-12 | 30 | 3.75d | 0d | 420 |
| 45 | 1.4.2.1.2 | 1st Floor MEP Rough-In Area 1 | 20d | 2026-05-13 | 2026-06-09 | 44 | 3.75d | 0d | 440 |
| 46 | 1.4.2.1.3 | 1st Floor MEP Rough-In Area 2 | 15d | 2026-06-10 | 2026-06-30 | 45 | 3.75d | 0d |  |
| 47 | 1.4.2.1.4 | 1st Floor MEP Trim Out Area 1 | 10d | 2026-07-15 | 2026-07-28 | 157, 45 | 6.75d | 0d | 455 |
| 48 | 1.4.2.1.5 | 1st Floor MEP Trim Out Area 2 | 5d | 2026-07-29 | 2026-08-04 | 47 | 6.75d | 0d |  |
| 49 | 1.4.2.2 | **Second Floor** | 50d | 2026-06-17 | 2026-08-25 |  | 6.75d |  |  |
| 50 | 1.4.2.2.1 | Interior Framing | 5d | 2026-06-17 | 2026-06-23 | 33, 36, 82, 108, 128 | 8.75d | 5d | 460 |
| 51 | 1.4.2.2.2 | 2nd Floor MEP Rough-In Area 2 | 15d | 2026-07-01 | 2026-07-21 | 45, 50, 46, 88, 113, 133 | 3.75d | 0d | 480 |
| 52 | 1.4.2.2.3 | 2nd Floor MEP Rough-In Area 2 | 15d | 2026-07-22 | 2026-08-11 | 51 | 3.75d | 0d |  |
| 53 | 1.4.2.2.4 | 2nd Floor MEP Trim Out Area 1 - Building A | 10d | 2026-08-05 | 2026-08-18 | 48 | 6.75d | 0d | 500 |
| 54 | 1.4.2.2.5 | 2nd Floor MEP Trim Out Area 2 - Building A | 5d | 2026-08-19 | 2026-08-25 | 53 | 6.75d | 0d |  |

| ID | WBS | Task | Type | Duration | Start | Finish | Predecessors | Total slack | Free slack | Phoenix ID |
| --- | --- | --- | --- | --- | --- | --- | --- | --- | --- | --- |
| 55 | 1.4.3 | **Elevator** |  | 30d | 2026-07-13 | 2026-08-24 |  | 22.75d |  |  |
| 56 | 1.4.3.1 | Delivery | milestone | 0d | 2026-07-13 | 2026-07-13 | 41FS+9d, 84, 110, 130 | 22.75d | 0d | 630 |
| 57 | 1.4.3.2 | Elevator 1 - First Floor |  | 5d | 2026-07-14 | 2026-07-20 | 56SS | 22.75d | 0d | 640 |
| 58 | 1.4.3.3 | Elevator 1 - Second Floor |  | 5d | 2026-07-21 | 2026-07-27 | 57 | 22.75d | 0d |  |
| 59 | 1.4.3.4 | Elevator 2 - First Floor |  | 5d | 2026-07-28 | 2026-08-03 | 58 | 22.75d | 0d |  |
| 60 | 1.4.3.5 | Elevator 2 - Second Floor |  | 5d | 2026-08-04 | 2026-08-10 | 59 | 22.75d | 0d |  |
| 61 | 1.4.3.6 | Infill Doors |  | 5d | 2026-08-04 | 2026-08-10 | 60FS-5d | 22.75d | 0d | 650 |
| 62 | 1.4.3.7 | Test / Adjust |  | 5d | 2026-08-11 | 2026-08-17 | 61 | 22.75d | 0d | 660 |
| 63 | 1.4.3.8 | State Inspection |  | 5d | 2026-08-18 | 2026-08-24 | 62 | 22.75d | 19d | 670 |
| 64 | 1.4.4 | **Exterior Finishes** |  | 50d | 2026-05-27 | 2026-08-04 |  | 21.75d |  |  |
| 65 | 1.4.4.1 | Masonry Veneer |  | 15d | 2026-05-27 | 2026-06-16 | 44, 87 | 21.75d | 0d | 720 |
| 66 | 1.4.4.2 | Metal Panels Completion - Building A |  | 15d | 2026-06-17 | 2026-07-07 | 65 | 21.75d | 0d | 730 |
| 67 | 1.4.4.3 | Sheetmetal Work (Coping, Gutters, & Downspouts) |  | 10d | 2026-07-01 | 2026-07-14 | 41 | 36.75d | 30d | 760 |
| 68 | 1.4.4.4 | Automatic Entrance Door |  | 5d | 2026-06-17 | 2026-06-23 | 65 | 78d |  | 770 |
| 69 | 1.4.4.5 | Exterior Paint |  | 10d | 2026-07-08 | 2026-07-21 | 66 | 21.75d | 0d | 820 |
| 70 | 1.4.4.6 | Exterior Signage Install |  | 10d | 2026-07-22 | 2026-08-04 | 69 | 21.75d | 0d | 830 |
| 71 | 1.4.4.7 | Canopy |  | 10d | 2026-07-22 | 2026-08-04 | 70SS | 21.75d | 15d | 840 |
| 72 | 1.5 | **Building B** |  | 99d | 2026-02-19 | 2026-07-07 |  | 20.75d |  |  |
| 73 | 1.5.1 | **Structure** |  | 69d | 2026-02-19 | 2026-05-26 |  | 20.75d |  |  |
| 74 | 1.5.1.1 | **First Floor** |  | 64d | 2026-02-19 | 2026-05-19 |  | 20.75d |  |  |
| 75 | 1.5.1.1.1 | Building Pad Delivery (Bldg B) |  | 5d | 2026-02-19 | 2026-02-25 | 19 | 20.75d | 0d | 100 |
| 76 | 1.5.1.1.2 | FRP Foundations / Foundation CMU - Area 1 |  | 5d | 2026-02-26 | 2026-03-04 | 75 | 157d |  | 120 |
| 77 | 1.5.1.1.3 | FRP Foundations/Foundation Area 2 |  | 5d | 2026-03-25 | 2026-03-31 | 24 | 138d |  |  |
| 78 | 1.5.1.1.4 | Under Slab MEP |  | 5d | 2026-03-25 | 2026-03-31 | 25 | 138d |  | 130 |
| 79 | 1.5.1.1.5 | Slab Prep / Pour |  | 5d | 2026-04-15 | 2026-04-21 | 28 | 123d |  | 140 |
| 80 | 1.5.1.1.6 | CMU Walls |  | 10d | 2026-04-22 | 2026-05-05 | 27 | 8.75d | 0d |  |
| 81 | 1.5.1.1.7 | Janus Framing System |  | 10d | 2026-05-06 | 2026-05-19 | 80 | 18.75d | 0d | 170 |
| 82 | 1.5.1.1.8 | Roof Decking | milestone | 0d | 2026-05-19 | 2026-05-19 | 81 | 28.75d | 0d | 320 |

| ID | WBS | Task | Duration | Start | Finish | Predecessors | Total slack | Free slack | Phoenix ID |
| --- | --- | --- | --- | --- | --- | --- | --- | --- | --- |
| 83 | 1.5.1.2 | **Roof** | 5d | 2026-05-20 | 2026-05-26 |  | 56.75d |  |  |
| 84 | 1.5.1.2.1 | Metal Roofing | 5d | 2026-05-20 | 2026-05-26 | 82 | 56.75d | 0d | 410 |
| 85 | 1.5.2 | **Framing and MEP** | 25d | 2026-05-20 | 2026-06-23 |  | 18.75d |  |  |
| 86 | 1.5.2.1 | **First Floor** | 25d | 2026-05-20 | 2026-06-23 |  | 18.75d |  |  |
| 87 | 1.5.2.1.1 | Interior Framing | 5d | 2026-05-20 | 2026-05-26 | 81 | 18.75d | 0d | 420 |
| 88 | 1.5.2.1.2 | 1st Floor MEP Rough-In Area 1 | 10d | 2026-05-27 | 2026-06-09 | 87 | 18.75d | 15d | 440 |
| 89 | 1.5.2.1.3 | Finishes | 10d | 2026-05-27 | 2026-06-09 | 84, 87 | 78d | 0d | 450 |
| 90 | 1.5.2.1.4 | 1st Floor MEP Trim Out Area 1 | 10d | 2026-06-10 | 2026-06-23 | 89 | 78d |  | 455 |
| 91 | 1.5.3 | **Exterior Finishes** | 35d | 2026-05-20 | 2026-07-07 |  | 41.75d |  |  |
| 92 | 1.5.3.1 | Metal Panels Completion | 15d | 2026-05-20 | 2026-06-09 | 82 | 41.75d | 0d | 730 |
| 93 | 1.5.3.2 | Sheetmetal Work (Coping, Gutters, & Downspouts) | 10d | 2026-06-10 | 2026-06-23 | 92 | 51.75d | 45d | 760 |
| 94 | 1.5.3.3 | Automatic Entrance Door | 5d | 2026-06-10 | 2026-06-16 | 92 | 83d |  | 770 |
| 95 | 1.5.3.4 | Exterior Paint | 10d | 2026-06-10 | 2026-06-23 | 92 | 41.75d | 0d | 820 |
| 96 | 1.5.3.5 | Exterior Signage Install | 10d | 2026-06-24 | 2026-07-07 | 95 | 41.75d | 0d | 830 |
| 97 | 1.5.3.6 | Canopy | 10d | 2026-06-24 | 2026-07-07 | 96SS | 41.75d | 35d | 840 |
| 98 | 1.6 | **Building C** | 99d | 2026-02-26 | 2026-07-14 |  | 20.75d |  |  |
| 99 | 1.6.1 | **Structure** | 74d | 2026-02-26 | 2026-06-09 |  | 8.75d |  |  |
| 100 | 1.6.1.1 | **First Floor** | 69d | 2026-02-26 | 2026-06-02 |  | 8.75d |  |  |
| 101 | 1.6.1.1.1 | Building Pad Delivery (Bldg C) | 5d | 2026-02-26 | 2026-03-04 | 75 | 20.75d | 0d | 100 |
| 102 | 1.6.1.1.2 | FRP Foundations / Foundation CMU - Area 1 | 5d | 2026-03-05 | 2026-03-11 | 101 | 32.75d | 0d | 120 |
| 103 | 1.6.1.1.3 | FRP Foundations/Foundation Area 2 | 5d | 2026-03-12 | 2026-03-18 | 102 | 32.75d | 0d |  |
| 104 | 1.6.1.1.4 | Under Slab MEP | 5d | 2026-03-19 | 2026-03-25 | 103 | 32.75d | 0d | 130 |
| 105 | 1.6.1.1.5 | Slab Prep / Pour | 5d | 2026-03-26 | 2026-04-01 | 104 | 32.75d | 24d | 140 |
| 106 | 1.6.1.1.6 | CMU Walls | 10d | 2026-05-06 | 2026-05-19 | 105, 80 | 8.75d | 0d |  |
| 107 | 1.6.1.1.7 | Janus Framing System | 5d | 2026-05-20 | 2026-05-26 | 106 | 8.75d | 0d | 170 |
| 108 | 1.6.1.1.8 | Roof Decking | 5d | 2026-05-27 | 2026-06-02 | 107 | 8.75d | 0d | 320 |

| ID | WBS | Task | Duration | Start | Finish | Predecessors | Total slack | Free slack | Phoenix ID |
| --- | --- | --- | --- | --- | --- | --- | --- | --- | --- |
| 109 | 1.6.1.2 | **Roof** | 5d | 2026-06-03 | 2026-06-09 |  | 8.75d |  |  |
| 110 | 1.6.1.2.1 | Metal Roofing | 5d | 2026-06-03 | 2026-06-09 | 108 | 8.75d | 0d | 410 |
| 111 | 1.6.2 | **Framing and MEP** | 20d | 2026-06-10 | 2026-07-07 |  | 8.75d |  |  |
| 112 | 1.6.2.1 | **First Floor** | 20d | 2026-06-10 | 2026-07-07 |  | 8.75d |  |  |
| 113 | 1.6.2.1.1 | 1st Floor MEP Rough-In Area 1 | 10d | 2026-06-10 | 2026-06-23 | 110 | 8.75d | 0d | 440 |
| 114 | 1.6.2.1.2 | 1st Floor MEP Trim Out Area 1 | 10d | 2026-06-24 | 2026-07-07 | 113 | 68d |  | 455 |
| 115 | 1.6.3 | **Exterior Finishes** | 25d | 2026-06-10 | 2026-07-14 |  | 63d |  |  |
| 116 | 1.6.3.1 | Metal Panels Completion | 15d | 2026-06-10 | 2026-06-30 | 108, 92 | 63d | 0d | 730 |
| 117 | 1.6.3.2 | Exterior Signage Install | 10d | 2026-07-01 | 2026-07-14 | 116 | 63d |  | 830 |
| 118 | 1.7 | **Building D** | 94d | 2026-03-05 | 2026-07-14 |  | 20.75d |  |  |
| 119 | 1.7.1 | **Structure** | 57d | 2026-03-05 | 2026-05-22 |  | 20.75d |  |  |
| 120 | 1.7.1.1 | **First Floor** | 52d | 2026-03-05 | 2026-05-15 |  | 20.75d |  |  |
| 121 | 1.7.1.1.1 | Building Pad Delivery (Bldg D) | 5d | 2026-03-05 | 2026-03-11 | 101 | 20.75d | 0d | 100 |
| 122 | 1.7.1.1.2 | FRP Foundations / Foundation CMU - Area 1 | 5d | 2026-03-19 | 2026-03-25 | 121FS+5d | 20.75d | 0d | 120 |
| 123 | 1.7.1.1.3 | FRP Foundations/Foundation Area 2 | 5d | 2026-03-26 | 2026-04-01 | 122 | 20.75d | 0d |  |
| 124 | 1.7.1.1.4 | Under Slab MEP | 5d | 2026-04-02 | 2026-04-08 | 123 | 20.75d | 0d | 130 |
| 125 | 1.7.1.1.5 | Slab Prep / Pour | 5d | 2026-04-09 | 2026-04-15 | 124 | 127d |  | 140 |
| 126 | 1.7.1.1.6 | CMU Walls | 10d | 2026-04-20 | 2026-05-01 | 124FS+7d | 20.75d | 0d |  |
| 127 | 1.7.1.1.7 | Janus Framing System | 5d | 2026-05-04 | 2026-05-08 | 126 | 20.75d | 0d | 170 |
| 128 | 1.7.1.1.8 | Roof Decking | 5d | 2026-05-11 | 2026-05-15 | 127 | 20.75d | 0d | 320 |
| 129 | 1.7.1.2 | **Roof** | 5d | 2026-05-18 | 2026-05-22 |  | 20.75d |  |  |
| 130 | 1.7.1.2.1 | Metal Roofing | 5d | 2026-05-18 | 2026-05-22 | 128 | 20.75d | 0d | 410 |
| 131 | 1.7.2 | **Framing and MEP** | 20d | 2026-05-25 | 2026-06-19 |  | 20.75d |  |  |
| 132 | 1.7.2.1 | **First Floor** | 20d | 2026-05-25 | 2026-06-19 |  | 20.75d |  |  |
| 133 | 1.7.2.1.1 | 1st Floor MEP Rough-In Area 1 | 10d | 2026-05-25 | 2026-06-05 | 130 | 20.75d | 0d | 440 |
| 134 | 1.7.2.1.2 | 1st Floor MEP Trim Out Area 1 | 10d | 2026-06-08 | 2026-06-19 | 133 | 80d |  | 455 |

| ID | WBS | Task | Duration | Start | Finish | Predecessors | Complete | Remaining | Total slack | Free slack | Phoenix ID |
| --- | --- | --- | --- | --- | --- | --- | --- | --- | --- | --- | --- |
| 135 | 1.7.3 | **Exterior Finishes** | 25d | 2026-06-10 | 2026-07-14 |  |  |  | 63d |  |  |
| 136 | 1.7.3.1 | Metal Panels Completion | 15d | 2026-06-10 | 2026-06-30 | 128, 92 |  |  | 63d | 0d | 730 |
| 137 | 1.7.3.2 | Exterior Signage Install | 10d | 2026-07-01 | 2026-07-14 | 136 |  |  | 63d |  | 830 |
| 138 | 1.8 | **Site Finishes** | 90d | 2026-05-01 | 2026-09-03 |  |  |  | 14.75d |  |  |
| 139 | 1.8.1 | Site Fine Grading | 10d | 2026-05-01 | 2026-05-14 | 14 |  |  | 14.75d | 0d | 850 |
| 140 | 1.8.2 | Stone Base | 10d | 2026-05-08 | 2026-05-21 | 139FS-5d |  |  | 14.75d | 0d | 860 |
| 141 | 1.8.3 | Curb / Sidewalks | 10d | 2026-05-15 | 2026-05-28 | 140FS-5d |  |  | 14.75d | 0d | 870 |
| 142 | 1.8.4 | Binder Course Asphalt - Area 1 | 5d | 2026-05-29 | 2026-06-04 | 141 |  |  | 14.75d | 0d | 880 |
| 143 | 1.8.5 | Binder Course Asphalt - Area 2 | 5d | 2026-06-05 | 2026-06-11 | 142 |  |  | 14.75d | 0d |  |
| 144 | 1.8.6 | Landscaping - Area 1 | 10d | 2026-06-12 | 2026-06-25 | 143 |  |  | 14.75d | 0d | 890 |
| 145 | 1.8.7 | Landscaping - Area 2 | 10d | 2026-06-26 | 2026-07-09 | 144 |  |  | 14.75d | 0d |  |
| 146 | 1.8.8 | Final Pavement | 10d | 2026-07-10 | 2026-07-23 | 145 |  |  | 14.75d | 0d | 900 |
| 147 | 1.8.9 | Line Marking/Signage | 5d | 2026-07-24 | 2026-07-30 | 146 |  |  | 14.75d | 0d | 910 |
| 148 | 1.8.10 | As-Builts Complete & Submitted to AHJ | 5d | 2026-07-31 | 2026-08-06 | 147 |  |  | 14.75d | 0d | 920 |
| 149 | 1.8.11 | As-Built/City Review | 20d | 2026-08-07 | 2026-09-03 | 148 |  |  | 14.75d | 11d | 930 |
| 150 | 1.9 | **Interior Upfit** | 73d | 2026-07-01 A | 2026-10-09 |  | 3% | 71.02d | 0d |  |  |
| 151 | 1.9.1 | 1st Floor - Janus Unit Install | 15d | 2026-07-01 | 2026-07-21 | 45, 46, 88, 113, 133, 41 |  |  | 18.75d | 15d | 940 |
| 152 | 1.9.2 | 2nd Floor - Janus Unit Install | 15d | 2026-08-12 | 2026-09-01 | 51, 52, 151 |  |  | 3.75d | 0d | 950 |
| 153 | 1.9.3 | Bldg B Janus Install | 5d | 2026-09-02 | 2026-09-08 | 152 |  |  | 3.75d | 0d | 960 |
| 154 | 1.9.4 | Bldg C Janus Install | 5d | 2026-09-09 | 2026-09-15 | 153 |  |  | 13d | 0d |  |
| 155 | 1.9.5 | Bldg D Janus Install | 5d | 2026-09-16 | 2026-09-22 | 154 |  |  | 13d |  |  |
| 156 | 1.9.6 | Drywall Hanging | 5d | 2026-07-01 | 2026-07-07 | 45, 46, 88, 113, 133 |  |  | 6.75d | 0d |  |
| 157 | 1.9.7 | Drywall Finishing | 10d | 2026-07-01 | 2026-07-14 | 156FS-5d |  |  | 6.75d | 0d |  |
| 158 | 1.9.8 | Paint | 5d | 2026-07-15 | 2026-07-21 | 157 |  |  | 34d | 0d |  |
| 159 | 1.9.9 | Millwork | 5d | 2026-07-21 | 2026-07-27 | 158FS-1d |  |  | 34d | 0d |  |
| 160 | 1.9.10 | Floor Sealer - 2nd Floor | 5d | 2026-07-28 | 2026-08-03 | 159 |  |  | 34d | 0d |  |
| 161 | 1.9.11 | Floor Sealer / Polish - 1st Floor and drive ups | 15d | 2026-08-04 | 2026-08-24 | 160 |  |  | 34d |  | 1000 |

| ID | WBS | Task | Type | Duration | Start | Finish | Predecessors | Complete | Remaining | Total slack | Free slack | Phoenix ID |
| --- | --- | --- | --- | --- | --- | --- | --- | --- | --- | --- | --- | --- |
| 162 | 1.9.12 | **Closeout** |  | 33d | 2026-08-26 A | 2026-10-09 |  | 8% | 30.42d | 0d |  |  |
| 163 | 1.9.12.1 | Final Clean - Bldg A |  | 8d | 2026-09-09 | 2026-09-18 | 159, 153 |  |  | 3.75d | 0d | 1010 |
| 164 | 1.9.12.2 | Final Clean - Bldg B |  | 5d | 2026-09-21 | 2026-09-25 | 163 |  |  | 5d | 0d |  |
| 165 | 1.9.12.3 | Final Clean - Bldg C and D |  | 5d | 2026-09-28 | 2026-10-02 | 164 |  |  | 5d |  |  |
| 166 | 1.9.12.4 | MEP Final Inspections |  | 10d | 2026-08-26 | 2026-09-08 | 67, 71, 69, 147, 53, 54, 93, 95, 97, 51, 45 |  |  | 6.75d | 0d | 1020 |
| 167 | 1.9.12.5 | Building Final Inspections |  | 5d | 2026-09-09 | 2026-09-15 | 166 |  |  | 6.75d | 3d |  |
| 168 | 1.9.12.6 | Weather Days Included (20 Days) |  | 15d | 2026-09-21 A | 2026-10-09 | 149, 63, 163, 167 | 25% | 11.25d | 0d |  | 1030 |
| 169 | 1.9.13 | **Substantial Completion** |  | 0d | 2026-10-09 | 2026-10-09 |  |  |  | 0d |  |  |
| 170 | 1.9.13.1 | Substantial Completion | milestone | 0d | 2026-10-09 | 2026-10-09 | 168FF |  |  | 0d |  | 1040 |
