# Selma Master 3.27.26 Updated Percent Complete.1

Schedule from MS Project, 2025-10-06 to 2026-10-09, status date 2026-03-27, A marks actual dates.

## Calendars

- Standard: Mon-Fri 08:00-12:00, 13:00-17:00; Sat-Sun off. Exceptions (off unless hours are given): 2025-11-27 to 2025-11-28.

## Schedule

| ID | WBS | Task | Type | Duration | Start | Finish | Predecessors | Complete | Remaining | Actual start | Actual finish | Total slack | Free slack | Constraint | Phoenix ID |
| --- | --- | --- | --- | --- | --- | --- | --- | --- | --- | --- | --- | --- | --- | --- | --- |
| 1 | 1 | **Public Storage Selma, NC** |  | 263d | 2025-10-06 A | 2026-10-09 |  | 14% | 224.94d |  |  | 0d |  |  |  |
| 2 | 1.1 | Award Contract | milestone | 0d | 2025-10-06 A | 2025-10-06 A |  | 100% |  |  |  |  |  | start no earlier than 2025-10-06 | 10 |
| 3 | 1.2 | **Mobilization** |  | 6d | 2025-12-01 | 2025-12-08 |  | 100% |  | 2025-12-15 | 2026-01-05 |  |  |  |  |
| 4 | 1.2.1 | Mobilization (Site Fence, Layout, Barricades, Etc.) |  | 1d | 2026-01-05 A | 2026-01-05 A | 2SS+63d | 100% |  |  |  |  |  |  | 20 |
| 5 | 1.2.2 | SWPPP |  | 5d | 2025-12-15 A | 2025-12-19 A | 4FS-16d | 100% |  |  |  |  |  |  | 30 |
| 6 | 1.3 | **Demo/Site Work** |  | 87d | 2026-01-05 A | 2026-05-05 | 5FS+10d | 74% | 22.34d |  |  | 12d |  |  |  |
| 7 | 1.3.1 | Clearing and Grubbing |  | 10d | 2026-01-05 A | 2026-01-16 A | 5FS-6d | 100% |  |  |  |  |  |  |  |
| 8 | 1.3.2 | Dewatering |  | 5d | 2026-01-19 A | 2026-01-23 A | 7 | 100% |  |  |  |  |  |  |  |
| 9 | 1.3.3 | Rough Grading |  | 18d | 2026-01-19 A | 2026-02-11 A | 8SS | 100% |  |  |  |  |  |  |  |
| 10 | 1.3.4 | Storm System |  | 21d | 2026-03-02 A | 2026-03-30 | 9FS+12d | 85% | 3.15d |  |  | 4.5d | 0d |  | 90 |
| 11 | 1.3.5 | Sanitary Sewer |  | 5d | 2026-03-31 A | 2026-04-06 | 10 | 90% | 0.5d |  |  | 9.5d | 0d |  |  |
| 12 | 1.3.6 | Water |  | 10d | 2026-03-20 A | 2026-04-02 | 11FS-12d | 95% | 0.5d |  |  | 0.8d | 0d |  |  |
| 13 | 1.3.7 | Site Electrical |  | 10d | 2026-04-08 A | 2026-04-21 | 12FS+3d | 8% | 9.2d |  |  | 0.5d | 0d |  |  |
| 14 | 1.3.8 | Building Tie In |  | 10d | 2026-04-22 A | 2026-05-05 | 12, 13 | 5% | 9.5d |  |  | 12d | 0d |  |  |
| 15 | 1.4 | **Building A** |  | 149d | 2026-01-27 A | 2026-08-21 |  | 6% | 140.22d |  |  | 35d |  |  |  |
| 16 | 1.4.1 | **Structure** |  | 133d | 2026-01-27 A | 2026-07-30 |  | 13% | 116.2d |  |  | 51d |  |  |  |
| 17 | 1.4.1.1 | **First Floor** |  | 93d | 2026-01-27 A | 2026-06-04 |  | 20% | 74.28d |  |  | 91d |  |  |  |
| 18 | 1.4.1.1.1 | Weather Delay( Snow & Ice) |  | 12d | 2026-01-27 A | 2026-02-11 A | 9FS-12d | 100% |  |  |  |  |  |  |  |
| 19 | 1.4.1.1.2 | Building Pad Delivery (Bldg A) |  | 5d | 2026-03-09 A | 2026-03-13 | 9FS+17d, 18 | 95% | 0.25d |  |  | 0d |  |  | 100 |
| 20 | 1.4.1.1.3 | Elevator Pit - Excavate |  | 2d | 2026-03-09 A | 2026-03-10 A | 19FS-5d | 100% |  |  |  |  |  |  |  |
| 21 | 1.4.1.1.4 | Elevator Pit - Form and Pour |  | 10d | 2026-03-20 A | 2026-04-02 | 20FS+7d | 50% | 5d |  |  | 136d |  |  |  |
| 22 | 1.4.1.1.5 | FRP Foundations / Foundation CMU - Area 1 |  | 7d | 2026-03-30 | 2026-04-07 | 19FS+10d |  |  |  |  | 0d |  |  | 120 |
| 23 | 1.4.1.1.6 | Concrete Retaining Walls |  | 10d | 2026-04-08 | 2026-04-21 | 22 |  |  |  |  | 0d |  |  |  |
| 24 | 1.4.1.1.7 | FRP Foundations/Foundation Area 2 |  | 7d | 2026-04-22 | 2026-04-30 | 23 |  |  |  |  | 0d |  |  |  |
| 25 | 1.4.1.1.8 | Under Slab MEP |  | 10d | 2026-04-17 | 2026-04-30 | 24FS-10d |  |  |  |  | 0d |  |  | 130 |
| 26 | 1.4.1.1.9 | Slab #1 Prep / Pour (North Half) |  | 10d | 2026-04-24 | 2026-05-07 | 25FS-5d, 22FS-5d |  |  |  |  | 0d |  |  | 140 |
| 27 | 1.4.1.1.10 | CMU shafts |  | 15d | 2026-05-08 | 2026-05-28 | 26 |  |  |  |  | 76d | 0d |  | 150 |
| 28 | 1.4.1.1.11 | Slab #2 Prep / Pour (South Half) |  | 10d | 2026-05-08 | 2026-05-21 | 26 |  |  |  |  | 101d |  |  | 160 |
| 29 | 1.4.1.1.12 | Janus Framing System (North Half) |  | 10d | 2026-05-08 | 2026-05-21 | 26 |  |  |  |  | 0d |  |  | 170 |
| 30 | 1.4.1.1.13 | Janus Framing System (South Half) |  | 10d | 2026-05-22 | 2026-06-04 | 29 |  |  |  |  | 0d |  |  | 190 |

| ID | WBS | Task | Type | Duration | Start | Finish | Predecessors | Total slack | Free slack | Phoenix ID |
| --- | --- | --- | --- | --- | --- | --- | --- | --- | --- | --- |
| 31 | 1.4.1.2 | **Second Floor** |  | 40d | 2026-05-22 | 2026-07-16 |  | 5d |  |  |
| 32 | 1.4.1.2.1 | Elevated Slab #1 (North Half) Prep/Pour |  | 5d | 2026-05-22 | 2026-05-28 | 30FS-10d | 5d | 0d | 200 |
| 33 | 1.4.1.2.2 | Elevated Slab #2 (South Half) Prep/Pour |  | 5d | 2026-05-29 | 2026-06-04 | 32 | 5d | 0d | 210 |
| 34 | 1.4.1.2.3 | Janus Framing System (North Half) |  | 15d | 2026-06-05 | 2026-06-25 | 32, 30, 33 | 5d | 0d | 220 |
| 35 | 1.4.1.2.4 | Janus Framing System (South Half) |  | 15d | 2026-06-26 | 2026-07-16 | 34, 33 | 5d | 0d | 230 |
| 36 | 1.4.1.3 | **Stairs** |  | 20d | 2026-05-29 | 2026-06-25 |  | 76d |  |  |
| 37 | 1.4.1.3.1 | Stair #1 |  | 10d | 2026-05-29 | 2026-06-11 | 27 | 76d | 0d | 380 |
| 38 | 1.4.1.3.2 | Stair #2 |  | 10d | 2026-06-12 | 2026-06-25 | 37 | 76d |  | 390 |
| 39 | 1.4.1.4 | **Roof** |  | 10d | 2026-07-17 | 2026-07-30 |  | 0d |  |  |
| 40 | 1.4.1.4.1 | Metal Roofing - Building A | manual | 10d | 2026-07-17 | 2026-07-30 | 35 |  |  | 410 |
| 41 | 1.4.2 | **Framing and MEP** |  | 51d | 2026-05-29 | 2026-08-07 |  | 5d |  |  |
| 42 | 1.4.2.1 | **First Floor** |  | 35d | 2026-05-29 | 2026-07-16 |  | 5d |  |  |
| 43 | 1.4.2.1.1 | Interior Framing |  | 5d | 2026-06-05 | 2026-06-11 | 30 | 0d |  | 420 |
| 44 | 1.4.2.1.2 | 1st Floor MEP Rough-In Area 1 |  | 20d | 2026-05-29 | 2026-06-25 | 32 | 10d | 0d | 440 |
| 45 | 1.4.2.1.3 | 1st Floor MEP Rough-In Area 2 |  | 15d | 2026-06-05 | 2026-06-25 | 33 | 25d | 0d |  |
| 46 | 1.4.2.1.4 | 1st Floor MEP Trim Out Area 1 |  | 10d | 2026-06-26 | 2026-07-09 | 152, 44 | 10d | 0d | 455 |
| 47 | 1.4.2.1.5 | 1st Floor MEP Trim Out Area 2 |  | 5d | 2026-07-10 | 2026-07-16 | 46 | 10d | 0d |  |
| 48 | 1.4.2.2 | **Second Floor** |  | 46d | 2026-06-05 | 2026-08-07 |  | 30d |  |  |
| 49 | 1.4.2.2.1 | Interior Framing |  | 5d | 2026-06-05 | 2026-06-11 | 33 | 35d | 11d | 460 |
| 50 | 1.4.2.2.2 | 2nd Floor MEP Rough-In Area 2 |  | 15d | 2026-06-29 | 2026-07-17 | 44, 49, 45, 85, 109, 128 | 24d | 0d | 480 |
| 51 | 1.4.2.2.3 | 2nd Floor MEP Rough-In Area 2 |  | 15d | 2026-07-20 | 2026-08-07 | 50 | 30d | 0d |  |
| 52 | 1.4.2.2.4 | 2nd Floor MEP Trim Out Area 1 - Building A |  | 10d | 2026-07-17 | 2026-07-30 | 47 | 10d | 0d | 500 |
| 53 | 1.4.2.2.5 | 2nd Floor MEP Trim Out Area 2 - Building A |  | 5d | 2026-07-31 | 2026-08-06 | 52 | 10d |  |  |
| 54 | 1.4.3 | **Elevator** |  | 30d | 2026-07-13 | 2026-08-21 |  | 17d |  |  |
| 55 | 1.4.3.1 | Delivery | milestone | 0d | 2026-07-13 | 2026-07-13 | 40FS-14d | 17d | 0d | 630 |
| 56 | 1.4.3.2 | Elevator 1 - First Floor |  | 5d | 2026-07-13 | 2026-07-17 | 55SS | 17d | 0d | 640 |
| 57 | 1.4.3.3 | Elevator 1 - Second Floor |  | 5d | 2026-07-20 | 2026-07-24 | 56 | 17d | 0d |  |
| 58 | 1.4.3.4 | Elevator 2 - First Floor |  | 5d | 2026-07-27 | 2026-07-31 | 57 | 17d | 0d |  |
| 59 | 1.4.3.5 | Elevator 2 - Second Floor |  | 5d | 2026-08-03 | 2026-08-07 | 58 | 17d | 0d |  |
| 60 | 1.4.3.6 | Infill Doors |  | 5d | 2026-08-03 | 2026-08-07 | 59FS-5d | 27d | 0d | 650 |
| 61 | 1.4.3.7 | Test / Adjust |  | 5d | 2026-08-10 | 2026-08-14 | 60 | 27d | 0d | 660 |
| 62 | 1.4.3.8 | State Inspection |  | 5d | 2026-08-17 | 2026-08-21 | 61 | 27d |  | 670 |

| ID | WBS | Task | Duration | Start | Finish | Predecessors | Complete | Remaining | Total slack | Free slack | Phoenix ID |
| --- | --- | --- | --- | --- | --- | --- | --- | --- | --- | --- | --- |
| 63 | 1.4.4 | **Exterior Finishes** | 50d | 2026-06-12 | 2026-08-20 |  |  |  | 0d |  |  |
| 64 | 1.4.4.1 | Masonry Veneer | 15d | 2026-06-12 | 2026-07-02 | 43, 84 |  |  | 0d |  | 720 |
| 65 | 1.4.4.2 | Metal Panels Completion - Building A | 15d | 2026-07-03 | 2026-07-23 | 64 |  |  | 0d |  | 730 |
| 66 | 1.4.4.3 | Sheetmetal Work (Coping, Gutters, & Downspouts) | 10d | 2026-07-31 | 2026-08-13 | 40 |  |  | 5d |  | 760 |
| 67 | 1.4.4.4 | Automatic Entrance Door | 5d | 2026-07-03 | 2026-07-09 | 64 |  |  | 66d |  | 770 |
| 68 | 1.4.4.5 | Exterior Paint | 10d | 2026-07-24 | 2026-08-06 | 65 |  |  | 0d |  | 820 |
| 69 | 1.4.4.6 | Exterior Signage Install | 10d | 2026-08-07 | 2026-08-20 | 68 |  |  | 0d |  | 830 |
| 70 | 1.4.4.7 | Canopy | 10d | 2026-08-07 | 2026-08-20 | 69SS |  |  | 0d |  | 840 |
| 71 | 1.5 | **Building B** | 78d | 2026-03-04 A | 2026-06-19 |  | 16% | 65.35d | 80d |  |  |
| 72 | 1.5.1 | **Structure** | 38d | 2026-03-04 A | 2026-04-24 |  | 55% | 17.27d | 100d |  |  |
| 73 | 1.5.1.1 | **First Floor** | 33d | 2026-03-04 A | 2026-04-17 |  | 64% | 11.79d | 16d |  |  |
| 74 | 1.5.1.1.1 | Building Pad Delivery (Bldg B) | 3d | 2026-03-04 A | 2026-03-06 A | 19FS-8d | 100% |  |  |  | 100 |
| 75 | 1.5.1.1.2 | FRP Foundations / Foundation CMU - Area 1 | 5d | 2026-03-09 A | 2026-03-13 A | 74 | 100% |  |  |  | 120 |
| 76 | 1.5.1.1.3 | Under Slab MEP | 5d | 2026-03-09 A | 2026-03-13 A | 74 | 100% |  |  |  | 130 |
| 77 | 1.5.1.1.4 | Slab Prep / Pour | 5d | 2026-03-23 A | 2026-03-27 A | 75FS+5d | 100% |  |  |  | 140 |
| 78 | 1.5.1.1.5 | CMU Walls | 5d | 2026-04-03 | 2026-04-09 | 77FS+4d |  |  | 16d | 0d |  |
| 79 | 1.5.1.1.6 | Janus Framing System | 5d | 2026-04-13 | 2026-04-17 | 78FS+1d |  |  | 16d | 0d | 170 |
| 80 | 1.5.1.2 | **Roof** | 5d | 2026-04-06 | 2026-04-10 | 79 |  |  |  |  |  |
| 81 | 1.5.1.2.1 | Metal Roofing | 5d | 2026-04-20 | 2026-04-24 | 79 |  |  | 100d | 0d | 410 |
| 82 | 1.5.2 | **Framing and MEP** | 25d | 2026-04-20 | 2026-05-22 |  |  |  | 16d |  |  |
| 83 | 1.5.2.1 | **First Floor** | 25d | 2026-04-20 | 2026-05-22 |  |  |  | 16d |  |  |
| 84 | 1.5.2.1.1 | Interior Framing | 5d | 2026-04-20 | 2026-04-24 | 79 |  |  | 16d | 0d | 420 |
| 85 | 1.5.2.1.2 | 1st Floor MEP Rough-In Area 1 | 10d | 2026-04-27 | 2026-05-08 | 84 |  |  | 16d | 0d | 440 |
| 86 | 1.5.2.1.3 | Finishes | 10d | 2026-04-27 | 2026-05-08 | 81, 84 |  |  | 100d | 0d | 450 |
| 87 | 1.5.2.1.4 | 1st Floor MEP Trim Out Area 1 | 10d | 2026-05-11 | 2026-05-22 | 86 |  |  | 100d |  | 455 |

| ID | WBS | Task | Duration | Start | Finish | Predecessors | Complete | Remaining | Total slack | Free slack | Phoenix ID |
| --- | --- | --- | --- | --- | --- | --- | --- | --- | --- | --- | --- |
| 88 | 1.5.3 | **Exterior Finishes** | 25d | 2026-05-18 | 2026-06-19 | 79FS+20d |  |  | 44d |  |  |
| 89 | 1.5.3.1 | Metal Panels Completion | 5d | 2026-05-18 | 2026-05-22 |  |  |  | 44d | 0d | 730 |
| 90 | 1.5.3.2 | Sheetmetal Work (Coping, Gutters, & Downspouts) | 3d | 2026-05-25 | 2026-05-27 | 89 |  |  | 61d |  | 760 |
| 91 | 1.5.3.3 | Automatic Entrance Door | 5d | 2026-05-25 | 2026-05-29 | 89 |  |  | 95d |  | 770 |
| 92 | 1.5.3.4 | Exterior Paint | 10d | 2026-05-25 | 2026-06-05 | 89 |  |  | 44d | 0d | 820 |
| 93 | 1.5.3.5 | Exterior Signage Install | 10d | 2026-06-08 | 2026-06-19 | 92 |  |  | 44d | 0d | 830 |
| 94 | 1.5.3.6 | Canopy | 10d | 2026-06-08 | 2026-06-19 | 93SS |  |  | 44d |  | 840 |
| 95 | 1.6 | **Building C** | 48d | 2026-03-02 A | 2026-05-06 |  | 40% | 28.65d |  |  |  |
| 96 | 1.6.1 | **Structure** | 45d | 2026-03-02 A | 2026-05-01 |  | 56% | 20d | 62d |  |  |
| 97 | 1.6.1.1 | **First Floor** | 40d | 2026-03-02 A | 2026-04-24 |  | 63% | 15d | 62d |  |  |
| 98 | 1.6.1.1.1 | Building Pad Delivery (Bldg C) | 5d | 2026-03-02 A | 2026-03-06 A | 74FS-5d | 100% |  |  |  | 100 |
| 99 | 1.6.1.1.2 | FRP Foundations / Foundation CMU - Area 1 | 5d | 2026-03-04 A | 2026-03-10 A | 98FS-3d | 100% |  |  |  | 120 |
| 100 | 1.6.1.1.3 | FRP Foundations/Foundation Area 2 | 5d | 2026-03-11 A | 2026-03-17 A | 99 | 100% |  |  |  |  |
| 101 | 1.6.1.1.4 | Under Slab MEP | 5d | 2026-03-11 A | 2026-03-17 A | 100SS | 100% |  |  |  | 130 |
| 102 | 1.6.1.1.5 | Slab Prep / Pour | 5d | 2026-03-16 A | 2026-03-20 A | 101FS-2d | 100% |  |  |  | 140 |
| 103 | 1.6.1.1.6 | CMU Walls | 10d | 2026-04-01 | 2026-04-14 | 102FS+7d |  |  | 62d | 0d |  |
| 104 | 1.6.1.1.7 | Janus Framing System | 5d | 2026-04-20 | 2026-04-24 | 103FS+3d |  |  | 62d | 0d | 170 |
| 105 | 1.6.1.2 | **Roof** | 5d | 2026-04-27 | 2026-05-01 | 104 |  |  | 62d |  |  |
| 106 | 1.6.1.2.1 | Metal Roofing | 5d | 2026-04-27 | 2026-05-01 | 104 |  |  | 62d | 0d | 410 |
| 107 | 1.6.2 | **Framing and MEP** | 4d | 2026-05-04 | 2026-05-07 |  |  |  | 62d |  |  |
| 108 | 1.6.2.1 | **First Floor** | 4d | 2026-05-04 | 2026-05-07 |  |  |  | 62d |  |  |
| 109 | 1.6.2.1.1 | 1st Floor MEP Rough-In Area 1 | 2d | 2026-05-04 | 2026-05-05 | 106 |  |  | 62d | 0d | 440 |
| 110 | 1.6.2.1.2 | 1st Floor MEP Trim Out Area 1 | 2d | 2026-05-06 | 2026-05-07 | 109 |  |  | 101d | 0d | 455 |
| 111 | 1.6.3 | **Exterior Finishes** | 13d | 2026-05-04 | 2026-05-20 |  |  |  | 102d |  |  |
| 112 | 1.6.3.1 | Metal Panels Completion | 3d | 2026-05-04 | 2026-05-06 | 106 |  |  | 102d | 0d | 730 |
| 113 | 1.6.3.2 | Exterior Signage Install | 10d | 2026-05-07 | 2026-05-20 | 112 |  |  | 102d |  | 830 |

| ID | WBS | Task | Duration | Start | Finish | Predecessors | Complete | Remaining | Actual start | Total slack | Free slack | Phoenix ID |
| --- | --- | --- | --- | --- | --- | --- | --- | --- | --- | --- | --- | --- |
| 114 | 1.7 | **Building D** | 70d | 2026-03-09 | 2026-06-12 |  | 6% | 65.86d | 2026-04-06 |  |  |  |
| 115 | 1.7.1 | **Structure** | 50d | 2026-04-06 A | 2026-06-12 |  | 10% | 44.77d |  | 85d |  |  |
| 116 | 1.7.1.1 | **First Floor** | 47d | 2026-04-06 A | 2026-06-09 |  | 11% | 41.71d |  | 88d |  |  |
| 117 | 1.7.1.1.1 | Building Pad Delivery (Bldg D) | 5d | 2026-04-06 A | 2026-04-10 | 98FS+20d | 90% | 0.5d |  | 24d | 0d | 100 |
| 118 | 1.7.1.1.2 | FRP Foundations / Foundation CMU - Area 1 | 5d | 2026-04-20 | 2026-04-24 | 117FS+5d |  |  |  | 24d | 0d | 120 |
| 119 | 1.7.1.1.3 | FRP Foundations/Foundation Area 2 | 5d | 2026-04-27 | 2026-05-01 | 118 |  |  |  | 24d | 0d |  |
| 120 | 1.7.1.1.4 | Under Slab MEP | 5d | 2026-05-04 | 2026-05-08 | 119 |  |  |  | 24d | 0d | 130 |
| 121 | 1.7.1.1.5 | Slab Prep / Pour | 5d | 2026-05-11 | 2026-05-15 | 120 |  |  |  | 105d |  | 140 |
| 122 | 1.7.1.1.6 | CMU Walls | 10d | 2026-05-20 | 2026-06-02 | 120FS+7d |  |  |  | 24d | 0d |  |
| 123 | 1.7.1.1.7 | Janus Framing System | 5d | 2026-06-03 | 2026-06-09 | 122 |  |  |  | 24d | 0d | 170 |
| 124 | 1.7.1.2 | **Roof** | 3d | 2026-06-10 | 2026-06-12 |  |  |  |  | 24d |  |  |
| 125 | 1.7.1.2.1 | Metal Roofing | 3d | 2026-06-10 | 2026-06-12 | 123 |  |  |  | 24d | 0d | 410 |
| 126 | 1.7.2 | **Framing and MEP** | 20d | 2026-06-15 | 2026-07-10 |  |  |  |  | 24d |  |  |
| 127 | 1.7.2.1 | **First Floor** | 20d | 2026-06-15 | 2026-07-10 |  |  |  |  | 24d |  |  |
| 128 | 1.7.2.1.1 | 1st Floor MEP Rough-In Area 1 | 10d | 2026-06-15 | 2026-06-26 | 125 |  |  |  | 24d | 0d | 440 |
| 129 | 1.7.2.1.2 | 1st Floor MEP Trim Out Area 1 | 10d | 2026-06-29 | 2026-07-10 | 128 |  |  |  | 55d | 0d | 455 |
| 130 | 1.7.3 | **Exterior Finishes** | 13d | 2026-06-15 | 2026-07-01 |  |  |  |  | 72d |  |  |
| 131 | 1.7.3.1 | Metal Panels Completion | 3d | 2026-06-15 | 2026-06-17 | 125 |  |  |  | 72d | 0d | 730 |
| 132 | 1.7.3.2 | Exterior Signage Install | 10d | 2026-06-18 | 2026-07-01 | 131 |  |  |  | 72d |  | 830 |
| 133 | 1.8 | **Site Finishes** | 90d | 2026-05-06 | 2026-09-08 |  |  |  |  | 12d |  |  |
| 134 | 1.8.1 | Site Fine Grading | 10d | 2026-05-06 | 2026-05-19 | 14 |  |  |  | 12d | 0d | 850 |
| 135 | 1.8.2 | Stone Base | 10d | 2026-05-13 | 2026-05-26 | 134FS-5d |  |  |  | 12d | 0d | 860 |
| 136 | 1.8.3 | Curb / Sidewalks | 10d | 2026-05-20 | 2026-06-02 | 135FS-5d |  |  |  | 12d | 0d | 870 |
| 137 | 1.8.4 | Binder Course Asphalt - Area 1 | 5d | 2026-06-03 | 2026-06-09 | 136 |  |  |  | 12d | 0d | 880 |
| 138 | 1.8.5 | Binder Course Asphalt - Area 2 | 5d | 2026-06-10 | 2026-06-16 | 137 |  |  |  | 12d | 0d |  |
| 139 | 1.8.6 | Landscaping - Area 1 | 10d | 2026-06-17 | 2026-06-30 | 138 |  |  |  | 12d | 0d | 890 |
| 140 | 1.8.7 | Landscaping - Area 2 | 10d | 2026-07-01 | 2026-07-14 | 139 |  |  |  | 12d | 0d |  |
| 141 | 1.8.8 | Final Pavement | 10d | 2026-07-15 | 2026-07-28 | 140 |  |  |  | 12d | 0d | 900 |
| 142 | 1.8.9 | Line Marking/Signage | 5d | 2026-07-29 | 2026-08-04 | 141 |  |  |  | 12d | 0d | 910 |
| 143 | 1.8.10 | As-Builts Complete & Submitted to AHJ | 5d | 2026-08-05 | 2026-08-11 | 142 |  |  |  | 15d | 0d | 920 |
| 144 | 1.8.11 | As-Built/City Review | 20d | 2026-08-12 | 2026-09-08 | 143 |  |  |  | 15d |  | 930 |

| ID | WBS | Task | Type | Duration | Start | Finish | Predecessors | Total slack | Free slack | Phoenix ID |
| --- | --- | --- | --- | --- | --- | --- | --- | --- | --- | --- |
| 145 | 1.9 | **Interior Upfit** |  | 111d | 2026-05-08 | 2026-10-09 |  | 0d |  |  |
| 146 | 1.9.1 | 1st Floor - Janus Unit Install |  | 15d | 2026-06-26 | 2026-07-16 | 44, 45 | 46d | 16d | 940 |
| 147 | 1.9.2 | 2nd Floor - Janus Unit Install |  | 15d | 2026-08-10 | 2026-08-28 | 50, 51, 146 | 30d |  | 950 |
| 148 | 1.9.3 | Bldg B Janus Install |  | 5d | 2026-05-11 | 2026-05-15 | 85 | 105d |  | 960 |
| 149 | 1.9.4 | Bldg C Janus Install |  | 5d | 2026-05-08 | 2026-05-14 | 112, 110 | 101d | 85d |  |
| 150 | 1.9.5 | Bldg D Janus Install |  | 5d | 2026-07-13 | 2026-07-17 | 129 | 55d | 39d |  |
| 151 | 1.9.6 | Drywall Hanging |  | 5d | 2026-05-11 | 2026-05-15 | 85 | 16d | 0d |  |
| 152 | 1.9.7 | Drywall Finishing |  | 10d | 2026-05-18 | 2026-05-29 | 151 | 16d | 0d |  |
| 153 | 1.9.8 | Paint |  | 5d | 2026-06-01 | 2026-06-05 | 152 | 16d | 0d |  |
| 154 | 1.9.9 | Millwork |  | 5d | 2026-06-05 | 2026-06-11 | 153FS-1d | 16d | 0d |  |
| 155 | 1.9.10 | Floor Sealer - 2nd Floor |  | 5d | 2026-06-12 | 2026-06-18 | 154 | 16d | 0d |  |
| 156 | 1.9.11 | Floor Sealer / Polish - 1st Floor and drive ups |  | 15d | 2026-06-19 | 2026-07-09 | 155 | 16d | 0d | 1000 |
| 157 | 1.9.12 | **Closeout** |  | 36d | 2026-08-21 | 2026-10-09 |  | 0d |  |  |
| 158 | 1.9.12.1 | Final Clean - Bldg A |  | 8d | 2026-09-07 | 2026-09-16 | 59FS+20d | 17d |  | 1010 |
| 159 | 1.9.12.2 | Final Clean - Bldg B |  | 5d | 2026-09-04 | 2026-09-10 | 156FS+40d | 16d | 0d |  |
| 160 | 1.9.12.3 | Final Clean - Bldg C and D |  | 5d | 2026-09-11 | 2026-09-17 | 159, 149, 150 | 16d |  |  |
| 161 | 1.9.12.4 | MEP Final Inspections |  | 15d | 2026-08-21 | 2026-09-10 | 66, 70, 68, 142, 52, 53, 90, 92, 94, 50, 44 | 0d |  | 1020 |
| 162 | 1.9.12.5 | Building Final Inspections |  | 13d | 2026-09-11 | 2026-09-29 | 161 | 0d |  |  |
| 163 | 1.9.12.6 | Weather Days Included (20 Days) |  | 8d | 2026-09-30 | 2026-10-09 | 144, 62, 162 | 0d |  | 1030 |
| 164 | 1.9.13 | **Substantial Completion** |  | 0d | 2026-10-09 | 2026-10-09 |  | 0d |  |  |
| 165 | 1.9.13.1 | Substantial Completion | milestone | 0d | 2026-10-09 | 2026-10-09 | 163FF | 0d |  | 1040 |
