# Schedule 2017-02-17 baseline - Final

Schedule from MS Project XML, 2025-09-08 to 2026-08-18, status date 2026-01-08, A marks actual dates.

## Calendars

- Standard: Mon-Fri 08:00-12:00, 13:00-17:00; Sat-Sun off. Exceptions (off unless hours are given): 2025-11-27 to 2025-11-28 (Thanksgiving 2025), 2025-12-25 (Christmas 2025), 2026-01-01 (New Year's Day 2026), 2026-05-25 (Memorial Day), 2026-07-03 (Independence Day 2026).

## Resources

| Resource |
| --- |
| Janus |
| ATD |

## Schedule

| ID | WBS | Task | Type | Duration | Start | Finish | Predecessors | Complete | Remaining | Total slack | Free slack | Constraint | Deadline | Resources | Work | Actual work |
| --- | --- | --- | --- | --- | --- | --- | --- | --- | --- | --- | --- | --- | --- | --- | --- | --- |
| 1 | 1 | **GENERAL REQUIREMENTS AND CONDITIONS** |  | 241d | 2025-09-08 A | 2026-08-18 |  |  | 241d | 0d |  |  |  |  |  |  |
| 2 | 1.1 | Notice to Proceed | milestone | 1d | 2025-09-08 | 2025-09-08 |  |  |  | 0d |  | start no earlier than 2025-09-08 |  |  |  |  |
| 3 | 1.2 | DELAY - PERMIT DELAY |  | 32d | 2025-09-09 | 2025-10-22 | 2 |  |  | 49d | 0d |  |  |  |  |  |
| 4 | 1.3 | Obtain Building Permit | milestone | 0d | 2025-10-22 | 2025-10-22 | 2, 3 |  |  | 49d | 0d | start no earlier than 2025-10-22 |  |  |  |  |
| 5 | 1.4 | ACHD ROW Permit | milestone | 0d | 2025-10-29 | 2025-10-29 | 4FS+5d |  |  | 203d |  |  |  |  |  |  |
| 6 | 1.5 | Obtain LDIR Approval to Proceed | milestone | 0d | 2025-10-27 | 2025-10-27 | 4FS+3d |  |  | 205d |  |  |  |  |  |  |
| 7 | 1.6 | Receive CAD Base Files from Public Storage |  | 10d | 2025-09-09 | 2025-09-22 | 2 |  |  | 230d |  | finish no earlier than 2024-08-31 |  |  |  |  |
| 8 | 1.7 | Procure Early Work Subcontractors |  | 5d | 2025-09-09 | 2025-09-15 | 2 |  |  | 0d |  |  |  |  |  |  |
| 9 | 1.8 | Procure Remaining Subcontractors |  | 20d | 2025-09-16 | 2025-10-13 | 8 |  |  | 0d |  |  |  |  |  |  |
| 10 | 1.9 | Submittals (SWPPP/NOI) |  | 10d | 2025-09-16 | 2025-09-29 | 8 |  |  | 225d |  |  |  |  |  |  |
| 11 | 1.10 | Submittals (SES /Switchgear) |  | 10d | 2025-09-16 | 2025-09-29 | 8 |  |  | 46d | 0d |  |  |  |  |  |
| 12 | 1.11 | Submittals (numerous) |  | 70d | 2025-10-14 | 2026-01-23 | 9 |  |  | 97d | 78d |  |  |  |  |  |
| 13 | 1.12 | PUBLIC STORAGE Fab/Delv Framing & Panels BLDG B |  | 40d | 2025-09-09 | 2025-11-03 | 2 |  |  | 64d | 0d |  |  |  |  |  |
| 14 | 1.13 | PUBLIC STORAGE Fab/Delv Framing & Panels BLDG A |  | 40d | 2025-09-23 | 2025-11-17 | 13SS+10d |  |  | 67d |  |  |  |  |  |  |
| 15 | 1.14 | Procure SES's/Switchgears (6 mos ~ 130 WD) |  | 130d | 2025-09-30 | 2026-04-03 | 11 |  |  | 46d | 0d |  |  |  |  |  |
| 16 | 1.15 | Fire Sprinkler Design and Approval |  | 55d | 2025-10-14 A | 2026-01-02 | 2, 9 |  | 55d | 74d | 39d |  |  |  |  |  |
| 17 | 1.16 | Fire Alarm System Design and Approval |  | 40d | 2025-10-14 | 2025-12-10 | 2, 9 |  |  | 126d | 79d |  |  |  |  |  |
| 18 | 1.17 | ASPHALT BATCH PLANT SHUTDOWN |  | 70d | 2025-11-17 | 2026-02-26 |  |  |  | 0d |  | must start on 2025-11-17 |  |  |  |  |
| 19 | 1.18 | TWENTY WORKING DAYS OF WEATHER DELAY |  | 17d | 2026-07-27 | 2026-08-18 | 85, 88, 110, 136, 139, 161, 26, 43, 54, 55, 56, 28, 80, 81, 89, 90, 97, 98, 131, 132, 140, 141, 135, 144, 149, 152, 148, 86, 93, 101, 25, 22 |  |  | -14d | 0d |  |  |  |  |  |
| 20 | 1.19 | Substantial Completion | milestone | 0d | 2026-08-18 | 2026-08-18 | 85, 88, 110, 136, 139, 161, 26, 43, 54, 55, 56, 28, 80, 81, 89, 90, 97, 98, 131, 132, 140, 141, 135, 144, 149, 152, 148, 86, 93, 101, 25, 19 |  |  | -14d | 0d | start no earlier than 2026-07-29 | 2026-07-29 |  |  |  |
| 21 | 1.20 | Clean Up and Project Close Out |  | 5d | 2026-07-15 | 2026-07-21 | 111 |  |  | -14d | 0d |  |  |  |  |  |
| 22 | 1.21 | Demobilize |  | 3d | 2026-07-22 | 2026-07-24 | 21 |  |  | -14d | 0d |  |  |  |  |  |
| 23 | 2 | **SITEWORK** |  | 196d | 2025-09-08 A | 2026-06-15 |  | 16% | 164.32d | 45d |  |  |  |  | 896h | 288h |
| 24 | 2.1 | Mobilization |  | 5d | 2025-09-08 A | 2025-09-15 A | 2 | 100% |  |  |  | start no earlier than 2024-09-09 |  |  |  |  |
| 25 | 2.2 | Construction Staking & Surveying |  | 70d | 2025-09-08 A | 2025-12-17 | 24SS, 8SS |  | 70d | 139d |  |  |  |  |  |  |
| 26 | 2.3 | Inspections and Testing |  | 100d | 2025-09-12 A | 2026-02-13 | 27 |  | 100d | 99d |  |  |  |  |  |  |
| 27 | 2.4 | Erosion Control & SWPP |  | 5d | 2025-09-16 A | 2025-09-22 A | 8 | 100% |  |  |  |  |  |  |  |  |
| 28 | 2.5 | Maintain Erosion Control |  | 100d | 2025-09-23 A | 2026-02-13 | 27 |  | 100d | 99d |  |  |  |  |  |  |
| 29 | 2.6 | Structure Demo (Partial Building & RV Storage ) |  | 5d | 2025-11-03 A | 2025-11-07 A | 24SS | 100% |  |  |  | start no earlier than 2025-09-08 |  | Janus | 40h | 40h |
| 30 | 2.7 | Site Demolition (Trees,Sawcut, Asphalt, Base ) | milestone | 0d | 2025-09-08 A | 2025-09-12 A | 24SS, 8 | 100% |  |  |  | start no earlier than 2017-03-06 |  |  |  |  |
| 31 | 2.8 | Re-Mobilization |  | 4d | 2025-10-23 A | 2025-10-28 A | 4 | 100% |  |  |  |  |  |  |  |  |
| 32 | 2.9 | Clear/Grub & Overlot Grading |  | 12d | 2025-09-08 A | 2025-09-23 A | 30SS, 25SS | 100% |  |  |  |  |  |  |  |  |
| 33 | 2.10 | FRAGNET - CITY PRE-CON & 7 DAY NOTICE |  | 7d | 2025-10-29 A | 2025-11-06 A |  | 100% |  |  |  | start no earlier than 2025-10-29 |  |  |  |  |
| 34 | 2.11 | Site - Sewer Lines and Devices/Ten Mile Tie-In |  | 13d | 2025-11-14 A | 2025-12-04 A | 32, 3, 4, 5, 40FS-6d, 6, 33 | 100% |  |  |  |  |  | ATD | 104h | 104h |
| 35 | 2.12 | Storm Drain Lines and Devices |  | 15d | 2026-03-26 | 2026-04-15 | 32, 34, 64, 66, 116 |  |  | 19d | 0d |  |  | ATD | 120h |  |
| 36 | 2.13 | Storm Drain Lines South |  | 6d | 2025-12-22 A | 2025-12-30 A |  | 100% |  |  |  | finish no earlier than 2026-01-09 |  | ATD | 48h | 48h |
| 37 | 2.14 | DELAY - GIRR License Agreement Approval to Proceed |  | 6d | 2025-12-05 | 2025-12-12 | 34 |  |  | -7d | 0d |  |  |  |  |  |
| 38 | 2.15 | DELAY - RFI #14 - GIRR Separation |  | 4d | 2025-12-15 | 2025-12-18 | 37 |  |  | -7d | 0d |  |  |  |  |  |
| 39 | 2.16 | Site - GIRR Piping & Devices |  | 10d | 2025-12-31 | 2026-01-14 | 34, 29, 36, 37, 38 |  |  | -14d | 0d |  |  | ATD | 80h |  |
| 40 | 2.17 | Site - Water Line Ten Mile Tie-In |  | 2d | 2025-11-08 A | 2025-11-11 A | 5FS+2d, 6, 33 | 100% |  |  |  |  |  | ATD | 16h | 16h |
| 41 | 2.18 | Site - Water Line & Fire Lines/Hydrants and Devices Remaining |  | 12d | 2026-01-08 | 2026-01-23 | 34, 39SS+5d |  |  | -14d | 0d |  |  | ATD | 96h |  |
| 42 | 2.19 | Complete Utility Lines Tie-ins to Building A |  | 5d | 2026-04-16 | 2026-04-22 | 35, 95, 103, 154, 41 |  |  | 19d | 0d |  |  |  |  |  |
| 43 | 2.20 | Gravel Road |  | 5d | 2026-01-26 | 2026-01-30 | 41 |  |  | 109d | 75d |  |  | ATD | 40h |  |
| 44 | 2.21 | BLDG A Foundation Excavation |  | 5d | 2026-01-26 | 2026-01-30 | 46, 64SS+10d, 4, 31, 52, 41 |  |  | -14d | 0d |  |  | ATD | 40h |  |
| 45 | 2.22 | DELAY - BUILDING B FOOTING OVER-EX |  | 4d | 2025-10-31 A | 2025-11-05 A |  | 100% |  |  |  | start no earlier than 2025-10-31 |  | ATD | 32h | 32h |
| 46 | 2.23 | BLDG B Foundation Excavation |  | 6d | 2025-10-29 A | 2025-11-05 A | 32SS+3d, 4, 31, 45FF | 100% |  |  |  | start no earlier than 2025-09-15 |  | ATD | 48h | 48h |
| 47 | 2.24 | BLDG A - Interoir Backfill Foundations |  | 3d | 2026-02-16 | 2026-02-18 | 66, 113, 114SS |  |  | -14d | 0d |  |  | ATD | 24h |  |
| 48 | 2.25 | BLDG A - Exterior Backfill Foundations |  | 3d | 2026-02-23 | 2026-02-25 | 115 |  |  | -14d | 0d |  |  | ATD | 24h |  |
| 49 | 2.26 | BLDG B Backfill Foundations |  | 18d | 2025-12-15 | 2026-01-09 | 64, 65, 66SS |  |  | 155d |  |  |  | ATD | 144h |  |
| 50 | 2.27 | BLDG A SOG Prep |  | 5d | 2026-02-26 | 2026-03-04 | 47, 146, 154, 48 |  |  | -14d | 0d |  |  | ATD | 40h |  |
| 51 | 2.28 | BLDG B SOG Prep | milestone | 0d | 2025-12-01 A | 2025-12-01 A | 46, 103, 52FF | 100% |  |  |  |  |  | ATD |  |  |
| 52 | 2.29 | FRAGNET - Bldg B Soft Spot Repair |  | 8d | 2025-12-04 A | 2025-12-15 A |  | 100% |  |  |  | start no earlier than 2025-12-04 |  |  |  |  |
| 53 | 2.30 | Site Flatwork and Curb & Gutter |  | 15d | 2026-04-23 | 2026-05-13 | 42, 40, 34, 35, 39 |  |  | 19d | 0d |  |  |  |  |  |
| 54 | 2.31 | Landscaping and Irrigation |  | 15d | 2026-05-18 | 2026-06-08 | 53, 12, 55 |  |  | 19d |  |  |  |  |  |  |
| 55 | 2.32 | Asphalt Paving |  | 2d | 2026-05-14 | 2026-05-15 | 53, 12, 18 |  |  | 19d | 0d |  |  |  |  |  |
| 56 | 2.33 | Pavement Markings, Signage & Bumpers |  | 2d | 2026-05-18 | 2026-05-19 | 53, 55 |  |  | 32d |  |  |  |  |  |  |
| 57 | 2.34 | Site Fencing Chainlink |  | 5d | 2026-05-18 | 2026-05-22 | 43, 55 |  |  | 45d | 0d |  |  |  |  |  |
| 58 | 2.35 | Site Fencing Vinyl |  | 10d | 2026-05-26 | 2026-06-08 | 43, 55, 57 |  |  | 45d | 0d |  |  |  |  |  |
| 59 | 2.36 | Site Fencing Rod Iron and Gates |  | 5d | 2026-06-09 | 2026-06-15 | 43, 55, 58 |  |  | 45d |  |  |  |  |  |  |
| 60 | 2.37 | WEATHER DELAY - Rain and High Winds |  | 2d | 2025-12-17 A | 2025-12-18 A |  | 100% |  |  |  | start no earlier than 2025-12-17 |  |  |  |  |
| 61 | 2.38 | WEATHER DELAY - Rain |  | 1d | 2025-12-22 A | 2025-12-22 A |  | 100% |  |  |  | start no earlier than 2025-12-22 |  |  |  |  |

Notes:
- 3: 9/18: Permit was held up by city review on LDIR. See RR item.

| ID | WBS | Task | Type | Duration | Start | Finish | Predecessors | Complete | Remaining | Total slack | Free slack | Resources | Work |
| --- | --- | --- | --- | --- | --- | --- | --- | --- | --- | --- | --- | --- | --- |
| 62 | 3 | **BUILDING B** |  | 157d | 2025-11-06 A | 2026-06-19 |  | 3% | 151.55d | 41d |  |  | 520h |
| 63 | 3.1 | **CONCRETE WORK** |  | 42d | 2025-11-06 A | 2026-01-08 |  | 47% | 22.31d | 156d |  |  |  |
| 64 | 3.1.1 | BLDG B Foundation |  | 14d | 2025-11-06 A | 2025-11-25 A | 46, 45 | 100% |  |  |  |  |  |
| 65 | 3.1.2 | BLDG B Dampproofing |  | 1d | 2025-11-18 A | 2025-11-26 A | 46, 64 | 100% |  |  |  |  |  |
| 66 | 3.1.3 | BLDG B Slab On Grade |  | 17d | 2025-12-15 A | 2026-01-08 | 64, 103, 95FF, 51, 52FF, 60FF, 61FF |  | 17d | 12d | 0d |  |  |
| 67 | 3.1.4 | BLDG B Slab On Grade Complete | milestone | 0d | 2026-01-08 | 2026-01-08 | 66 |  |  | 156d |  |  |  |
| 68 | 3.2 | **STEEL AND METALS** |  | 80d | 2026-01-09 | 2026-04-30 |  |  |  | 20d |  |  | 360h |
| 69 | 3.2.1 | Frame & Panel Load Bearing & Shear Walls (JANUS) |  | 25d | 2026-01-09 | 2026-02-12 | 66, 13, 29 |  |  | 20d | 0d | Janus | 200h |
| 70 | 3.2.2 | Frame & Panel Partition & Corridor Walls (JANUS) |  | 20d | 2026-04-03 | 2026-04-30 | 74, 77, 92, 104 |  |  | 25d | 15d | Janus | 160h |
| 71 | 3.3 | **WOOD & FRP** |  | 5d | 2026-03-13 | 2026-03-19 |  |  |  | 106d |  |  |  |
| 72 | 3.3.1 | Misc Finish Carpentry |  | 5d | 2026-03-13 | 2026-03-19 | 83 |  |  | 106d |  |  |  |
| 73 | 3.4 | **ROOF & SIDING** |  | 30d | 2026-02-13 | 2026-03-26 |  |  |  | 20d |  |  | 160h |
| 74 | 3.4.1 | Exterior Sheathing, Weather Barrier & Rigid Insulation |  | 10d | 2026-02-27 | 2026-03-12 | 69, 77 |  |  | 40d | 0d |  |  |
| 75 | 3.4.2 | CMU Veneer |  | 15d | 2026-02-27 | 2026-03-19 | 74SS |  |  | 60d | 10d |  |  |
| 76 | 3.4.3 | Exterior Metal Panels (JANUS) |  | 10d | 2026-03-13 | 2026-03-26 | 75SS, 74 |  |  | 50d | 40d | Janus | 80h |
| 77 | 3.4.4 | Install Roof & Roof Insulation (JANUS) |  | 10d | 2026-02-13 | 2026-02-26 | 69 |  |  | 20d | 0d | Janus | 80h |
| 78 | 3.4.5 | BLDG B Roofing Complete | milestone | 0d | 2026-02-26 | 2026-02-26 | 77 |  |  | 20d | 0d |  |  |
| 79 | 3.5 | **DOORS & WINDOWS** |  | 20d | 2026-05-22 | 2026-06-19 |  |  |  | 10d |  |  |  |
| 80 | 3.5.1 | F&I Storage Unit Doors (JANUS) |  | 20d | 2026-05-22 | 2026-06-19 | 76, 127, 70 |  |  | 10d | 0d |  |  |
| 81 | 3.5.2 | F&I HM Doors and Hardware (JANUS) |  | 15d | 2026-05-22 | 2026-06-12 | 80SS, 83 |  |  | 15d |  |  |  |
| 82 | 3.6 | **FINISHES** |  | 30d | 2026-02-27 | 2026-04-09 |  |  |  | 55d |  |  |  |
| 83 | 3.6.1 | Install Gypsum Board |  | 10d | 2026-02-27 | 2026-03-12 | 77, 69, 78 |  |  | 55d | 0d |  |  |
| 84 | 3.6.2 | Bathroom Tile |  | 5d | 2026-03-13 | 2026-03-19 | 83 |  |  | 55d | 0d |  |  |
| 85 | 3.6.3 | Flooring |  | 5d | 2026-03-20 | 2026-03-26 | 83, 84 |  |  | 57d | 0d |  |  |
| 86 | 3.6.4 | Painting |  | 10d | 2026-03-27 | 2026-04-09 | 85 |  |  | 57d | 0d |  |  |

| ID | WBS | Task | Type | Duration | Start | Finish | Predecessors | Complete | Remaining | Total slack | Free slack |
| --- | --- | --- | --- | --- | --- | --- | --- | --- | --- | --- | --- |
| 87 | 3.7 | **SPECIALTIES** |  | 23d | 2026-03-13 | 2026-04-14 |  |  |  | 57d |  |
| 88 | 3.7.1 | Install Misc Equipment & Lockers |  | 20d | 2026-03-13 | 2026-04-09 | 83 |  |  | 60d |  |
| 89 | 3.7.2 | Bathroom Accessories |  | 2d | 2026-03-20 | 2026-03-23 | 84 |  |  | 73d |  |
| 90 | 3.7.3 | Building Interior Signage |  | 3d | 2026-04-10 | 2026-04-14 | 86SS+10d |  |  | 57d |  |
| 91 | 3.8 | **FIRE SPRINKLERS** |  | 30d | 2026-02-27 | 2026-04-09 |  |  |  | 35d |  |
| 92 | 3.8.1 | Fire Sprinkler System Rough In |  | 15d | 2026-02-27 | 2026-03-19 | 77, 16 |  |  | 35d | 0d |
| 93 | 3.8.2 | Fire Sprinkler System Trim Out |  | 15d | 2026-03-20 | 2026-04-09 | 92 |  |  | 60d |  |
| 94 | 3.9 | **PLUMBING** |  | 107d | 2025-11-13 | 2026-04-16 |  |  |  | 44d |  |
| 95 | 3.9.1 | Plumbing Rough-in Underground |  | 5d | 2025-11-13 | 2025-11-19 | 64SS+5d |  |  | 44d | 32d |
| 96 | 3.9.2 | Gas, Water, Sewer Lines |  | 15d | 2026-02-27 | 2026-03-19 | 77 |  |  | 55d | 0d |
| 97 | 3.9.3 | Bathroom Fixtures |  | 10d | 2026-03-20 | 2026-04-02 | 83, 84, 96 |  |  | 55d | 0d |
| 98 | 3.9.4 | Other Plumbing Fixtures |  | 10d | 2026-04-03 | 2026-04-16 | 97 |  |  | 55d |  |
| 99 | 3.10 | **HVAC** |  | 30d | 2026-02-27 | 2026-04-09 |  |  |  | 55d |  |
| 100 | 3.10.1 | HVAC Installation |  | 25d | 2026-02-27 | 2026-04-02 | 77, 78 |  |  | 55d | 0d |
| 101 | 3.10.2 | HVAC Commisioning |  | 5d | 2026-04-03 | 2026-04-09 | 100 |  |  | 60d |  |
| 102 | 3.11 | **ELECTRICAL** |  | 137d | 2025-11-20 A | 2026-06-05 |  |  | 137d | 51d |  |
| 103 | 3.11.1 | Building Rough-in Underground | milestone | 0d | 2025-11-20 A | 2025-11-25 A | 48 | 100% |  |  |  |
| 104 | 3.11.2 | Elect Rough-In |  | 25d | 2026-02-27 | 2026-04-02 | 77, 78 |  |  | 20d | 0d |
| 105 | 3.11.3 | New Service Equipment Install, Wire & Inspect |  | 10d | 2026-04-06 | 2026-04-17 | 47, 15 |  |  | 85d | 0d |
| 106 | 3.11.4 | Install and Wire Panels |  | 15d | 2026-03-13 | 2026-04-02 | 83 |  |  | 60d | 11d |
| 107 | 3.11.5 | Permanent Power On | milestone | 0d | 2026-04-17 | 2026-04-17 | 105, 106, 15 |  |  | 85d |  |
| 108 | 3.11.6 | Electric Lights, Devices and Trim |  | 55d | 2026-03-13 | 2026-05-29 | 104SS+10d |  |  | 20d | 0d |
| 109 | 3.11.7 | Fire Alarm System |  | 5d | 2026-04-03 | 2026-04-09 | 100, 17, 83 |  |  | 55d | 35d |
| 110 | 3.11.8 | Electrical Commissioning |  | 5d | 2026-06-01 | 2026-06-05 | 103, 104, 106, 108, 109 |  |  | 20d |  |

| ID | WBS | Task | Type | Duration | Start | Finish | Predecessors | Total slack | Free slack | Constraint |
| --- | --- | --- | --- | --- | --- | --- | --- | --- | --- | --- |
| 111 | 4 | **BUILDING A** |  | 115d | 2026-02-02 | 2026-07-14 |  | -14d | 0d |  |
| 112 | 4.1 | **CONCRETE WORK** |  | 38d | 2026-02-02 | 2026-03-25 |  | -14d | 0d |  |
| 113 | 4.1.1 | BLDG A Foundation |  | 10d | 2026-02-02 | 2026-02-13 | 44, 41, 39 | -14d | 0d | start no earlier than 2026-01-05 |
| 114 | 4.1.2 | BLDG A Dampproofing |  | 2d | 2026-02-16 | 2026-02-17 | 113, 44 | -14d | 0d |  |
| 115 | 4.1.3 | BLDG A Exterior Footing Insulation |  | 3d | 2026-02-18 | 2026-02-20 | 114 | -14d | 0d |  |
| 116 | 4.1.4 | BLDG A Slab On Grade |  | 15d | 2026-03-05 | 2026-03-25 | 113, 50 | -14d | 0d |  |
| 117 | 4.1.5 | BLDG A Slab On Grade Complete | milestone | 0d | 2026-03-25 | 2026-03-25 | 116 | 63d |  |  |
| 118 | 4.2 | **STEEL AND METALS** |  | 44d | 2026-03-17 | 2026-05-15 |  | -14d | 0d |  |
| 119 | 4.2.1 | Frame & Panel Load Bearing & Shear Walls (JANUS) |  | 25d | 2026-03-17 | 2026-04-20 | 116SS+8d, 14 | -14d | 0d |  |
| 120 | 4.2.2 | Frame & Panel Partition & Corridor Walls (JANUS) |  | 15d | 2026-04-21 | 2026-05-11 | 119 | 25d | 0d |  |
| 121 | 4.2.3 | Canopy Install |  | 8d | 2026-05-06 | 2026-05-15 | 119, 125 | 26d |  |  |
| 122 | 4.3 | **WOOD & FRP** |  | 5d | 2026-05-20 | 2026-05-27 |  | 19d |  |  |
| 123 | 4.3.1 | Misc Finish Carpentry |  | 5d | 2026-05-20 | 2026-05-27 | 134 | 19d |  |  |
| 124 | 4.4 | **ROOF & SIDING** |  | 26d | 2026-04-21 | 2026-05-27 |  | -14d | 0d |  |
| 125 | 4.4.1 | Exterior Sheathing, Weather Barrier & Rigid Insulation - Building A |  | 10d | 2026-04-22 | 2026-05-05 | 119, 128SS+1d | 2d | 0d |  |
| 126 | 4.4.2 | CMU Veneer |  | 15d | 2026-05-06 | 2026-05-27 | 125 | 10d | 0d |  |
| 127 | 4.4.3 | Exterior Metal Panels (JANUS) |  | 10d | 2026-05-08 | 2026-05-21 | 126SS+2d, 125 | 10d | 0d |  |
| 128 | 4.4.4 | Install Roof & Roof Insulation (JANUS) |  | 5d | 2026-04-21 | 2026-04-27 | 119 | -14d | 0d |  |
| 129 | 4.4.5 | BLDG A Roofing Complete | milestone | 0d | 2026-04-27 | 2026-04-27 | 128 | -7d | 0d |  |
| 130 | 4.5 | **DOORS & WINDOWS** |  | 11d | 2026-05-12 | 2026-05-27 |  | 19d |  |  |
| 131 | 4.5.1 | F&I Storage Unit Doors (JANUS) |  | 5d | 2026-05-12 | 2026-05-18 | 120 | 25d | 6d |  |
| 132 | 4.5.2 | F&I HM Doors and Hardware (JANUS) |  | 5d | 2026-05-20 | 2026-05-27 | 131SS, 134 | 19d |  |  |
| 133 | 4.6 | **FINISHES** |  | 30d | 2026-05-06 | 2026-06-17 |  | 2d |  |  |
| 134 | 4.6.1 | Install Gypsum Board |  | 10d | 2026-05-06 | 2026-05-19 | 119, 128, 125 | 2d | 0d |  |
| 135 | 4.6.2 | Painting |  | 10d | 2026-05-20 | 2026-06-03 | 134 | 2d | 0d |  |
| 136 | 4.6.3 | Flooring Polished Conc. |  | 5d | 2026-06-04 | 2026-06-10 | 134, 135 | 2d | 0d |  |
| 137 | 4.6.4 | FRP & Vinyl Base |  | 5d | 2026-06-11 | 2026-06-17 | 135, 136 | 2d | 0d |  |

| ID | WBS | Task | Type | Duration | Start | Finish | Predecessors | Total slack | Free slack |
| --- | --- | --- | --- | --- | --- | --- | --- | --- | --- |
| 138 | 4.7 | **SPECIALTIES** |  | 22d | 2026-05-20 | 2026-06-19 |  | 2d |  |
| 139 | 4.7.1 | Install Misc Equipment & Lockers |  | 20d | 2026-05-20 | 2026-06-17 | 134 | 4d |  |
| 140 | 4.7.2 | Bathroom Accessories- Building A |  | 2d | 2026-06-18 | 2026-06-19 | 137 | 2d |  |
| 141 | 4.7.3 | Building Interior Signage |  | 3d | 2026-06-04 | 2026-06-08 | 135SS+10d | 11d |  |
| 142 | 4.8 | **FIRE SPRINKLERS** |  | 30d | 2026-04-28 | 2026-06-09 |  | 10d |  |
| 143 | 4.8.1 | Fire Sprinkler System Rough In |  | 15d | 2026-04-28 | 2026-05-18 | 128 | 10d | 0d |
| 144 | 4.8.2 | Fire Sprinkler System Trim Out |  | 15d | 2026-05-19 | 2026-06-09 | 143 | 10d |  |
| 145 | 4.9 | **PLUMBING** |  | 84d | 2026-02-19 | 2026-06-17 |  | -14d | 0d |
| 146 | 4.9.1 | Plumbing Rough-in Underground |  | 5d | 2026-02-19 | 2026-02-25 | 47 | -14d | 0d |
| 147 | 4.9.2 | Gas, Water, Sewer Lines |  | 15d | 2026-04-28 | 2026-05-18 | 128 | 5d | 1d |
| 148 | 4.9.3 | Bathroom Fixtures |  | 10d | 2026-05-20 | 2026-06-03 | 134, 147 | 4d | 0d |
| 149 | 4.9.4 | Other Plumbing Fixtures |  | 10d | 2026-06-04 | 2026-06-17 | 148 | 4d |  |
| 150 | 4.10 | **HVAC** |  | 30d | 2026-04-28 | 2026-06-09 |  | 10d |  |
| 151 | 4.10.1 | HVAC Installation |  | 20d | 2026-04-28 | 2026-05-26 | 128, 129 | 10d | 0d |
| 152 | 4.10.2 | HVAC Commisioning - Building A |  | 10d | 2026-05-27 | 2026-06-09 | 151 | 10d |  |
| 153 | 4.11 | **ELECTRICAL** |  | 102d | 2026-02-19 | 2026-07-14 |  | -14d | 0d |
| 154 | 4.11.1 | Building Rough-in Underground |  | 5d | 2026-02-19 | 2026-02-25 | 47 | -14d | 0d |
| 155 | 4.11.2 | Elect Rough-In |  | 25d | 2026-04-23 | 2026-05-28 | 128SS+2d | -14d | 0d |
| 156 | 4.11.3 | New Service Equipment Install, Wire & Inspect |  | 10d | 2026-04-23 | 2026-05-06 | 47, 15, 155SS | 33d | 24d |
| 157 | 4.11.4 | Install and Wire Panels |  | 15d | 2026-05-20 | 2026-06-10 | 134 | 4d | 0d |
| 158 | 4.11.5 | Permanent Power On- Building A | milestone | 0d | 2026-06-10 | 2026-06-10 | 156, 157, 15 | 9d |  |
| 159 | 4.11.6 | Electric Lights, Devices and Trim |  | 42d | 2026-05-07 | 2026-07-07 | 155SS+10d, 128, 129 | -14d | 0d |
| 160 | 4.11.7 | Fire Alarm System |  | 5d | 2026-05-27 | 2026-06-02 | 134, 151, 17 | 10d |  |
| 161 | 4.11.8 | Electrical Commissioning |  | 5d | 2026-07-08 | 2026-07-14 | 154, 155, 157, 159, 160 | -14d | 0d |
