# Schedule 2017-02-17 baseline - Final

Schedule from MS Project, 2025-09-08 to 2026-06-19, status date 2025-08-19.

## Calendars

- Standard: Mon-Fri 08:00-12:00, 13:00-17:00; Sat-Sun off. Exceptions (off unless hours are given): 2025-11-27 to 2025-11-28 (Thanksgiving 2025), 2025-12-25 (Christmas 2025), 2026-01-01 (New Year's Day 2026), 2026-05-25 (Memorial Day).

## Schedule

| ID | WBS | Task | Type | Duration | Start | Finish | Predecessors | Total slack | Free slack | Constraint |
| --- | --- | --- | --- | --- | --- | --- | --- | --- | --- | --- |
| 1 | 1 | **GENERAL REQUIREMENTS AND CONDITIONS** |  | 200d | 2025-09-08 | 2026-06-19 |  | 0d |  |  |
| 2 | 1.1 | Notice to Proceed | milestone | 1d | 2025-09-08 | 2025-09-08 |  | 0d |  | start no earlier than 2025-09-08 |
| 3 | 1.2 | Obtain Building Permit | milestone | 0d | 2025-09-08 | 2025-09-08 | 2 | 10d | 8d | start no earlier than 2023-02-20 |
| 4 | 1.3 | Receive CAD Base Files from Public Storage |  | 10d | 2025-09-09 | 2025-09-22 | 2 | 189d |  | finish no earlier than 2024-08-31 |
| 5 | 1.4 | Procure Early Work Subcontractors |  | 5d | 2025-09-09 | 2025-09-15 | 2 | 0d |  |  |
| 6 | 1.5 | Procure Remaining Subcontractors |  | 20d | 2025-09-16 | 2025-10-13 | 5 | 67d | 0d |  |
| 7 | 1.6 | Submittals (SWPPP/NOI) |  | 20d | 2025-09-16 | 2025-10-13 | 5 | 174d |  |  |
| 8 | 1.7 | Submittals (SES /Switchgear) |  | 10d | 2025-09-16 | 2025-09-29 | 5 | 44d | 0d |  |
| 9 | 1.8 | Submittals (numerous) |  | 70d | 2025-10-14 | 2026-01-23 | 6 | 67d | 26d |  |
| 10 | 1.9 | PUBLIC STORAGE Fab/Delv Framing & Panels BLDG B |  | 40d | 2025-09-09 | 2025-11-03 | 2 | 0d |  |  |
| 11 | 1.10 | PUBLIC STORAGE Fab/Delv Framing & Panels BLDG A |  | 40d | 2025-09-23 | 2025-11-17 | 10SS+10d | 35d |  |  |
| 12 | 1.11 | Procure SES's/Switchgears (6 mos ~ 130 WD) |  | 130d | 2025-09-30 | 2026-04-03 | 8 | 44d | 0d |  |
| 13 | 1.12 | Fire Sprinkler Design and Approval |  | 40d | 2025-10-14 | 2025-12-10 | 2, 6 | 134d |  |  |
| 14 | 1.13 | Fire Alarm System Design and Approval |  | 40d | 2025-10-14 | 2025-12-10 | 2, 6 | 92d | 45d |  |
| 15 | 1.14 | ASPHALT BATCH PLANT SHUTDOWN |  | 70d | 2025-11-17 | 2026-02-26 |  | 0d |  | must start on 2025-11-17 |
| 16 | 1.15 | TWENTY WORKING DAYS OF WEATHER DELAY |  | 20d | 2026-05-20 | 2026-06-17 | 66, 69, 91, 113, 116, 138, 23, 36, 42, 43, 44, 25, 61, 62, 70, 71, 78, 79, 108, 109, 117, 118, 114, 121, 126, 129, 125, 67, 74, 82, 22 | 0d |  |  |
| 17 | 1.16 | Substantial Completion | milestone | 0d | 2026-06-17 | 2026-06-17 | 16 | 0d |  |  |
| 18 | 1.17 | Clean Up and Project Close Out |  | 5d | 2026-06-11 | 2026-06-17 | 17FF | 0d |  |  |
| 19 | 1.18 | Demobilize |  | 3d | 2026-06-17 | 2026-06-19 | 18SS+4d | 0d |  |  |
| 20 | 2 | **SITEWORK** |  | 137d | 2025-09-08 | 2026-03-23 |  | 1d |  |  |
| 21 | 2.1 | Mobilization |  | 5d | 2025-09-08 | 2025-09-12 | 2SS | 3d | 0d | start no earlier than 2024-09-09 |
| 22 | 2.2 | Construction Staking & Surveying |  | 70d | 2025-09-16 | 2025-12-24 | 21SS+3d, 5 | 0d |  |  |
| 23 | 2.3 | Inspections and Testing |  | 100d | 2025-09-23 | 2026-02-13 | 24 | 67d |  |  |
| 24 | 2.4 | Erosion Control & SWPP |  | 5d | 2025-09-16 | 2025-09-22 | 5 | 67d | 0d |  |
| 25 | 2.5 | Maintain Erosion Control |  | 100d | 2025-09-23 | 2026-02-13 | 24 | 67d |  |  |
| 26 | 2.6 | Structure Demo (Partial Building & RV Storage ) |  | 5d | 2025-09-08 | 2025-09-12 | 21SS | 3d | 1d | start no earlier than 2017-03-06 |
| 27 | 2.7 | Site Demolition (Trees,Sawcut, Asphalt, Base ) |  | 5d | 2025-09-08 | 2025-09-12 | 21SS | 3d | 1d | start no earlier than 2017-03-06 |
| 28 | 2.8 | Pothole/Verify Existing SS and Water |  | 2d | 2025-09-16 | 2025-09-17 | 27, 22SS, 5, 26 | 88d | 3d |  |
| 29 | 2.9 | Clear/Grub & Overlot Grading |  | 5d | 2025-09-16 | 2025-09-22 | 27, 22SS, 26 | 0d |  |  |
| 30 | 2.10 | Storm Drain Lines and Devices |  | 15d | 2025-09-23 | 2025-10-13 | 28, 29 | 0d |  |  |
| 31 | 2.11 | Site - Sewer Lines and Devices |  | 15d | 2025-10-14 | 2025-11-03 | 30 | 0d |  |  |
| 32 | 2.12 | Site - Water Line Relocation??? |  | 10d | 2025-11-04 | 2025-11-17 | 31 | 95d | 10d |  |
| 33 | 2.13 | Site - Water Line and Devices |  | 10d | 2025-11-04 | 2025-11-17 | 31 | 95d | 10d |  |
| 34 | 2.14 | Site - Fire Line and Devices |  | 15d | 2025-11-04 | 2025-11-24 | 31 | 0d |  |  |
| 35 | 2.15 | Complete Utility Lines Tie-ins to Building A |  | 5d | 2025-12-18 | 2025-12-24 | 30, 76, 84, 34, 123, 131 | 70d | 0d |  |
| 36 | 2.16 | Gravel Road |  | 5d | 2025-12-26 | 2026-01-02 | 35 | 97d |  |  |
| 37 | 2.17 | BLDG B Foundation Excavation |  | 5d | 2025-09-19 | 2025-09-25 | 29SS+3d, 3 | 2d | 0d |  |
| 38 | 2.18 | BLDG A Foundation Excavation |  | 5d | 2025-11-25 | 2025-12-03 | 37, 47SS+10d, 34 | 0d |  |  |
| 39 | 2.19 | Backfill Building / Waterproofing |  | 10d | 2025-11-14 | 2025-12-01 | 48 | 131d | 87d |  |
| 40 | 2.20 | Site Flatwork and Curb & Gutter |  | 15d | 2025-12-26 | 2026-01-16 | 35, 33, 31, 30, 32 | 70d | 29d |  |
| 41 | 2.21 | Asphalt Paving 1st Lift |  | 2d | 2026-02-27 | 2026-03-02 | 15, 40 | 41d | 0d |  |
| 42 | 2.22 | Landscaping and Irrigation |  | 15d | 2026-03-03 | 2026-03-23 | 40, 9, 41 | 41d |  |  |
| 43 | 2.23 | Asphalt Paving Finish Course |  | 2d | 2026-03-03 | 2026-03-04 | 40, 9, 41 | 52d | 0d |  |
| 44 | 2.24 | Pavement Markings, Signage & Bumpers |  | 2d | 2026-03-05 | 2026-03-06 | 40, 43 | 52d |  |  |

| ID | WBS | Task | Duration | Start | Finish | Predecessors | Total slack | Free slack |
| --- | --- | --- | --- | --- | --- | --- | --- | --- |
| 45 | 3 | **BUILDING B** | 142d | 2025-09-26 | 2026-04-17 |  | 7d |  |
| 46 | 3.1 | **CONCRETE WORK** | 35d | 2025-09-26 | 2025-11-13 |  | 7d |  |
| 47 | 3.1.1 | BLDG B Footings & Stem Walls & Backfill | 15d | 2025-09-26 | 2025-10-16 | 37 | 7d | 0d |
| 48 | 3.1.2 | BLDG B Slab On Grade | 20d | 2025-10-17 | 2025-11-13 | 47, 84FF, 76FF | 7d | 0d |
| 49 | 3.2 | **STEEL AND METALS** | 100d | 2025-11-04 | 2026-03-27 |  | 0d |  |
| 50 | 3.2.1 | Frame & Panel Load Bearing & Shear Walls (JANUS) | 25d | 2025-11-04 | 2025-12-10 | 48SS+5d, 10 | 0d |  |
| 51 | 3.2.2 | Frame & Panel Partition & Corridor Walls (JANUS) | 20d | 2026-03-02 | 2026-03-27 | 50, 104 | 2d | 0d |
| 52 | 3.3 | **WOOD & FRP** | 5d | 2026-02-09 | 2026-02-13 |  | 89d |  |
| 53 | 3.3.1 | Misc Finish Carpentry | 5d | 2026-02-09 | 2026-02-13 | 64 | 89d |  |
| 54 | 3.4 | **ROOF & SIDING** | 45d | 2025-12-11 | 2026-02-13 |  | 0d |  |
| 55 | 3.4.1 | Exterior Sheathing, Weather Barrier & Rigid Insulation | 10d | 2025-12-11 | 2025-12-24 | 50 | 0d |  |
| 56 | 3.4.2 | CMU Veneer | 15d | 2025-12-11 | 2026-01-02 | 55SS | 0d |  |
| 57 | 3.4.3 | Exterior Metal Panels (JANUS) | 10d | 2025-12-11 | 2025-12-24 | 56SS | 0d |  |
| 58 | 3.4.4 | Install Roof & Roof Insulation (JANUS) | 10d | 2025-12-26 | 2026-01-09 | 57 | 0d |  |
| 59 | 3.4.5 | Fireproofing | 5d | 2026-02-09 | 2026-02-13 | 64 | 89d |  |
| 60 | 3.5 | **DOORS & WINDOWS** | 15d | 2026-03-30 | 2026-04-17 |  | 2d |  |
| 61 | 3.5.1 | F&I Storage Unit Doors (JANUS) | 15d | 2026-03-30 | 2026-04-17 | 57, 104, 51 | 2d | 0d |
| 62 | 3.5.2 | F&I HM Doors and Hardware (JANUS) | 10d | 2026-03-30 | 2026-04-10 | 61SS, 64 | 27d |  |
| 63 | 3.6 | **FINISHES** | 40d | 2026-01-12 | 2026-03-06 |  | 47d |  |
| 64 | 3.6.1 | Install Gypsum Board | 20d | 2026-01-12 | 2026-02-06 | 58, 50 | 47d | 0d |
| 65 | 3.6.2 | Bathroom Tile | 5d | 2026-02-09 | 2026-02-13 | 64 | 47d | 0d |
| 66 | 3.6.3 | Flooring | 5d | 2026-02-16 | 2026-02-20 | 64, 65 | 49d | 0d |
| 67 | 3.6.4 | Painting | 10d | 2026-02-23 | 2026-03-06 | 66 | 49d | 0d |
| 68 | 3.7 | **SPECIALTIES** | 23d | 2026-02-09 | 2026-03-11 |  | 49d |  |
| 69 | 3.7.1 | Install Misc Equipment & Lockers | 20d | 2026-02-09 | 2026-03-06 | 64 | 52d |  |
| 70 | 3.7.2 | Bathroom Accessories | 2d | 2026-02-16 | 2026-02-17 | 65 | 65d |  |
| 71 | 3.7.3 | Building Interior Signage | 3d | 2026-03-09 | 2026-03-11 | 67SS+10d | 49d |  |

| ID | WBS | Task | Type | Duration | Start | Finish | Predecessors | Total slack | Free slack |
| --- | --- | --- | --- | --- | --- | --- | --- | --- | --- |
| 72 | 3.8 | **FIRE SPRINKLERS** |  | 30d | 2026-01-12 | 2026-02-20 |  | 62d |  |
| 73 | 3.8.1 | Fire Sprinkler System Start |  | 15d | 2026-01-12 | 2026-01-30 | 58 | 62d | 0d |
| 74 | 3.8.2 | Fire Sprinkler System Complete |  | 15d | 2026-02-02 | 2026-02-20 | 73 | 62d |  |
| 75 | 3.9 | **PLUMBING** |  | 112d | 2025-10-03 | 2026-03-13 |  | 32d |  |
| 76 | 3.9.1 | Plumbing Rough-in Underground |  | 5d | 2025-10-03 | 2025-10-09 | 47SS+5d | 22d | 20d |
| 77 | 3.9.2 | Gas, Water, Sewer Lines |  | 15d | 2026-01-12 | 2026-01-30 | 58 | 57d | 10d |
| 78 | 3.9.3 | Bathroom Fixtures |  | 10d | 2026-02-16 | 2026-02-27 | 64, 65, 77 | 47d | 0d |
| 79 | 3.9.4 | Other Plumbing Fixtures |  | 10d | 2026-03-02 | 2026-03-13 | 78 | 47d |  |
| 80 | 3.10 | **HVAC** |  | 30d | 2026-01-12 | 2026-02-20 |  | 47d |  |
| 81 | 3.10.1 | HVAC Installation |  | 25d | 2026-01-12 | 2026-02-13 | 58 | 47d | 0d |
| 82 | 3.10.2 | HVAC Commisioning |  | 5d | 2026-02-16 | 2026-02-20 | 81 | 62d |  |
| 83 | 3.11 | **ELECTRICAL** |  | 137d | 2025-10-03 | 2026-04-17 |  | 32d |  |
| 84 | 3.11.1 | Building Rough-in Underground |  | 5d | 2025-10-03 | 2025-10-09 | 47SS+5d | 22d | 20d |
| 85 | 3.11.2 | Elect Rough-In |  | 25d | 2026-01-12 | 2026-02-13 | 58 | 22d | 0d |
| 86 | 3.11.3 | New Service Equipment Install, Wire & Inspect |  | 10d | 2026-04-06 | 2026-04-17 | 39, 12 | 44d | 0d |
| 87 | 3.11.4 | Install and Wire Panels |  | 15d | 2026-02-09 | 2026-02-27 | 64 | 52d | 30d |
| 88 | 3.11.5 | Permanent Power On | milestone | 0d | 2026-04-17 | 2026-04-17 | 86, 87, 12 | 44d |  |
| 89 | 3.11.6 | Electric Lights, Devices and Trim |  | 55d | 2026-01-26 | 2026-04-10 | 85SS+10d | 22d | 0d |
| 90 | 3.11.7 | Fire Alarm System |  | 15d | 2026-02-16 | 2026-03-06 | 81, 14, 64 | 47d | 25d |
| 91 | 3.11.8 | Electrical Commissioning |  | 5d | 2026-04-13 | 2026-04-17 | 84, 85, 87, 89, 90 | 22d |  |
| 92 | 4 | **BUILDING A** |  | 117d | 2025-12-04 | 2026-05-19 |  | 0d |  |
| 93 | 4.1 | **CONCRETE WORK** |  | 25d | 2025-12-04 | 2026-01-09 |  | 0d |  |
| 94 | 4.1.1 | BLDG A Footings & Stem Walls |  | 15d | 2025-12-04 | 2025-12-24 | 38 | 0d |  |
| 95 | 4.1.2 | BLDG A Slab On Grade |  | 10d | 2025-12-26 | 2026-01-09 | 94, 131FF, 123FF | 0d |  |

| ID | WBS | Task | Duration | Start | Finish | Predecessors | Total slack | Free slack |
| --- | --- | --- | --- | --- | --- | --- | --- | --- |
| 96 | 4.2 | **STEEL AND METALS** | 85d | 2026-01-12 | 2026-05-08 |  | 0d |  |
| 97 | 4.2.1 | Frame & Panel Load Bearing & Shear Walls (JANUS) | 25d | 2026-01-12 | 2026-02-13 | 95, 58, 11 | 0d |  |
| 98 | 4.2.2 | Frame & Panel Partition & Corridor Walls (JANUS) | 15d | 2026-04-20 | 2026-05-08 | 97, 61 | 2d | 0d |
| 99 | 4.3 | **WOOD & FRP** | 5d | 2026-04-06 | 2026-04-10 |  | 49d |  |
| 100 | 4.3.1 | Misc Finish Carpentry | 5d | 2026-04-06 | 2026-04-10 | 111 | 49d |  |
| 101 | 4.4 | **ROOF & SIDING** | 40d | 2026-02-16 | 2026-04-10 |  | 0d |  |
| 102 | 4.4.1 | Exterior Sheathing, Weather Barrier & Rigid Insulation | 10d | 2026-02-16 | 2026-02-27 | 97 | 0d |  |
| 103 | 4.4.2 | CMU Veneer | 15d | 2026-02-16 | 2026-03-06 | 102SS | 0d |  |
| 104 | 4.4.3 | Exterior Metal Panels (JANUS) | 10d | 2026-02-16 | 2026-02-27 | 103SS | 0d |  |
| 105 | 4.4.4 | Install Roof & Roof Insulation (JANUS) | 5d | 2026-03-02 | 2026-03-06 | 104 | 5d | 0d |
| 106 | 4.4.5 | Fireproofing | 5d | 2026-04-06 | 2026-04-10 | 111 | 49d |  |
| 107 | 4.5 | **DOORS & WINDOWS** | 5d | 2026-05-11 | 2026-05-15 |  | 2d |  |
| 108 | 4.5.1 | F&I Storage Unit Doors (JANUS) | 5d | 2026-05-11 | 2026-05-15 | 98 | 2d | 0d |
| 109 | 4.5.2 | F&I HM Doors and Hardware (JANUS) | 5d | 2026-05-11 | 2026-05-15 | 108SS, 111 | 2d |  |
| 110 | 4.6 | **FINISHES** | 40d | 2026-03-09 | 2026-05-01 |  | 7d |  |
| 111 | 4.6.1 | Install Gypsum Board | 20d | 2026-03-09 | 2026-04-03 | 97, 105 | 7d | 0d |
| 112 | 4.6.2 | Bathroom Tile | 5d | 2026-04-06 | 2026-04-10 | 111 | 7d | 0d |
| 113 | 4.6.3 | Flooring | 5d | 2026-04-13 | 2026-04-17 | 111, 112 | 9d | 0d |
| 114 | 4.6.4 | Painting | 10d | 2026-04-20 | 2026-05-01 | 113 | 9d | 0d |
| 115 | 4.7 | **SPECIALTIES** | 23d | 2026-04-06 | 2026-05-06 |  | 9d |  |
| 116 | 4.7.1 | Install Misc Equipment & Lockers | 20d | 2026-04-06 | 2026-05-01 | 111 | 12d |  |
| 117 | 4.7.2 | Bathroom Accessories | 2d | 2026-04-13 | 2026-04-14 | 112 | 25d |  |
| 118 | 4.7.3 | Building Interior Signage | 3d | 2026-05-04 | 2026-05-06 | 114SS+10d | 9d |  |
| 119 | 4.8 | **FIRE SPRINKLERS** | 30d | 2026-03-09 | 2026-04-17 |  | 22d |  |
| 120 | 4.8.1 | Fire Sprinkler System Start | 15d | 2026-03-09 | 2026-03-27 | 105 | 22d | 0d |
| 121 | 4.8.2 | Fire Sprinkler System Complete | 15d | 2026-03-30 | 2026-04-17 | 120 | 22d |  |

| ID | WBS | Task | Type | Duration | Start | Finish | Predecessors | Total slack | Free slack |
| --- | --- | --- | --- | --- | --- | --- | --- | --- | --- |
| 122 | 4.9 | **PLUMBING** |  | 105d | 2025-12-11 | 2026-05-08 |  | 7d |  |
| 123 | 4.9.1 | Plumbing Rough-in Underground |  | 5d | 2025-12-11 | 2025-12-17 | 94SS+5d | 15d | 0d |
| 124 | 4.9.2 | Gas, Water, Sewer Lines |  | 15d | 2026-03-09 | 2026-03-27 | 105 | 17d | 10d |
| 125 | 4.9.3 | Bathroom Fixtures |  | 10d | 2026-04-13 | 2026-04-24 | 111, 112, 124 | 7d | 0d |
| 126 | 4.9.4 | Other Plumbing Fixtures |  | 10d | 2026-04-27 | 2026-05-08 | 125 | 7d |  |
| 127 | 4.10 | **HVAC** |  | 30d | 2026-03-09 | 2026-04-17 |  | 12d |  |
| 128 | 4.10.1 | HVAC Installation |  | 20d | 2026-03-09 | 2026-04-03 | 105 | 12d | 0d |
| 129 | 4.10.2 | HVAC Commisioning |  | 10d | 2026-04-06 | 2026-04-17 | 128 | 22d |  |
| 130 | 4.11 | **ELECTRICAL** |  | 112d | 2025-12-11 | 2026-05-19 |  | 15d |  |
| 131 | 4.11.1 | Building Rough-in Underground |  | 5d | 2025-12-11 | 2025-12-17 | 94SS+5d | 15d | 0d |
| 132 | 4.11.2 | Elect Rough-In |  | 25d | 2026-03-02 | 2026-04-03 | 104 | 0d |  |
| 133 | 4.11.3 | New Service Equipment Install, Wire & Inspect |  | 10d | 2026-04-06 | 2026-04-17 | 39, 12 | 44d | 5d |
| 134 | 4.11.4 | Install and Wire Panels |  | 15d | 2026-04-06 | 2026-04-24 | 111 | 12d | 0d |
| 135 | 4.11.5 | Permanent Power On | milestone | 0d | 2026-04-24 | 2026-04-24 | 133, 134, 12 | 39d |  |
| 136 | 4.11.6 | Electric Lights, Devices and Trim |  | 42d | 2026-03-16 | 2026-05-12 | 132SS+10d, 105 | 0d |  |
| 137 | 4.11.7 | Fire Alarm System |  | 15d | 2026-04-06 | 2026-04-24 | 111, 128, 14 | 12d |  |
| 138 | 4.11.8 | Electrical Commissioning |  | 5d | 2026-05-13 | 2026-05-19 | 131, 132, 134, 136, 137 | 0d |  |
