# Schedule 2017-02-17 baseline - Final

Schedule from MS Project XML, 2025-09-08 to 2026-07-22.

## Calendars

- Standard: Mon-Fri 08:00-12:00, 13:00-17:00; Sat-Sun off. Exceptions (off unless hours are given): 2025-11-27 to 2025-11-28 (Thanksgiving 2025), 2025-12-25 (Christmas 2025), 2026-01-01 (New Year's Day 2026), 2026-05-25 (Memorial Day), 2026-07-03 (Independence Day 2026).

## Resources

| Resource |
| --- |
| Janus |

## Schedule

| ID | WBS | Task | Type | Duration | Start | Finish | Predecessors | Total slack | Free slack | Constraint | Deadline | Resources | Work |
| --- | --- | --- | --- | --- | --- | --- | --- | --- | --- | --- | --- | --- | --- |
| 1 | 1 | **GENERAL REQUIREMENTS AND CONDITIONS** |  | 222d | 2025-09-08 | 2026-07-22 |  | -44d | 0d |  |  |  |  |
| 2 | 1.1 | Notice to Proceed | milestone | 1d | 2025-09-08 | 2025-09-08 |  | -44d | 0d | start no earlier than 2025-09-08 |  |  |  |
| 3 | 1.2 | DELAY - PERMIT DELAY |  | 32d | 2025-09-09 | 2025-10-22 | 2 | -44d | 0d |  |  |  |  |
| 4 | 1.3 | Obtain Building Permit | milestone | 0d | 2025-10-22 | 2025-10-22 | 2, 3 | -44d | 0d | start no earlier than 2025-10-22 |  |  |  |
| 5 | 1.4 | ACHD ROW Permit | milestone | 0d | 2025-10-29 | 2025-10-29 | 4FS+5d | 45d | 0d |  |  |  |  |
| 6 | 1.5 | Obtain LDIR Approval to Proceed | milestone | 0d | 2025-10-27 | 2025-10-27 | 4FS+3d | 49d | 4d |  |  |  |  |
| 7 | 1.6 | Receive CAD Base Files from Public Storage |  | 10d | 2025-09-09 | 2025-09-22 | 2 | 211d |  | finish no earlier than 2024-08-31 |  |  |  |
| 8 | 1.7 | Procure Early Work Subcontractors |  | 5d | 2025-09-09 | 2025-09-15 | 2 | -20d | 0d |  |  |  |  |
| 9 | 1.8 | Procure Remaining Subcontractors |  | 20d | 2025-09-16 | 2025-10-13 | 8 | 45d | 0d |  |  |  |  |
| 10 | 1.9 | Submittals (SWPPP/NOI) |  | 10d | 2025-09-16 | 2025-09-29 | 8 | 206d |  |  |  |  |  |
| 11 | 1.10 | Submittals (SES /Switchgear) |  | 10d | 2025-09-16 | 2025-09-29 | 8 | -6d | 0d |  |  |  |  |
| 12 | 1.11 | Submittals (numerous) |  | 70d | 2025-10-14 | 2026-01-23 | 9 | 45d | 38d |  |  |  |  |
| 13 | 1.12 | PUBLIC STORAGE Fab/Delv Framing & Panels BLDG B |  | 40d | 2025-09-09 | 2025-11-03 | 2 | -6d | 0d |  |  |  |  |
| 14 | 1.13 | PUBLIC STORAGE Fab/Delv Framing & Panels BLDG A |  | 40d | 2025-09-23 | 2025-11-17 | 13SS+10d | 4d |  |  |  |  |  |
| 15 | 1.14 | Procure SES's/Switchgears (6 mos ~ 130 WD) |  | 130d | 2025-09-30 | 2026-04-03 | 11 | -6d | 0d |  |  |  |  |
| 16 | 1.15 | Fire Sprinkler Design and Approval |  | 40d | 2025-10-14 | 2025-12-10 | 2, 9 | 156d |  |  |  |  |  |
| 17 | 1.16 | Fire Alarm System Design and Approval |  | 40d | 2025-10-14 | 2025-12-10 | 2, 9 | 64d |  |  |  |  |  |
| 18 | 1.17 | ASPHALT BATCH PLANT SHUTDOWN |  | 70d | 2025-11-17 | 2026-02-26 |  | 0d |  | must start on 2025-11-17 |  |  |  |
| 19 | 1.18 | TWENTY WORKING DAYS OF WEATHER DELAY |  | 20d | 2026-06-24 | 2026-07-22 | 78, 81, 103, 129, 132, 154, 26, 39, 47, 48, 49, 28, 73, 74, 82, 83, 90, 91, 124, 125, 133, 134, 130, 137, 142, 145, 141, 79, 86, 94, 25, 22 | -44d | 0d |  |  |  |  |
| 20 | 1.19 | Substantial Completion | milestone | 0d | 2026-07-22 | 2026-07-22 | 78, 81, 103, 129, 132, 154, 26, 39, 47, 48, 49, 28, 73, 74, 82, 83, 90, 91, 124, 125, 133, 134, 130, 137, 142, 145, 141, 79, 86, 94, 25, 19 | -44d | 0d |  | 2026-05-19 |  |  |
| 21 | 1.20 | Clean Up and Project Close Out |  | 5d | 2026-06-12 | 2026-06-18 | 104 | -44d | 0d |  |  |  |  |
| 22 | 1.21 | Demobilize |  | 3d | 2026-06-19 | 2026-06-23 | 21 | -44d | 0d |  |  |  |  |
| 23 | 2 | **SITEWORK** |  | 155d | 2025-09-09 | 2026-04-17 |  | -15d | 0d |  |  |  | 40h |
| 24 | 2.1 | Mobilization |  | 5d | 2025-09-09 | 2025-09-15 | 2 | -15d | 0d | start no earlier than 2024-09-09 |  |  |  |
| 25 | 2.2 | Construction Staking & Surveying |  | 70d | 2025-09-09 | 2025-12-17 | 24SS, 8SS | -15d | 0d |  |  |  |  |
| 26 | 2.3 | Inspections and Testing |  | 100d | 2025-09-23 | 2026-02-13 | 27 | 47d |  |  |  |  |  |
| 27 | 2.4 | Erosion Control & SWPP |  | 5d | 2025-09-16 | 2025-09-22 | 8 | 47d | 0d |  |  |  |  |
| 28 | 2.5 | Maintain Erosion Control |  | 100d | 2025-09-23 | 2026-02-13 | 27 | 47d |  |  |  |  |  |
| 29 | 2.6 | Structure Demo (Partial Building & RV Storage ) |  | 5d | 2025-09-09 | 2025-09-15 | 24SS | 29d |  | start no earlier than 2025-09-08 |  | Janus | 40h |
| 30 | 2.7 | Site Demolition (Trees,Sawcut, Asphalt, Base ) |  | 5d | 2025-09-16 | 2025-09-22 | 24SS, 8 | -20d | 0d | start no earlier than 2017-03-06 |  |  |  |
| 31 | 2.8 | Pothole/Verify Existing SS and Water |  | 2d | 2025-10-13 | 2025-10-14 | 30SS, 25SS, 8SS+1d | 79d | 72d | start no earlier than 2025-10-13 |  |  |  |
| 32 | 2.9 | Clear/Grub & Overlot Grading |  | 5d | 2025-09-16 | 2025-09-22 | 30SS, 25SS | -20d | 0d |  |  |  |  |
| 33 | 2.10 | Site - Sewer Lines and Devices |  | 15d | 2025-11-07 | 2025-12-01 | 32, 3, 4, 5, 36FS-6d, 6 | 45d | 0d |  |  |  |  |
| 34 | 2.11 | Storm Drain Lines and Devices |  | 15d | 2026-01-29 | 2026-02-18 | 31, 32, 33, 55, 57, 108 | 7d | 0d |  |  |  |  |
| 35 | 2.12 | Site - IRR Piping |  | 10d | 2025-12-02 | 2025-12-15 | 33, 29 | 57d | 50d |  |  |  |  |
| 36 | 2.13 | Site - Water Line and Devices |  | 10d | 2025-11-03 | 2025-11-14 | 5FS+2d, 6 | 45d | 0d |  |  |  |  |
| 37 | 2.14 | Site - Fire Line and Devices |  | 15d | 2025-12-04 | 2025-12-24 | 33FS+2d | 45d | 38d |  |  |  |  |
| 38 | 2.15 | Complete Utility Lines Tie-ins to Building A |  | 5d | 2026-02-19 | 2026-02-25 | 34, 88, 96, 37, 139, 147 | 7d | 0d |  |  |  |  |
| 39 | 2.16 | Gravel Road |  | 5d | 2026-02-26 | 2026-03-04 | 38 | 34d | 12d |  |  |  |  |
| 40 | 2.17 | BLDG A Foundation Excavation |  | 5d | 2025-11-13 | 2025-11-19 | 41, 55SS+10d, 4 | -35d | 0d |  |  |  |  |
| 41 | 2.18 | BLDG B Foundation Excavation |  | 5d | 2025-10-23 | 2025-10-29 | 32SS+3d, 4 | -44d | 0d | start no earlier than 2025-09-15 |  |  |  |
| 42 | 2.19 | BLDG A Backfill Foundations |  | 10d | 2025-12-22 | 2026-01-06 | 57, 106, 107 | -44d | 0d |  |  |  |  |
| 43 | 2.20 | BLDG B Backfill Foundations |  | 12d | 2025-12-22 | 2026-01-08 | 55, 56, 57 | 137d |  |  |  |  |  |
| 44 | 2.21 | BLDG A SOG Prep |  | 3d | 2026-01-07 | 2026-01-09 | 42 | -44d | 0d |  |  |  |  |
| 45 | 2.22 | BLDG B SOG Prep |  | 4d | 2025-10-30 | 2025-11-04 | 41 | -33d | 0d |  |  |  |  |
| 46 | 2.23 | Site Flatwork and Curb & Gutter |  | 15d | 2026-02-26 | 2026-03-18 | 38, 36, 33, 34, 35 | 7d | 0d |  |  |  |  |
| 47 | 2.24 | Landscaping and Irrigation |  | 15d | 2026-03-23 | 2026-04-10 | 46, 12, 48 | 7d |  |  |  |  |  |
| 48 | 2.25 | Asphalt Paving |  | 2d | 2026-03-19 | 2026-03-20 | 46, 12, 18 | 7d | 0d |  |  |  |  |
| 49 | 2.26 | Pavement Markings, Signage & Bumpers |  | 2d | 2026-03-23 | 2026-03-24 | 46, 48 | 20d |  |  |  |  |  |
| 50 | 2.27 | Site Fencing Chainlink |  | 5d | 2026-03-23 | 2026-03-27 | 39, 48 | 66d | 0d |  |  |  |  |
| 51 | 2.28 | Site Fencing Vinyl |  | 10d | 2026-03-30 | 2026-04-10 | 39, 48, 50 | 66d | 0d |  |  |  |  |
| 52 | 2.29 | Site Fencing Rod Iron and Gates |  | 5d | 2026-04-13 | 2026-04-17 | 39, 48, 51 | 66d |  |  |  |  |  |

Notes:
- 3: 9/18: Permit was held up by city review on LDIR. See RR item.

| ID | WBS | Task | Type | Duration | Start | Finish | Predecessors | Total slack | Free slack | Resources | Work |
| --- | --- | --- | --- | --- | --- | --- | --- | --- | --- | --- | --- |
| 53 | 3 | **BUILDING B** |  | 143d | 2025-10-30 | 2026-05-22 |  | -44d | 0d |  | 520h |
| 54 | 3.1 | **CONCRETE WORK** |  | 35d | 2025-10-30 | 2025-12-19 |  | -44d | 0d |  |  |
| 55 | 3.1.1 | BLDG B Foundation |  | 15d | 2025-10-30 | 2025-11-19 | 41 | -44d | 0d |  |  |
| 56 | 3.1.2 | BLDG B Dampproofing |  | 2d | 2025-11-20 | 2025-11-21 | 41, 55 | 155d | 18d |  |  |
| 57 | 3.1.3 | BLDG B Slab On Grade |  | 20d | 2025-11-20 | 2025-12-19 | 55, 96FF, 88FF, 45 | -44d | 0d |  |  |
| 58 | 3.1.4 | BLDG B Slab On Grade Complete | milestone | 0d | 2025-12-19 | 2025-12-19 | 57 | 149d |  |  |  |
| 59 | 3.2 | **STEEL AND METALS** |  | 96d | 2025-12-01 | 2026-04-15 |  | -44d | 0d |  | 360h |
| 60 | 3.2.1 | Frame & Panel Load Bearing & Shear Walls (JANUS) |  | 25d | 2025-12-01 | 2026-01-06 | 57SS+5d, 13, 29 | -23d | 0d | Janus | 200h |
| 61 | 3.2.2 | Frame & Panel Partition & Corridor Walls (JANUS) |  | 20d | 2026-03-19 | 2026-04-15 | 60, 119 | -44d | 0d | Janus | 160h |
| 62 | 3.2.3 | Canopy Install |  | 8d | 2026-01-07 | 2026-01-16 | 60 | -23d | 0d |  |  |
| 63 | 3.3 | **WOOD & FRP** |  | 5d | 2026-03-16 | 2026-03-20 |  | 86d |  |  |  |
| 64 | 3.3.1 | Misc Finish Carpentry |  | 5d | 2026-03-16 | 2026-03-20 | 76 | 86d |  |  |  |
| 65 | 3.4 | **ROOF & SIDING** |  | 45d | 2026-01-19 | 2026-03-20 |  | -23d | 0d |  | 160h |
| 66 | 3.4.1 | Exterior Sheathing, Weather Barrier & Rigid Insulation |  | 10d | 2026-01-19 | 2026-01-30 | 60, 62 | -23d | 0d |  |  |
| 67 | 3.4.2 | CMU Veneer |  | 15d | 2026-01-19 | 2026-02-06 | 66SS | -23d | 0d |  |  |
| 68 | 3.4.3 | Exterior Metal Panels (JANUS) |  | 10d | 2026-01-19 | 2026-01-30 | 67SS | -23d | 0d | Janus | 80h |
| 69 | 3.4.4 | Install Roof & Roof Insulation (JANUS) |  | 10d | 2026-02-02 | 2026-02-13 | 68 | -23d | 0d | Janus | 80h |
| 70 | 3.4.5 | BLDG B Roofing Complete | milestone | 0d | 2026-02-13 | 2026-02-13 | 69 | 111d |  |  |  |
| 71 | 3.4.6 | Fireproofing |  | 5d | 2026-03-16 | 2026-03-20 | 76 | 86d |  |  |  |
| 72 | 3.5 | **DOORS & WINDOWS** |  | 20d | 2026-04-16 | 2026-05-13 |  | -44d | 0d |  |  |
| 73 | 3.5.1 | F&I Storage Unit Doors (JANUS) |  | 20d | 2026-04-16 | 2026-05-13 | 68, 119, 61 | -44d | 0d |  |  |
| 74 | 3.5.2 | F&I HM Doors and Hardware (JANUS) |  | 15d | 2026-04-16 | 2026-05-06 | 73SS, 76 | -11d | 0d |  |  |
| 75 | 3.6 | **FINISHES** |  | 40d | 2026-02-16 | 2026-04-10 |  | 2d |  |  |  |
| 76 | 3.6.1 | Install Gypsum Board |  | 20d | 2026-02-16 | 2026-03-13 | 69, 60 | 2d | 0d |  |  |
| 77 | 3.6.2 | Bathroom Tile |  | 5d | 2026-03-16 | 2026-03-20 | 76 | 2d | 0d |  |  |
| 78 | 3.6.3 | Flooring |  | 5d | 2026-03-23 | 2026-03-27 | 76, 77 | 4d | 0d |  |  |
| 79 | 3.6.4 | Painting |  | 10d | 2026-03-30 | 2026-04-10 | 78 | 4d | 0d |  |  |

| ID | WBS | Task | Type | Duration | Start | Finish | Predecessors | Total slack | Free slack |
| --- | --- | --- | --- | --- | --- | --- | --- | --- | --- |
| 80 | 3.7 | **SPECIALTIES** |  | 23d | 2026-03-16 | 2026-04-15 |  | 4d |  |
| 81 | 3.7.1 | Install Misc Equipment & Lockers |  | 20d | 2026-03-16 | 2026-04-10 | 76 | 7d |  |
| 82 | 3.7.2 | Bathroom Accessories |  | 2d | 2026-03-23 | 2026-03-24 | 77 | 20d |  |
| 83 | 3.7.3 | Building Interior Signage |  | 3d | 2026-04-13 | 2026-04-15 | 79SS+10d | 4d |  |
| 84 | 3.8 | **FIRE SPRINKLERS** |  | 30d | 2026-02-16 | 2026-03-27 |  | 17d |  |
| 85 | 3.8.1 | Fire Sprinkler System Rough In |  | 15d | 2026-02-16 | 2026-03-06 | 69 | 17d | 0d |
| 86 | 3.8.2 | Fire Sprinkler System Trim Out |  | 15d | 2026-03-09 | 2026-03-27 | 85 | 17d |  |
| 87 | 3.9 | **PLUMBING** |  | 113d | 2025-11-06 | 2026-04-17 |  | -19d | 0d |
| 88 | 3.9.1 | Plumbing Rough-in Underground |  | 5d | 2025-11-06 | 2025-11-12 | 55SS+5d | -19d | 0d |
| 89 | 3.9.2 | Gas, Water, Sewer Lines |  | 15d | 2026-02-16 | 2026-03-06 | 69 | 12d | 10d |
| 90 | 3.9.3 | Bathroom Fixtures |  | 10d | 2026-03-23 | 2026-04-03 | 76, 77, 89 | 2d | 0d |
| 91 | 3.9.4 | Other Plumbing Fixtures |  | 10d | 2026-04-06 | 2026-04-17 | 90 | 2d |  |
| 92 | 3.10 | **HVAC** |  | 30d | 2026-02-16 | 2026-03-27 |  | 2d |  |
| 93 | 3.10.1 | HVAC Installation |  | 25d | 2026-02-16 | 2026-03-20 | 69 | 2d | 0d |
| 94 | 3.10.2 | HVAC Commisioning |  | 5d | 2026-03-23 | 2026-03-27 | 93 | 17d |  |
| 95 | 3.11 | **ELECTRICAL** |  | 138d | 2025-11-06 | 2026-05-22 |  | -19d | 0d |
| 96 | 3.11.1 | Building Rough-in Underground |  | 5d | 2025-11-06 | 2025-11-12 | 55SS+5d | -19d | 0d |
| 97 | 3.11.2 | Elect Rough-In |  | 25d | 2026-02-16 | 2026-03-20 | 69 | -23d | 0d |
| 98 | 3.11.3 | New Service Equipment Install, Wire & Inspect |  | 10d | 2026-04-06 | 2026-04-17 | 42, 15 | 66d | 0d |
| 99 | 3.11.4 | Install and Wire Panels |  | 15d | 2026-03-16 | 2026-04-03 | 76 | 7d |  |
| 100 | 3.11.5 | Permanent Power On | milestone | 0d | 2026-04-17 | 2026-04-17 | 98, 99, 15 | 66d |  |
| 101 | 3.11.6 | Electric Lights, Devices and Trim |  | 55d | 2026-03-02 | 2026-05-15 | 97SS+10d | -23d | 0d |
| 102 | 3.11.7 | Fire Alarm System |  | 15d | 2026-03-23 | 2026-04-10 | 93, 17, 76 | 2d |  |
| 103 | 3.11.8 | Electrical Commissioning |  | 5d | 2026-05-18 | 2026-05-22 | 96, 97, 99, 101, 102 | -23d | 0d |

| ID | WBS | Task | Type | Duration | Start | Finish | Predecessors | Total slack | Free slack |
| --- | --- | --- | --- | --- | --- | --- | --- | --- | --- |
| 104 | 4 | **BUILDING A** |  | 141d | 2025-11-20 | 2026-06-11 |  | -44d | 0d |
| 105 | 4.1 | **CONCRETE WORK** |  | 46d | 2025-11-20 | 2026-01-28 |  | -35d | 0d |
| 106 | 4.1.1 | BLDG A Foundation |  | 10d | 2025-11-20 | 2025-12-05 | 40 | -35d | 0d |
| 107 | 4.1.2 | BLDG A Dampproofing |  | 1d | 2025-12-08 | 2025-12-08 | 106, 40 | -35d | 0d |
| 108 | 4.1.3 | BLDG A Slab On Grade |  | 15d | 2026-01-08 | 2026-01-28 | 106, 147FF, 139FF, 44SS+1d | -44d | 0d |
| 109 | 4.1.4 | BLDG A Slab On Grade Complete | milestone | 0d | 2026-01-28 | 2026-01-28 | 108 | 51d |  |
| 110 | 4.2 | **STEEL AND METALS** |  | 90d | 2026-01-29 | 2026-06-04 |  | -44d | 0d |
| 111 | 4.2.1 | Frame & Panel Load Bearing & Shear Walls (JANUS) |  | 25d | 2026-01-29 | 2026-03-04 | 108, 14 | -44d | 0d |
| 112 | 4.2.2 | Frame & Panel Partition & Corridor Walls (JANUS) |  | 15d | 2026-05-14 | 2026-06-04 | 111, 73 | -44d | 0d |
| 113 | 4.2.3 | Canopy Install |  | 8d | 2026-03-05 | 2026-03-16 | 111 | 18d |  |
| 114 | 4.3 | **WOOD & FRP** |  | 5d | 2026-04-23 | 2026-04-29 |  | -14d | 0d |
| 115 | 4.3.1 | Misc Finish Carpentry |  | 5d | 2026-04-23 | 2026-04-29 | 127 | -14d | 0d |
| 116 | 4.4 | **ROOF & SIDING** |  | 40d | 2026-03-05 | 2026-04-29 |  | -44d | 0d |
| 117 | 4.4.1 | Exterior Sheathing, Weather Barrier & Rigid Insulation - Building A |  | 10d | 2026-03-05 | 2026-03-18 | 111 | -44d | 0d |
| 118 | 4.4.2 | CMU Veneer |  | 15d | 2026-03-05 | 2026-03-25 | 117SS | -44d | 0d |
| 119 | 4.4.3 | Exterior Metal Panels (JANUS) |  | 10d | 2026-03-05 | 2026-03-18 | 118SS | -44d | 0d |
| 120 | 4.4.4 | Install Roof & Roof Insulation (JANUS) |  | 5d | 2026-03-19 | 2026-03-25 | 119 | -36d | 0d |
| 121 | 4.4.5 | BLDG A Roofing Complete | milestone | 0d | 2026-03-25 | 2026-03-25 | 120 | 11d |  |
| 122 | 4.4.6 | Fireproofing |  | 5d | 2026-04-23 | 2026-04-29 | 127 | -14d | 0d |
| 123 | 4.5 | **DOORS & WINDOWS** |  | 5d | 2026-06-05 | 2026-06-11 |  | -44d | 0d |
| 124 | 4.5.1 | F&I Storage Unit Doors (JANUS) |  | 5d | 2026-06-05 | 2026-06-11 | 112 | -44d | 0d |
| 125 | 4.5.2 | F&I HM Doors and Hardware (JANUS) |  | 5d | 2026-06-05 | 2026-06-11 | 124SS, 127 | -44d | 0d |
| 126 | 4.6 | **FINISHES** |  | 40d | 2026-03-26 | 2026-05-20 |  | -34d | 0d |
| 127 | 4.6.1 | Install Gypsum Board |  | 20d | 2026-03-26 | 2026-04-22 | 111, 120 | -34d | 0d |
| 128 | 4.6.2 | Bathroom Tile |  | 5d | 2026-04-23 | 2026-04-29 | 127 | -34d | 0d |
| 129 | 4.6.3 | Flooring |  | 5d | 2026-04-30 | 2026-05-06 | 127, 128 | -32d | 0d |
| 130 | 4.6.4 | Painting |  | 10d | 2026-05-07 | 2026-05-20 | 129 | -32d | 0d |

| ID | WBS | Task | Type | Duration | Start | Finish | Predecessors | Total slack | Free slack |
| --- | --- | --- | --- | --- | --- | --- | --- | --- | --- |
| 131 | 4.7 | **SPECIALTIES** |  | 23d | 2026-04-23 | 2026-05-26 |  | -32d | 0d |
| 132 | 4.7.1 | Install Misc Equipment & Lockers |  | 20d | 2026-04-23 | 2026-05-20 | 127 | -29d | 0d |
| 133 | 4.7.2 | Bathroom Accessories- Building A |  | 2d | 2026-04-30 | 2026-05-01 | 128 | -16d | 0d |
| 134 | 4.7.3 | Building Interior Signage |  | 3d | 2026-05-21 | 2026-05-26 | 130SS+10d | -32d | 0d |
| 135 | 4.8 | **FIRE SPRINKLERS** |  | 30d | 2026-03-26 | 2026-05-06 |  | -19d | 0d |
| 136 | 4.8.1 | Fire Sprinkler System Rough In |  | 15d | 2026-03-26 | 2026-04-15 | 120 | -19d | 0d |
| 137 | 4.8.2 | Fire Sprinkler System Trim Out |  | 15d | 2026-04-16 | 2026-05-06 | 136 | -19d | 0d |
| 138 | 4.9 | **PLUMBING** |  | 126d | 2025-12-01 | 2026-05-28 |  | -34d | 0d |
| 139 | 4.9.1 | Plumbing Rough-in Underground |  | 5d | 2025-12-01 | 2025-12-05 | 106SS+5d | -8d | 0d |
| 140 | 4.9.2 | Gas, Water, Sewer Lines |  | 15d | 2026-03-26 | 2026-04-15 | 120 | -24d | 0d |
| 141 | 4.9.3 | Bathroom Fixtures |  | 10d | 2026-04-30 | 2026-05-13 | 127, 128, 140 | -34d | 0d |
| 142 | 4.9.4 | Other Plumbing Fixtures |  | 10d | 2026-05-14 | 2026-05-28 | 141 | -34d | 0d |
| 143 | 4.10 | **HVAC** |  | 30d | 2026-03-26 | 2026-05-06 |  | -29d | 0d |
| 144 | 4.10.1 | HVAC Installation |  | 20d | 2026-03-26 | 2026-04-22 | 120 | -29d | 0d |
| 145 | 4.10.2 | HVAC Commisioning - Building A |  | 10d | 2026-04-23 | 2026-05-06 | 144 | -19d | 0d |
| 146 | 4.11 | **ELECTRICAL** |  | 133d | 2025-12-01 | 2026-06-08 |  | -41d | 0d |
| 147 | 4.11.1 | Building Rough-in Underground |  | 5d | 2025-12-01 | 2025-12-05 | 106SS+5d | -8d | 0d |
| 148 | 4.11.2 | Elect Rough-In |  | 25d | 2026-03-19 | 2026-04-22 | 119 | -41d | 0d |
| 149 | 4.11.3 | New Service Equipment Install, Wire & Inspect |  | 10d | 2026-04-06 | 2026-04-17 | 42, 15 | -6d | 0d |
| 150 | 4.11.4 | Install and Wire Panels |  | 15d | 2026-04-23 | 2026-05-13 | 127 | -29d | 0d |
| 151 | 4.11.5 | Permanent Power On | milestone | 0d | 2026-05-13 | 2026-05-13 | 149, 150, 15 | -24d | 0d |
| 152 | 4.11.6 | Electric Lights, Devices and Trim |  | 42d | 2026-04-02 | 2026-06-01 | 148SS+10d, 120 | -41d | 0d |
| 153 | 4.11.7 | Fire Alarm System |  | 15d | 2026-04-23 | 2026-05-13 | 127, 144, 17 | -29d | 0d |
| 154 | 4.11.8 | Electrical Commissioning |  | 5d | 2026-06-02 | 2026-06-08 | 147, 148, 150, 152, 153 | -41d | 0d |
