# Schedule 2017-02-17 baseline - Final

Schedule from MS Project, 2025-09-08 to 2026-08-18, status date 2026-01-30, A marks actual dates.

## Calendars

- Standard: Mon-Fri 08:00-12:00, 13:00-17:00; Sat-Sun off. Exceptions (off unless hours are given): 2025-11-27 to 2025-11-28 (Thanksgiving 2025), 2025-12-25 (Christmas 2025), 2026-01-01 (New Year's Day 2026), 2026-05-25 (Memorial Day), 2026-07-03 (Independence Day 2026).

## Resources

| Resource |
| --- |
| Janus |
| ATD |

## Schedule

| ID | WBS | Task | Type | Duration | Start | Finish | Predecessors | Complete | Remaining | Total slack | Free slack | Constraint | Deadline |
| --- | --- | --- | --- | --- | --- | --- | --- | --- | --- | --- | --- | --- | --- |
| 1 | 1 | **GENERAL REQUIREMENTS AND CONDITIONS** |  | 241d | 2025-09-08 A | 2026-08-18 |  | 48% | 126.38d | -14d | 0d |  |  |
| 2 | 1.1 | Notice to Proceed | milestone | 1d | 2025-09-08 A | 2025-09-08 A |  | 100% |  |  |  | start no earlier than 2025-09-08 |  |
| 3 | 1.2 | DELAY - PERMIT DELAY |  | 32d | 2025-09-09 A | 2025-10-22 A | 2 | 100% |  |  |  |  |  |
| 4 | 1.3 | Obtain Building Permit | milestone | 0d | 2025-10-22 A | 2025-10-22 A | 2, 3 | 100% |  |  |  | start no earlier than 2025-10-22 |  |
| 5 | 1.4 | ACHD ROW Permit | milestone | 0d | 2025-10-29 A | 2025-10-29 A | 4FS+5d | 100% |  |  |  |  |  |
| 6 | 1.5 | Obtain LDIR Approval to Proceed | milestone | 0d | 2025-10-27 A | 2025-10-27 A | 4FS+3d | 100% |  |  |  |  |  |
| 7 | 1.6 | Receive CAD Base Files from Public Storage |  | 10d | 2025-09-09 A | 2025-09-22 A | 2 | 100% |  |  |  | finish no earlier than 2024-08-31 |  |
| 8 | 1.7 | Procure Early Work Subcontractors |  | 5d | 2025-09-09 A | 2025-09-15 A | 2 | 100% |  |  |  |  |  |
| 9 | 1.8 | Procure Remaining Subcontractors |  | 20d | 2025-09-16 A | 2025-10-13 A | 8 | 100% |  |  |  |  |  |
| 10 | 1.9 | Submittals (SWPPP/NOI) |  | 10d | 2025-09-16 A | 2025-09-29 A | 8 | 100% |  |  |  |  |  |
| 11 | 1.10 | Submittals (SES /Switchgear) |  | 34d | 2025-09-16 A | 2025-10-31 A | 8 | 100% |  |  |  |  |  |
| 12 | 1.11 | Submittals (numerous) |  | 90d | 2025-10-14 A | 2026-02-20 | 9 | 39% | 55d | 80d | 59d |  |  |
| 13 | 1.12 | PUBLIC STORAGE Fab/Delv Framing & Panels BLDG B |  | 40d | 2025-10-23 A | 2025-12-19 | 2, 4 | 50% | 20d | 14d | 0d |  |  |
| 14 | 1.13 | PUBLIC STORAGE Fab/Delv Framing & Panels BLDG A |  | 40d | 2025-11-06 A | 2026-01-06 | 13SS+10d | 25% | 30d | 38d |  |  |  |
| 15 | 1.14 | Procure SES's/Switchgears (6 mos ~ 130 WD) |  | 70d | 2025-11-03 A | 2026-02-12 | 11 | 50% | 35d | 75d | 7d |  |  |
| 16 | 1.15 | Light Fixture Submittal Review and Approval |  | 10d | 2026-01-26 A | 2026-02-06 |  | 25% | 7.5d | 7d | 0d | start no earlier than 2026-01-26 |  |
| 17 | 1.16 | Light Fixture Package Alternate - Fab and Deliver |  | 10d | 2026-02-09 | 2026-02-20 | 16 |  |  | 37d | 30d |  |  |
| 18 | 1.17 | Light Fixture Package Spec'd - Fab and Deliver |  | 8w | 2026-02-09 | 2026-04-03 | 16 |  |  | 7d | 0d |  |  |
| 19 | 1.18 | Fire Sprinkler Design and Approval |  | 65d | 2025-10-14 A | 2026-01-16 | 2, 9 |  | 65d | 67d | 31d |  |  |
| 20 | 1.19 | Fire Alarm System Design and Approval |  | 40d | 2025-10-14 A | 2025-12-10 A | 2, 9 | 100% |  |  |  |  |  |
| 21 | 1.20 | ASPHALT BATCH PLANT SHUTDOWN |  | 70d | 2025-11-17 A | 2026-02-26 |  | 50% | 35d | 0d |  | must start on 2025-11-17 |  |
| 22 | 1.21 | TWENTY WORKING DAYS OF WEATHER DELAY |  | 14d | 2026-07-30 | 2026-08-18 | 94, 97, 119, 154, 157, 179, 32, 51, 59, 57, 58, 33, 89, 90, 98, 99, 106, 107, 149, 150, 158, 159, 153, 162, 167, 170, 166, 95, 102, 110, 31, 28 |  |  | -14d | 0d |  |  |
| 23 | 1.22 | WEATHER DELAY - Rain and High Winds - Imapct SOG B |  | 2d | 2025-12-17 A | 2025-12-18 A |  | 100% |  |  |  | start no earlier than 2025-12-17 |  |
| 24 | 1.23 | WEATHER DELAY - Rain - Impact SOG B |  | 1d | 2025-12-22 A | 2025-12-22 A |  | 100% |  |  |  | start no earlier than 2025-12-22 |  |
| 25 | 1.24 | WEATHER DELAY - Rain - Impact SOG B |  | 3d | 2026-01-08 | 2026-01-12 | 72FF, 71 |  |  | 0d |  |  |  |
| 26 | 1.25 | Substantial Completion | milestone | 0d | 2026-08-18 | 2026-08-18 | 94, 97, 119, 154, 157, 179, 32, 51, 59, 57, 58, 33, 89, 90, 98, 99, 106, 107, 149, 150, 158, 159, 153, 162, 167, 170, 166, 95, 102, 110, 31, 22, 62 |  |  | -14d | 0d | start no earlier than 2026-07-29 | 2026-07-29 |
| 27 | 1.26 | Clean Up and Project Close Out |  | 5d | 2026-07-20 | 2026-07-24 | 120 |  |  | -14d | 0d |  |  |
| 28 | 1.27 | Demobilize |  | 3d | 2026-07-27 | 2026-07-29 | 27 |  |  | -14d | 0d |  |  |

Notes:
- 3: 9/18: Permit was held up by city review on LDIR. See RR item.

| ID | WBS | Task | Type | Duration | Start | Finish | Predecessors | Complete | Remaining | Total slack | Free slack | Constraint | Resources | Work | Actual work |
| --- | --- | --- | --- | --- | --- | --- | --- | --- | --- | --- | --- | --- | --- | --- | --- |
| 29 | 2 | **SITEWORK** |  | 197d | 2025-09-08 A | 2026-06-16 |  | 47% | 104.73d | 44d |  |  |  | 688h | 528h |
| 30 | 2.1 | **Level of Effort** |  | 131d | 2025-09-08 A | 2026-03-13 |  | 42% | 75.9d | 82d |  |  |  |  |  |
| 31 | 2.1.1 | Construction Staking & Surveying |  | 90d | 2025-09-08 A | 2026-01-16 | 35SS, 8SS | 75% | 22.5d | 87d | 66d |  |  |  |  |
| 32 | 2.1.2 | Inspections and Testing |  | 100d | 2025-09-12 A | 2026-02-13 | 34 |  | 100d | 85d | 64d |  |  |  |  |
| 33 | 2.1.3 | Maintain Erosion Control |  | 120d | 2025-09-23 A | 2026-03-13 | 34 | 50% | 60d | 82d |  |  |  |  |  |
| 34 | 2.1.4 | Erosion Control & SWPP |  | 5d | 2025-09-16 A | 2025-09-22 A | 8 | 100% |  |  |  |  |  |  |  |
| 35 | 2.2 | Mobilization |  | 5d | 2025-09-08 A | 2025-09-15 A | 2 | 100% |  |  |  | start no earlier than 2024-09-09 |  |  |  |
| 36 | 2.3 | Site Demolition (Trees,Sawcut, Asphalt, Base ) | milestone | 0d | 2025-09-08 A | 2025-09-12 A | 35SS, 8 | 100% |  |  |  |  |  |  |  |
| 37 | 2.4 | Clear/Grub & Overlot Grading |  | 12d | 2025-09-08 A | 2025-09-23 A | 36SS, 31SS | 100% |  |  |  |  |  |  |  |
| 38 | 2.5 | Structure Demo (Partial Building & RV Storage ) |  | 5d | 2025-11-03 A | 2025-11-07 A | 35SS | 100% |  |  |  | start no earlier than 2025-09-08 | Janus | 40h | 40h |
| 39 | 2.6 | Re-Mobilization |  | 4d | 2025-10-23 A | 2025-10-28 A | 4 | 100% |  |  |  |  |  |  |  |
| 40 | 2.7 | FRAGNET - CITY PRE-CON & 7 DAY NOTICE |  | 7d | 2025-10-29 A | 2025-11-06 A | 4, 5, 6 | 100% |  |  |  | start no earlier than 2025-10-29 |  |  |  |
| 41 | 2.8 | Site - Water Line Ten Mile Tie-In |  | 2d | 2025-11-08 A | 2025-11-11 A | 5FS+2d, 6, 40 | 100% |  |  |  |  | ATD | 16h | 16h |
| 42 | 2.9 | Work Week Restriction |  | 5d | 2025-11-07 | 2025-11-13 | 40 |  |  | 192d |  |  |  |  |  |
| 43 | 2.10 | Site - Sewer Lines and Devices/Ten Mile Tie-In |  | 13d | 2025-11-14 A | 2025-12-04 A | 37, 3, 4, 5, 41FS-6d, 6, 40, 42 | 100% |  |  |  |  | ATD | 104h | 104h |
| 44 | 2.11 | DELAY - GIRR License Agreement Approval to Proceed |  | 6d | 2025-12-05 A | 2025-12-12 A | 43 | 100% |  |  |  |  |  |  |  |
| 45 | 2.12 | DELAY - RFI #14 - GIRR Separation |  | 4d | 2025-12-15 A | 2025-12-18 A | 44 | 100% |  |  |  |  |  |  |  |
| 46 | 2.13 | Storm Drain Lines South |  | 6d | 2025-12-22 A | 2025-12-30 A | 67 | 100% |  |  |  | finish no earlier than 2026-01-09 | ATD | 48h | 48h |
| 47 | 2.14 | Site - Water Line & Fire Lines/Hydrants and Devices Remaining |  | 18d | 2026-01-05 A | 2026-01-28 A | 43, 46 | 100% |  |  |  |  | ATD | 144h | 144h |
| 48 | 2.15 | Site - GIRR Piping & Devices |  | 16d | 2026-01-12 A | 2026-02-02 A | 43, 38, 46, 44, 45, 47SS+5d | 100% |  |  |  |  | ATD | 128h | 128h |
| 49 | 2.16 | TP DELAY - Site - GIRR Box Delivery and Placement |  | 6d | 2026-01-26 A | 2026-02-02 A | 48FF | 100% |  |  |  |  | ATD | 48h | 48h |
| 50 | 2.17 | Complete Utility Lines Tie-ins to Building A |  | 5d | 2026-04-14 | 2026-04-20 | 54, 104, 112, 172, 47 |  |  | 21d | 0d |  |  |  |  |
| 51 | 2.18 | Gravel Road Finish Grade Prep |  | 5d | 2026-04-14 | 2026-04-20 | 47, 54 |  |  | 39d | 18d |  | ATD | 40h |  |
| 52 | 2.19 | Gravel Road Rough Grade Prep |  | 8d | 2025-12-08 A | 2025-12-17 A | 67SS+2d | 100% |  |  |  |  |  |  |  |
| 53 | 2.20 | Site - Base Course Asphalt Prep & Flatwork Prep |  | 8d | 2026-03-24 | 2026-04-02 | 132 |  |  | 33d | 12d |  |  |  |  |
| 54 | 2.21 | Storm Drain Lines and Devices - North & South of Buildings |  | 15d | 2026-03-24 | 2026-04-13 | 37, 43, 70, 72, 131 |  |  | 21d | 0d |  | ATD | 120h |  |
| 55 | 2.22 | Site Flatwork and Curb and Gutter |  | 15d | 2026-04-21 | 2026-05-11 | 50, 41, 43, 54, 48, 125, 49, 31, 53 |  |  | 21d | 0d |  |  |  |  |
| 56 | 2.23 | Site - Fine Grade Asphalt Prep |  | 3d | 2026-05-12 | 2026-05-14 | 55 |  |  | 21d | 0d |  |  |  |  |
| 57 | 2.24 | Asphalt Paving |  | 2d | 2026-05-15 | 2026-05-18 | 55, 12, 21, 56, 51, 32 |  |  | 21d | 0d |  |  |  |  |
| 58 | 2.25 | Pavement Markings, Signage & Bumpers |  | 2d | 2026-05-19 | 2026-05-20 | 55, 57, 51 |  |  | 34d |  |  |  |  |  |
| 59 | 2.26 | Landscaping and Irrigation |  | 15d | 2026-05-19 | 2026-06-09 | 55, 12, 57 |  |  | 21d |  |  |  |  |  |
| 60 | 2.27 | Site Fencing Chainlink |  | 5d | 2026-05-19 | 2026-05-26 | 51, 57 |  |  | 30d | 0d |  |  |  |  |
| 61 | 2.28 | Site Fencing Vinyl |  | 10d | 2026-05-27 | 2026-06-09 | 51, 57, 60 |  |  | 30d | 0d |  |  |  |  |
| 62 | 2.29 | Site Fencing Rod Iron and Gates |  | 5d | 2026-06-10 | 2026-06-16 | 51, 57, 61 |  |  | 30d |  |  |  |  |  |

Notes:
- 49: As a result of CXT and ATD's submittal delay, the precast boxes were delayed.

| ID | WBS | Task | Type | Duration | Start | Finish | Predecessors | Complete | Remaining | Total slack | Free slack | Constraint | Resources | Work | Actual work |
| --- | --- | --- | --- | --- | --- | --- | --- | --- | --- | --- | --- | --- | --- | --- | --- |
| 63 | 3 | **BUILDING B** |  | 169d | 2025-10-29 A | 2026-06-29 |  | 17% | 140.95d | 7d |  |  |  | 784h | 264h |
| 64 | 3.1 | BLDG B Foundation Excavation |  | 6d | 2025-10-29 A | 2025-11-05 A | 37SS+3d, 4, 39, 65FF | 100% |  |  |  | start no earlier than 2025-09-15 | ATD | 48h | 48h |
| 65 | 3.2 | DELAY - BLDG B FOOTING OVER-EX |  | 4d | 2025-10-31 A | 2025-11-05 A |  | 100% |  |  |  | start no earlier than 2025-10-31 | ATD | 32h | 32h |
| 66 | 3.3 | BLDG B SOG Prep |  | 5d | 2025-11-26 A | 2025-12-04 A | 64, 112 | 100% |  |  |  |  | ATD | 40h | 40h |
| 67 | 3.4 | FRAGNET - Bldg B Soft Spot Repair |  | 8d | 2025-12-04 A | 2025-12-15 A |  | 100% |  |  |  | start no earlier than 2025-12-04 |  |  |  |
| 68 | 3.5 | BLDG B Backfill Foundations |  | 18d | 2025-12-15 A | 2026-01-09 A | 70, 71, 72SS, 25 | 100% |  |  |  |  | ATD | 144h | 144h |
| 69 | 3.6 | **CONCRETE WORK** |  | 44d | 2025-11-06 A | 2026-01-12 A |  | 100% |  |  |  |  |  |  |  |
| 70 | 3.6.1 | BLDG B Foundation |  | 14d | 2025-11-06 A | 2025-11-25 A | 64, 65 | 100% |  |  |  |  |  |  |  |
| 71 | 3.6.2 | BLDG B Dampproofing |  | 1d | 2025-11-18 A | 2025-11-26 A | 64, 70 | 100% |  |  |  |  |  |  |  |
| 72 | 3.6.3 | BLDG B Slab On Grade |  | 19d | 2025-12-15 A | 2026-01-12 A | 70, 112, 104FF, 66, 67FF, 23FF, 24FF | 100% |  |  |  |  |  |  |  |
| 73 | 3.6.4 | BLDG B Slab On Grade Complete | milestone | 0d | 2026-01-12 A | 2026-01-12 A | 72, 25 | 100% |  |  |  |  |  |  |  |
| 74 | 3.7 | **STEEL AND METALS** |  | 81d | 2026-01-12 A | 2026-05-04 |  |  | 81d | 26d |  |  |  | 360h |  |
| 75 | 3.7.1 | Frame & Panel Load Bearing & Shear Walls (JANUS) |  | 25d | 2026-01-12 A | 2026-02-16 | 72, 13, 38, 25 |  | 25d | 21d | 0d |  | Janus | 200h |  |
| 76 | 3.7.2 | Frame & Panel Partition & Corridor Walls (JANUS) |  | 20d | 2026-04-07 | 2026-05-04 | 80, 86, 101, 113, 109 |  |  | 26d | 15d |  | Janus | 160h |  |
| 77 | 3.8 | **WOOD & FRP** |  | 5d | 2026-03-17 | 2026-03-23 |  |  |  | 63d |  |  |  |  |  |
| 78 | 3.8.1 | Misc Finish Carpentry |  | 5d | 2026-03-17 | 2026-03-23 | 92 |  |  | 63d | 5d |  |  |  |  |
| 79 | 3.9 | **ROOF & SIDING** |  | 35d | 2026-01-30 | 2026-03-19 |  |  |  | 33d |  |  |  | 160h |  |
| 80 | 3.9.1 | Exterior Sheathing |  | 10d | 2026-01-30 | 2026-02-12 | 75FS-12d |  |  | 60d | 0d |  |  |  |  |
| 81 | 3.9.2 | Weather Barrier |  | 10d | 2026-02-06 | 2026-02-19 | 80FS-5d |  |  | 60d | 0d |  |  |  |  |
| 82 | 3.9.3 | Rigid Insulation Behind CMU |  | 5d | 2026-02-20 | 2026-02-26 | 81 |  |  | 60d | 0d |  |  |  |  |
| 83 | 3.9.4 | Rigid Insulation Behind Metal Panels |  | 3d | 2026-02-27 | 2026-03-03 | 82 |  |  | 60d | 0d |  |  |  |  |
| 84 | 3.9.5 | CMU Veneer |  | 15d | 2026-02-27 | 2026-03-19 | 80, 81, 82 |  |  | 63d | 3d |  |  |  |  |
| 85 | 3.9.6 | Exterior Metal Panels (JANUS) |  | 10d | 2026-03-04 | 2026-03-17 | 84SS, 80, 83 |  |  | 60d | 49d |  | Janus | 80h |  |
| 86 | 3.9.7 | Install Roof & Roof Insulation (JANUS) |  | 10d | 2026-02-17 | 2026-03-02 | 75 |  |  | 21d | 0d |  | Janus | 80h |  |
| 87 | 3.9.8 | BLDG B Roofing Complete | milestone | 0d | 2026-03-02 | 2026-03-02 | 86 |  |  | 21d | 0d |  |  |  |  |

Notes:
- 80: Lag is 12 days because the shear wall is far enough along to start exterior sheathing by 1/30.

| ID | WBS | Task | Type | Duration | Start | Finish | Predecessors | Complete | Remaining | Total slack | Free slack |
| --- | --- | --- | --- | --- | --- | --- | --- | --- | --- | --- | --- |
| 88 | 3.10 | **DOORS & WINDOWS** |  | 20d | 2026-05-27 | 2026-06-23 |  |  |  | 11d |  |
| 89 | 3.10.1 | F&I Storage Unit Doors (JANUS) |  | 20d | 2026-05-27 | 2026-06-23 | 85, 145, 76 |  |  | 11d | 0d |
| 90 | 3.10.2 | F&I HM Doors and Hardware (JANUS) |  | 15d | 2026-05-27 | 2026-06-16 | 89SS, 92 |  |  | 16d |  |
| 91 | 3.11 | **FINISHES** |  | 30d | 2026-03-03 | 2026-04-13 |  |  |  | 48d |  |
| 92 | 3.11.1 | Install Gypsum Board |  | 10d | 2026-03-03 | 2026-03-16 | 86, 75, 87 |  |  | 48d | 0d |
| 93 | 3.11.2 | Flooring Polished Concrete |  | 5d | 2026-03-17 | 2026-03-23 | 92 |  |  | 58d | 0d |
| 94 | 3.11.3 | FRP / Vinyl Base |  | 5d | 2026-03-24 | 2026-03-30 | 92, 93 |  |  | 58d | 0d |
| 95 | 3.11.4 | Painting |  | 10d | 2026-03-31 | 2026-04-13 | 94, 78 |  |  | 58d | 0d |
| 96 | 3.12 | **SPECIALTIES** |  | 23d | 2026-03-17 | 2026-04-16 |  |  |  | 58d |  |
| 97 | 3.12.1 | Install Misc Equipment & Lockers |  | 20d | 2026-03-17 | 2026-04-13 | 92 |  |  | 61d |  |
| 98 | 3.12.2 | Bathroom Accessories |  | 2d | 2026-03-24 | 2026-03-25 | 93 |  |  | 74d |  |
| 99 | 3.12.3 | Building Interior Signage |  | 3d | 2026-04-14 | 2026-04-16 | 95SS+10d |  |  | 58d |  |
| 100 | 3.13 | **FIRE SPRINKLERS** |  | 30d | 2026-03-03 | 2026-04-13 |  |  |  | 36d |  |
| 101 | 3.13.1 | Fire Sprinkler System Rough In |  | 15d | 2026-03-03 | 2026-03-23 | 86, 19 |  |  | 36d | 0d |
| 102 | 3.13.2 | Fire Sprinkler System Trim Out |  | 15d | 2026-03-24 | 2026-04-13 | 101 |  |  | 61d |  |
| 103 | 3.14 | **PLUMBING** |  | 87d | 2025-11-20 A | 2026-03-26 |  | 16% | 73.08d | 73d |  |
| 104 | 3.14.1 | Plumbing Rough-in Underground |  | 4d | 2025-11-20 A | 2025-11-25 A | 70SS+5d | 100% |  |  |  |
| 105 | 3.14.2 | Drains, Water, Sewer Lines |  | 15d | 2026-03-03 | 2026-03-23 | 86 |  |  | 73d | 0d |
| 106 | 3.14.3 | Bathroom Fixtures |  | 3d | 2026-03-24 | 2026-03-26 | 92, 93, 105 |  |  | 73d | 0d |
| 107 | 3.14.4 | Other Plumbing Fixtures |  | 3d | 2026-03-24 | 2026-03-26 | 106SS |  |  | 73d |  |
| 108 | 3.15 | **HVAC** |  | 30d | 2026-03-03 | 2026-04-13 |  |  |  | 26d |  |
| 109 | 3.15.1 | HVAC Installation |  | 25d | 2026-03-03 | 2026-04-06 | 86, 87 |  |  | 26d | 0d |
| 110 | 3.15.2 | HVAC Commisioning & T&B |  | 5d | 2026-04-07 | 2026-04-13 | 109, 116 |  |  | 61d |  |
| 111 | 3.16 | **ELECTRICAL** |  | 153d | 2025-11-20 A | 2026-06-29 |  |  | 153d | 7d |  |
| 112 | 3.16.1 | Building Rough-in Underground | milestone | 0d | 2025-11-20 A | 2025-11-25 A | 125 | 100% |  |  |  |
| 113 | 3.16.2 | Elect Rough-In |  | 25d | 2026-03-03 | 2026-04-06 | 86, 87 |  |  | 21d | 0d |
| 114 | 3.16.3 | New Service Equipment Install, Wire & Inspect |  | 10d | 2026-02-24 | 2026-03-09 | 123, 15 |  |  | 68d | 20d |
| 115 | 3.16.4 | Install and Wire Panels |  | 15d | 2026-03-17 | 2026-04-06 | 92 |  |  | 48d | 0d |
| 116 | 3.16.5 | Permanent Power On | milestone | 0d | 2026-04-06 | 2026-04-06 | 114, 115, 15 |  |  | 48d | 0d |
| 117 | 3.16.6 | Electric Lights, Devices and Trim |  | 55d | 2026-04-06 | 2026-06-22 | 113SS+10d, 18, 17 |  |  | 7d | 0d |
| 118 | 3.16.7 | Fire Alarm System |  | 3d | 2026-04-07 | 2026-04-09 | 109, 20, 92 |  |  | 58d | 51d |
| 119 | 3.16.8 | Electrical Commissioning |  | 5d | 2026-06-23 | 2026-06-29 | 112, 113, 115, 117, 118 |  |  | 7d |  |

| ID | WBS | Task | Type | Duration | Start | Finish | Predecessors | Remaining | Total slack | Free slack | Constraint | Resources | Work |
| --- | --- | --- | --- | --- | --- | --- | --- | --- | --- | --- | --- | --- | --- |
| 120 | 4 | **BUILDING A** |  | 123d | 2026-01-26 A | 2026-07-17 |  | 123d | -14d | 0d |  |  | 136h |
| 121 | 4.1 | BLDG A Foundation Excavation |  | 5d | 2026-01-26 A | 2026-01-30 | 64, 70SS+10d, 4, 39, 67 | 5d | -14d | 0d |  | ATD | 40h |
| 122 | 4.2 | FRAGNET - BLDG A Footing Seepage Bed Over Ex. |  | 1d | 2026-02-02 | 2026-02-02 | 121 |  | -14d | 0d |  |  |  |
| 123 | 4.3 | BLDG A - Interoir Backfill Foundations |  | 5d | 2026-02-17 | 2026-02-23 | 72, 128, 121 |  | -14d | 0d |  | ATD | 40h |
| 124 | 4.4 | FRAGNET - BLDG A Seepage Bed Pad Over Ex. |  | 3d | 2026-02-24 | 2026-02-26 | 128, 123 |  | -12d | 0d |  |  |  |
| 125 | 4.5 | BLDG A - Exterior Backfill Foundations |  | 2d | 2026-02-24 | 2026-02-25 | 121, 129, 65, 130 |  | 59d | 38d |  | ATD | 16h |
| 126 | 4.6 | BLDG A SOG Prep |  | 5d | 2026-03-03 | 2026-03-09 | 123, 164, 172, 124 |  | -14d | 0d |  | ATD | 40h |
| 127 | 4.7 | **CONCRETE WORK** |  | 35d | 2026-02-03 | 2026-03-23 |  |  | -14d | 0d |  |  |  |
| 128 | 4.7.1 | BLDG A Foundation |  | 10d | 2026-02-03 | 2026-02-16 | 121, 47, 48, 122 |  | -14d | 0d | start no earlier than 2026-01-05 |  |  |
| 129 | 4.7.2 | BLDG A Dampproofing |  | 2d | 2026-02-17 | 2026-02-18 | 128, 121 |  | 59d | 0d |  |  |  |
| 130 | 4.7.3 | BLDG A Exterior Footing Insulation |  | 3d | 2026-02-19 | 2026-02-23 | 129 |  | 59d | 0d |  |  |  |
| 131 | 4.7.4 | BLDG A Slab On Grade |  | 10d | 2026-03-10 | 2026-03-23 | 128, 126, 124 |  | -14d | 0d |  |  |  |
| 132 | 4.7.5 | BLDG A Slab On Grade Complete | milestone | 0d | 2026-03-23 | 2026-03-23 | 131 |  | 33d | 0d |  |  |  |
| 133 | 4.8 | **STEEL AND METALS** |  | 67d | 2026-03-20 | 2026-06-23 |  |  | -14d | 0d |  |  |  |
| 134 | 4.8.1 | Frame & Panel Load Bearing & Shear Walls (JANUS) |  | 25d | 2026-03-20 | 2026-04-23 | 131SS+8d, 14 |  | -14d | 0d |  |  |  |
| 135 | 4.8.2 | Frame & Panel Partition & Corridor Walls (JANUS) |  | 15d | 2026-06-03 | 2026-06-23 | 134, 101, 173, 109 |  | -2d | 0d |  |  |  |
| 136 | 4.8.3 | Canopy Install |  | 8d | 2026-04-24 | 2026-05-05 | 134, 140 |  | 37d |  |  |  |  |
| 137 | 4.9 | **WOOD & FRP** |  | 5d | 2026-05-15 | 2026-05-21 |  |  | 25d |  |  |  |  |
| 138 | 4.9.1 | Misc Finish Carpentry |  | 5d | 2026-05-15 | 2026-05-21 | 152 |  | 25d |  |  |  |  |
| 139 | 4.10 | **ROOF & SIDING** |  | 35d | 2026-04-10 | 2026-05-29 |  |  | -4d | 0d |  |  |  |
| 140 | 4.10.1 | Exterior Sheathing |  | 10d | 2026-04-10 | 2026-04-23 | 134FS-10d |  | 11d | 0d |  |  |  |
| 141 | 4.10.2 | Exterior Sheathing, Weather Barrier & Rigid Insulation - Building A |  | 10d | 2026-04-17 | 2026-04-30 | 140FS-5d |  | 11d | 0d |  |  |  |
| 142 | 4.10.3 | Rigid Insulation Behind CMU |  | 5d | 2026-05-01 | 2026-05-07 | 141 |  | 11d | 0d |  |  |  |
| 143 | 4.10.4 | CMU Veneer |  | 15d | 2026-05-08 | 2026-05-29 | 140, 141, 142 |  | 11d | 0d |  |  |  |
| 144 | 4.10.5 | Rigid Insulation Behind Metal Panels |  | 3d | 2026-05-01 | 2026-05-05 | 141 |  | 15d | 4d |  |  |  |
| 145 | 4.10.6 | Exterior Metal Panels (JANUS) |  | 10d | 2026-05-12 | 2026-05-26 | 143SS+2d, 140, 144 |  | 11d | 0d |  |  |  |
| 146 | 4.10.7 | Install Roof & Roof Insulation (JANUS) |  | 5d | 2026-04-24 | 2026-04-30 | 134 |  | -14d | 0d |  |  |  |
| 147 | 4.10.8 | BLDG A Roofing Complete | milestone | 0d | 2026-04-30 | 2026-04-30 | 146 |  | -7d | 0d |  |  |  |

| ID | WBS | Task | Type | Duration | Start | Finish | Predecessors | Total slack | Free slack |
| --- | --- | --- | --- | --- | --- | --- | --- | --- | --- |
| 148 | 4.11 | **DOORS & WINDOWS** |  | 5d | 2026-06-24 | 2026-06-30 |  | -2d | 0d |
| 149 | 4.11.1 | F&I Storage Unit Doors (JANUS) |  | 5d | 2026-06-24 | 2026-06-30 | 135 | -2d | 0d |
| 150 | 4.11.2 | F&I HM Doors and Hardware (JANUS) |  | 5d | 2026-06-24 | 2026-06-30 | 149SS, 152 | -2d | 0d |
| 151 | 4.12 | **FINISHES** |  | 30d | 2026-05-01 | 2026-06-12 |  | 8d |  |
| 152 | 4.12.1 | Install Gypsum Board |  | 10d | 2026-05-01 | 2026-05-14 | 134, 146, 140 | 8d | 0d |
| 153 | 4.12.2 | Painting |  | 10d | 2026-05-15 | 2026-05-29 | 152 | 8d | 0d |
| 154 | 4.12.3 | Flooring Polished Conc. |  | 5d | 2026-06-01 | 2026-06-05 | 152, 153 | 8d | 0d |
| 155 | 4.12.4 | FRP & Vinyl Base |  | 5d | 2026-06-08 | 2026-06-12 | 153, 154 | 8d | 0d |
| 156 | 4.13 | **SPECIALTIES** |  | 22d | 2026-05-15 | 2026-06-16 |  | 8d |  |
| 157 | 4.13.1 | Install Misc Equipment & Lockers |  | 20d | 2026-05-15 | 2026-06-12 | 152 | 10d |  |
| 158 | 4.13.2 | Bathroom Accessories- Building A |  | 2d | 2026-06-15 | 2026-06-16 | 155 | 8d |  |
| 159 | 4.13.3 | Building Interior Signage |  | 3d | 2026-06-01 | 2026-06-03 | 153SS+10d | 17d |  |
| 160 | 4.14 | **FIRE SPRINKLERS** |  | 30d | 2026-05-01 | 2026-06-12 |  | 10d |  |
| 161 | 4.14.1 | Fire Sprinkler System Rough In |  | 15d | 2026-05-01 | 2026-05-21 | 146 | 10d | 0d |
| 162 | 4.14.2 | Fire Sprinkler System Trim Out |  | 15d | 2026-05-22 | 2026-06-12 | 161 | 10d |  |
| 163 | 4.15 | **PLUMBING** |  | 83d | 2026-02-24 | 2026-06-19 |  | -14d | 0d |
| 164 | 4.15.1 | Plumbing Rough-in Underground |  | 5d | 2026-02-24 | 2026-03-02 | 123 | -14d | 0d |
| 165 | 4.15.2 | Drains, Water, Sewer Lines |  | 15d | 2026-05-01 | 2026-05-21 | 146 | 5d | 0d |
| 166 | 4.15.3 | Bathroom Fixtures- Building A |  | 10d | 2026-05-22 | 2026-06-05 | 152, 165 | 5d | 0d |
| 167 | 4.15.4 | Other Plumbing Fixtures |  | 10d | 2026-06-08 | 2026-06-19 | 166 | 5d |  |
| 168 | 4.16 | **HVAC** |  | 30d | 2026-05-01 | 2026-06-12 |  | 10d |  |
| 169 | 4.16.1 | HVAC Installation |  | 20d | 2026-05-01 | 2026-05-29 | 146, 147 | 10d | 0d |
| 170 | 4.16.2 | HVAC Commisioning - Building A |  | 10d | 2026-06-01 | 2026-06-12 | 169, 116 | 10d |  |
| 171 | 4.17 | **ELECTRICAL** |  | 102d | 2026-02-24 | 2026-07-17 |  | -14d | 0d |
| 172 | 4.17.1 | Building Rough-in Underground |  | 5d | 2026-02-24 | 2026-03-02 | 123 | -14d | 0d |
| 173 | 4.17.2 | Electrical Rough-In |  | 25d | 2026-04-28 | 2026-06-02 | 146SS+2d | -14d | 0d |
| 174 | 4.17.3 | New Service Equipment Install, Wire & Inspect |  | 10d | 2026-04-28 | 2026-05-11 | 123, 15, 173SS | 33d | 18d |
| 175 | 4.17.4 | Install and Wire Panels |  | 15d | 2026-05-15 | 2026-06-05 | 152 | 10d | 0d |
| 176 | 4.17.5 | Permanent Power On- Building A | milestone | 0d | 2026-06-05 | 2026-06-05 | 174, 175, 15 | 15d |  |
| 177 | 4.17.6 | Electric Lights, Devices and Trim |  | 42d | 2026-05-12 | 2026-07-10 | 173SS+10d, 146, 147, 18, 17 | -14d | 0d |
| 178 | 4.17.7 | Fire Alarm System |  | 5d | 2026-06-01 | 2026-06-05 | 152, 169, 20 | 10d |  |
| 179 | 4.17.8 | Electrical Commissioning |  | 5d | 2026-07-13 | 2026-07-17 | 172, 173, 175, 177, 178 | -14d | 0d |
