# Schedule 2017-02-17 baseline - Final

Schedule from MS Project XML, 2025-09-08 to 2026-08-18, status date 2026-01-30, A marks actual dates.

## Calendars

- Standard: Mon-Fri 08:00-12:00, 13:00-17:00; Sat-Sun off. Exceptions (off unless hours are given): 2025-11-27 to 2025-11-28 (Thanksgiving 2025), 2025-12-25 (Christmas 2025), 2026-01-01 (New Year's Day 2026), 2026-05-25 (Memorial Day), 2026-07-03 (Independence Day 2026).

## Resources

| Resource |
| --- |
| Janus |
| ATD |

## Schedule

| ID | WBS | Task | Type | Duration | Start | Finish | Predecessors | Complete | Remaining | Total slack | Free slack | Constraint | Deadline |
| --- | --- | --- | --- | --- | --- | --- | --- | --- | --- | --- | --- | --- | --- |
| 1 | 1 | **GENERAL REQUIREMENTS AND CONDITIONS** |  | 241d | 2025-09-08 A | 2026-08-18 |  | 48% | 126.38d | -14d | 0d |  |  |
| 2 | 1.1 | Notice to Proceed | milestone | 1d | 2025-09-08 A | 2025-09-08 A |  | 100% |  |  |  | start no earlier than 2025-09-08 |  |
| 3 | 1.2 | DELAY - PERMIT DELAY |  | 32d | 2025-09-09 A | 2025-10-22 A | 2 | 100% |  |  |  |  |  |
| 4 | 1.3 | Obtain Building Permit | milestone | 0d | 2025-10-22 A | 2025-10-22 A | 2, 3 | 100% |  |  |  | start no earlier than 2025-10-22 |  |
| 5 | 1.4 | ACHD ROW Permit | milestone | 0d | 2025-10-29 A | 2025-10-29 A | 4FS+5d | 100% |  |  |  |  |  |
| 6 | 1.5 | Obtain LDIR Approval to Proceed | milestone | 0d | 2025-10-27 A | 2025-10-27 A | 4FS+3d | 100% |  |  |  |  |  |
| 7 | 1.6 | Receive CAD Base Files from Public Storage |  | 10d | 2025-09-09 A | 2025-09-22 A | 2 | 100% |  |  |  | finish no earlier than 2024-08-31 |  |
| 8 | 1.7 | Procure Early Work Subcontractors |  | 5d | 2025-09-09 A | 2025-09-15 A | 2 | 100% |  |  |  |  |  |
| 9 | 1.8 | Procure Remaining Subcontractors |  | 20d | 2025-09-16 A | 2025-10-13 A | 8 | 100% |  |  |  |  |  |
| 10 | 1.9 | Submittals (SWPPP/NOI) |  | 10d | 2025-09-16 A | 2025-09-29 A | 8 | 100% |  |  |  |  |  |
| 11 | 1.10 | Submittals (SES /Switchgear) |  | 34d | 2025-09-16 A | 2025-10-31 A | 8 | 100% |  |  |  |  |  |
| 12 | 1.11 | Submittals (numerous) |  | 90d | 2025-10-14 A | 2026-02-20 | 9 | 39% | 55d | 80d | 59d |  |  |
| 13 | 1.12 | PUBLIC STORAGE Fab/Delv Framing & Panels BLDG B |  | 40d | 2025-10-23 A | 2025-12-19 | 2, 4 | 50% | 20d | 14d | 0d |  |  |
| 14 | 1.13 | PUBLIC STORAGE Fab/Delv Framing & Panels BLDG A |  | 40d | 2025-11-06 A | 2026-01-06 | 13SS+10d | 25% | 30d | 38d |  |  |  |
| 15 | 1.14 | Procure SES's/Switchgears (6 mos ~ 130 WD) |  | 70d | 2025-11-03 A | 2026-02-12 | 11 | 50% | 35d | 75d | 7d |  |  |
| 16 | 1.15 | Light Fixture Submittal Review and Approval |  | 10d | 2026-01-26 A | 2026-02-06 |  | 25% | 7.5d | 7d | 0d | start no earlier than 2026-01-26 |  |
| 17 | 1.16 | Light Fixture Package Alternate - Fab and Deliver |  | 10d | 2026-02-09 | 2026-02-20 | 16 |  |  | 37d | 30d |  |  |
| 18 | 1.17 | Light Fixture Package Spec'd - Fab and Deliver |  | 8w | 2026-02-09 | 2026-04-03 | 16 |  |  | 7d | 0d |  |  |
| 19 | 1.18 | Fire Sprinkler Design and Approval |  | 65d | 2025-10-14 A | 2026-01-16 | 2, 9 |  | 65d | 67d | 31d |  |  |
| 20 | 1.19 | Fire Alarm System Design and Approval |  | 40d | 2025-10-14 A | 2025-12-10 A | 2, 9 | 100% |  |  |  |  |  |
| 21 | 1.20 | ASPHALT BATCH PLANT SHUTDOWN |  | 70d | 2025-11-17 A | 2026-02-26 |  | 50% | 35d | 0d |  | must start on 2025-11-17 |  |
| 22 | 1.21 | TWENTY WORKING DAYS OF WEATHER DELAY |  | 14d | 2026-07-30 | 2026-08-18 | 98, 101, 123, 152, 155, 177, 32, 50, 68, 66, 67, 34, 93, 94, 102, 103, 110, 111, 147, 148, 156, 157, 151, 160, 165, 168, 164, 99, 106, 114, 31, 28 |  |  | -14d | 0d |  |  |
| 23 | 1.22 | WEATHER DELAY - Rain and High Winds - Imapct SOG B |  | 2d | 2025-12-17 A | 2025-12-18 A |  | 100% |  |  |  | start no earlier than 2025-12-17 |  |
| 24 | 1.23 | WEATHER DELAY - Rain - Impact SOG B |  | 1d | 2025-12-22 A | 2025-12-22 A |  | 100% |  |  |  | start no earlier than 2025-12-22 |  |
| 25 | 1.24 | WEATHER DELAY - Rain - Impact SOG B |  | 3d | 2026-01-08 | 2026-01-12 | 76FF, 75 |  |  | 0d |  |  |  |
| 26 | 1.25 | Substantial Completion | milestone | 0d | 2026-08-18 | 2026-08-18 | 98, 101, 123, 152, 155, 177, 32, 50, 68, 66, 67, 34, 93, 94, 102, 103, 110, 111, 147, 148, 156, 157, 151, 160, 165, 168, 164, 99, 106, 114, 31, 22, 71 |  |  | -14d | 0d | start no earlier than 2026-07-29 | 2026-07-29 |
| 27 | 1.26 | Clean Up and Project Close Out |  | 5d | 2026-07-20 | 2026-07-24 | 124 |  |  | -14d | 0d |  |  |
| 28 | 1.27 | Demobilize |  | 3d | 2026-07-27 | 2026-07-29 | 27 |  |  | -14d | 0d |  |  |

Notes:
- 3: 9/18: Permit was held up by city review on LDIR. See RR item.

| ID | WBS | Task | Type | Duration | Start | Finish | Predecessors | Complete | Remaining | Total slack | Free slack | Constraint | Resources | Work | Actual work |
| --- | --- | --- | --- | --- | --- | --- | --- | --- | --- | --- | --- | --- | --- | --- | --- |
| 29 | 2 | **SITEWORK** |  | 197d | 2025-09-08 A | 2026-06-16 |  | 49% | 99.86d | 30d |  |  |  | 1088h | 792h |
| 30 | 2.1 | Mobilization |  | 5d | 2025-09-08 A | 2025-09-15 A | 2 | 100% |  |  |  | start no earlier than 2024-09-09 |  |  |  |
| 31 | 2.2 | Construction Staking & Surveying |  | 90d | 2025-09-08 A | 2026-01-16 | 30SS, 8SS | 75% | 22.5d | 87d | 66d |  |  |  |  |
| 32 | 2.3 | Inspections and Testing |  | 100d | 2025-09-12 A | 2026-02-13 | 33 |  | 100d | 85d | 64d |  |  |  |  |
| 33 | 2.4 | Erosion Control & SWPP |  | 5d | 2025-09-16 A | 2025-09-22 A | 8 | 100% |  |  |  |  |  |  |  |
| 34 | 2.5 | Maintain Erosion Control |  | 120d | 2025-09-23 A | 2026-03-13 | 33 | 50% | 60d | 82d |  |  |  |  |  |
| 35 | 2.6 | Structure Demo (Partial Building & RV Storage ) |  | 5d | 2025-11-03 A | 2025-11-07 A | 30SS | 100% |  |  |  | start no earlier than 2025-09-08 | Janus | 40h | 40h |
| 36 | 2.7 | Site Demolition (Trees,Sawcut, Asphalt, Base ) | milestone | 0d | 2025-09-08 A | 2025-09-12 A | 30SS, 8 | 100% |  |  |  | start no earlier than 2017-03-06 |  |  |  |
| 37 | 2.8 | Re-Mobilization |  | 4d | 2025-10-23 A | 2025-10-28 A | 4 | 100% |  |  |  |  |  |  |  |
| 38 | 2.9 | Clear/Grub & Overlot Grading |  | 12d | 2025-09-08 A | 2025-09-23 A | 36SS, 31SS | 100% |  |  |  |  |  |  |  |
| 39 | 2.10 | FRAGNET - CITY PRE-CON & 7 DAY NOTICE |  | 7d | 2025-10-29 A | 2025-11-06 A |  | 100% |  |  |  | start no earlier than 2025-10-29 |  |  |  |
| 40 | 2.11 | Site - Sewer Lines and Devices/Ten Mile Tie-In |  | 13d | 2025-11-14 A | 2025-12-04 A | 38, 3, 4, 5, 47FS-6d, 6, 39 | 100% |  |  |  |  | ATD | 104h | 104h |
| 41 | 2.12 | Storm Drain Lines and Devices - North & South of Buildings |  | 15d | 2026-03-24 | 2026-04-13 | 38, 40, 74, 76, 129 |  |  | 21d | 0d |  | ATD | 120h |  |
| 42 | 2.13 | Storm Drain Lines South |  | 6d | 2025-12-22 A | 2025-12-30 A |  | 100% |  |  |  | finish no earlier than 2026-01-09 | ATD | 48h | 48h |
| 43 | 2.14 | DELAY - GIRR License Agreement Approval to Proceed |  | 6d | 2025-12-05 A | 2025-12-12 A | 40 | 100% |  |  |  |  |  |  |  |
| 44 | 2.15 | DELAY - RFI #14 - GIRR Separation |  | 4d | 2025-12-15 A | 2025-12-18 A | 43 | 100% |  |  |  |  |  |  |  |
| 45 | 2.16 | Site - GIRR Piping & Devices |  | 16d | 2026-01-12 A | 2026-02-02 A | 40, 35, 42, 43, 44, 48SS+5d | 100% |  |  |  |  | ATD | 128h | 128h |
| 46 | 2.17 | TP DELAY - Site - GIRR Box Delivery and Placement |  | 6d | 2026-01-26 A | 2026-02-02 A | 45FF | 100% |  |  |  |  | ATD | 48h | 48h |
| 47 | 2.18 | Site - Water Line Ten Mile Tie-In |  | 2d | 2025-11-08 A | 2025-11-11 A | 5FS+2d, 6, 39 | 100% |  |  |  |  | ATD | 16h | 16h |
| 48 | 2.19 | Site - Water Line & Fire Lines/Hydrants and Devices Remaining |  | 18d | 2026-01-05 A | 2026-01-28 A | 40, 42 | 100% |  |  |  |  | ATD | 144h | 144h |
| 49 | 2.20 | Complete Utility Lines Tie-ins to Building A |  | 5d | 2026-04-14 | 2026-04-20 | 41, 108, 116, 170, 48 |  |  | 21d | 0d |  |  |  |  |
| 50 | 2.21 | Gravel Road Finish Grade Prep |  | 5d | 2026-04-14 | 2026-04-20 | 48, 41 |  |  | 39d | 18d |  | ATD | 40h |  |
| 51 | 2.22 | Gravel Road Rough Grade Prep |  | 8d | 2025-12-08 A | 2025-12-17 A | 55SS+2d | 100% |  |  |  |  |  |  |  |
| 52 | 2.23 | BLDG B Foundation Excavation |  | 6d | 2025-10-29 A | 2025-11-05 A | 38SS+3d, 4, 37, 53FF | 100% |  |  |  | start no earlier than 2025-09-15 | ATD | 48h | 48h |
| 53 | 2.24 | DELAY - BLDG B FOOTING OVER-EX |  | 4d | 2025-10-31 A | 2025-11-05 A |  | 100% |  |  |  | start no earlier than 2025-10-31 | ATD | 32h | 32h |
| 54 | 2.25 | BLDG B SOG Prep |  | 5d | 2025-11-26 A | 2025-12-04 A | 52, 116 | 100% |  |  |  |  | ATD | 40h | 40h |
| 55 | 2.26 | FRAGNET - Bldg B Soft Spot Repair |  | 8d | 2025-12-04 A | 2025-12-15 A |  | 100% |  |  |  | start no earlier than 2025-12-04 |  |  |  |
| 56 | 2.27 | BLDG B Backfill Foundations |  | 18d | 2025-12-15 A | 2026-01-09 A | 74, 75, 76SS, 25 | 100% |  |  |  |  | ATD | 144h | 144h |
| 57 | 2.28 | BLDG A Foundation Excavation |  | 5d | 2026-01-26 A | 2026-01-30 | 52, 74SS+10d, 4, 37, 55 |  | 5d | -14d | 0d |  | ATD | 40h |  |
| 58 | 2.29 | FRAGNET - BLDG A Footing Seepage Bed Over Ex. |  | 1d | 2026-02-02 | 2026-02-02 | 57 |  |  | -14d | 0d |  |  |  |  |
| 59 | 2.30 | BLDG A - Interoir Backfill Foundations |  | 5d | 2026-02-17 | 2026-02-23 | 76, 126, 57 |  |  | -14d | 0d |  | ATD | 40h |  |
| 60 | 2.31 | FRAGNET - BLDG A Seepage Bed Pad Over Ex. |  | 3d | 2026-02-24 | 2026-02-26 | 126, 59 |  |  | -12d | 0d |  |  |  |  |
| 61 | 2.32 | BLDG A - Exterior Backfill Foundations |  | 2d | 2026-02-24 | 2026-02-25 | 57, 127, 53, 128 |  |  | 59d | 38d |  | ATD | 16h |  |
| 62 | 2.33 | BLDG A SOG Prep |  | 5d | 2026-03-03 | 2026-03-09 | 59, 162, 170, 60 |  |  | -14d | 0d |  | ATD | 40h |  |
| 63 | 2.34 | Site - Base Course Asphalt Prep & Flatwork Prep |  | 8d | 2026-03-24 | 2026-04-02 | 130 |  |  | 33d | 12d |  |  |  |  |
| 64 | 2.35 | Site Flatwork and Curb and Gutter |  | 15d | 2026-04-21 | 2026-05-11 | 49, 47, 40, 41, 45, 61, 46, 31, 63 |  |  | 21d | 0d |  |  |  |  |
| 65 | 2.36 | Site - Fine Grade Asphalt Prep |  | 3d | 2026-05-12 | 2026-05-14 | 64 |  |  | 21d | 0d |  |  |  |  |
| 66 | 2.37 | Asphalt Paving |  | 2d | 2026-05-15 | 2026-05-18 | 64, 12, 21, 65, 50, 32 |  |  | 21d | 0d |  |  |  |  |
| 67 | 2.38 | Pavement Markings, Signage & Bumpers |  | 2d | 2026-05-19 | 2026-05-20 | 64, 66, 50 |  |  | 34d |  |  |  |  |  |
| 68 | 2.39 | Landscaping and Irrigation |  | 15d | 2026-05-19 | 2026-06-09 | 64, 12, 66 |  |  | 21d |  |  |  |  |  |
| 69 | 2.40 | Site Fencing Chainlink |  | 5d | 2026-05-19 | 2026-05-26 | 50, 66 |  |  | 30d | 0d |  |  |  |  |
| 70 | 2.41 | Site Fencing Vinyl |  | 10d | 2026-05-27 | 2026-06-09 | 50, 66, 69 |  |  | 30d | 0d |  |  |  |  |
| 71 | 2.42 | Site Fencing Rod Iron and Gates |  | 5d | 2026-06-10 | 2026-06-16 | 50, 66, 70 |  |  | 30d |  |  |  |  |  |

Notes:
- 46: As a result of CXT and ATD's submittal delay, the precast boxes were delayed.

| ID | WBS | Task | Type | Duration | Start | Finish | Predecessors | Complete | Remaining | Total slack | Free slack | Resources | Work |
| --- | --- | --- | --- | --- | --- | --- | --- | --- | --- | --- | --- | --- | --- |
| 72 | 3 | **BUILDING B** |  | 163d | 2025-11-06 A | 2026-06-29 |  | 9% | 148.76d | 7d |  |  | 520h |
| 73 | 3.1 | **CONCRETE WORK** |  | 44d | 2025-11-06 A | 2026-01-12 A |  | 100% |  |  |  |  |  |
| 74 | 3.1.1 | BLDG B Foundation |  | 14d | 2025-11-06 A | 2025-11-25 A | 52, 53 | 100% |  |  |  |  |  |
| 75 | 3.1.2 | BLDG B Dampproofing |  | 1d | 2025-11-18 A | 2025-11-26 A | 52, 74 | 100% |  |  |  |  |  |
| 76 | 3.1.3 | BLDG B Slab On Grade |  | 19d | 2025-12-15 A | 2026-01-12 A | 74, 116, 108FF, 54, 55FF, 23FF, 24FF | 100% |  |  |  |  |  |
| 77 | 3.1.4 | BLDG B Slab On Grade Complete | milestone | 0d | 2026-01-12 A | 2026-01-12 A | 76, 25 | 100% |  |  |  |  |  |
| 78 | 3.2 | **STEEL AND METALS** |  | 81d | 2026-01-12 A | 2026-05-04 |  |  | 81d | 26d |  |  | 360h |
| 79 | 3.2.1 | Frame & Panel Load Bearing & Shear Walls (JANUS) |  | 25d | 2026-01-12 A | 2026-02-16 | 76, 13, 35, 25 |  | 25d | 21d | 0d | Janus | 200h |
| 80 | 3.2.2 | Frame & Panel Partition & Corridor Walls (JANUS) |  | 20d | 2026-04-07 | 2026-05-04 | 84, 90, 105, 117, 113 |  |  | 26d | 15d | Janus | 160h |
| 81 | 3.3 | **WOOD & FRP** |  | 5d | 2026-03-17 | 2026-03-23 |  |  |  | 63d |  |  |  |
| 82 | 3.3.1 | Misc Finish Carpentry |  | 5d | 2026-03-17 | 2026-03-23 | 96 |  |  | 63d | 5d |  |  |
| 83 | 3.4 | **ROOF & SIDING** |  | 35d | 2026-01-30 | 2026-03-19 |  |  |  | 33d |  |  | 160h |
| 84 | 3.4.1 | Exterior Sheathing |  | 10d | 2026-01-30 | 2026-02-12 | 79FS-12d |  |  | 60d | 0d |  |  |
| 85 | 3.4.2 | Weather Barrier |  | 10d | 2026-02-06 | 2026-02-19 | 84FS-5d |  |  | 60d | 0d |  |  |
| 86 | 3.4.3 | Rigid Insulation Behind CMU |  | 5d | 2026-02-20 | 2026-02-26 | 85 |  |  | 60d | 0d |  |  |
| 87 | 3.4.4 | Rigid Insulation Behind Metal Panels |  | 3d | 2026-02-27 | 2026-03-03 | 86 |  |  | 60d | 0d |  |  |
| 88 | 3.4.5 | CMU Veneer |  | 15d | 2026-02-27 | 2026-03-19 | 84, 85, 86 |  |  | 63d | 3d |  |  |
| 89 | 3.4.6 | Exterior Metal Panels (JANUS) |  | 10d | 2026-03-04 | 2026-03-17 | 88SS, 84, 87 |  |  | 60d | 49d | Janus | 80h |
| 90 | 3.4.7 | Install Roof & Roof Insulation (JANUS) |  | 10d | 2026-02-17 | 2026-03-02 | 79 |  |  | 21d | 0d | Janus | 80h |
| 91 | 3.4.8 | BLDG B Roofing Complete | milestone | 0d | 2026-03-02 | 2026-03-02 | 90 |  |  | 21d | 0d |  |  |
| 92 | 3.5 | **DOORS & WINDOWS** |  | 20d | 2026-05-27 | 2026-06-23 |  |  |  | 11d |  |  |  |
| 93 | 3.5.1 | F&I Storage Unit Doors (JANUS) |  | 20d | 2026-05-27 | 2026-06-23 | 89, 143, 80 |  |  | 11d | 0d |  |  |
| 94 | 3.5.2 | F&I HM Doors and Hardware (JANUS) |  | 15d | 2026-05-27 | 2026-06-16 | 93SS, 96 |  |  | 16d |  |  |  |
| 95 | 3.6 | **FINISHES** |  | 30d | 2026-03-03 | 2026-04-13 |  |  |  | 48d |  |  |  |
| 96 | 3.6.1 | Install Gypsum Board |  | 10d | 2026-03-03 | 2026-03-16 | 90, 79, 91 |  |  | 48d | 0d |  |  |
| 97 | 3.6.2 | Flooring Polished Concrete |  | 5d | 2026-03-17 | 2026-03-23 | 96 |  |  | 58d | 0d |  |  |
| 98 | 3.6.3 | FRP / Vinyl Base |  | 5d | 2026-03-24 | 2026-03-30 | 96, 97 |  |  | 58d | 0d |  |  |
| 99 | 3.6.4 | Painting |  | 10d | 2026-03-31 | 2026-04-13 | 98, 82 |  |  | 58d | 0d |  |  |

Notes:
- 84: Lag is 12 days because the shear wall is far enough along to start exterior sheathing by 1/30.

| ID | WBS | Task | Type | Duration | Start | Finish | Predecessors | Complete | Remaining | Total slack | Free slack |
| --- | --- | --- | --- | --- | --- | --- | --- | --- | --- | --- | --- |
| 100 | 3.7 | **SPECIALTIES** |  | 23d | 2026-03-17 | 2026-04-16 |  |  |  | 58d |  |
| 101 | 3.7.1 | Install Misc Equipment & Lockers |  | 20d | 2026-03-17 | 2026-04-13 | 96 |  |  | 61d |  |
| 102 | 3.7.2 | Bathroom Accessories |  | 2d | 2026-03-24 | 2026-03-25 | 97 |  |  | 74d |  |
| 103 | 3.7.3 | Building Interior Signage |  | 3d | 2026-04-14 | 2026-04-16 | 99SS+10d |  |  | 58d |  |
| 104 | 3.8 | **FIRE SPRINKLERS** |  | 30d | 2026-03-03 | 2026-04-13 |  |  |  | 36d |  |
| 105 | 3.8.1 | Fire Sprinkler System Rough In |  | 15d | 2026-03-03 | 2026-03-23 | 90, 19 |  |  | 36d | 0d |
| 106 | 3.8.2 | Fire Sprinkler System Trim Out |  | 15d | 2026-03-24 | 2026-04-13 | 105 |  |  | 61d |  |
| 107 | 3.9 | **PLUMBING** |  | 87d | 2025-11-20 A | 2026-03-26 |  | 16% | 73.08d | 73d |  |
| 108 | 3.9.1 | Plumbing Rough-in Underground |  | 4d | 2025-11-20 A | 2025-11-25 A | 74SS+5d | 100% |  |  |  |
| 109 | 3.9.2 | Drains, Water, Sewer Lines |  | 15d | 2026-03-03 | 2026-03-23 | 90 |  |  | 73d | 0d |
| 110 | 3.9.3 | Bathroom Fixtures |  | 3d | 2026-03-24 | 2026-03-26 | 96, 97, 109 |  |  | 73d | 0d |
| 111 | 3.9.4 | Other Plumbing Fixtures |  | 3d | 2026-03-24 | 2026-03-26 | 110SS |  |  | 73d |  |
| 112 | 3.10 | **HVAC** |  | 30d | 2026-03-03 | 2026-04-13 |  |  |  | 26d |  |
| 113 | 3.10.1 | HVAC Installation |  | 25d | 2026-03-03 | 2026-04-06 | 90, 91 |  |  | 26d | 0d |
| 114 | 3.10.2 | HVAC Commisioning & T&B |  | 5d | 2026-04-07 | 2026-04-13 | 113, 120 |  |  | 61d |  |
| 115 | 3.11 | **ELECTRICAL** |  | 153d | 2025-11-20 A | 2026-06-29 |  |  | 153d | 7d |  |
| 116 | 3.11.1 | Building Rough-in Underground | milestone | 0d | 2025-11-20 A | 2025-11-25 A | 61 | 100% |  |  |  |
| 117 | 3.11.2 | Elect Rough-In |  | 25d | 2026-03-03 | 2026-04-06 | 90, 91 |  |  | 21d | 0d |
| 118 | 3.11.3 | New Service Equipment Install, Wire & Inspect |  | 10d | 2026-02-24 | 2026-03-09 | 59, 15 |  |  | 68d | 20d |
| 119 | 3.11.4 | Install and Wire Panels |  | 15d | 2026-03-17 | 2026-04-06 | 96 |  |  | 48d | 0d |
| 120 | 3.11.5 | Permanent Power On | milestone | 0d | 2026-04-06 | 2026-04-06 | 118, 119, 15 |  |  | 48d | 0d |
| 121 | 3.11.6 | Electric Lights, Devices and Trim |  | 55d | 2026-04-06 | 2026-06-22 | 117SS+10d, 18, 17 |  |  | 7d | 0d |
| 122 | 3.11.7 | Fire Alarm System |  | 3d | 2026-04-07 | 2026-04-09 | 113, 20, 96 |  |  | 58d | 51d |
| 123 | 3.11.8 | Electrical Commissioning |  | 5d | 2026-06-23 | 2026-06-29 | 116, 117, 119, 121, 122 |  |  | 7d |  |

| ID | WBS | Task | Type | Duration | Start | Finish | Predecessors | Total slack | Free slack | Constraint |
| --- | --- | --- | --- | --- | --- | --- | --- | --- | --- | --- |
| 124 | 4 | **BUILDING A** |  | 117d | 2026-02-03 | 2026-07-17 |  | -14d | 0d |  |
| 125 | 4.1 | **CONCRETE WORK** |  | 35d | 2026-02-03 | 2026-03-23 |  | -14d | 0d |  |
| 126 | 4.1.1 | BLDG A Foundation |  | 10d | 2026-02-03 | 2026-02-16 | 57, 48, 45, 58 | -14d | 0d | start no earlier than 2026-01-05 |
| 127 | 4.1.2 | BLDG A Dampproofing |  | 2d | 2026-02-17 | 2026-02-18 | 126, 57 | 59d | 0d |  |
| 128 | 4.1.3 | BLDG A Exterior Footing Insulation |  | 3d | 2026-02-19 | 2026-02-23 | 127 | 59d | 0d |  |
| 129 | 4.1.4 | BLDG A Slab On Grade |  | 10d | 2026-03-10 | 2026-03-23 | 126, 62, 60 | -14d | 0d |  |
| 130 | 4.1.5 | BLDG A Slab On Grade Complete | milestone | 0d | 2026-03-23 | 2026-03-23 | 129 | 33d | 0d |  |
| 131 | 4.2 | **STEEL AND METALS** |  | 67d | 2026-03-20 | 2026-06-23 |  | -14d | 0d |  |
| 132 | 4.2.1 | Frame & Panel Load Bearing & Shear Walls (JANUS) |  | 25d | 2026-03-20 | 2026-04-23 | 129SS+8d, 14 | -14d | 0d |  |
| 133 | 4.2.2 | Frame & Panel Partition & Corridor Walls (JANUS) |  | 15d | 2026-06-03 | 2026-06-23 | 132, 105, 171, 113 | -2d | 0d |  |
| 134 | 4.2.3 | Canopy Install |  | 8d | 2026-04-24 | 2026-05-05 | 132, 138 | 37d |  |  |
| 135 | 4.3 | **WOOD & FRP** |  | 5d | 2026-05-15 | 2026-05-21 |  | 25d |  |  |
| 136 | 4.3.1 | Misc Finish Carpentry |  | 5d | 2026-05-15 | 2026-05-21 | 150 | 25d |  |  |
| 137 | 4.4 | **ROOF & SIDING** |  | 35d | 2026-04-10 | 2026-05-29 |  | -4d | 0d |  |
| 138 | 4.4.1 | Exterior Sheathing |  | 10d | 2026-04-10 | 2026-04-23 | 132FS-10d | 11d | 0d |  |
| 139 | 4.4.2 | Exterior Sheathing, Weather Barrier & Rigid Insulation - Building A |  | 10d | 2026-04-17 | 2026-04-30 | 138FS-5d | 11d | 0d |  |
| 140 | 4.4.3 | Rigid Insulation Behind CMU |  | 5d | 2026-05-01 | 2026-05-07 | 139 | 11d | 0d |  |
| 141 | 4.4.4 | CMU Veneer |  | 15d | 2026-05-08 | 2026-05-29 | 138, 139, 140 | 11d | 0d |  |
| 142 | 4.4.5 | Rigid Insulation Behind Metal Panels |  | 3d | 2026-05-01 | 2026-05-05 | 139 | 15d | 4d |  |
| 143 | 4.4.6 | Exterior Metal Panels (JANUS) |  | 10d | 2026-05-12 | 2026-05-26 | 141SS+2d, 138, 142 | 11d | 0d |  |
| 144 | 4.4.7 | Install Roof & Roof Insulation (JANUS) |  | 5d | 2026-04-24 | 2026-04-30 | 132 | -14d | 0d |  |
| 145 | 4.4.8 | BLDG A Roofing Complete | milestone | 0d | 2026-04-30 | 2026-04-30 | 144 | -7d | 0d |  |
| 146 | 4.5 | **DOORS & WINDOWS** |  | 5d | 2026-06-24 | 2026-06-30 |  | -2d | 0d |  |
| 147 | 4.5.1 | F&I Storage Unit Doors (JANUS) |  | 5d | 2026-06-24 | 2026-06-30 | 133 | -2d | 0d |  |
| 148 | 4.5.2 | F&I HM Doors and Hardware (JANUS) |  | 5d | 2026-06-24 | 2026-06-30 | 147SS, 150 | -2d | 0d |  |

| ID | WBS | Task | Type | Duration | Start | Finish | Predecessors | Total slack | Free slack |
| --- | --- | --- | --- | --- | --- | --- | --- | --- | --- |
| 149 | 4.6 | **FINISHES** |  | 30d | 2026-05-01 | 2026-06-12 |  | 8d |  |
| 150 | 4.6.1 | Install Gypsum Board |  | 10d | 2026-05-01 | 2026-05-14 | 132, 144, 138 | 8d | 0d |
| 151 | 4.6.2 | Painting |  | 10d | 2026-05-15 | 2026-05-29 | 150 | 8d | 0d |
| 152 | 4.6.3 | Flooring Polished Conc. |  | 5d | 2026-06-01 | 2026-06-05 | 150, 151 | 8d | 0d |
| 153 | 4.6.4 | FRP & Vinyl Base |  | 5d | 2026-06-08 | 2026-06-12 | 151, 152 | 8d | 0d |
| 154 | 4.7 | **SPECIALTIES** |  | 22d | 2026-05-15 | 2026-06-16 |  | 8d |  |
| 155 | 4.7.1 | Install Misc Equipment & Lockers |  | 20d | 2026-05-15 | 2026-06-12 | 150 | 10d |  |
| 156 | 4.7.2 | Bathroom Accessories- Building A |  | 2d | 2026-06-15 | 2026-06-16 | 153 | 8d |  |
| 157 | 4.7.3 | Building Interior Signage |  | 3d | 2026-06-01 | 2026-06-03 | 151SS+10d | 17d |  |
| 158 | 4.8 | **FIRE SPRINKLERS** |  | 30d | 2026-05-01 | 2026-06-12 |  | 10d |  |
| 159 | 4.8.1 | Fire Sprinkler System Rough In |  | 15d | 2026-05-01 | 2026-05-21 | 144 | 10d | 0d |
| 160 | 4.8.2 | Fire Sprinkler System Trim Out |  | 15d | 2026-05-22 | 2026-06-12 | 159 | 10d |  |
| 161 | 4.9 | **PLUMBING** |  | 83d | 2026-02-24 | 2026-06-19 |  | -14d | 0d |
| 162 | 4.9.1 | Plumbing Rough-in Underground |  | 5d | 2026-02-24 | 2026-03-02 | 59 | -14d | 0d |
| 163 | 4.9.2 | Drains, Water, Sewer Lines |  | 15d | 2026-05-01 | 2026-05-21 | 144 | 5d | 0d |
| 164 | 4.9.3 | Bathroom Fixtures- Building A |  | 10d | 2026-05-22 | 2026-06-05 | 150, 163 | 5d | 0d |
| 165 | 4.9.4 | Other Plumbing Fixtures |  | 10d | 2026-06-08 | 2026-06-19 | 164 | 5d |  |
| 166 | 4.10 | **HVAC** |  | 30d | 2026-05-01 | 2026-06-12 |  | 10d |  |
| 167 | 4.10.1 | HVAC Installation |  | 20d | 2026-05-01 | 2026-05-29 | 144, 145 | 10d | 0d |
| 168 | 4.10.2 | HVAC Commisioning - Building A |  | 10d | 2026-06-01 | 2026-06-12 | 167, 120 | 10d |  |
| 169 | 4.11 | **ELECTRICAL** |  | 102d | 2026-02-24 | 2026-07-17 |  | -14d | 0d |
| 170 | 4.11.1 | Building Rough-in Underground |  | 5d | 2026-02-24 | 2026-03-02 | 59 | -14d | 0d |
| 171 | 4.11.2 | Electrical Rough-In |  | 25d | 2026-04-28 | 2026-06-02 | 144SS+2d | -14d | 0d |
| 172 | 4.11.3 | New Service Equipment Install, Wire & Inspect |  | 10d | 2026-04-28 | 2026-05-11 | 59, 15, 171SS | 33d | 18d |
| 173 | 4.11.4 | Install and Wire Panels |  | 15d | 2026-05-15 | 2026-06-05 | 150 | 10d | 0d |
| 174 | 4.11.5 | Permanent Power On- Building A | milestone | 0d | 2026-06-05 | 2026-06-05 | 172, 173, 15 | 15d |  |
| 175 | 4.11.6 | Electric Lights, Devices and Trim |  | 42d | 2026-05-12 | 2026-07-10 | 171SS+10d, 144, 145, 18, 17 | -14d | 0d |
| 176 | 4.11.7 | Fire Alarm System |  | 5d | 2026-06-01 | 2026-06-05 | 150, 167, 20 | 10d |  |
| 177 | 4.11.8 | Electrical Commissioning |  | 5d | 2026-07-13 | 2026-07-17 | 170, 171, 173, 175, 176 | -14d | 0d |
