# Schedule 2017-02-17 baseline - Final

Schedule from MS Project XML, 2025-09-08 to 2026-09-11, status date 2026-03-26, A marks actual dates.

## Calendars

- Standard: Mon-Fri 08:00-12:00, 13:00-17:00; Sat-Sun off. Exceptions (off unless hours are given): 2025-11-27 to 2025-11-28 (Thanksgiving 2025), 2025-12-25 (Christmas 2025), 2026-01-01 (New Year's Day 2026), 2026-05-25 (Memorial Day), 2026-07-03 (Independence Day 2026).

## Resources

| Resource |
| --- |
| Janus |
| ATD |

## Schedule

| ID | WBS | Task | Type | Duration | Start | Finish | Predecessors | Complete | Remaining | Total slack | Free slack | Constraint | Deadline |
| --- | --- | --- | --- | --- | --- | --- | --- | --- | --- | --- | --- | --- | --- |
| 1 | 1 | **GENERAL REQUIREMENTS AND CONDITIONS** |  | 259d | 2025-09-08 A | 2026-09-11 |  | 89% | 28.24d | 0d |  |  |  |
| 2 | 1.1 | Notice to Proceed | milestone | 1d | 2025-09-08 A | 2025-09-08 A |  | 100% |  |  |  | start no earlier than 2025-09-08 |  |
| 3 | 1.2 | DELAY - PERMIT DELAY |  | 32d | 2025-09-09 A | 2025-10-22 A | 2 | 100% |  |  |  |  |  |
| 4 | 1.3 | Obtain Building Permit | milestone | 0d | 2025-10-22 A | 2025-10-22 A | 2, 3 | 100% |  |  |  | start no earlier than 2025-10-22 |  |
| 5 | 1.4 | ACHD ROW Permit | milestone | 0d | 2025-10-29 A | 2025-10-29 A | 4FS+5d | 100% |  |  |  |  |  |
| 6 | 1.5 | Obtain LDIR Approval to Proceed | milestone | 0d | 2025-10-27 A | 2025-10-27 A | 4FS+3d | 100% |  |  |  |  |  |
| 7 | 1.6 | Receive CAD Base Files from Public Storage |  | 10d | 2025-09-09 A | 2025-09-22 A | 2 | 100% |  |  |  | finish no earlier than 2024-08-31 |  |
| 8 | 1.7 | Procure Early Work Subcontractors |  | 5d | 2025-09-09 A | 2025-09-15 A | 2 | 100% |  |  |  |  |  |
| 9 | 1.8 | Procure Remaining Subcontractors |  | 20d | 2025-09-16 A | 2025-10-13 A | 8 | 100% |  |  |  |  |  |
| 10 | 1.9 | Submittals (SWPPP/NOI) |  | 10d | 2025-09-16 A | 2025-09-29 A | 8 | 100% |  |  |  |  |  |
| 11 | 1.10 | Submittals (SES /Switchgear) |  | 125d | 2025-09-16 A | 2026-03-13 A | 8 | 100% |  |  |  |  |  |
| 12 | 1.11 | Submittals (numerous) |  | 90d | 2025-10-14 A | 2026-02-20 | 9 | 95% | 4.5d | 84d |  |  |  |
| 13 | 1.12 | PUBLIC STORAGE Fab/Delv Framing & Panels BLDG B |  | 40d | 2025-10-23 A | 2025-12-19 | 2, 4 | 50% | 20d | 186d | 0d |  |  |
| 14 | 1.13 | PUBLIC STORAGE Fab/Delv Framing & Panels BLDG A |  | 40d | 2025-11-06 A | 2026-01-06 | 13SS+10d | 25% | 30d | 42d |  |  |  |
| 15 | 1.14 | Procure SES's/Switchgears (6 mos ~ 130 WD) |  | 56d | 2025-11-03 A | 2026-01-23 A | 11 | 100% |  |  |  |  |  |
| 16 | 1.15 | Light Fixture Submittal Review and Approval |  | 10d | 2026-01-26 A | 2026-02-06 A |  | 100% |  |  |  | start no earlier than 2026-01-26 |  |
| 17 | 1.16 | Light Fixture Package Alternate - Fab and Deliver |  | 10d | 2026-02-09 A | 2026-02-20 A | 16 | 100% |  |  |  | finish no earlier than 2026-02-20 |  |
| 18 | 1.17 | Fire Sprinkler Design and Approval |  | 78d | 2025-10-14 A | 2026-02-04 A | 2, 9 | 100% |  |  |  |  |  |
| 19 | 1.18 | Fire Alarm System Design and Approval |  | 40d | 2025-10-14 A | 2025-12-10 A | 2, 9 | 100% |  |  |  |  |  |
| 20 | 1.19 | ASPHALT BATCH PLANT SHUTDOWN |  | 70d | 2025-11-17 A | 2026-02-26 A |  | 100% |  |  |  | must start on 2025-11-17 |  |
| 21 | 1.20 | TWENTY WORKING DAYS OF WEATHER DELAY |  | 10d | 2026-08-31 | 2026-09-11 | 118, 121, 144, 199, 202, 224, 33, 79, 80, 76, 77, 34, 113, 114, 122, 123, 130, 131, 194, 195, 203, 204, 198, 207, 212, 215, 211, 119, 126, 134, 32, 29 |  |  | -32d | 0d |  |  |
| 22 | 1.21 | WEATHER DELAY - Rain and High Winds - Imapct SOG B |  | 2d | 2025-12-17 A | 2025-12-18 A |  | 100% |  |  |  | start no earlier than 2025-12-17 |  |
| 23 | 1.22 | WEATHER DELAY - Rain - Impact SOG B |  | 1d | 2025-12-22 A | 2025-12-22 A |  | 100% |  |  |  | start no earlier than 2025-12-22 |  |
| 24 | 1.23 | WEATHER DELAY - Rain - Impact SOG B |  | 3d | 2026-01-08 A | 2026-01-12 A | 92FF, 91 | 100% |  |  |  |  |  |
| 25 | 1.24 | WEATHER DELAY - Rain - Impact Footing Bldg A |  | 2d | 2026-02-17 A | 2026-02-18 A |  | 100% |  |  |  | finish no earlier than 2026-02-18 |  |
| 26 | 1.25 | WEATHER DELAY - Rain - Impact Footing Bldg A |  | 2d | 2026-02-24 A | 2026-02-25 A |  | 100% |  |  |  | start no earlier than 2026-02-24 |  |
| 27 | 1.26 | Substantial Completion | milestone | 0d | 2026-09-11 | 2026-09-11 | 118, 121, 144, 199, 202, 224, 33, 79, 80, 76, 77, 34, 113, 114, 122, 123, 130, 131, 194, 195, 203, 204, 198, 207, 212, 215, 211, 119, 126, 134, 32, 21, 82 |  |  | -32d | 0d | start no earlier than 2026-07-29 | 2026-07-29 |
| 28 | 1.27 | Clean Up and Project Close Out |  | 5d | 2026-08-19 | 2026-08-25 | 145 |  |  | -32d | 0d |  |  |
| 29 | 1.28 | Demobilize |  | 3d | 2026-08-26 | 2026-08-28 | 28 |  |  | -32d | 0d |  |  |

Notes:
- 3: 9/18: Permit was held up by city review on LDIR. See RR item.

| ID | WBS | Task | Type | Duration | Start | Finish | Predecessors | Complete | Remaining | Total slack | Free slack | Constraint | Resources | Work | Actual work |
| --- | --- | --- | --- | --- | --- | --- | --- | --- | --- | --- | --- | --- | --- | --- | --- |
| 30 | 2 | **SITEWORK** |  | 219d | 2025-09-08 A | 2026-07-17 |  | 50% | 110.05d | 40d |  |  |  | 680h | 528h |
| 31 | 2.1 | **Level of Effort** |  | 131d | 2025-09-08 A | 2026-03-13 |  | 42% | 75.9d | 86d |  |  |  |  |  |
| 32 | 2.1.1 | Construction Staking & Surveying |  | 90d | 2025-09-08 A | 2026-01-16 | 36SS, 8SS | 75% | 22.5d | 91d |  |  |  |  |  |
| 33 | 2.1.2 | Inspections and Testing |  | 100d | 2025-09-12 A | 2026-02-13 | 35 |  | 100d | 89d |  |  |  |  |  |
| 34 | 2.1.3 | Maintain Erosion Control |  | 120d | 2025-09-23 A | 2026-03-13 | 35 | 50% | 60d | 86d |  |  |  |  |  |
| 35 | 2.1.4 | Erosion Control & SWPP |  | 5d | 2025-09-16 A | 2025-09-22 A | 8 | 100% |  |  |  |  |  |  |  |
| 36 | 2.2 | Mobilization |  | 5d | 2025-09-08 A | 2025-09-15 A | 2 | 100% |  |  |  | start no earlier than 2024-09-09 |  |  |  |
| 37 | 2.3 | Site Demolition (Trees,Sawcut, Asphalt, Base ) | milestone | 0d | 2025-09-08 A | 2025-09-12 A | 36SS, 8 | 100% |  |  |  |  |  |  |  |
| 38 | 2.4 | Clear/Grub & Overlot Grading |  | 12d | 2025-09-08 A | 2025-09-23 A | 37SS, 32SS | 100% |  |  |  |  |  |  |  |
| 39 | 2.5 | Structure Demo (Partial Building & RV Storage ) |  | 5d | 2025-11-03 A | 2025-11-07 A | 36SS | 100% |  |  |  | start no earlier than 2025-09-08 | Janus | 40h | 40h |
| 40 | 2.6 | Re-Mobilization |  | 4d | 2025-10-23 A | 2025-10-28 A | 4 | 100% |  |  |  |  |  |  |  |
| 41 | 2.7 | FRAGNET - CITY PRE-CON & 7 DAY NOTICE |  | 7d | 2025-10-29 A | 2025-11-06 A | 4, 5, 6 | 100% |  |  |  | start no earlier than 2025-10-29 |  |  |  |
| 42 | 2.8 | Site - Water Line Ten Mile Tie-In |  | 2d | 2025-11-08 A | 2025-11-11 A | 5FS+2d, 6, 41 | 100% |  |  |  |  | ATD | 16h | 16h |
| 43 | 2.9 | Work Week Restriction |  | 5d | 2025-11-07 A | 2025-11-13 A | 41 | 100% |  |  |  |  |  |  |  |
| 44 | 2.10 | Site - Sewer Lines and Devices/Ten Mile Tie-In |  | 13d | 2025-11-14 A | 2025-12-04 A | 38, 3, 4, 5, 42FS-6d, 6, 41, 43 | 100% |  |  |  |  | ATD | 104h | 104h |
| 45 | 2.11 | DELAY - GIRR License Agreement Approval to Proceed |  | 6d | 2025-12-05 A | 2025-12-12 A | 44 | 100% |  |  |  |  |  |  |  |
| 46 | 2.12 | DELAY - RFI #14 - GIRR Separation |  | 4d | 2025-12-15 A | 2025-12-18 A | 45 | 100% |  |  |  |  |  |  |  |
| 47 | 2.13 | Storm Drain Lines South |  | 6d | 2025-12-22 A | 2025-12-30 A | 87 | 100% |  |  |  | finish no earlier than 2026-01-09 | ATD | 48h | 48h |
| 48 | 2.14 | Site - Water Line & Fire Lines/Hydrants and Devices Remaining |  | 18d | 2026-01-05 A | 2026-01-28 A | 44, 47 | 100% |  |  |  |  | ATD | 144h | 144h |
| 49 | 2.15 | Site - GIRR Piping & Devices |  | 16d | 2026-01-12 A | 2026-02-02 A | 44, 39, 47, 45, 46, 48SS+5d | 100% |  |  |  |  | ATD | 128h | 128h |
| 50 | 2.16 | TP DELAY - Site - GIRR Box Delivery and Placement |  | 6d | 2026-01-26 A | 2026-02-02 A | 49FF | 100% |  |  |  |  | ATD | 48h | 48h |
| 51 | 2.17 | Complete UG Utility Lines, SD Turn Ups, to Building A |  | 1d | 2026-03-31 | 2026-03-31 | 128, 136, 217, 48 |  |  | 39d |  |  |  |  |  |
| 52 | 2.18 | Gravel Road Rough Grade Prep |  | 8d | 2025-12-08 A | 2025-12-17 A | 87SS+2d | 100% |  |  |  |  |  |  |  |
| 53 | 2.19 | **FRAGNET - Site - Drive Aisle Unsuitable Soils** |  | 74d | 2026-02-03 A | 2026-05-15 |  | 73% | 20.25d | 83d |  |  |  |  |  |
| 54 | 2.19.1 | FRAGNET - Site - Drive Aisle Over Ex Unsuitable Soil Identified |  | 1d | 2026-02-03 A | 2026-02-03 A | 49 | 100% |  |  |  |  |  |  |  |
| 55 | 2.19.2 | FRAGNET - Site - Drive Aisle Over Ex Discussion and Confirmation on Solution |  | 2d | 2026-02-04 A | 2026-02-05 A | 54 | 100% |  |  |  |  |  |  |  |
| 56 | 2.19.3 | FRAGNET - Site - Idaho Power - Pivot to Moblize and Peform the UG JT in Drive Aisle |  | 15d | 2026-02-06 A | 2026-02-26 A | 55 | 100% |  |  |  |  |  |  |  |
| 57 | 2.19.4 | FRAGNET - Site - Owner Review of Impact and Discussion with Geo Tech to Identify Alternative Solutions More Econamical |  | 5d | 2026-02-19 A | 2026-02-25 A | 55 | 100% |  |  |  | finish no earlier than 2026-02-25 |  |  |  |
| 58 | 2.19.5 | FRAGNET - Prepare and Submit Pricing for Approval |  | 13d | 2026-02-27 A | 2026-03-17 A |  | 100% |  |  |  |  |  |  |  |
| 59 | 2.19.6 | FRAGNET - Owner Issued CCD 07 Directive for Driveisle and Soft Spots |  | 1d | 2026-03-09 A | 2026-03-09 A | 58SS+6d | 100% |  |  |  |  |  |  |  |
| 60 | 2.19.7 | FRAGNET - Mobilize Crew, Rough Grade Prep, Scarify and Air Dry |  | 1d | 2026-03-20 A | 2026-03-20 | 57SS, 162 | 50% | 0.5d | 32d |  |  |  |  |  |
| 61 | 2.19.8 | FRAGNET - Re-Prep, Proof Roll, Confirm Soft Spot Magnitude |  | 1d | 2026-03-23 A | 2026-03-23 A | 57SS, 162, 60 | 100% |  |  |  |  |  |  |  |
| 62 | 2.19.9 | FRAGNET - Site - Partial Soft Spot Repair Examination of Pit Run to Proceed. If failed, provide geo grid per RFI 33 |  | 3d | 2026-05-05 | 2026-05-07 | 57, 61, 71, 69 |  |  | -2d | 0d |  |  |  |  |
| 63 | 2.19.10 | (TOTAL MAGNITUDE, TBD) FRAGNET - Site - Drive Aisle Over Ex Start |  | 1d | 2026-05-08 | 2026-05-08 | 56, 62, 57, 67, 61, 60, 71, 69 |  |  | -2d | 0d |  |  |  |  |
| 64 | 2.19.11 | (TOTAL MAGNITUDE, TBD) FRAGNET - Site - Drive Aisle Over Ex Finish South Bld A |  | 5d | 2026-05-11 | 2026-05-15 | 56, 63 |  |  | 83d |  |  |  |  |  |
| 65 | 2.19.12 | (TOTAL MAGNITUDE, TBD) FRAGNET - Site - Drive Aisle Over Ex Finish South Bld B |  | 5d | 2026-05-11 | 2026-05-15 | 56, 63 |  |  | -2d | 0d |  |  |  |  |
| 66 | 2.20 | Site - Idaho Power Boring |  | 2d | 2026-02-26 A | 2026-02-27 A | 56 | 100% |  |  |  |  |  |  |  |
| 67 | 2.21 | Site - Idaho Power Trench, Conduit and Backfill |  | 5d | 2026-03-09 A | 2026-03-13 A | 66 | 100% |  |  |  |  |  |  |  |
| 68 | 2.22 | Site - Idaho Power Transformer Set and Make Live | milestone | 0d | 2026-03-13 A | 2026-03-13 A | 56, 66, 67 | 100% |  |  |  |  |  |  |  |
| 69 | 2.23 | Storm Drain Lines and Devices - South of Buildings (E-W) |  | 7d | 2026-04-15 | 2026-04-23 | 38, 44, 90, 92, 175 |  |  | -2d | 0d |  | ATD | 56h |  |
| 70 | 2.24 | Site - Flatwork Sidewalk Prep |  | 8d | 2026-04-15 | 2026-04-24 | 176, 69SS |  |  | 21d |  |  |  |  |  |
| 71 | 2.25 | Storm Drain Lines and Devices - North of Buildings (E-W) |  | 7d | 2026-04-24 | 2026-05-04 | 38, 44, 90, 92, 175, 69 |  |  | -2d | 0d |  | ATD | 56h |  |
| 72 | 2.26 | Site - Curb and Gutter Prep |  | 8d | 2026-05-18 | 2026-05-28 | 176, 69SS, 65 |  |  | -2d | 0d |  |  |  |  |
| 73 | 2.27 | Site - Base Course Asphalt Prep |  | 8d | 2026-05-18 | 2026-05-28 | 176, 69, 65 |  |  | -2d | 0d |  |  |  |  |
| 74 | 2.28 | Site Flatwork and Curb and Gutter - (E-W) |  | 15d | 2026-05-29 | 2026-06-18 | 51, 42, 44, 71, 49, 156, 50, 32, 73, 69, 72, 70 |  |  | -2d | 0d |  |  |  |  |
| 75 | 2.29 | Site - Fine Grade Asphalt Prep |  | 3d | 2026-06-19 | 2026-06-23 | 74 |  |  | -2d | 0d |  |  |  |  |
| 76 | 2.30 | Asphalt Paving |  | 2d | 2026-06-24 | 2026-06-25 | 12, 20, 75, 33, 74 |  |  | -2d | 0d |  |  |  |  |
| 77 | 2.31 | Pavement Markings, Signage & Bumpers |  | 2d | 2026-06-26 | 2026-06-29 | 76, 74 |  |  | 11d |  |  |  |  |  |
| 78 | 2.32 | Site Fencing Chainlink |  | 5d | 2026-05-20 | 2026-05-27 | 109 |  |  | 29d | 0d |  |  |  |  |
| 79 | 2.33 | Gravel Road Finish Grading |  | 5d | 2026-05-28 | 2026-06-03 | 71, 78 |  |  | 29d |  |  | ATD | 40h |  |
| 80 | 2.34 | Landscaping and Irrigation |  | 15d | 2026-06-26 | 2026-07-17 | 12, 76, 74 |  |  | -2d | 0d |  |  |  |  |
| 81 | 2.35 | Site Fencing Vinyl |  | 10d | 2026-06-26 | 2026-07-10 | 76, 78 |  |  | 18d | 0d |  |  |  |  |
| 82 | 2.36 | Site Fencing Rod Iron and Gates |  | 5d | 2026-06-26 | 2026-07-02 | 76, 81SS |  |  | 18d |  |  |  |  |  |

Notes:
- 50: As a result of CXT and ATD's submittal delay, the precast boxes were delayed.

| ID | WBS | Task | Type | Duration | Start | Finish | Predecessors | Complete | Remaining | Total slack | Free slack | Constraint | Resources | Work | Actual work |
| --- | --- | --- | --- | --- | --- | --- | --- | --- | --- | --- | --- | --- | --- | --- | --- |
| 83 | 3 | **BUILDING B** |  | 195d | 2025-10-29 A | 2026-08-05 |  | 30% | 135.77d | -15d | 0d |  |  | 944h | 548h |
| 84 | 3.1 | BLDG B Foundation Excavation |  | 6d | 2025-10-29 A | 2025-11-05 A | 38SS+3d, 4, 40, 85FF | 100% |  |  |  | start no earlier than 2025-09-15 | ATD | 48h | 48h |
| 85 | 3.2 | DELAY - BLDG B FOOTING OVER-EX |  | 4d | 2025-10-31 A | 2025-11-05 A |  | 100% |  |  |  | start no earlier than 2025-10-31 | ATD | 32h | 32h |
| 86 | 3.3 | BLDG B SOG Prep |  | 5d | 2025-11-26 A | 2025-12-04 A | 84, 136 | 100% |  |  |  |  | ATD | 40h | 40h |
| 87 | 3.4 | FRAGNET - Bldg B Soft Spot Repair |  | 8d | 2025-12-04 A | 2025-12-15 A |  | 100% |  |  |  | start no earlier than 2025-12-04 |  |  |  |
| 88 | 3.5 | BLDG B Backfill Foundations |  | 18d | 2025-12-15 A | 2026-01-09 A | 90, 91, 92SS, 24 | 100% |  |  |  |  | ATD | 144h | 144h |
| 89 | 3.6 | **CONCRETE WORK** |  | 44d | 2025-11-06 A | 2026-01-12 A |  | 100% |  |  |  |  |  |  |  |
| 90 | 3.6.1 | BLDG B Foundation |  | 14d | 2025-11-06 A | 2025-11-25 A | 84, 85 | 100% |  |  |  |  |  |  |  |
| 91 | 3.6.2 | BLDG B Dampproofing |  | 1d | 2025-11-18 A | 2025-11-26 A | 84, 90 | 100% |  |  |  |  |  |  |  |
| 92 | 3.6.3 | BLDG B Slab On Grade |  | 19d | 2025-12-15 A | 2026-01-12 A | 90, 136, 128FF, 86, 87FF, 22FF, 23FF | 100% |  |  |  |  |  |  |  |
| 93 | 3.6.4 | BLDG B Slab On Grade Complete | milestone | 0d | 2026-01-12 A | 2026-01-12 A | 92, 24 | 100% |  |  |  |  |  |  |  |
| 94 | 3.7 | **STEEL AND METALS** |  | 82d | 2026-01-12 A | 2026-05-05 |  | 63% | 30.75d | 29d |  |  |  | 480h | 264h |
| 95 | 3.7.1 | Frame Load Bearing Shear Walls, Interior Partitions, & Corridors (JANUS) |  | 20d | 2026-01-12 A | 2026-02-09 A | 92, 13, 39, 24 | 100% |  |  |  |  | Janus | 160h | 160h |
| 96 | 3.7.2 | FRAGNET - Extended Shear Wall Durations (JANUS) |  | 12d | 2026-02-10 A | 2026-02-25 A | 95 | 100% |  |  |  |  |  |  |  |
| 97 | 3.7.3 | Panel Shear Walls, Interior Partition, & Corridor Walls (JANUS) |  | 20d | 2026-02-26 A | 2026-03-25 | 95, 96 | 65% | 7d | 58d |  |  | Janus | 160h | 104h |
| 98 | 3.7.4 | Perimeter Panel Interior Walls (JANUS) |  | 20d | 2026-04-08 | 2026-05-05 | 137 |  |  | 29d |  |  | Janus | 160h |  |
| 99 | 3.8 | **WOOD & FRP** |  | 5d | 2026-04-14 | 2026-04-20 |  |  |  | 47d |  |  |  |  |  |
| 100 | 3.8.1 | Misc Finish Carpentry |  | 5d | 2026-04-14 | 2026-04-20 | 116 |  |  | 47d | 5d |  |  |  |  |
| 101 | 3.9 | **ROOF & SIDING** |  | 78d | 2026-01-30 A | 2026-05-19 |  | 30% | 54.65d | 19d |  |  |  | 200h | 20h |
| 102 | 3.9.1 | Exterior Sheathing | milestone | 0d | 2026-01-30 A | 2026-02-16 A | 95FS-12d, 96FS-12d | 100% |  |  |  |  |  |  |  |
| 103 | 3.9.2 | Weather Barrier Fluid Applied |  | 8d | 2026-02-06 A | 2026-02-19 A | 102FS-5d | 100% |  |  |  |  |  |  |  |
| 104 | 3.9.3 | Weather Barrier Tyvek |  | 10d | 2026-03-04 A | 2026-03-17 A | 102FS-5d | 100% |  |  |  |  |  |  |  |
| 105 | 3.9.4 | CMU Veneer Base Course & Grout |  | 15d | 2026-03-03 A | 2026-04-07 | 102, 104, 103 | 25% | 11.25d | 19d | 0d |  |  |  |  |
| 106 | 3.9.5 | Rigid Insulation Behind CMU |  | 5d | 2026-04-08 | 2026-04-14 | 104, 103, 105 |  |  | 19d | 0d |  |  |  |  |
| 107 | 3.9.6 | Rigid Insulation Behind Metal Panels |  | 3d | 2026-04-15 | 2026-04-17 | 106 |  |  | 31d | 12d |  |  |  |  |
| 108 | 3.9.7 | CMU Veneer Remaining |  | 15d | 2026-04-15 | 2026-05-05 | 105, 106 |  |  | 19d | 0d |  |  |  |  |
| 109 | 3.9.8 | Exterior Metal Panels (JANUS) |  | 10d | 2026-05-06 | 2026-05-19 | 102, 107, 108 |  |  | 19d | 0d |  | Janus | 80h |  |
| 110 | 3.9.9 | Install Roof & Roof Insulation (JANUS) |  | 15d | 2026-02-25 A | 2026-03-30 | 95 | 17% | 12.5d | 15d | 0d |  | Janus | 120h | 20h |
| 111 | 3.9.10 | BLDG B Roofing Complete | milestone | 0d | 2026-03-30 | 2026-03-30 | 110 |  |  | 32d | 0d |  |  |  |  |

Notes:
- 96: Impacts to the installation of the roof system due to roof re-design, and site constraints that would not allow a crane as Janus was proposing.
- 102: Lag is 12 days because the shear wall is far enough along to start exterior sheathing by 1/30.

| ID | WBS | Task | Type | Duration | Start | Finish | Predecessors | Complete | Remaining | Total slack | Free slack | Constraint |
| --- | --- | --- | --- | --- | --- | --- | --- | --- | --- | --- | --- | --- |
| 112 | 3.10 | **DOORS & WINDOWS** |  | 20d | 2026-07-09 | 2026-08-05 |  |  |  | -15d | 0d |  |
| 113 | 3.10.1 | F&I Storage Unit Doors (JANUS) |  | 20d | 2026-07-09 | 2026-08-05 | 109, 190, 98, 97 |  |  | -15d | 0d |  |
| 114 | 3.10.2 | F&I HM Doors and Hardware (JANUS) |  | 15d | 2026-07-09 | 2026-07-29 | 113SS, 116 |  |  | -10d | 0d |  |
| 115 | 3.11 | **FINISHES** |  | 30d | 2026-03-31 | 2026-05-11 |  |  |  | 32d |  |  |
| 116 | 3.11.1 | Install Gypsum Board |  | 10d | 2026-03-31 | 2026-04-13 | 110, 95, 111, 96 |  |  | 32d | 0d |  |
| 117 | 3.11.2 | Flooring Polished Concrete |  | 5d | 2026-04-14 | 2026-04-20 | 116 |  |  | 42d | 0d |  |
| 118 | 3.11.3 | FRP / Vinyl Base |  | 5d | 2026-04-21 | 2026-04-27 | 116, 117 |  |  | 42d | 0d |  |
| 119 | 3.11.4 | Painting |  | 10d | 2026-04-28 | 2026-05-11 | 118, 100 |  |  | 42d | 0d |  |
| 120 | 3.12 | **SPECIALTIES** |  | 23d | 2026-04-14 | 2026-05-14 |  |  |  | 42d |  |  |
| 121 | 3.12.1 | Install Misc Equipment & Lockers |  | 20d | 2026-04-14 | 2026-05-11 | 116 |  |  | 45d |  |  |
| 122 | 3.12.2 | Bathroom Accessories |  | 2d | 2026-04-21 | 2026-04-22 | 117 |  |  | 58d |  |  |
| 123 | 3.12.3 | Building Interior Signage |  | 3d | 2026-05-12 | 2026-05-14 | 119SS+10d |  |  | 42d |  |  |
| 124 | 3.13 | **FIRE SPRINKLERS** |  | 50d | 2026-02-23 A | 2026-05-01 |  | 13% | 43.49d | 51d |  |  |
| 125 | 3.13.1 | Fire Sprinkler System Rough In |  | 28d | 2026-02-23 A | 2026-04-10 | 110SS+5d, 18 | 20% | 22.4d | 51d | 0d |  |
| 126 | 3.13.2 | Fire Sprinkler System Trim Out |  | 15d | 2026-04-13 | 2026-05-01 | 125 |  |  | 51d |  |  |
| 127 | 3.14 | **PLUMBING** |  | 107d | 2025-11-20 A | 2026-04-23 |  | 16% | 89.88d | 57d |  |  |
| 128 | 3.14.1 | Plumbing Rough-in Underground |  | 4d | 2025-11-20 A | 2025-11-25 A | 90SS+5d | 100% |  |  |  |  |
| 129 | 3.14.2 | Drains, Water, Sewer Lines |  | 15d | 2026-03-31 | 2026-04-20 | 110 |  |  | 57d | 0d |  |
| 130 | 3.14.3 | Bathroom Fixtures |  | 3d | 2026-04-21 | 2026-04-23 | 116, 117, 129 |  |  | 57d | 0d |  |
| 131 | 3.14.4 | Other Plumbing Fixtures |  | 3d | 2026-04-21 | 2026-04-23 | 130SS |  |  | 57d |  |  |
| 132 | 3.15 | **HVAC** |  | 30d | 2026-03-31 | 2026-05-11 |  |  |  | 42d |  |  |
| 133 | 3.15.1 | HVAC Installation |  | 25d | 2026-03-31 | 2026-05-04 | 110, 111 |  |  | 42d | 0d |  |
| 134 | 3.15.2 | HVAC Commisioning & T&B |  | 5d | 2026-05-05 | 2026-05-11 | 133, 140 |  |  | 45d |  |  |
| 135 | 3.16 | **ELECTRICAL** |  | 149d | 2025-11-20 A | 2026-06-23 |  | 8% | 137.12d | 15d |  |  |
| 136 | 3.16.1 | Building Rough-in Underground | milestone | 0d | 2025-11-20 A | 2025-11-25 A | 156 | 100% |  |  |  |  |
| 137 | 3.16.2 | Elect Rough-In |  | 25d | 2026-03-02 A | 2026-04-07 | 110SS+5d | 25% | 18.75d | 29d | 0d |  |
| 138 | 3.16.3 | New Service Equipment Install, Wire & Inspect |  | 10d | 2026-03-31 | 2026-04-13 | 148, 15, 110 |  |  | 47d | 15d |  |
| 139 | 3.16.4 | Install and Wire Panels |  | 15d | 2026-04-14 | 2026-05-04 | 116 |  |  | 32d | 0d |  |
| 140 | 3.16.5 | Permanent Power On | milestone | 0d | 2026-05-04 | 2026-05-04 | 138, 139, 15 |  |  | 32d | 0d |  |
| 141 | 3.16.6 | FRAGNET - RFI 35 - Light Fixture Mounting Height Clarification Submitted/Closed, |  | 3d | 2026-03-13 A | 2026-03-17 A |  | 100% |  |  |  | start no earlier than 2026-03-13 |
| 142 | 3.16.7 | Electric Lights, Devices and Trim |  | 55d | 2026-03-31 | 2026-06-16 | 137SS+10d, 17, 141, 110 |  |  | 15d | 0d |  |
| 143 | 3.16.8 | Fire Alarm System |  | 3d | 2026-05-05 | 2026-05-07 | 133, 19, 116 |  |  | 42d | 27d |  |
| 144 | 3.16.9 | Electrical Commissioning |  | 5d | 2026-06-17 | 2026-06-23 | 136, 137, 139, 142, 143, 141 |  |  | 15d |  |  |

| ID | WBS | Task | Type | Duration | Start | Finish | Predecessors | Complete | Remaining | Total slack | Free slack | Constraint | Resources | Work | Actual work |
| --- | --- | --- | --- | --- | --- | --- | --- | --- | --- | --- | --- | --- | --- | --- | --- |
| 145 | 4 | **BUILDING A** |  | 145d | 2026-01-26 A | 2026-08-18 |  | 20% | 116.23d | -32d | 0d |  |  | 248h | 240h |
| 146 | 4.1 | BLDG A Foundation Excavation |  | 24d | 2026-01-26 A | 2026-02-26 A | 84, 90SS+10d, 4, 40, 87 | 100% |  |  |  |  | ATD | 192h | 192h |
| 147 | 4.2 | FRAGNET - BLDG A Footing Seepage Bed Over Ex. |  | 1d | 2026-02-02 A | 2026-02-02 A | 146 | 100% |  |  |  |  |  |  |  |
| 148 | 4.3 | BLDG A - Interoir Backfill Foundations |  | 2d | 2026-02-26 A | 2026-03-03 A | 92, 169, 146 | 100% |  |  |  |  | ATD | 16h | 16h |
| 149 | 4.4 | **FRAGNET - BLDG A Seepage Bed Pad Over Ex.** |  | 11d | 2026-02-26 A | 2026-03-12 A |  | 100% |  |  |  |  |  |  |  |
| 150 | 4.4.1 | FRAGNET -Proposed direction received from Owner to perform BLDG A Seepage Bed Pad Over Ex. |  | 1d | 2026-02-26 A | 2026-02-26 A | 61SS, 60SS | 100% |  |  |  |  |  |  |  |
| 151 | 4.4.2 | FRAGNET - Prepare and Submit Pricing for Approval |  | 8d | 2026-02-27 A | 2026-03-10 A | 159 | 100% |  |  |  |  |  |  |  |
| 152 | 4.4.3 | FRAGNET - Owner Issued CCD 06 on Seepage Bed Cost Impact |  | 1d | 2026-03-09 A | 2026-03-09 A |  | 100% |  |  |  |  |  |  |  |
| 153 | 4.4.4 | FRAGNET - Mobilize Crew for BLDG A Seepage Bed Pad Over Ex. |  | 1d | 2026-03-10 A | 2026-03-10 A | 152 | 100% |  |  |  |  |  |  |  |
| 154 | 4.4.5 | FRAGNET - Start BLDG A Seepage Bed Pad Over Ex. |  | 1d | 2026-03-11 A | 2026-03-11 A | 169, 148, 153 | 100% |  |  |  |  |  |  |  |
| 155 | 4.4.6 | FRAGNET - Finish BLDG A Seepage Bed Pad Over Ex. |  | 1d | 2026-03-12 A | 2026-03-12 A | 154 | 100% |  |  |  |  |  |  |  |
| 156 | 4.5 | BLDG A - Exterior Backfill Foundations |  | 2d | 2026-03-10 A | 2026-03-11 A | 146, 170, 85, 171 | 100% |  |  |  |  | ATD | 16h | 16h |
| 157 | 4.6 | BLDG A SOG Rough Grade Prep |  | 2d | 2026-03-18 A | 2026-03-19 A | 148, 209SS, 149, 154 | 100% |  |  |  |  | ATD | 16h | 16h |
| 158 | 4.7 | **FRAGNET - BLDG A Soft Spot Over Ex** |  | 20d | 2026-02-26 A | 2026-03-25 A |  | 100% |  |  |  |  |  |  |  |
| 159 | 4.7.1 | FRAGNET - Proposed direction received from Owner to perform BLDG A Soft Spot Repairs Using Only Pit Run |  | 1d | 2026-02-26 A | 2026-02-26 A | 61SS, 60SS | 100% |  |  |  |  |  |  |  |
| 160 | 4.7.2 | FRAGNET - Prepare and Submit Pricing for Approval |  | 13d | 2026-02-27 A | 2026-03-17 A | 159 | 100% |  |  |  |  |  |  |  |
| 161 | 4.7.3 | FRAGNET - Owner Issued CCD 07 Directive for Driveisle and Soft Spots |  | 1d | 2026-03-09 A | 2026-03-09 A |  | 100% |  |  |  |  |  |  |  |
| 162 | 4.7.4 | FRAGNET - Mobilize Crew, SOG Rough Grade Prep, Scarify, Air Dry Pad A |  | 5d | 2026-03-13 A | 2026-03-19 A | 161, 155, 152 | 100% |  |  |  |  |  |  |  |
| 163 | 4.7.5 | FRAGNET - Air Dry Pad A, Re-Prep, Proof Roll to Idendify Soft Spots |  | 2d | 2026-03-20 A | 2026-03-23 A | 161, 155, 152, 162 | 100% |  |  |  |  |  |  |  |
| 164 | 4.7.6 | FRAGNET - Start Soft Spot Repairs | milestone | 0d | 2026-03-23 A | 2026-03-23 A | 161, 155, 152, 157, 163 | 100% |  |  |  |  |  |  |  |
| 165 | 4.7.7 | FRAGNET - Test and Review Compaction Results for Soft Spot - If Approved, Proceed with Direction Further |  | 1d | 2026-03-24 A | 2026-03-24 A | 164, 163, 162 | 100% |  |  |  |  |  |  |  |
| 166 | 4.7.8 | FRAGNET - Soft Spot Repairs East Area |  | 1d | 2026-03-24 A | 2026-03-24 A | 165SS | 100% |  |  |  |  |  |  |  |
| 167 | 4.7.9 | FRAGNET - Soft Spot Repairs West Area |  | 1d | 2026-03-25 A | 2026-03-25 A | 165, 61SS, 60SS | 100% |  |  |  |  |  |  |  |
| 168 | 4.8 | **CONCRETE WORK** |  | 50d | 2026-02-04 A | 2026-04-14 |  | 71% | 14.47d | 21d |  |  |  | 8h |  |
| 169 | 4.8.1 | BLDG A Foundation |  | 18d | 2026-02-04 A | 2026-02-27 A | 146SS+2d, 48, 49, 147, 25FF, 26FF-2d | 100% |  |  |  | start no earlier than 2026-01-05 |  |  |  |
| 170 | 4.8.2 | BLDG A Dampproofing |  | 4d | 2026-02-16 A | 2026-03-03 A | 169, 146 | 100% |  |  |  |  |  |  |  |
| 171 | 4.8.3 | BLDG A Exterior Footing Insulation |  | 5d | 2026-02-23 A | 2026-02-27 A | 170 | 100% |  |  |  |  |  |  |  |
| 172 | 4.8.4 | BLDG A SOG Fine Prep |  | 1d | 2026-03-31 | 2026-03-31 | 148, 209SS, 149, 154, 217, 163, 167 |  |  | -32d | 0d |  | ATD | 8h |  |
| 173 | 4.8.5 | BLDG A Slab On Grade (East) |  | 3d | 2026-04-01 | 2026-04-03 | 157SS, 217, 172 |  |  | -32d | 0d |  |  |  |  |
| 174 | 4.8.6 | BLDG A Slab On Grade (Center) |  | 3d | 2026-04-06 | 2026-04-08 | 173 |  |  | -32d | 0d |  |  |  |  |
| 175 | 4.8.7 | BLDG A Slab On Grade (West) |  | 4d | 2026-04-09 | 2026-04-14 | 169, 172, 154, 155, 167, 209, 157, 166, 174 |  |  | -32d | 0d |  |  |  |  |
| 176 | 4.8.8 | BLDG A Slab On Grade Complete | milestone | 0d | 2026-04-14 | 2026-04-14 | 175 |  |  | 21d | 0d |  |  |  |  |

Notes:
- 169: Two weather delays impacted the foundations' pours.

| ID | WBS | Task | Type | Duration | Start | Finish | Predecessors | Total slack | Free slack |
| --- | --- | --- | --- | --- | --- | --- | --- | --- | --- |
| 177 | 4.9 | **STEEL AND METALS** |  | 67d | 2026-04-21 | 2026-07-24 |  | -32d | 0d |
| 178 | 4.9.1 | Frame Load Bearing, Shear Walls, Partition & Corridor (JANUS) |  | 25d | 2026-04-21 | 2026-05-26 | 175SS+8d, 14 | -32d | 0d |
| 179 | 4.9.2 | Panel Shear Wall, Interior Partition, & Corridor Walls (JANUS) |  | 15d | 2026-05-27 | 2026-06-16 | 178 | 7d |  |
| 180 | 4.9.3 | Perimeter Panel Interior Walls (JANUS) |  | 15d | 2026-07-06 | 2026-07-24 | 218 | -20d | 0d |
| 181 | 4.9.4 | Canopy Install |  | 8d | 2026-05-27 | 2026-06-05 | 185, 178 | 19d |  |
| 182 | 4.10 | **WOOD & FRP** |  | 5d | 2026-06-17 | 2026-06-23 |  | 7d |  |
| 183 | 4.10.1 | Misc Finish Carpentry |  | 5d | 2026-06-17 | 2026-06-23 | 197 | 7d |  |
| 184 | 4.11 | **ROOF & SIDING** |  | 40d | 2026-05-12 | 2026-07-08 |  | -22d | 0d |
| 185 | 4.11.1 | Exterior Sheathing, Weather Barrier & Rigid Insulation - Building A |  | 10d | 2026-05-12 | 2026-05-26 | 178FS-10d | -15d | 0d |
| 186 | 4.11.2 | Exterior Sheathing, Weather Barrier & Rigid Insulation - Building A |  | 10d | 2026-05-19 | 2026-06-02 | 185FS-5d | -15d | 0d |
| 187 | 4.11.3 | Rigid Insulation Behind Metal Panels |  | 3d | 2026-06-03 | 2026-06-05 | 186 | -3d | 0d |
| 188 | 4.11.4 | Rigid Insulation Behind CMU |  | 5d | 2026-06-03 | 2026-06-09 | 186 | -15d | 0d |
| 189 | 4.11.5 | CMU Veneer |  | 15d | 2026-06-10 | 2026-06-30 | 185, 186, 188 | -15d | 0d |
| 190 | 4.11.6 | Exterior Metal Panels (JANUS) |  | 10d | 2026-06-24 | 2026-07-08 | 189FS-5d, 185, 187 | -15d | 0d |
| 191 | 4.11.7 | Install Roof & Roof Insulation (JANUS) |  | 5d | 2026-05-27 | 2026-06-02 | 178 | -32d | 0d |
| 192 | 4.11.8 | BLDG A Roofing Complete | milestone | 0d | 2026-06-02 | 2026-06-02 | 191 | -25d | 0d |
| 193 | 4.12 | **DOORS & WINDOWS** |  | 5d | 2026-07-27 | 2026-07-31 |  | -20d | 0d |
| 194 | 4.12.1 | F&I Storage Unit Doors (JANUS) |  | 5d | 2026-07-27 | 2026-07-31 | 180, 179 | -20d | 0d |
| 195 | 4.12.2 | F&I HM Doors and Hardware (JANUS) |  | 5d | 2026-07-27 | 2026-07-31 | 194SS, 197 | -20d | 0d |
| 196 | 4.13 | **FINISHES** |  | 30d | 2026-06-03 | 2026-07-15 |  | -10d | 0d |
| 197 | 4.13.1 | Install Gypsum Board |  | 10d | 2026-06-03 | 2026-06-16 | 191, 185, 178 | -10d | 0d |
| 198 | 4.13.2 | Painting |  | 10d | 2026-06-17 | 2026-06-30 | 197 | -10d | 0d |
| 199 | 4.13.3 | Flooring Polished Conc. |  | 5d | 2026-07-01 | 2026-07-08 | 197, 198 | -10d | 0d |
| 200 | 4.13.4 | FRP & Vinyl Base |  | 5d | 2026-07-09 | 2026-07-15 | 198, 199 | -10d | 0d |

| ID | WBS | Task | Type | Duration | Start | Finish | Predecessors | Complete | Remaining | Total slack | Free slack |
| --- | --- | --- | --- | --- | --- | --- | --- | --- | --- | --- | --- |
| 201 | 4.14 | **SPECIALTIES** |  | 22d | 2026-06-17 | 2026-07-17 |  |  |  | -10d | 0d |
| 202 | 4.14.1 | Install Misc Equipment & Lockers |  | 20d | 2026-06-17 | 2026-07-15 | 197 |  |  | -8d | 0d |
| 203 | 4.14.2 | Bathroom Accessories- Building A |  | 2d | 2026-07-16 | 2026-07-17 | 200 |  |  | -10d | 0d |
| 204 | 4.14.3 | Building Interior Signage |  | 3d | 2026-07-01 | 2026-07-06 | 198SS+10d |  |  | -1d | 0d |
| 205 | 4.15 | **FIRE SPRINKLERS** |  | 30d | 2026-06-03 | 2026-07-15 |  |  |  | -8d | 0d |
| 206 | 4.15.1 | Fire Sprinkler System Rough In |  | 15d | 2026-06-03 | 2026-06-23 | 191 |  |  | -8d | 0d |
| 207 | 4.15.2 | Fire Sprinkler System Trim Out |  | 15d | 2026-06-24 | 2026-07-15 | 206 |  |  | -8d | 0d |
| 208 | 4.16 | **PLUMBING** |  | 96d | 2026-03-09 A | 2026-07-22 |  | 10% | 86.15d | -13d | 0d |
| 209 | 4.16.1 | Plumbing Rough-in Underground |  | 4d | 2026-03-09 A | 2026-03-12 A | 148 | 100% |  |  |  |
| 210 | 4.16.2 | Drains, Water, Sewer Lines |  | 15d | 2026-06-03 | 2026-06-23 | 191 |  |  | -13d | 0d |
| 211 | 4.16.3 | Bathroom Fixtures- Building A |  | 10d | 2026-06-24 | 2026-07-08 | 197, 210 |  |  | -13d | 0d |
| 212 | 4.16.4 | Other Plumbing Fixtures |  | 10d | 2026-07-09 | 2026-07-22 | 211 |  |  | -13d | 0d |
| 213 | 4.17 | **HVAC** |  | 30d | 2026-06-03 | 2026-07-15 |  |  |  | -8d | 0d |
| 214 | 4.17.1 | HVAC Installation |  | 20d | 2026-06-03 | 2026-06-30 | 191, 192 |  |  | -8d | 0d |
| 215 | 4.17.2 | HVAC Commisioning - Building A |  | 10d | 2026-07-01 | 2026-07-15 | 214, 140 |  |  | -8d | 0d |
| 216 | 4.18 | **ELECTRICAL** |  | 104d | 2026-03-24 | 2026-08-18 |  |  |  | -32d | 0d |
| 217 | 4.18.1 | Building Rough-in Underground |  | 5d | 2026-03-24 | 2026-03-30 | 148, 163 |  |  | -32d | 0d |
| 218 | 4.18.2 | Electrical Rough-In |  | 25d | 2026-05-29 | 2026-07-02 | 191SS+2d |  |  | -32d | 0d |
| 219 | 4.18.3 | New Service Equipment Install, Wire & Inspect |  | 10d | 2026-06-03 | 2026-06-16 | 148, 15, 218SS, 191 |  |  | 12d |  |
| 220 | 4.18.4 | Install and Wire Panels |  | 15d | 2026-06-17 | 2026-07-08 | 197 |  |  | -8d | 0d |
| 221 | 4.18.5 | Permanent Power On- Building A | milestone | 0d | 2026-07-08 | 2026-07-08 | 219, 220, 15 |  |  | -3d | 0d |
| 222 | 4.18.6 | Electric Lights, Devices and Trim |  | 42d | 2026-06-12 | 2026-08-11 | 218SS+10d, 191, 192, 17 |  |  | -32d | 0d |
| 223 | 4.18.7 | Fire Alarm System |  | 5d | 2026-07-01 | 2026-07-08 | 197, 214, 19 |  |  | -8d | 0d |
| 224 | 4.18.8 | Electrical Commissioning |  | 5d | 2026-08-12 | 2026-08-18 | 217, 218, 220, 222, 223 |  |  | -32d | 0d |
